How a schedule from MS Project XML changed from version to version. A marks actual dates.

## Version 1 (saved 2025-12-10, file Tropical Isle 146.xml)

Note of the change: Initial commit: ETL pipeline for CCO Dashboard

| ID | WBS | Task | Duration | Start | Finish | Predecessors | Complete | Constraint |
| --- | --- | --- | --- | --- | --- | --- | --- | --- |
| 1 | 37100 | **Tropical Isle 146** | 2158.85ed | 2023-09-29 | 2029-08-27 |  | 11% | start no earlier than 2023-09-29 |
| 2 | 37100.37300 | **Tropical Isle 146** | 2016.19d | 2023-09-29 | 2029-08-27 |  | 11% | start no earlier than 2023-09-29 |
| 3 | 37100.37300.37600 | **Phase-1** | 2016.19d | 2023-09-29 | 2029-08-27 |  | 11% | start no earlier than 2023-09-29 |
| 4 | 37100.37300.37600.37900 | **Tower 5** | 1847.06d | 2023-09-29 | 2029-03-11 |  | 7% | start no earlier than 2023-09-29 |
| 5 | 37100.37300.37600.37900.97600 | **Substructure** | 878.69d | 2023-09-29 | 2026-06-02 |  | 57% | start no earlier than 2023-09-29 |
| 6 | 37100.37300.37600.37900.97600.108000 | **Soil Bed Preparation** | 763.81d | 2023-09-29 | 2026-02-07 |  | 78% | start no earlier than 2023-09-29 |
| 7 |  | Test Piling | 24.94d | 2023-09-29 | 2023-10-24 |  | 100% | start no earlier than 2023-09-29 |
| 8 |  | Excavation | 29.94d | 2024-01-10 | 2024-02-08 | 7SS+15.74d | 100% | start no earlier than 2024-01-10 |
| 9 |  | Main Piling Work | 169.94d | 2024-04-12 | 2025-01-13 | 7FS-12.45d | 100% | start no earlier than 2024-04-12 |
| 10 |  | Anti-termite | 4.94d | 2025-11-30 | 2025-12-04 | 9FF+1.88d |  |  |
| 11 |  | PCC | 13.86d | 2024-10-15 | 2024-10-28 | 8FS-14.7d, 10SS+10.93d | 100% | start no earlier than 2024-10-15 |
| 12 |  | Backfilling | 59.94d | 2025-11-30 | 2026-02-07 | 26FS-4.38d, 17FS-1d, 21FS-2d |  |  |
| 13 | 37100.37300.37600.37900.97600.103000 | **RCC Structure** | 113.62d | 2024-12-17 | 2025-04-09 |  | 100% | start no earlier than 2024-12-17 |
| 14 | 37100.37300.37600.37900.97600.103000.184200 | **Raft Foundation** | 31d | 2024-12-17 | 2025-01-16 |  | 100% | start no earlier than 2024-12-17 |
| 15 |  | Reinforcement | 26d | 2024-12-17 | 2025-01-11 | 11FS-7.91d | 100% | must finish on 2025-01-13 |
| 16 |  | Formwork | 14d | 2024-12-31 | 2025-01-13 | 15FF-2d | 100% | start no earlier than 2024-12-31 |
| 17 |  | Concreting | 4d | 2025-01-13 | 2025-01-16 | 16FS-1d | 100% | start no earlier than 2025-01-13 |
| 18 | 37100.37300.37600.37900.97600.103000.184100 | **Basement 1 Slab** | 27d | 2025-01-16 | 2025-02-11 |  | 100% | start no earlier than 2025-01-16 |
| 19 |  | Reinforcement | 22d | 2025-01-16 | 2025-02-06 | 17FS-1d | 100% | start no earlier than 2025-01-16 |
| 20 |  | Formwork | 22d | 2025-01-19 | 2025-02-09 | 19SS+3d | 100% | start no earlier than 2025-01-19 |
| 21 |  | Concreting | 2d | 2025-02-09 | 2025-02-11 | 20FS-1d | 100% | start no earlier than 2025-02-09 |
| 22 | 37100.37300.37600.37900.97600.103000.184000 | **Basement 2 Slab/GF** | 24.38d | 2025-02-10 | 2025-03-06 |  | 100% | start no earlier than 2025-02-10 |
| 23 |  | Reinforcement | 18d | 2025-02-10 | 2025-03-01 | 21FS-2d | 100% | start no earlier than 2025-02-10 |
| 24 |  | Formwork | 13d | 2025-02-13 | 2025-03-01 | 23SS+3d | 100% | start no earlier than 2025-02-13 |
| 25 |  | Concreting | 3.5d | 2025-02-25 | 2025-03-05 | 24 | 100% | start no earlier than 2025-02-25 |
| 26 |  | Concreting | 3.5d | 2025-02-27 | 2025-03-06 | 25 | 100% |  |
| 27 | 37100.37300.37600.37900.97600.103000.183900 | **Podium /Ground Floor Slab** | 30.62d | 2025-03-10 | 2025-04-09 |  | 100% | start no earlier than 2025-03-10 |
| 28 |  | Reinforcement | 20d | 2025-03-10 | 2025-04-05 | 26FS+2.38d | 100% | start no earlier than 2025-03-10 |
| 29 |  | Formwork | 22d | 2025-03-10 | 2025-04-06 | 28FF | 100% | start no earlier than 2025-03-10 |
| 30 |  | Concreting | 1d | 2025-04-08 | 2025-04-09 | 29FF+3.62d | 100% | start no earlier than 2025-04-08 |
| 31 | 37100.37300.37600.37900.97600.184400 | **Substructure Finishing** | 174.81d | 2025-11-30 | 2026-06-02 |  |  | start no earlier than 2025-11-30 |
| 32 |  | Masonary work | 89.94d | 2025-11-30 | 2026-03-09 | 30FS+26.75d |  |  |
| 33 |  | Plaster | 39.94d | 2026-03-09 | 2026-04-18 | 32 |  |  |
| 34 |  | Structural steel | 59.94d | 2025-11-30 | 2026-02-07 | 30FS+53.38d |  |  |
| 35 |  | White Wash | 44.94d | 2026-04-18 | 2026-06-02 | 33 |  |  |
| 36 | 37100.37300.37600.37900.38900 | **Superstructure** | 864.88d | 2025-04-14 | 2027-11-01 |  | 5% | start no earlier than 2025-04-14 |
| 37 | 37100.37300.37600.37900.38900.43300 | **RCC structure** | 573.31d | 2025-04-14 | 2027-01-14 |  | 38% | start no earlier than 2025-04-14 |
| 38 | 37100.37300.37600.37900.38900.43300.127400 | **1st floor slab** | 45d | 2025-04-14 | 2025-05-28 |  | 100% | start no earlier than 2025-04-14 |
| 39 |  | Reinforcement | 20d | 2025-04-14 | 2025-05-07 | 30FS+1.88d | 100% | start no earlier than 2025-04-14 |
| 40 |  | Wall conduiting | 4d | 2025-04-16 | 2025-04-30 | 39SS+1.75d | 100% | start no earlier than 2025-04-16 |
| 41 |  | Formwork | 30d | 2025-04-15 | 2025-05-25 | 39SS+3d | 100% | start no earlier than 2025-04-15 |
| 42 |  | Concreting | 8d | 2025-05-16 | 2025-05-28 | 41SS+26d | 100% | start no earlier than 2025-05-16 |
| 43 | 37100.37300.37600.37900.38900.43300.127300 | **2nd floor slab** | 51d | 2025-05-18 | 2025-07-07 |  | 100% | start no earlier than 2025-05-18 |
| 44 |  | Reinforcement | 25d | 2025-05-18 | 2025-06-27 | 42SS+6d | 100% | start no earlier than 2025-05-18 |
| 45 |  | Wall conduiting | 19d | 2025-05-22 | 2025-06-28 | 40, 44SS+2.75d | 100% | start no earlier than 2025-05-22 |
| 46 |  | Formwork | 30d | 2025-05-19 | 2025-07-01 | 44SS+3d | 100% | start no earlier than 2025-05-19 |
| 47 |  | Concreting | 9d | 2025-06-26 | 2025-07-07 | 46 | 100% | start no earlier than 2025-06-26 |
| 48 | 37100.37300.37600.37900.38900.43300.127200 | **3rd floor slab** | 29d | 2025-06-30 | 2025-07-28 |  | 100% | start no earlier than 2025-06-30 |
| 49 |  | Reinforcement | 9d | 2025-06-30 | 2025-07-28 | 47FS+1d | 100% | start no earlier than 2025-06-30 |
| 50 |  | Wall conduiting | 10d | 2025-07-02 | 2025-07-28 | 45, 49SS+2.75d | 100% | start no earlier than 2025-07-02 |
| 51 |  | Formwork | 10d | 2025-07-03 | 2025-07-28 | 49SS+3d | 100% | start no earlier than 2025-07-03 |
| 52 |  | Concreting | 2d | 2025-07-21 | 2025-07-28 | 51FS-7d | 100% | start no earlier than 2025-07-21 |
| 53 | 37100.37300.37600.37900.38900.43300.127100 | **4th floor slab** | 18d | 2025-07-28 | 2025-08-14 |  | 100% | start no earlier than 2025-07-28 |
| 54 |  | Reinforcement | 6d | 2025-07-28 | 2025-08-11 | 52FS-5d | 100% | start no earlier than 2025-07-28 |
| 55 |  | Wall conduiting | 3d | 2025-07-29 | 2025-08-11 | 50, 54SS+1d | 100% | start no earlier than 2025-07-29 |
| 56 |  | Formwork | 7d | 2025-07-29 | 2025-08-13 | 54SS+1d | 100% | start no earlier than 2025-07-29 |
| 57 |  | Concreting | 4d | 2025-08-09 | 2025-08-14 | 56FS-3d | 100% | start no earlier than 2025-08-09 |
| 58 | 37100.37300.37600.37900.38900.43300.127000 | **5th floor slab** | 20d | 2025-08-11 | 2025-08-30 |  | 100% | start no earlier than 2025-08-11 |
| 59 |  | Reinforcement | 8d | 2025-08-11 | 2025-08-27 | 57FS-4d | 100% | start no earlier than 2025-08-11 |
| 60 |  | Wall conduiting | 8d | 2025-08-11 | 2025-08-30 | 55, 59SS+1d | 100% | start no earlier than 2025-08-11 |
| 61 |  | Formwork | 7d | 2025-08-12 | 2025-08-28 | 59SS+1d | 100% | start no earlier than 2025-08-12 |
| 62 |  | Concreting | 3d | 2025-08-24 | 2025-08-28 | 61FS-3d | 100% | start no earlier than 2025-08-24 |
| 63 | 37100.37300.37600.37900.38900.43300.126800 | **6th floor slab** | 17d | 2025-08-24 | 2025-09-09 |  | 100% | start no earlier than 2025-08-24 |
| 64 |  | Reinforcement | 8d | 2025-08-24 | 2025-09-08 | 62FS+1d | 100% | start no earlier than 2025-08-24 |
| 65 |  | Wall conduiting | 3d | 2025-08-25 | 2025-09-08 | 60, 64SS+1d | 100% | start no earlier than 2025-08-25 |
| 66 |  | Formwork | 7d | 2025-08-25 | 2025-09-08 | 64SS+1d | 100% | start no earlier than 2025-08-25 |
| 67 |  | Concreting | 1d | 2025-09-09 | 2025-09-09 | 66 | 100% | start no earlier than 2025-09-09 |
| 68 | 37100.37300.37600.37900.38900.43300.126700 | **7th floor slab** | 15d | 2025-09-09 | 2025-09-23 |  | 100% | start no earlier than 2025-09-09 |
| 69 |  | Reinforcement | 8d | 2025-09-09 | 2025-09-22 | 67FS+1d | 100% | start no earlier than 2025-09-09 |
| 70 |  | Wall conduiting | 3d | 2025-09-10 | 2025-09-22 | 65, 69SS+1d | 100% | start no earlier than 2025-09-10 |

| ID | WBS | Task | Duration | Start | Finish | Predecessors | Complete | Constraint |
| --- | --- | --- | --- | --- | --- | --- | --- | --- |
| 71 |  | Formwork | 7d | 2025-09-10 | 2025-09-22 | 69SS+1d | 100% | start no earlier than 2025-09-10 |
| 72 |  | Concreting | 4d | 2025-09-15 | 2025-09-23 | 71FS-7d | 100% | start no earlier than 2025-09-15 |
| 73 | 37100.37300.37600.37900.38900.43300.126600 | **8th floor slab** | 23d | 2025-09-18 | 2025-10-10 |  | 100% | start no earlier than 2025-09-18 |
| 74 |  | Reinforcement | 10d | 2025-09-18 | 2025-10-06 | 72FS-12d | 100% | start no earlier than 2025-09-18 |
| 75 |  | Wall conduiting | 3d | 2025-09-18 | 2025-10-01 | 70, 74SS+1d | 100% | start no earlier than 2025-09-18 |
| 76 |  | Formwork | 10d | 2025-09-18 | 2025-10-06 | 74SS+1d | 100% | start no earlier than 2025-09-18 |
| 77 |  | Concreting | 7d | 2025-10-01 | 2025-10-10 | 76 | 100% | start no earlier than 2025-10-01 |
| 78 | 37100.37300.37600.37900.38900.43300.126500 | **9th floor slab** | 21d | 2025-10-04 | 2025-10-24 |  | 100% | start no earlier than 2025-10-04 |
| 79 |  | Reinforcement | 12d | 2025-10-04 | 2025-10-23 | 77FS+1d | 100% | start no earlier than 2025-10-04 |
| 80 |  | Wall conduiting | 13d | 2025-10-05 | 2025-10-23 | 75, 79SS+1d | 100% | start no earlier than 2025-10-05 |
| 81 |  | Formwork | 17d | 2025-10-05 | 2025-10-23 | 79SS+1d | 100% | start no earlier than 2025-10-05 |
| 82 |  | Concreting | 6d | 2025-10-16 | 2025-10-24 | 81FS-6d | 100% | start no earlier than 2025-10-16 |
| 83 | 37100.37300.37600.37900.38900.43300.126400 | **10th floor slab** | 19.12d | 2025-10-20 | 2025-11-06 |  | 100% | start no earlier than 2025-10-20 |
| 84 |  | Reinforcement | 8d | 2025-10-20 | 2025-11-05 | 82FS+1d | 100% | start no earlier than 2025-10-20 |
| 85 |  | Wall conduiting | 3d | 2025-10-21 | 2025-10-31 | 80, 84SS+1d | 100% | start no earlier than 2025-10-21 |
| 86 |  | Formwork | 5.62d | 2025-10-23 | 2025-11-06 | 84SS+1d | 100% | start no earlier than 2025-10-23 |
| 87 |  | Concreting | 2d | 2025-10-31 | 2025-11-06 | 86FS-7.12d | 100% | start no earlier than 2025-10-31 |
| 88 | 37100.37300.37600.37900.38900.43300.126300 | **11th floor slab** | 10.31d | 2025-11-04 | 2025-11-27 |  | 100% | start no earlier than 2025-11-04 |
| 89 |  | Reinforcement | 5d | 2025-11-04 | 2025-11-26 | 87FS+1d | 100% | start no earlier than 2025-11-04 |
| 90 |  | Wall conduiting | 5d | 2025-11-04 | 2025-11-26 | 85, 89SS+1d | 100% | start no earlier than 2025-11-04 |
| 91 |  | Formwork | 4d | 2025-11-04 | 2025-11-26 | 89SS+1d | 100% | start no earlier than 2025-11-04 |
| 92 |  | Concreting | 1d | 2025-11-26 | 2025-11-27 | 91 | 100% | start no earlier than 2025-11-26 |
| 93 | 37100.37300.37600.37900.38900.43300.183500 | **12th floor slab** | 8.75d | 2025-11-27 | 2025-12-05 |  | 31% | start no earlier than 2025-11-27 |
| 94 |  | Reinforcement | 8d | 2025-11-27 | 2025-12-04 | 92FS+1d | 37% | start no earlier than 2025-11-27 |
| 95 |  | Wall conduiting | 3d | 2025-11-27 | 2025-12-01 | 90, 94SS+1d | 33% | start no earlier than 2025-11-27 |
| 96 |  | Formwork | 7d | 2025-11-27 | 2025-12-04 | 94SS+1d | 28% | start no earlier than 2025-11-27 |
| 97 |  | Concreting | 1d | 2025-12-04 | 2025-12-05 | 96 |  |  |
| 98 | 37100.37300.37600.37900.38900.43300.183400 | **13th floor slab** | 10d | 2025-12-22 | 2026-01-01 |  |  | start no earlier than 2025-12-22 |
| 99 |  | Reinforcement | 8d | 2025-12-22 | 2025-12-30 | 97FS+1d |  |  |
| 100 |  | Wall conduiting | 3d | 2025-12-23 | 2025-12-26 | 95, 99SS+1d |  |  |
| 101 |  | Formwork | 7d | 2025-12-23 | 2025-12-30 | 99SS+1d |  |  |
| 102 |  | Concreting | 2d | 2025-12-30 | 2026-01-01 | 101 |  |  |
| 103 | 37100.37300.37600.37900.38900.43300.183300 | **14th floor slab** | 10d | 2026-01-02 | 2026-01-12 |  |  | start no earlier than 2026-01-02 |
| 104 |  | Reinforcement | 8d | 2026-01-02 | 2026-01-10 | 102FS+1d |  |  |
| 105 |  | Wall conduiting | 3d | 2026-01-03 | 2026-01-06 | 100, 104SS+1d |  |  |
| 106 |  | Formwork | 7d | 2026-01-03 | 2026-01-10 | 104SS+1d |  |  |
| 107 |  | Concreting | 2d | 2026-01-10 | 2026-01-12 | 106 |  |  |
| 108 | 37100.37300.37600.37900.38900.43300.183200 | **15th floor slab** | 10d | 2026-01-13 | 2026-01-23 |  |  | start no earlier than 2026-01-13 |
| 109 |  | Reinforcement | 8d | 2026-01-13 | 2026-01-21 | 107FS+1d |  |  |
| 110 |  | Wall conduiting | 3d | 2026-01-14 | 2026-01-17 | 105, 109SS+1d |  |  |
| 111 |  | Formwork | 7d | 2026-01-14 | 2026-01-21 | 109SS+1d |  |  |
| 112 |  | Concreting | 2d | 2026-01-21 | 2026-01-23 | 111 |  |  |
| 113 | 37100.37300.37600.37900.38900.43300.183100 | **16th floor slab** | 8d | 2026-01-23 | 2026-01-31 |  |  | start no earlier than 2026-01-23 |
| 114 |  | Reinforcement | 7d | 2026-01-23 | 2026-01-30 | 112 |  |  |
| 115 |  | Wall conduiting | 5d | 2026-01-24 | 2026-01-29 | 110, 114SS+1d |  |  |
| 116 |  | Formwork | 6d | 2026-01-24 | 2026-01-30 | 114SS+1d |  |  |
| 117 |  | Concreting | 1d | 2026-01-30 | 2026-01-31 | 116 |  |  |
| 118 | 37100.37300.37600.37900.38900.43300.183000 | **17th floor slab** | 8d | 2026-01-31 | 2026-02-08 |  |  | start no earlier than 2026-01-31 |
| 119 |  | Reinforcement | 7d | 2026-01-31 | 2026-02-07 | 117 |  |  |
| 120 |  | Wall conduiting | 5d | 2026-02-01 | 2026-02-06 | 115, 119SS+1d |  |  |
| 121 |  | Formwork | 6d | 2026-02-01 | 2026-02-07 | 119SS+1d |  |  |
| 122 |  | Concreting | 1d | 2026-02-07 | 2026-02-08 | 121 |  |  |
| 123 | 37100.37300.37600.37900.38900.43300.182900 | **18th floor slab** | 8d | 2026-02-08 | 2026-02-16 |  |  | start no earlier than 2026-02-08 |
| 124 |  | Reinforcement | 7d | 2026-02-08 | 2026-02-15 | 122 |  |  |
| 125 |  | Wall conduiting | 5d | 2026-02-09 | 2026-02-14 | 120, 124SS+1d |  |  |
| 126 |  | Formwork | 6d | 2026-02-09 | 2026-02-15 | 124SS+1d |  |  |
| 127 |  | Concreting | 1d | 2026-02-15 | 2026-02-16 | 126 |  |  |
| 128 | 37100.37300.37600.37900.38900.43300.182800 | **19th floor slab** | 8d | 2026-02-16 | 2026-02-24 |  |  | start no earlier than 2026-02-16 |
| 129 |  | Reinforcement | 7d | 2026-02-16 | 2026-02-23 | 127 |  |  |
| 130 |  | Wall conduiting | 3d | 2026-02-17 | 2026-02-20 | 125, 129SS+1d |  |  |
| 131 |  | Formwork | 6d | 2026-02-17 | 2026-02-23 | 129SS+1d |  |  |
| 132 |  | Concreting | 1d | 2026-02-23 | 2026-02-24 | 131 |  |  |
| 133 | 37100.37300.37600.37900.38900.43300.182700 | **20th floor slab** | 8d | 2026-02-24 | 2026-03-04 |  |  | start no earlier than 2026-02-24 |
| 134 |  | Reinforcement | 7d | 2026-02-24 | 2026-03-03 | 132 |  |  |
| 135 |  | Wall conduiting | 3d | 2026-02-25 | 2026-02-28 | 130, 134SS+1d |  |  |
| 136 |  | Formwork | 6d | 2026-02-25 | 2026-03-03 | 134SS+1d |  |  |
| 137 |  | Concreting | 1d | 2026-03-03 | 2026-03-04 | 136 |  |  |
| 138 | 37100.37300.37600.37900.38900.43300.182600 | **21st floor slab** | 10d | 2026-03-05 | 2026-03-15 |  |  | start no earlier than 2026-03-05 |
| 139 |  | Reinforcement | 8d | 2026-03-05 | 2026-03-13 | 137FS+1d |  |  |
| 140 |  | Wall conduiting | 3d | 2026-03-06 | 2026-03-09 | 135, 139SS+1d |  |  |

| ID | WBS | Task | Duration | Start | Finish | Predecessors | Constraint |
| --- | --- | --- | --- | --- | --- | --- | --- |
| 141 |  | Formwork | 7d | 2026-03-06 | 2026-03-13 | 139SS+1d |  |
| 142 |  | Concreting | 2d | 2026-03-13 | 2026-03-15 | 141 |  |
| 143 | 37100.37300.37600.37900.38900.43300.182500 | **22nd floor slab** | 10d | 2026-03-21 | 2026-03-31 |  | start no earlier than 2026-03-21 |
| 144 |  | Reinforcement | 8d | 2026-03-21 | 2026-03-29 | 142FS+6d |  |
| 145 |  | Wall conduiting | 3d | 2026-03-22 | 2026-03-25 | 140, 144SS+1d |  |
| 146 |  | Formwork | 7d | 2026-03-22 | 2026-03-29 | 144SS+1d |  |
| 147 |  | Concreting | 2d | 2026-03-29 | 2026-03-31 | 146 |  |
| 148 | 37100.37300.37600.37900.38900.43300.182400 | **23rd floor slab** | 10d | 2026-04-04 | 2026-04-14 |  | start no earlier than 2026-04-04 |
| 149 |  | Reinforcement | 8d | 2026-04-04 | 2026-04-12 | 147FS+4d |  |
| 150 |  | Wall conduiting | 3d | 2026-04-05 | 2026-04-08 | 145, 149SS+1d |  |
| 151 |  | Formwork | 7d | 2026-04-05 | 2026-04-12 | 149SS+1d |  |
| 152 |  | Concreting | 2d | 2026-04-12 | 2026-04-14 | 151 |  |
| 153 | 37100.37300.37600.37900.38900.43300.182300 | **24th floor slab** | 12d | 2026-04-18 | 2026-04-30 |  | start no earlier than 2026-04-18 |
| 154 |  | Reinforcement | 10d | 2026-04-18 | 2026-04-28 | 152FS+4d |  |
| 155 |  | Wall conduiting | 3d | 2026-04-19 | 2026-04-22 | 150, 154SS+1d |  |
| 156 |  | Formwork | 10d | 2026-04-19 | 2026-04-29 | 154SS+1d |  |
| 157 |  | Concreting | 1d | 2026-04-29 | 2026-04-30 | 156 |  |
| 158 | 37100.37300.37600.37900.38900.43300.182200 | **25th floor slab** | 12d | 2026-05-01 | 2026-05-13 |  | start no earlier than 2026-05-01 |
| 159 |  | Reinforcement | 10d | 2026-05-01 | 2026-05-11 | 157FS+1d |  |
| 160 |  | Wall conduiting | 3d | 2026-05-02 | 2026-05-05 | 155, 159SS+1d |  |
| 161 |  | Formwork | 10d | 2026-05-02 | 2026-05-12 | 159SS+1d |  |
| 162 |  | Concreting | 1d | 2026-05-12 | 2026-05-13 | 161 |  |
| 163 | 37100.37300.37600.37900.38900.43300.182100 | **26th floor slab** | 10d | 2026-05-14 | 2026-05-24 |  | start no earlier than 2026-05-14 |
| 164 |  | Reinforcement | 8d | 2026-05-14 | 2026-05-22 | 162FS+1d |  |
| 165 |  | Wall conduiting | 3d | 2026-05-15 | 2026-05-18 | 160, 164SS+1d |  |
| 166 |  | Formwork | 7d | 2026-05-15 | 2026-05-22 | 164SS+1d |  |
| 167 |  | Concreting | 2d | 2026-05-22 | 2026-05-24 | 166 |  |
| 168 | 37100.37300.37600.37900.38900.43300.182000 | **27th floor slab** | 10d | 2026-05-25 | 2026-06-04 |  | start no earlier than 2026-05-25 |
| 169 |  | Reinforcement | 8d | 2026-05-25 | 2026-06-02 | 167FS+1d |  |
| 170 |  | Wall conduiting | 3d | 2026-05-26 | 2026-05-29 | 165, 169SS+1d |  |
| 171 |  | Formwork | 7d | 2026-05-26 | 2026-06-02 | 169SS+1d |  |
| 172 |  | Concreting | 2d | 2026-06-02 | 2026-06-04 | 171 |  |
| 173 | 37100.37300.37600.37900.38900.43300.181900 | **28th floor slab** | 10d | 2026-06-09 | 2026-06-19 |  | start no earlier than 2026-06-09 |
| 174 |  | Reinforcement | 8d | 2026-06-09 | 2026-06-17 | 172FS+5d |  |
| 175 |  | Wall conduiting | 3d | 2026-06-10 | 2026-06-13 | 170, 174SS+1d |  |
| 176 |  | Formwork | 7d | 2026-06-10 | 2026-06-17 | 174SS+1d |  |
| 177 |  | Concreting | 2d | 2026-06-17 | 2026-06-19 | 176 |  |
| 178 | 37100.37300.37600.37900.38900.43300.181800 | **29th floor slab** | 8d | 2026-06-24 | 2026-07-02 |  | start no earlier than 2026-06-24 |
| 179 |  | Reinforcement | 7d | 2026-06-24 | 2026-07-01 | 177FS+5d |  |
| 180 |  | Wall conduiting | 3d | 2026-06-25 | 2026-06-28 | 175, 179SS+1d |  |
| 181 |  | Formwork | 6d | 2026-06-25 | 2026-07-01 | 179SS+1d |  |
| 182 |  | Concreting | 1d | 2026-07-01 | 2026-07-02 | 181 |  |
| 183 | 37100.37300.37600.37900.38900.43300.181700 | **30th floor slab** | 10d | 2026-07-07 | 2026-07-17 |  | start no earlier than 2026-07-07 |
| 184 |  | Reinforcement | 7d | 2026-07-07 | 2026-07-14 | 182FS+5d |  |
| 185 |  | Wall conduiting | 3d | 2026-07-08 | 2026-07-11 | 180, 184SS+1d |  |
| 186 |  | Formwork | 8d | 2026-07-08 | 2026-07-16 | 184SS+1d |  |
| 187 |  | Concreting | 1d | 2026-07-16 | 2026-07-17 | 186 |  |
| 188 | 37100.37300.37600.37900.38900.43300.181600 | **31st floor slab** | 10d | 2026-07-17 | 2026-07-27 |  | start no earlier than 2026-07-17 |
| 189 |  | Reinforcement | 7d | 2026-07-17 | 2026-07-24 | 187 |  |
| 190 |  | Wall conduiting | 3d | 2026-07-18 | 2026-07-21 | 185, 189SS+1d |  |
| 191 |  | Formwork | 8d | 2026-07-18 | 2026-07-26 | 189SS+1d |  |
| 192 |  | Concreting | 1d | 2026-07-26 | 2026-07-27 | 191 |  |
| 193 | 37100.37300.37600.37900.38900.43300.181500 | **32nd floor slab** | 17.88d | 2026-08-01 | 2026-08-19 |  | start no earlier than 2026-08-01 |
| 194 |  | Reinforcement | 14d | 2026-08-01 | 2026-08-15 | 192FS+5d |  |
| 195 |  | Wall conduiting | 6d | 2026-08-02 | 2026-08-08 | 190, 194SS+1d |  |
| 196 |  | Formwork | 14d | 2026-08-03 | 2026-08-17 | 194SS+1.88d |  |
| 197 |  | Concreting | 2d | 2026-08-17 | 2026-08-19 | 196 |  |
| 198 | 37100.37300.37600.37900.38900.43300.181400 | **33rd floor slab** | 11.75d | 2026-08-24 | 2026-09-04 |  | start no earlier than 2026-08-24 |
| 199 |  | Reinforcement | 8.94d | 2026-08-24 | 2026-09-02 | 197FS+5d |  |
| 200 |  | Wall conduiting | 1.94d | 2026-08-25 | 2026-08-27 | 195, 199SS+1d |  |
| 201 |  | Formwork | 8.94d | 2026-08-26 | 2026-09-03 | 199SS+1.88d |  |
| 202 |  | Concreting | 0.94d | 2026-09-03 | 2026-09-04 | 201 |  |
| 203 | 37100.37300.37600.37900.38900.43300.181300 | **34th floor slab** | 14.88d | 2026-09-04 | 2026-09-19 |  | start no earlier than 2026-09-04 |
| 204 |  | Reinforcement | 11d | 2026-09-04 | 2026-09-15 | 202 |  |
| 205 |  | Wall conduiting | 6d | 2026-09-05 | 2026-09-11 | 200, 204SS+1d |  |
| 206 |  | Formwork | 11d | 2026-09-06 | 2026-09-17 | 204SS+1.88d |  |
| 207 |  | Concreting | 2d | 2026-09-17 | 2026-09-19 | 206 |  |
| 208 | 37100.37300.37600.37900.38900.43300.181200 | **35th floor slab** | 11.75d | 2026-09-19 | 2026-10-01 |  | start no earlier than 2026-09-19 |
| 209 |  | Reinforcement | 8.94d | 2026-09-19 | 2026-09-28 | 207 |  |
| 210 |  | Wall conduiting | 1.94d | 2026-09-20 | 2026-09-22 | 205, 209SS+1d |  |

| ID | WBS | Task | Duration | Start | Finish | Predecessors | Constraint |
| --- | --- | --- | --- | --- | --- | --- | --- |
| 211 |  | Formwork | 7.94d | 2026-09-22 | 2026-09-30 | 210SS+1.88d |  |
| 212 |  | Concreting | 0.94d | 2026-09-30 | 2026-10-01 | 211 |  |
| 213 | 37100.37300.37600.37900.38900.43300.181100 | **Terrace floor slab** | 17.88d | 2026-10-01 | 2026-10-19 |  | start no earlier than 2026-10-01 |
| 214 |  | Reinforcement | 16d | 2026-10-01 | 2026-10-17 | 212 |  |
| 215 |  | Wall conduiting | 9d | 2026-10-02 | 2026-10-11 | 210, 214SS+1d |  |
| 216 |  | Formwork | 13d | 2026-10-03 | 2026-10-16 | 214SS+1.88d |  |
| 217 |  | Concreting | 3d | 2026-10-16 | 2026-10-19 | 216 |  |
| 218 | 37100.37300.37600.37900.38900.43300.181000 | **OHT & Mumty** | 41.81d | 2026-10-19 | 2027-01-14 |  | start no earlier than 2026-10-19 |
| 219 |  | Reinforcement | 29.94d | 2026-10-19 | 2027-01-02 | 217 |  |
| 220 |  | Wall conduiting | 4.94d | 2026-10-20 | 2026-10-25 | 215, 219SS+1d |  |
| 221 |  | Formwork | 32.94d | 2026-10-25 | 2027-01-11 | 219SS+3.62d, 220 |  |
| 222 |  | Concreting | 2.94d | 2027-01-11 | 2027-01-14 | 221 |  |
| 223 | 37100.37300.37600.37900.38900.44900 | **Post Pour Activities** | 397.94d | 2025-11-30 | 2027-02-25 |  | start no earlier than 2025-11-30 |
| 224 |  | 1st Floor | 7d | 2025-11-30 | 2025-12-16 | 52FS+0.25d |  |
| 225 |  | 2nd Floor | 7d | 2025-12-16 | 2025-12-23 | 224FS+0.25d, 57FS+0.25d |  |
| 226 |  | 3rd Floor | 7d | 2025-12-23 | 2025-12-30 | 225FS+0.25d, 62FS+0.25d |  |
| 227 |  | 4th Floor | 7d | 2025-12-31 | 2026-01-06 | 226FS+0.25d, 67FS+0.25d |  |
| 228 |  | 5th Floor | 7d | 2026-01-07 | 2026-01-14 | 227FS+0.25d, 72FS+0.25d |  |
| 229 |  | 6th Floor | 7d | 2026-01-14 | 2026-01-21 | 228FS+0.25d, 77FS+0.25d |  |
| 230 |  | 7th Floor | 7d | 2026-01-21 | 2026-01-28 | 229FS+0.25d, 82FS+0.25d |  |
| 231 |  | 8th Floor | 7d | 2026-01-29 | 2026-02-04 | 230FS+0.25d, 87FS+0.25d |  |
| 232 |  | 9th Floor | 7d | 2026-02-05 | 2026-02-12 | 231FS+0.25d, 92FS+0.25d |  |
| 233 |  | 10th Floor | 7d | 2026-02-12 | 2026-02-19 | 232FS+0.25d, 97FS+0.25d |  |
| 234 |  | 11th Floor | 7d | 2026-02-19 | 2026-02-26 | 233FS+0.25d, 102FS+0.25d |  |
| 235 |  | 12th Floor | 7d | 2026-02-27 | 2026-03-05 | 234FS+0.25d, 107FS+0.25d |  |
| 236 |  | 13th Floor | 7d | 2026-03-06 | 2026-03-13 | 235FS+0.25d, 112FS+0.25d |  |
| 237 |  | 14th Floor | 7d | 2026-03-13 | 2026-03-20 | 236, 132 |  |
| 238 |  | 15th Floor | 7d | 2026-03-20 | 2026-03-27 | 237, 137 |  |
| 239 |  | 16th Floor | 7d | 2026-03-27 | 2026-04-03 | 238, 142 |  |
| 240 |  | 17th Floor | 7d | 2026-04-03 | 2026-04-10 | 239, 147 |  |
| 241 |  | 18th Floor | 7d | 2026-04-14 | 2026-04-21 | 240, 152 |  |
| 242 |  | 19th Floor | 7d | 2026-04-30 | 2026-05-07 | 241, 157 |  |
| 243 |  | 20th Floor | 7d | 2026-05-13 | 2026-05-20 | 242, 162 |  |
| 244 |  | 21st Floor | 7d | 2026-05-24 | 2026-05-31 | 243, 167 |  |
| 245 |  | 22nd Floor | 7d | 2026-06-04 | 2026-06-11 | 244, 172 |  |
| 246 |  | 23rd Floor | 7d | 2026-06-19 | 2026-06-26 | 245, 177 |  |
| 247 |  | 24th Floor | 7d | 2026-07-02 | 2026-07-09 | 246, 182 |  |
| 248 |  | 25th Floor | 7d | 2026-07-17 | 2026-07-24 | 247, 187 |  |
| 249 |  | 26th Floor | 7d | 2026-07-27 | 2026-08-03 | 248, 192 |  |
| 250 |  | 27th Floor | 7d | 2026-08-19 | 2026-08-26 | 249, 197 |  |
| 251 |  | 28th Floor | 7d | 2026-09-04 | 2026-09-11 | 250, 202 |  |
| 252 |  | 29th Floor | 7d | 2026-09-19 | 2026-09-26 | 251, 207 |  |
| 253 |  | 30th Floor | 7d | 2026-10-01 | 2026-10-08 | 252, 212 |  |
| 254 |  | 31st Floor | 7d | 2026-10-19 | 2026-10-26 | 253, 217 |  |
| 255 |  | 32nd Flood | 7d | 2027-01-14 | 2027-01-21 | 254, 222 |  |
| 256 |  | 33rd Floor | 7d | 2027-01-21 | 2027-01-28 | 255 |  |
| 257 |  | 34th Floor | 7d | 2027-01-28 | 2027-02-04 | 256 |  |
| 258 |  | 35th Floor | 7d | 2027-02-04 | 2027-02-11 | 257 |  |
| 259 |  | Terrace | 7d | 2027-02-11 | 2027-02-18 | 258 |  |
| 260 |  | Mumty & Machine Room | 7d | 2027-02-18 | 2027-02-25 | 259 |  |
| 261 | 37100.37300.37600.37900.38900.40300 | **Finishing work** | 646.38d | 2025-12-01 | 2027-11-01 |  | start no earlier than 2025-12-01 |
| 262 | 37100.37300.37600.37900.38900.40300.41300 | **Flat finishing** | 624.56d | 2025-12-16 | 2027-10-16 |  | start no earlier than 2025-12-16 |
| 263 | 37100.37300.37600.37900.38900.40300.41300.80300 | **1st Floor** | 98d | 2025-12-16 | 2026-03-24 |  | start no earlier than 2025-12-16 |
| 264 |  | Block Work | 5d | 2025-12-16 | 2025-12-21 | 224 |  |
| 265 |  | Door Frame Fixing | 9d | 2025-12-21 | 2025-12-30 | 264 |  |
| 266 |  | Internal Plumbing Works | 8d | 2025-12-21 | 2025-12-29 | 264 |  |
| 267 |  | Waterproofing | 10d | 2025-12-29 | 2026-01-08 | 266 |  |
| 268 |  | Internal Plaster | 5d | 2025-12-16 | 2025-12-21 | 264SS+0.25d |  |
| 269 |  | IPS flooring work | 10d | 2026-01-08 | 2026-01-18 | 265, 266, 267 |  |
| 270 |  | Toilet dado work | 8d | 2026-01-08 | 2026-01-16 | 267, 268 |  |
| 271 |  | Toilet flooring work | 8d | 2026-01-16 | 2026-01-24 | 270FS+0.25d |  |
| 272 |  | Living dinning flooring | 7d | 2026-02-13 | 2026-02-20 | 265FS+45d |  |
| 273 |  | Aluminium door-window fixing | 7d | 2026-03-04 | 2026-03-11 | 269FS+45d |  |
| 274 |  | Putty primer coat | 6d | 2026-02-20 | 2026-02-26 | 272 |  |
| 275 |  | Door shutter fixing | 8d | 2026-02-20 | 2026-02-28 | 272 |  |
| 276 |  | Electrical wiring work | 8d | 2026-02-28 | 2026-03-08 | 275 |  |
| 277 |  | Painting 1st coat | 8d | 2026-03-08 | 2026-03-16 | 274, 275, 276 |  |
| 278 |  | False Cieling panel fixing | 8d | 2026-03-16 | 2026-03-24 | 277 |  |
| 279 | 37100.37300.37600.37900.38900.40300.41300.76700 | **2nd Floor** | 319.31d | 2025-12-22 | 2026-12-21 |  | start no earlier than 2025-12-22 |
| 280 |  | Block Work | 5d | 2025-12-23 | 2025-12-28 | 225, 264 |  |

| ID | WBS | Task | Duration | Start | Finish | Predecessors | Constraint |
| --- | --- | --- | --- | --- | --- | --- | --- |
| 281 |  | Door Frame Fixing | 9d | 2025-12-30 | 2026-01-08 | 265, 280 |  |
| 282 |  | Internal Plumbing Works | 8d | 2025-12-29 | 2026-01-06 | 266, 280 |  |
| 283 |  | Waterproofing | 10d | 2026-01-08 | 2026-01-18 | 267, 282 |  |
| 284 |  | Internal Plaster | 5d | 2025-12-22 | 2025-12-27 | 268FS+1d |  |
| 285 |  | IPS flooring work | 10d | 2026-01-18 | 2026-01-28 | 269, 281, 282, 283 |  |
| 286 |  | Toilet dado work | 8d | 2026-01-18 | 2026-01-26 | 270, 283, 284 |  |
| 287 |  | Toilet flooring work | 8d | 2026-01-26 | 2026-02-03 | 271, 286 |  |
| 288 |  | Living dinning flooring | 7d | 2026-02-20 | 2026-02-27 | 272, 281, 287 |  |
| 289 |  | Aluminium door-window fixing | 15d | 2026-03-11 | 2026-03-26 | 273, 285, 288 |  |
| 290 |  | Putty primer coat | 6d | 2026-02-27 | 2026-03-05 | 274, 288 |  |
| 291 |  | Door shutter fixing | 8d | 2026-02-28 | 2026-03-08 | 275, 288 |  |
| 292 |  | Electrical wiring work | 15d | 2026-10-06 | 2026-10-21 | 610FS+0.25d |  |
| 293 |  | Painting 1st coat | 8d | 2026-10-21 | 2026-10-29 | 277, 290, 291, 292 |  |
| 294 |  | False ceiling | 8d | 2026-10-29 | 2026-12-21 | 278, 293 |  |
| 295 | 37100.37300.37600.37900.38900.40300.41300.76600 | **3rd Floor** | 322.06d | 2025-12-27 | 2026-12-29 |  | start no earlier than 2025-12-27 |
| 296 |  | Block Work | 5d | 2025-12-28 | 2026-01-02 | 280FS+0.25d |  |
| 297 |  | Door Frame Fixing | 9d | 2026-01-08 | 2026-01-17 | 281, 296 |  |
| 298 |  | Internal Plumbing Works | 8d | 2026-01-06 | 2026-01-14 | 282, 296 |  |
| 299 |  | Waterproofing | 10d | 2026-01-18 | 2026-01-28 | 283, 298 |  |
| 300 |  | Internal Plaster | 5d | 2025-12-27 | 2026-01-01 | 284FS+0.25d |  |
| 301 |  | IPS flooring work | 10d | 2026-01-28 | 2026-02-07 | 285, 297, 299, 300 |  |
| 302 |  | Toilet dado work | 8d | 2026-01-26 | 2026-02-03 | 286FS+0.25d |  |
| 303 |  | Toilet flooring work | 8d | 2026-02-03 | 2026-02-11 | 287, 302 |  |
| 304 |  | Living dinning flooring | 15d | 2026-02-27 | 2026-03-14 | 288, 297, 303 |  |
| 305 |  | Aluminium door-window fixing | 15d | 2026-03-26 | 2026-04-10 | 289, 301, 304 |  |
| 306 |  | Putty primer coat | 6d | 2026-03-14 | 2026-03-20 | 290, 304 |  |
| 307 |  | Door shutter fixing | 8d | 2026-03-14 | 2026-03-22 | 291, 304 |  |
| 308 |  | Electrical wiring work | 8d | 2026-10-21 | 2026-10-29 | 292, 307 |  |
| 309 |  | Painting 1st coat | 8d | 2026-10-29 | 2026-12-21 | 293, 306, 307, 308 |  |
| 310 |  | False ceiling | 8d | 2026-12-21 | 2026-12-29 | 294, 309 |  |
| 311 | 37100.37300.37600.37900.38900.40300.41300.76500 | **4th Floor** | 319.81d | 2026-01-07 | 2027-01-06 |  | start no earlier than 2026-01-07 |
| 312 |  | Block Work | 5d | 2026-01-07 | 2026-01-11 | 227, 296 |  |
| 313 |  | Door Frame Fixing | 9d | 2026-01-17 | 2026-01-26 | 297, 312 |  |
| 314 |  | Internal Plumbing Works | 8d | 2026-01-14 | 2026-01-22 | 298, 312 |  |
| 315 |  | Waterproofing | 10d | 2026-01-28 | 2026-02-07 | 299, 314 |  |
| 316 |  | Internal Plaster | 5d | 2026-02-07 | 2026-02-12 | 300, 313, 314, 315 |  |
| 317 |  | IPS flooring work | 10d | 2026-02-12 | 2026-02-22 | 301, 313, 315, 316 |  |
| 318 |  | Toilet dado work | 8d | 2026-02-12 | 2026-02-20 | 302, 315, 316 |  |
| 319 |  | Toilet flooring work | 8d | 2026-02-20 | 2026-02-28 | 303, 318 |  |
| 320 |  | Living dinning flooring | 7d | 2026-03-14 | 2026-03-21 | 304FS+0.25d |  |
| 321 |  | Aluminium door-window fixing | 7d | 2026-04-10 | 2026-04-17 | 305, 317, 320 |  |
| 322 |  | Putty primer coat | 6d | 2026-03-21 | 2026-03-27 | 306, 320 |  |
| 323 |  | Door shutter fixing | 8d | 2026-03-22 | 2026-03-30 | 307, 320 |  |
| 324 |  | Electrical wiring work | 8d | 2026-10-29 | 2026-12-21 | 308, 323 |  |
| 325 |  | Painting 1st coat | 8d | 2026-12-21 | 2026-12-29 | 309, 322, 323, 324 |  |
| 326 |  | False ceiling | 8d | 2026-12-29 | 2027-01-06 | 310, 325 |  |
| 327 | 37100.37300.37600.37900.38900.40300.41300.76400 | **5th Floor** | 320.56d | 2026-01-14 | 2027-01-14 |  | start no earlier than 2026-01-14 |
| 328 |  | Block Work | 5d | 2026-01-14 | 2026-01-19 | 228, 312 |  |
| 329 |  | Door Frame Fixing | 9d | 2026-01-26 | 2026-02-04 | 313, 328 |  |
| 330 |  | Internal Plumbing Works | 8d | 2026-01-22 | 2026-01-30 | 314, 328 |  |
| 331 |  | Waterproofing | 10d | 2026-02-07 | 2026-02-17 | 315, 330 |  |
| 332 |  | Internal Plaster | 5d | 2026-02-17 | 2026-02-22 | 316, 329, 330, 331 |  |
| 333 |  | IPS flooring work | 10d | 2026-02-22 | 2026-03-04 | 317, 329, 331, 332 |  |
| 334 |  | Toilet dado work | 8d | 2026-02-22 | 2026-03-02 | 318, 331, 332 |  |
| 335 |  | Toilet flooring work | 8d | 2026-03-02 | 2026-03-10 | 319, 334 |  |
| 336 |  | Living dinning flooring | 7d | 2026-03-21 | 2026-03-28 | 320, 329, 335 |  |
| 337 |  | Aluminium door-window fixing | 7d | 2026-04-17 | 2026-04-24 | 321, 333, 336 |  |
| 338 |  | Putty primer coat | 6d | 2026-03-28 | 2026-04-03 | 322, 336 |  |
| 339 |  | Door shutter fixing | 8d | 2026-03-30 | 2026-04-07 | 323, 336 |  |
| 340 |  | Electrical wiring work | 8d | 2026-12-21 | 2026-12-29 | 324, 339 |  |
| 341 |  | Painting 1st coat | 8d | 2026-12-29 | 2027-01-06 | 325, 338, 339, 340 |  |
| 342 |  | False ceiling | 8d | 2027-01-06 | 2027-01-14 | 326, 341 |  |
| 343 | 37100.37300.37600.37900.38900.40300.41300.76300 | **6th Floor** | 321.31d | 2026-01-21 | 2027-01-22 |  | start no earlier than 2026-01-21 |
| 344 |  | Block Work | 5d | 2026-01-21 | 2026-01-26 | 229, 328 |  |
| 345 |  | Door Frame Fixing | 9d | 2026-02-04 | 2026-02-13 | 77, 329 |  |
| 346 |  | Internal Plumbing Works | 8d | 2026-01-30 | 2026-02-07 | 330, 344 |  |
| 347 |  | Waterproofing | 10d | 2026-02-17 | 2026-02-27 | 331, 346 |  |
| 348 |  | Internal Plaster | 5d | 2026-02-27 | 2026-03-04 | 332, 345, 346, 347 |  |
| 349 |  | IPS flooring work | 10d | 2026-03-04 | 2026-03-14 | 333, 345, 347, 348 |  |
| 350 |  | Toilet dado work | 8d | 2026-03-04 | 2026-03-12 | 334, 347, 348 |  |

| ID | WBS | Task | Duration | Start | Finish | Predecessors | Constraint |
| --- | --- | --- | --- | --- | --- | --- | --- |
| 351 |  | Toilet flooring work | 8d | 2026-03-12 | 2026-03-20 | 335, 350 |  |
| 352 |  | Living dinning flooring | 7d | 2026-03-28 | 2026-04-04 | 336, 345, 351 |  |
| 353 |  | Aluminium door-window fixing | 7d | 2026-04-24 | 2026-05-01 | 337, 349, 352 |  |
| 354 |  | Putty primer coat | 6d | 2026-04-04 | 2026-04-10 | 338, 352 |  |
| 355 |  | Door shutter fixing | 8d | 2026-04-07 | 2026-04-15 | 339, 352 |  |
| 356 |  | Electrical wiring work | 8d | 2026-12-29 | 2027-01-06 | 340, 355 |  |
| 357 |  | Painting 1st coat | 8d | 2027-01-06 | 2027-01-14 | 341, 354, 355, 356 |  |
| 358 |  | False ceiling | 8d | 2027-01-14 | 2027-01-22 | 342, 357 |  |
| 359 | 37100.37300.37600.37900.38900.40300.41300.76200 | **7th Floor** | 329.06d | 2026-01-28 | 2027-02-06 |  | start no earlier than 2026-01-28 |
| 360 |  | Block Work | 5d | 2026-01-28 | 2026-02-02 | 230, 344 |  |
| 361 |  | Door Frame Fixing | 9d | 2026-02-13 | 2026-02-22 | 345, 360 |  |
| 362 |  | Internal Plumbing Works | 8d | 2026-02-07 | 2026-02-15 | 346, 360 |  |
| 363 |  | Waterproofing | 10d | 2026-02-27 | 2026-03-09 | 347, 362 |  |
| 364 |  | Internal Plaster | 5d | 2026-03-09 | 2026-03-14 | 348, 361, 362, 363 |  |
| 365 |  | IPS flooring work | 10d | 2026-03-14 | 2026-03-24 | 349, 361, 363, 364 |  |
| 366 |  | Toilet dado work | 8d | 2026-03-14 | 2026-03-22 | 350, 363, 364 |  |
| 367 |  | Toilet flooring work | 8d | 2026-03-22 | 2026-03-30 | 351, 366 |  |
| 368 |  | Living dinning flooring | 7d | 2026-04-04 | 2026-04-11 | 352, 361, 367 |  |
| 369 |  | Aluminium door-window fixing | 7d | 2026-05-01 | 2026-05-08 | 353, 365, 368 |  |
| 370 |  | Putty primer coat | 6d | 2026-04-11 | 2026-04-17 | 354, 368 |  |
| 371 |  | Door shutter fixing | 8d | 2026-04-15 | 2026-04-23 | 355, 368 |  |
| 372 |  | Electrical wiring work | 15d | 2027-01-06 | 2027-01-21 | 356, 371 |  |
| 373 |  | Painting 1st coat | 8d | 2027-01-21 | 2027-01-29 | 357, 370, 371, 372 |  |
| 374 |  | False ceiling | 8d | 2027-01-29 | 2027-02-06 | 358, 373 |  |
| 375 | 37100.37300.37600.37900.38900.40300.41300.76100 | **8th Floor** | 336.81d | 2026-02-05 | 2027-02-21 |  | start no earlier than 2026-02-05 |
| 376 |  | Block Work | 8d | 2026-02-05 | 2026-02-12 | 231, 360 |  |
| 377 |  | Door Frame Fixing | 9d | 2026-02-22 | 2026-03-03 | 361, 376 |  |
| 378 |  | Internal Plumbing Works | 8d | 2026-02-15 | 2026-02-23 | 362, 376 |  |
| 379 |  | Waterproofing | 10d | 2026-03-09 | 2026-03-19 | 363, 378 |  |
| 380 |  | Internal Plaster | 5d | 2026-03-19 | 2026-03-24 | 364, 377, 378, 379 |  |
| 381 |  | IPS flooring work | 10d | 2026-03-24 | 2026-04-03 | 365, 377, 379, 380 |  |
| 382 |  | Toilet dado work | 8d | 2026-03-24 | 2026-04-01 | 366, 379, 380 |  |
| 383 |  | Toilet flooring work | 8d | 2026-04-01 | 2026-04-09 | 367, 382 |  |
| 384 |  | Living dinning flooring | 7d | 2026-04-11 | 2026-04-18 | 368, 377, 383 |  |
| 385 |  | Aluminium door-window fixing | 10d | 2026-05-08 | 2026-05-18 | 369, 381, 384 |  |
| 386 |  | Putty primer coat | 6d | 2026-04-18 | 2026-04-24 | 370, 384 |  |
| 387 |  | Door shutter fixing | 8d | 2026-04-23 | 2026-05-01 | 371, 384 |  |
| 388 |  | Electrical wiring work | 15d | 2027-01-21 | 2027-02-05 | 372, 387 |  |
| 389 |  | Painting 1st coat | 8d | 2027-02-05 | 2027-02-13 | 373, 386, 387, 388 |  |
| 390 |  | False ceiling | 8d | 2027-02-13 | 2027-02-21 | 374, 389 |  |
| 391 | 37100.37300.37600.37900.38900.40300.41300.76000 | **9th Floor** | 343.81d | 2026-02-13 | 2027-03-08 |  | start no earlier than 2026-02-13 |
| 392 |  | Block Work | 8d | 2026-02-13 | 2026-02-20 | 232, 376 |  |
| 393 |  | Door Frame Fixing | 9d | 2026-03-03 | 2026-03-12 | 377, 392 |  |
| 394 |  | Internal Plumbing Works | 8d | 2026-02-23 | 2026-03-03 | 378, 392 |  |
| 395 |  | Waterproofing | 10d | 2026-03-19 | 2026-03-29 | 379, 394 |  |
| 396 |  | Internal Plaster | 5d | 2026-03-29 | 2026-04-03 | 380, 393, 394, 395 |  |
| 397 |  | IPS flooring work | 10d | 2026-04-03 | 2026-04-13 | 381, 393, 395, 396 |  |
| 398 |  | Toilet dado work | 8d | 2026-04-03 | 2026-04-11 | 382, 395, 396 |  |
| 399 |  | Toilet flooring work | 8d | 2026-04-11 | 2026-04-19 | 383, 398 |  |
| 400 |  | Living dinning flooring | 7d | 2026-04-19 | 2026-04-26 | 384, 393, 399 |  |
| 401 |  | Aluminium door-window fixing | 10d | 2026-05-18 | 2026-05-28 | 385, 397, 400 |  |
| 402 |  | Putty primer coat | 6d | 2026-04-26 | 2026-05-02 | 386, 400 |  |
| 403 |  | Door shutter fixing | 8d | 2026-05-01 | 2026-05-09 | 387, 400 |  |
| 404 |  | Electrical wiring work | 15d | 2027-02-05 | 2027-02-20 | 388, 403 |  |
| 405 |  | Painting 1st coat | 8d | 2027-02-20 | 2027-02-28 | 389, 402, 403, 404 |  |
| 406 |  | False ceiling | 8d | 2027-02-28 | 2027-03-08 | 390, 405 |  |
| 407 | 37100.37300.37600.37900.38900.40300.41300.75900 | **10th Floor** | 343.81d | 2026-02-21 | 2027-03-16 |  | start no earlier than 2026-02-21 |
| 408 |  | Block Work | 8d | 2026-02-21 | 2026-02-28 | 233, 392 |  |
| 409 |  | Door Frame Fixing | 9d | 2026-03-12 | 2026-03-21 | 393, 408 |  |
| 410 |  | Internal Plumbing Works | 8d | 2026-03-03 | 2026-03-11 | 394, 408 |  |
| 411 |  | Waterproofing | 10d | 2026-03-29 | 2026-04-08 | 395, 410 |  |
| 412 |  | Internal Plaster | 5d | 2026-04-08 | 2026-04-13 | 396, 409, 410, 411 |  |
| 413 |  | IPS flooring work | 10d | 2026-04-13 | 2026-04-23 | 397, 409, 411, 412 |  |
| 414 |  | Toilet dado work | 8d | 2026-04-13 | 2026-04-21 | 398, 411, 412 |  |
| 415 |  | Toilet flooring work | 8d | 2026-04-21 | 2026-04-29 | 399, 414 |  |
| 416 |  | Living dinning flooring | 7d | 2026-04-29 | 2026-05-06 | 400, 409, 415 |  |
| 417 |  | Aluminium door-window fixing | 10d | 2026-05-28 | 2026-06-07 | 401, 413, 416 |  |
| 418 |  | Putty primer coat | 6d | 2026-05-06 | 2026-05-12 | 402, 416 |  |
| 419 |  | Door shutter fixing | 8d | 2026-05-09 | 2026-05-17 | 403, 416 |  |
| 420 |  | Electrical wiring work | 8d | 2027-02-20 | 2027-02-28 | 404, 419 |  |

| ID | WBS | Task | Duration | Start | Finish | Predecessors | Constraint |
| --- | --- | --- | --- | --- | --- | --- | --- |
| 421 |  | Painting 1st coat | 8d | 2027-02-28 | 2027-03-08 | 405, 418, 419, 420 |  |
| 422 |  | False ceiling | 8d | 2027-03-08 | 2027-03-16 | 406, 421 |  |
| 423 | 37100.37300.37600.37900.38900.40300.41300.75800 | **11th Floor** | 343.81d | 2026-03-01 | 2027-03-24 |  | start no earlier than 2026-03-01 |
| 424 |  | Block Work | 8d | 2026-03-01 | 2026-03-08 | 234, 408 |  |
| 425 |  | Door Frame Fixing | 9d | 2026-03-21 | 2026-03-30 | 409, 424 |  |
| 426 |  | Internal Plumbing Works | 8d | 2026-03-11 | 2026-03-19 | 410, 424 |  |
| 427 |  | Waterproofing | 10d | 2026-04-08 | 2026-04-18 | 411, 426 |  |
| 428 |  | Internal Plaster | 5d | 2026-04-18 | 2026-04-23 | 412, 425, 426, 427 |  |
| 429 |  | IPS flooring work | 10d | 2026-04-23 | 2026-05-03 | 413, 425, 426, 427 |  |
| 430 |  | Toilet dado work | 8d | 2026-04-23 | 2026-05-01 | 414, 427, 428 |  |
| 431 |  | Toilet flooring work | 8d | 2026-05-01 | 2026-05-09 | 415, 430 |  |
| 432 |  | Living dinning flooring | 7d | 2026-05-09 | 2026-05-16 | 416, 425, 431 |  |
| 433 |  | Aluminium door-window fixing | 10d | 2026-06-07 | 2026-06-17 | 417, 429, 432 |  |
| 434 |  | Putty primer coat | 6d | 2026-05-16 | 2026-05-22 | 418, 432 |  |
| 435 |  | Door shutter fixing | 8d | 2026-05-17 | 2026-05-25 | 419, 432 |  |
| 436 |  | Electrical wiring work | 8d | 2027-02-28 | 2027-03-08 | 420, 435 |  |
| 437 |  | Painting 1st coat | 8d | 2027-03-08 | 2027-03-16 | 421, 434, 435, 436 |  |
| 438 |  | False ceiling | 8d | 2027-03-16 | 2027-03-24 | 422, 437 |  |
| 439 | 37100.37300.37600.37900.38900.40300.41300.75700 | **12th Floor** | 343.81d | 2026-03-09 | 2027-04-01 |  | start no earlier than 2026-03-09 |
| 440 |  | Block Work | 8d | 2026-03-09 | 2026-03-16 | 235, 424 |  |
| 441 |  | Door Frame Fixing | 9d | 2026-03-30 | 2026-04-08 | 425, 440 |  |
| 442 |  | Internal Plumbing Works | 8d | 2026-03-19 | 2026-03-27 | 426, 440 |  |
| 443 |  | Waterproofing | 10d | 2026-04-18 | 2026-04-28 | 427, 442 |  |
| 444 |  | Internal Plaster | 5d | 2026-04-28 | 2026-05-03 | 428, 441, 442, 443 |  |
| 445 |  | IPS flooring work | 10d | 2026-05-03 | 2026-05-13 | 429, 441, 442, 443 |  |
| 446 |  | Toilet dado work | 8d | 2026-05-03 | 2026-05-11 | 430, 443, 444 |  |
| 447 |  | Toilet flooring work | 8d | 2026-05-11 | 2026-05-19 | 431, 446 |  |
| 448 |  | Living dinning flooring | 7d | 2026-05-19 | 2026-05-26 | 432, 441, 447 |  |
| 449 |  | Aluminium door-window fixing | 10d | 2026-06-17 | 2026-06-27 | 433, 445, 448 |  |
| 450 |  | Putty primer coat | 6d | 2026-05-26 | 2026-06-01 | 434, 448 |  |
| 451 |  | Door shutter fixing | 8d | 2026-05-26 | 2026-06-03 | 435, 448 |  |
| 452 |  | Electrical wiring work | 8d | 2027-03-08 | 2027-03-16 | 436, 451 |  |
| 453 |  | Painting 1st coat | 8d | 2027-03-16 | 2027-03-24 | 437, 450, 451, 452 |  |
| 454 |  | False ceiling | 8d | 2027-03-24 | 2027-04-01 | 438, 453 |  |
| 455 | 37100.37300.37600.37900.38900.40300.41300.75600 | **13th Floor** | 357.81d | 2026-03-17 | 2027-04-23 |  | start no earlier than 2026-03-17 |
| 456 |  | Block Work | 8d | 2026-03-17 | 2026-03-24 | 236, 440 |  |
| 457 |  | Door Frame Fixing | 9d | 2026-04-08 | 2026-04-17 | 441, 456 |  |
| 458 |  | Internal Plumbing Works | 8d | 2026-03-27 | 2026-04-04 | 442, 456 |  |
| 459 |  | Waterproofing | 10d | 2026-04-28 | 2026-05-08 | 443, 458 |  |
| 460 |  | Internal Plaster | 5d | 2026-05-08 | 2026-05-13 | 444, 457, 458, 459 |  |
| 461 |  | IPS flooring work | 10d | 2026-05-13 | 2026-05-23 | 445, 457, 459, 460 |  |
| 462 |  | Toilet dado work | 8d | 2026-05-13 | 2026-05-21 | 446, 459, 460 |  |
| 463 |  | Toilet flooring work | 8d | 2026-05-21 | 2026-05-29 | 447, 462 |  |
| 464 |  | Living dinning flooring | 7d | 2026-05-29 | 2026-06-05 | 448, 457, 463 |  |
| 465 |  | Aluminium door-window fixing | 12d | 2026-06-27 | 2026-07-09 | 449, 461, 464 |  |
| 466 |  | Putty primer coat | 6d | 2026-06-05 | 2026-06-11 | 450, 464 |  |
| 467 |  | Door shutter fixing | 8d | 2026-06-05 | 2026-06-13 | 451, 464 |  |
| 468 |  | Electrical wiring work | 15d | 2027-03-16 | 2027-03-31 | 452, 467 |  |
| 469 |  | Painting 1st coat | 15d | 2027-03-31 | 2027-04-15 | 453, 466, 467, 468 |  |
| 470 |  | False ceiling | 8d | 2027-04-15 | 2027-04-23 | 454, 469 |  |
| 471 | 37100.37300.37600.37900.38900.40300.41300.75500 | **14th Floor** | 357.56d | 2026-03-25 | 2027-05-01 |  | start no earlier than 2026-03-25 |
| 472 |  | Block Work | 5d | 2026-03-25 | 2026-03-30 | 456FS+0.25d |  |
| 473 |  | Door Frame Fixing | 9d | 2026-04-17 | 2026-04-26 | 457, 472 |  |
| 474 |  | Internal Plumbing Works | 8d | 2026-04-04 | 2026-04-12 | 458, 472 |  |
| 475 |  | Waterproofing | 10d | 2026-05-08 | 2026-05-18 | 459, 474 |  |
| 476 |  | Internal Plaster | 5d | 2026-05-13 | 2026-05-18 | 460FS+0.25d |  |
| 477 |  | IPS flooring work | 10d | 2026-05-23 | 2026-06-02 | 461FS+0.25d |  |
| 478 |  | Toilet dado work | 8d | 2026-05-21 | 2026-05-29 | 462, 475, 476 |  |
| 479 |  | Toilet flooring work | 8d | 2026-05-29 | 2026-06-06 | 463, 478 |  |
| 480 |  | Living dinning flooring | 7d | 2026-06-05 | 2026-06-12 | 464FS+0.25d |  |
| 481 |  | Aluminium door-window fixing | 10d | 2026-07-09 | 2026-07-19 | 465FS+0.25d |  |
| 482 |  | Putty primer coat | 6d | 2026-06-12 | 2026-06-18 | 466, 480 |  |
| 483 |  | Door shutter fixing | 8d | 2026-06-13 | 2026-06-21 | 467, 480 |  |
| 484 |  | Electrical wiring work | 8d | 2027-03-31 | 2027-04-08 | 468, 483 |  |
| 485 |  | Painting 1st coat | 8d | 2027-04-15 | 2027-04-23 | 469, 482, 483, 484 |  |
| 486 |  | False ceiling | 8d | 2027-04-23 | 2027-05-01 | 470, 485 |  |
| 487 | 37100.37300.37600.37900.38900.40300.41300.75400 | **15th Floor** | 360.31d | 2026-03-30 | 2027-05-09 |  | start no earlier than 2026-03-30 |
| 488 |  | Block Work | 8d | 2026-03-30 | 2026-04-07 | 472FS+0.25d |  |
| 489 |  | Door Frame Fixing | 9d | 2026-04-26 | 2026-05-05 | 473, 488 |  |
| 490 |  | Internal Plumbing Works | 8d | 2026-04-12 | 2026-04-20 | 474, 488 |  |

| ID | WBS | Task | Duration | Start | Finish | Predecessors | Constraint |
| --- | --- | --- | --- | --- | --- | --- | --- |
| 491 |  | Waterproofing | 10d | 2026-05-18 | 2026-05-28 | 475, 490 |  |
| 492 |  | Internal Plaster | 53.81d | 2026-05-18 | 2026-07-11 | 476FS+0.25d |  |
| 493 |  | IPS flooring work | 10d | 2026-06-02 | 2026-06-12 | 477, 489, 490, 491 |  |
| 494 |  | Toilet dado work | 8d | 2026-07-11 | 2026-07-19 | 478, 491, 492 |  |
| 495 |  | Toilet flooring work | 8d | 2026-07-19 | 2026-07-27 | 479, 494 |  |
| 496 |  | Living dinning flooring | 7d | 2026-06-12 | 2026-06-19 | 480FS+0.25d |  |
| 497 |  | Aluminium door-window fixing | 10d | 2026-07-19 | 2026-07-29 | 481FS+0.25d |  |
| 498 |  | Putty primer coat | 6d | 2026-06-19 | 2026-06-25 | 482, 496 |  |
| 499 |  | Door shutter fixing | 8d | 2026-06-21 | 2026-06-29 | 483, 496 |  |
| 500 |  | Electrical wiring work | 8d | 2027-04-08 | 2027-04-16 | 484, 499 |  |
| 501 |  | Painting 1st coat | 8d | 2027-04-23 | 2027-05-01 | 485, 498, 499, 500 |  |
| 502 |  | False ceiling | 8d | 2027-05-01 | 2027-05-09 | 486, 501 |  |
| 503 | 37100.37300.37600.37900.38900.40300.41300.75300 | **16th Floor** | 360.06d | 2026-04-07 | 2027-05-17 |  | start no earlier than 2026-04-07 |
| 504 |  | Block Work | 8d | 2026-04-07 | 2026-04-15 | 488FS+0.25d |  |
| 505 |  | Door Frame Fixing | 9d | 2026-05-05 | 2026-05-14 | 489, 504 |  |
| 506 |  | Internal Plumbing Works | 8d | 2026-04-20 | 2026-04-28 | 490, 504 |  |
| 507 |  | Waterproofing | 10d | 2026-05-28 | 2026-06-07 | 491, 506 |  |
| 508 |  | Internal Plaster | 5d | 2026-07-11 | 2026-07-16 | 492FS+0.25d |  |
| 509 |  | IPS flooring work | 10d | 2026-06-12 | 2026-06-22 | 493, 505, 506, 507 |  |
| 510 |  | Toilet dado work | 8d | 2026-07-19 | 2026-07-27 | 494, 507, 508 |  |
| 511 |  | Toilet flooring work | 8d | 2026-07-27 | 2026-08-04 | 495, 510 |  |
| 512 |  | Living dinning flooring | 7d | 2026-06-20 | 2026-06-26 | 496FS+0.25d |  |
| 513 |  | Aluminium door-window fixing | 10d | 2026-07-30 | 2026-08-08 | 497FS+0.25d |  |
| 514 |  | Putty primer coat | 6d | 2026-06-27 | 2026-07-02 | 498, 512 |  |
| 515 |  | Door shutter fixing | 8d | 2026-06-29 | 2026-07-07 | 499, 512 |  |
| 516 |  | Electrical wiring work | 8d | 2027-04-16 | 2027-04-24 | 500, 515 |  |
| 517 |  | Painting 1st coat | 8d | 2027-05-01 | 2027-05-09 | 501, 514, 515, 516 |  |
| 518 |  | False ceiling | 8d | 2027-05-09 | 2027-05-17 | 502, 517 |  |
| 519 | 37100.37300.37600.37900.38900.40300.41300.75200 | **17th Floor** | 359.81d | 2026-04-16 | 2027-05-25 |  | start no earlier than 2026-04-16 |
| 520 |  | Block Work | 8d | 2026-04-16 | 2026-04-23 | 504FS+0.25d |  |
| 521 |  | Door Frame Fixing | 9d | 2026-05-14 | 2026-05-23 | 505, 520 |  |
| 522 |  | Internal Plumbing Works | 8d | 2026-04-28 | 2026-05-06 | 506, 520 |  |
| 523 |  | Waterproofing | 10d | 2026-06-07 | 2026-06-17 | 507, 522 |  |
| 524 |  | Internal Plaster | 5d | 2026-07-17 | 2026-07-22 | 508FS+0.25d |  |
| 525 |  | IPS flooring work | 10d | 2026-06-22 | 2026-07-02 | 509, 521, 522, 523 |  |
| 526 |  | Toilet dado work | 8d | 2026-07-27 | 2026-08-04 | 510, 523, 524 |  |
| 527 |  | Toilet flooring work | 8d | 2026-08-04 | 2026-08-12 | 511, 526 |  |
| 528 |  | Living dinning flooring | 7d | 2026-06-27 | 2026-07-04 | 512FS+0.25d |  |
| 529 |  | Aluminium door-window fixing | 10d | 2026-08-09 | 2026-08-19 | 513FS+0.25d |  |
| 530 |  | Putty primer coat | 6d | 2026-07-04 | 2026-07-10 | 514, 528 |  |
| 531 |  | Door shutter fixing | 8d | 2026-07-07 | 2026-07-15 | 515, 528 |  |
| 532 |  | Electrical wiring work | 8d | 2027-04-24 | 2027-05-02 | 516, 531 |  |
| 533 |  | Painting 1st coat | 8d | 2027-05-09 | 2027-05-17 | 517, 530, 531, 532 |  |
| 534 |  | False ceiling | 8d | 2027-05-17 | 2027-05-25 | 518, 533 |  |
| 535 | 37100.37300.37600.37900.38900.40300.41300.75100 | **18th Floor** | 359.56d | 2026-04-24 | 2027-06-02 |  | start no earlier than 2026-04-24 |
| 536 |  | Block Work | 8d | 2026-04-24 | 2026-05-02 | 520FS+0.25d |  |
| 537 |  | Door Frame Fixing | 9d | 2026-05-23 | 2026-06-01 | 521, 536 |  |
| 538 |  | Internal Plumbing Works | 8d | 2026-05-06 | 2026-05-14 | 522, 536 |  |
| 539 |  | Waterproofing | 10d | 2026-06-17 | 2026-06-27 | 523, 538 |  |
| 540 |  | Internal Plaster | 5d | 2026-07-22 | 2026-07-27 | 524FS+0.25d |  |
| 541 |  | IPS flooring work | 10d | 2026-07-02 | 2026-07-12 | 525, 537, 538, 539 |  |
| 542 |  | Toilet dado work | 8d | 2026-08-04 | 2026-08-12 | 526, 539, 540 |  |
| 543 |  | Toilet flooring work | 8d | 2026-08-12 | 2026-08-20 | 527, 542 |  |
| 544 |  | Living dinning flooring | 7d | 2026-07-04 | 2026-07-11 | 528FS+0.25d |  |
| 545 |  | Aluminium door-window fixing | 7d | 2026-08-19 | 2026-08-26 | 529, 541, 544 |  |
| 546 |  | Putty primer coat | 6d | 2026-07-11 | 2026-07-17 | 530, 544 |  |
| 547 |  | Door shutter fixing | 8d | 2026-07-15 | 2026-07-23 | 531, 544 |  |
| 548 |  | Electrical wiring work | 8d | 2027-05-02 | 2027-05-10 | 532, 547 |  |
| 549 |  | Painting 1st coat | 8d | 2027-05-17 | 2027-05-25 | 533, 546, 547, 548 |  |
| 550 |  | False ceiling | 8d | 2027-05-25 | 2027-06-02 | 534, 549 |  |
| 551 | 37100.37300.37600.37900.38900.40300.41300.68000 | **19th Floor** | 359.31d | 2026-05-02 | 2027-06-10 |  | start no earlier than 2026-05-02 |
| 552 |  | Block Work | 8d | 2026-05-02 | 2026-05-10 | 536FS+0.25d |  |
| 553 |  | Door Frame Fixing | 9d | 2026-06-01 | 2026-06-10 | 537, 552 |  |
| 554 |  | Internal Plumbing Works | 8d | 2026-05-14 | 2026-05-22 | 538, 552 |  |
| 555 |  | Waterproofing | 10d | 2026-06-27 | 2026-07-07 | 539, 554 |  |
| 556 |  | Internal Plaster | 8d | 2026-07-27 | 2026-08-04 | 540FS+0.25d |  |
| 557 |  | Internal Plaster | 9d | 2026-08-04 | 2026-08-13 | 540, 553, 554, 555, 556 |  |
| 558 |  | IPS flooring work | 10d | 2026-08-13 | 2026-08-23 | 541, 553, 555, 557 |  |
| 559 |  | Toilet dado work | 8d | 2026-08-13 | 2026-08-21 | 542, 555, 557 |  |
| 560 |  | Toilet flooring work | 8d | 2026-08-21 | 2026-08-29 | 543, 559 |  |

| ID | WBS | Task | Duration | Start | Finish | Predecessors | Constraint |
| --- | --- | --- | --- | --- | --- | --- | --- |
| 561 |  | Living dinning flooring | 7d | 2026-07-11 | 2026-07-18 | 544FS+0.25d |  |
| 562 |  | Aluminium door-window fixing | 10d | 2026-08-26 | 2026-09-05 | 545, 558, 561 |  |
| 563 |  | Putty primer coat | 6d | 2026-07-18 | 2026-07-24 | 546, 561 |  |
| 564 |  | Door shutter fixing | 8d | 2026-07-23 | 2026-07-31 | 547, 561 |  |
| 565 |  | Electrical wiring work | 8d | 2027-05-10 | 2027-05-18 | 548, 564 |  |
| 566 |  | Painting 1st coat | 8d | 2027-05-25 | 2027-06-02 | 549, 563, 564, 565 |  |
| 567 |  | False ceiling | 8d | 2027-06-02 | 2027-06-10 | 550, 566 |  |
| 568 | 37100.37300.37600.37900.38900.40300.41300.61000 | **20th Floor** | 359.06d | 2026-05-10 | 2027-06-18 |  | start no earlier than 2026-05-10 |
| 569 |  | Block Work | 8d | 2026-05-10 | 2026-05-18 | 552FS+0.25d |  |
| 570 |  | Door Frame Fixing | 9d | 2026-06-10 | 2026-06-19 | 553, 569 |  |
| 571 |  | Internal Plumbing Works | 8d | 2026-05-22 | 2026-05-30 | 554, 569 |  |
| 572 |  | Waterproofing | 10d | 2026-07-07 | 2026-07-17 | 555, 571 |  |
| 573 |  | Internal Plaster | 5d | 2026-08-13 | 2026-08-18 | 557FS+0.25d |  |
| 574 |  | IPS flooring work | 10d | 2026-08-23 | 2026-09-02 | 558, 570, 572, 573 |  |
| 575 |  | Toilet dado work | 8d | 2026-08-21 | 2026-08-29 | 559, 572, 573 |  |
| 576 |  | Toilet flooring work | 8d | 2026-08-29 | 2026-09-06 | 560, 575 |  |
| 577 |  | Living dinning flooring | 7d | 2026-07-19 | 2026-07-25 | 561FS+0.25d |  |
| 578 |  | Aluminium door-window fixing | 7d | 2026-09-05 | 2026-09-12 | 562, 574, 577 |  |
| 579 |  | Putty primer coat | 6d | 2026-07-26 | 2026-07-31 | 563, 577 |  |
| 580 |  | Door shutter fixing | 8d | 2026-07-31 | 2026-08-08 | 564, 577 |  |
| 581 |  | Electrical wiring work | 8d | 2027-05-18 | 2027-05-26 | 565, 580 |  |
| 582 |  | Painting 1st coat | 8d | 2027-06-02 | 2027-06-10 | 566, 579, 580, 581 |  |
| 583 |  | False ceiling | 8d | 2027-06-10 | 2027-06-18 | 567, 582 |  |
| 584 | 37100.37300.37600.37900.38900.40300.41300.60900 | **21st Floor** | 358.81d | 2026-05-19 | 2027-06-26 |  | start no earlier than 2026-05-19 |
| 585 |  | Block Work | 8d | 2026-05-19 | 2026-05-26 | 569FS+0.25d |  |
| 586 |  | Door Frame Fixing | 9d | 2026-06-19 | 2026-06-28 | 570, 585 |  |
| 587 |  | Internal Plumbing Works | 8d | 2026-05-30 | 2026-06-07 | 571FS+0.25d |  |
| 588 |  | Waterproofing | 10d | 2026-07-17 | 2026-07-27 | 572, 587 |  |
| 589 |  | Internal Plaster | 8d | 2026-05-27 | 2026-06-04 | 585FS+0.25d |  |
| 590 |  | IPS flooring work | 10d | 2026-09-02 | 2026-09-12 | 574FS+0.25d |  |
| 591 |  | Toilet dado work | 8d | 2026-08-29 | 2026-09-06 | 575, 588, 589 |  |
| 592 |  | Toilet flooring work | 8d | 2026-09-06 | 2026-09-14 | 576, 591 |  |
| 593 |  | Living dinning flooring | 12d | 2026-07-26 | 2026-08-07 | 577FS+0.25d |  |
| 594 |  | Aluminium door-window fixing | 12d | 2026-09-12 | 2026-09-24 | 578, 590, 593 |  |
| 595 |  | Putty primer coat | 6d | 2026-08-07 | 2026-08-13 | 579, 593 |  |
| 596 |  | Door shutter fixing | 8d | 2026-08-08 | 2026-08-16 | 580, 593 |  |
| 597 |  | Electrical wiring work | 8d | 2027-05-26 | 2027-06-03 | 581, 596 |  |
| 598 |  | Painting 1st coat | 8d | 2027-06-10 | 2027-06-18 | 582, 595, 596, 597 |  |
| 599 |  | False ceiling | 8d | 2027-06-18 | 2027-06-26 | 583, 598 |  |
| 600 | 37100.37300.37600.37900.38900.40300.41300.59500 | **22nd Floor** | 358.56d | 2026-05-27 | 2027-07-04 |  | start no earlier than 2026-05-27 |
| 601 |  | Block Work | 8d | 2026-05-27 | 2026-06-04 | 585FS+0.25d |  |
| 602 |  | Door Frame Fixing | 9d | 2026-06-28 | 2026-07-07 | 586, 601 |  |
| 603 |  | Internal Plumbing Works | 8d | 2026-06-07 | 2026-06-15 | 587, 601 |  |
| 604 |  | Waterproofing | 10d | 2026-07-27 | 2026-08-06 | 588, 603 |  |
| 605 |  | Internal Plaster | 5d | 2026-06-04 | 2026-06-09 | 589FS+0.25d |  |
| 606 |  | IPS flooring work | 10d | 2026-09-12 | 2026-09-22 | 590, 602, 604, 605 |  |
| 607 |  | Toilet dado work | 8d | 2026-09-06 | 2026-09-14 | 591, 604, 605 |  |
| 608 |  | Toilet flooring work | 8d | 2026-09-14 | 2026-09-22 | 592, 607 |  |
| 609 |  | Living dinning flooring | 7d | 2026-09-22 | 2026-09-29 | 593, 602, 608 |  |
| 610 |  | Aluminium door-window fixing | 7d | 2026-09-29 | 2026-10-06 | 594, 606, 609 |  |
| 611 |  | Putty primer coat | 6d | 2026-09-29 | 2026-10-05 | 595, 609 |  |
| 612 |  | Door shutter fixing | 8d | 2026-09-29 | 2026-10-07 | 596, 609 |  |
| 613 |  | Electrical wiring work | 8d | 2027-06-03 | 2027-06-11 | 597, 612 |  |
| 614 |  | Painting 1st coat | 8d | 2027-06-18 | 2027-06-26 | 598, 611, 612, 613 |  |
| 615 |  | False ceiling | 8d | 2027-06-26 | 2027-07-04 | 599, 614 |  |
| 616 | 37100.37300.37600.37900.38900.40300.41300.59600 | **23rd Floor** | 358.31d | 2026-06-04 | 2027-07-12 |  | start no earlier than 2026-06-04 |
| 617 |  | Block Work | 8d | 2026-06-04 | 2026-06-12 | 601FS+0.25d |  |
| 618 |  | Door Frame Fixing | 9d | 2026-07-07 | 2026-07-16 | 602, 617 |  |
| 619 |  | Internal Plumbing Works | 8d | 2026-06-15 | 2026-06-23 | 603, 617 |  |
| 620 |  | Waterproofing | 10d | 2026-08-06 | 2026-08-16 | 604, 619 |  |
| 621 |  | Internal Plaster | 5d | 2026-06-09 | 2026-06-14 | 605FS+0.25d |  |
| 622 |  | IPS flooring work | 10d | 2026-09-22 | 2026-10-02 | 606, 618, 620, 621 |  |
| 623 |  | Toilet dado work | 8d | 2026-09-14 | 2026-09-22 | 607, 620, 621 |  |
| 624 |  | Toilet flooring work | 8d | 2026-09-22 | 2026-09-30 | 608, 623 |  |
| 625 |  | Living dinning flooring | 7d | 2026-09-30 | 2026-10-07 | 609, 618, 624 |  |
| 626 |  | Aluminium door-window fixing | 7d | 2026-10-07 | 2026-10-14 | 610, 622, 625 |  |
| 627 |  | Putty primer coat | 6d | 2026-10-07 | 2026-10-13 | 611, 625 |  |
| 628 |  | Door shutter fixing | 8d | 2026-10-07 | 2026-10-15 | 612, 625 |  |
| 629 |  | Electrical wiring work | 8d | 2027-06-11 | 2027-06-19 | 613, 628 |  |
| 630 |  | Painting 1st coat | 8d | 2027-06-26 | 2027-07-04 | 614, 627, 628, 629 |  |

| ID | WBS | Task | Duration | Start | Finish | Predecessors | Constraint |
| --- | --- | --- | --- | --- | --- | --- | --- |
| 631 |  | False ceiling | 8d | 2027-07-04 | 2027-07-12 | 615, 630 |  |
| 632 | 37100.37300.37600.37900.38900.40300.41300.59700 | **24th Floor** | 358.06d | 2026-06-12 | 2027-07-20 |  | start no earlier than 2026-06-12 |
| 633 |  | Block Work | 8d | 2026-06-12 | 2026-06-20 | 617FS+0.25d |  |
| 634 |  | Door Frame Fixing | 9d | 2026-07-16 | 2026-07-25 | 618, 633 |  |
| 635 |  | Internal Plumbing Works | 8d | 2026-06-23 | 2026-07-01 | 619, 633 |  |
| 636 |  | Waterproofing | 10d | 2026-08-16 | 2026-08-26 | 620, 635 |  |
| 637 |  | Internal Plaster | 8d | 2026-08-26 | 2026-09-03 | 621, 634, 635, 636 |  |
| 638 |  | IPS flooring work | 10d | 2026-10-02 | 2026-10-12 | 622, 634, 636, 637 |  |
| 639 |  | Toilet dado work | 8d | 2026-09-22 | 2026-09-30 | 623, 636, 637 |  |
| 640 |  | Toilet flooring work | 8d | 2026-09-30 | 2026-10-08 | 624, 639 |  |
| 641 |  | Living dinning flooring | 12d | 2026-10-08 | 2026-10-20 | 625, 634, 640 |  |
| 642 |  | Aluminium door-window fixing | 12d | 2026-10-20 | 2026-12-16 | 626, 638, 641 |  |
| 643 |  | Putty primer coat | 6d | 2026-10-20 | 2026-10-26 | 627, 641 |  |
| 644 |  | Door shutter fixing | 8d | 2026-10-20 | 2026-10-28 | 628, 641 |  |
| 645 |  | Electrical wiring work | 8d | 2027-06-19 | 2027-06-27 | 629, 644 |  |
| 646 |  | Painting 1st coat | 8d | 2027-07-04 | 2027-07-12 | 630, 643, 644, 645 |  |
| 647 |  | False ceiling | 8d | 2027-07-12 | 2027-07-20 | 631, 646 |  |
| 648 | 37100.37300.37600.37900.38900.40300.41300.59800 | **25th Floor** | 324.56d | 2026-07-24 | 2027-07-28 |  | start no earlier than 2026-07-24 |
| 649 |  | Block Work | 8d | 2026-07-24 | 2026-08-01 | 248, 633 |  |
| 650 |  | Door Frame Fixing | 9d | 2026-08-01 | 2026-08-10 | 634, 649 |  |
| 651 |  | Internal Plumbing Works | 8d | 2026-08-01 | 2026-08-09 | 635, 649 |  |
| 652 |  | Waterproofing | 10d | 2026-08-26 | 2026-09-05 | 636, 651 |  |
| 653 |  | Internal Plaster | 8d | 2026-09-05 | 2026-09-13 | 637, 650, 651, 652 |  |
| 654 |  | IPS flooring work | 10d | 2026-10-12 | 2026-10-22 | 638, 650, 652, 653 |  |
| 655 |  | Toilet dado work | 8d | 2026-09-30 | 2026-10-08 | 639, 652, 653 |  |
| 656 |  | Toilet flooring work | 8d | 2026-10-08 | 2026-10-16 | 640, 655 |  |
| 657 |  | Living dinning flooring | 12d | 2026-10-20 | 2026-12-16 | 641, 650, 656 |  |
| 658 |  | Aluminium door-window fixing | 12d | 2026-12-16 | 2026-12-28 | 642, 654, 657 |  |
| 659 |  | Putty primer coat | 6d | 2026-12-16 | 2026-12-22 | 643, 657 |  |
| 660 |  | Door shutter fixing | 8d | 2026-12-16 | 2026-12-24 | 644, 657 |  |
| 661 |  | Electrical wiring work | 8d | 2027-06-27 | 2027-07-05 | 645, 660 |  |
| 662 |  | Painting 1st coat | 8d | 2027-07-12 | 2027-07-20 | 646, 659, 660, 661 |  |
| 663 |  | False ceiling | 8d | 2027-07-20 | 2027-07-28 | 647, 662 |  |
| 664 | 37100.37300.37600.37900.38900.40300.41300.59900 | **26th Floor** | 322.56d | 2026-08-03 | 2027-08-05 |  | start no earlier than 2026-08-03 |
| 665 |  | Block Work | 8d | 2026-08-03 | 2026-08-11 | 249, 649 |  |
| 666 |  | Door Frame Fixing | 9d | 2026-08-11 | 2026-08-20 | 650, 665 |  |
| 667 |  | Internal Plumbing Works | 8d | 2026-08-11 | 2026-08-19 | 651, 665 |  |
| 668 |  | Waterproofing | 10d | 2026-09-05 | 2026-09-15 | 652, 667 |  |
| 669 |  | Internal Plaster | 8d | 2026-09-15 | 2026-09-23 | 653, 666, 667, 668 |  |
| 670 |  | IPS flooring work | 10d | 2026-10-22 | 2026-12-16 | 654, 666, 668, 669 |  |
| 671 |  | Toilet dado work | 8d | 2026-10-08 | 2026-10-16 | 655, 668, 669 |  |
| 672 |  | Toilet flooring work | 8d | 2026-10-16 | 2026-10-24 | 656, 671 |  |
| 673 |  | Living dinning flooring | 20d | 2026-12-16 | 2027-01-05 | 657, 666, 672 |  |
| 674 |  | Aluminium door-window fixing | 12d | 2027-01-05 | 2027-01-17 | 658, 670, 673 |  |
| 675 |  | Putty primer coat | 6d | 2027-01-05 | 2027-01-11 | 659, 673 |  |
| 676 |  | Door shutter fixing | 8d | 2027-01-05 | 2027-01-13 | 660, 673 |  |
| 677 |  | Electrical wiring work | 8d | 2027-07-05 | 2027-07-13 | 661, 676 |  |
| 678 |  | Painting 1st coat | 8d | 2027-07-20 | 2027-07-28 | 662, 675, 676, 677 |  |
| 679 |  | False ceiling | 8d | 2027-07-28 | 2027-08-05 | 663, 678 |  |
| 680 | 37100.37300.37600.37900.38900.40300.41300.60000 | **27th Floor** | 307.69d | 2026-08-26 | 2027-08-13 |  | start no earlier than 2026-08-26 |
| 681 |  | Block Work | 8d | 2026-08-26 | 2026-09-03 | 250, 665 |  |
| 682 |  | Door Frame Fixing | 9d | 2026-09-03 | 2026-09-12 | 666, 681 |  |
| 683 |  | Internal Plumbing Works | 8d | 2026-09-03 | 2026-09-11 | 667, 681 |  |
| 684 |  | Waterproofing | 10d | 2026-09-15 | 2026-09-25 | 668, 683 |  |
| 685 |  | Internal Plaster | 8d | 2026-09-25 | 2026-10-03 | 669, 682, 683, 684 |  |
| 686 |  | IPS flooring work | 10d | 2026-12-16 | 2026-12-26 | 670, 682, 684, 685 |  |
| 687 |  | Toilet dado work | 8d | 2026-10-16 | 2026-10-24 | 671, 684, 685 |  |
| 688 |  | Toilet flooring work | 8d | 2026-10-24 | 2026-12-16 | 672, 687 |  |
| 689 |  | Living dinning flooring | 12d | 2027-01-05 | 2027-01-17 | 673, 682, 688 |  |
| 690 |  | Aluminium door-window fixing | 20d | 2027-01-17 | 2027-02-06 | 674, 686, 689 |  |
| 691 |  | Putty primer coat | 6d | 2027-01-17 | 2027-01-23 | 675, 689 |  |
| 692 |  | Door shutter fixing | 8d | 2027-01-17 | 2027-01-25 | 676, 689 |  |
| 693 |  | Electrical wiring work | 8d | 2027-07-13 | 2027-07-21 | 677, 692 |  |
| 694 |  | Painting 1st coat | 8d | 2027-07-28 | 2027-08-05 | 678, 691, 692, 693 |  |
| 695 |  | False ceiling | 8d | 2027-08-05 | 2027-08-13 | 679, 694 |  |
| 696 | 37100.37300.37600.37900.38900.40300.41300.60100 | **28th Floor** | 298.94d | 2026-09-11 | 2027-08-21 |  | start no earlier than 2026-09-11 |
| 697 |  | Block Work | 8d | 2026-09-11 | 2026-09-19 | 251, 681 |  |
| 698 |  | Door Frame Fixing | 9d | 2026-09-19 | 2026-09-28 | 682, 697 |  |
| 699 |  | Internal Plumbing Works | 8d | 2026-09-19 | 2026-09-27 | 683, 697 |  |
| 700 |  | Waterproofing | 10d | 2026-09-27 | 2026-10-07 | 684, 699 |  |

| ID | WBS | Task | Duration | Start | Finish | Predecessors | Constraint |
| --- | --- | --- | --- | --- | --- | --- | --- |
| 701 |  | Internal Plaster | 8d | 2026-10-07 | 2026-10-15 | 685, 698, 699, 700 |  |
| 702 |  | IPS flooring work | 10d | 2026-12-26 | 2027-01-05 | 686, 698, 700, 701 |  |
| 703 |  | Toilet dado work | 8d | 2026-10-24 | 2026-12-16 | 687, 700, 701 |  |
| 704 |  | Toilet flooring work | 8d | 2026-12-16 | 2026-12-24 | 688, 703 |  |
| 705 |  | Living dinning flooring | 12d | 2027-01-17 | 2027-01-29 | 689, 698, 704 |  |
| 706 |  | Aluminium door-window fixing | 12d | 2027-02-06 | 2027-02-18 | 690, 702, 705 |  |
| 707 |  | Putty primer coat | 6d | 2027-01-29 | 2027-02-04 | 691, 705 |  |
| 708 |  | Door shutter fixing | 8d | 2027-01-29 | 2027-02-06 | 692, 705 |  |
| 709 |  | Electrical wiring work | 8d | 2027-07-21 | 2027-07-29 | 693, 708 |  |
| 710 |  | Painting 1st coat | 8d | 2027-08-05 | 2027-08-13 | 694, 707, 708, 709 |  |
| 711 |  | False ceiling | 8d | 2027-08-13 | 2027-08-21 | 695, 710 |  |
| 712 | 37100.37300.37600.37900.38900.40300.41300.60200 | **29th Floor** | 292.06d | 2026-09-26 | 2027-08-29 |  | start no earlier than 2026-09-26 |
| 713 |  | Block Work | 8d | 2026-09-26 | 2026-10-04 | 252, 697 |  |
| 714 |  | Door Frame Fixing | 9d | 2026-10-04 | 2026-10-13 | 698, 713 |  |
| 715 |  | Internal Plumbing Works | 8d | 2026-10-04 | 2026-10-12 | 699, 713 |  |
| 716 |  | Waterproofing | 10d | 2026-10-12 | 2026-10-22 | 700, 715 |  |
| 717 |  | Internal Plaster | 8d | 2026-10-22 | 2026-10-30 | 701, 714, 715, 716 |  |
| 718 |  | IPS flooring work | 10d | 2027-01-05 | 2027-01-15 | 702, 714, 716, 717 |  |
| 719 |  | Toilet dado work | 8d | 2026-12-16 | 2026-12-24 | 703, 716, 717 |  |
| 720 |  | Toilet flooring work | 8d | 2026-12-24 | 2027-01-01 | 704, 719 |  |
| 721 |  | Living dinning flooring | 12d | 2027-01-29 | 2027-02-10 | 705, 714, 720 |  |
| 722 |  | Aluminium door-window fixing | 12d | 2027-02-18 | 2027-03-02 | 706, 718, 721 |  |
| 723 |  | Putty primer coat | 6d | 2027-02-10 | 2027-02-16 | 707, 721 |  |
| 724 |  | Door shutter fixing | 8d | 2027-02-10 | 2027-02-18 | 708, 721 |  |
| 725 |  | Electrical wiring work | 8d | 2027-07-29 | 2027-08-06 | 709, 724 |  |
| 726 |  | Painting 1st coat | 8d | 2027-08-13 | 2027-08-21 | 710, 723, 724, 725 |  |
| 727 |  | False ceiling | 8d | 2027-08-21 | 2027-08-29 | 711, 726 |  |
| 728 | 37100.37300.37600.37900.38900.40300.41300.60300 | **30th Floor** | 288.31d | 2026-10-08 | 2027-09-06 |  | start no earlier than 2026-10-08 |
| 729 |  | Block Work | 8d | 2026-10-08 | 2026-10-16 | 253, 713 |  |
| 730 |  | Door Frame Fixing | 9d | 2026-10-16 | 2026-10-25 | 714, 729 |  |
| 731 |  | Internal Plumbing Works | 8d | 2026-10-16 | 2026-10-24 | 715, 729 |  |
| 732 |  | Waterproofing | 10d | 2026-10-24 | 2026-12-18 | 716, 731 |  |
| 733 |  | Internal Plaster | 8d | 2026-12-18 | 2026-12-26 | 717, 730, 731, 732 |  |
| 734 |  | IPS flooring work | 10d | 2027-01-15 | 2027-01-25 | 718, 730, 732, 733 |  |
| 735 |  | Toilet dado work | 8d | 2026-12-26 | 2027-01-03 | 719, 732, 733 |  |
| 736 |  | Toilet flooring work | 8d | 2027-01-03 | 2027-01-11 | 720, 735 |  |
| 737 |  | Living dinning flooring | 12d | 2027-02-10 | 2027-02-22 | 721, 730, 736 |  |
| 738 |  | Aluminium door-window fixing | 12d | 2027-03-02 | 2027-03-14 | 722, 734, 737 |  |
| 739 |  | Putty primer coat | 6d | 2027-02-22 | 2027-02-28 | 723, 737 |  |
| 740 |  | Door shutter fixing | 8d | 2027-02-22 | 2027-03-02 | 724, 737 |  |
| 741 |  | Electrical wiring work | 8d | 2027-08-06 | 2027-08-14 | 725, 740 |  |
| 742 |  | Painting 1st coat | 8d | 2027-08-21 | 2027-08-29 | 726, 739, 740, 741 |  |
| 743 |  | False ceiling | 8d | 2027-08-29 | 2027-09-06 | 727, 742 |  |
| 744 | 37100.37300.37600.37900.38900.40300.41300.60400 | **31st Floor** | 278.44d | 2026-10-26 | 2027-09-14 |  | start no earlier than 2026-10-26 |
| 745 |  | Block Work | 8d | 2026-10-26 | 2026-12-18 | 254, 729 |  |
| 746 |  | Door Frame Fixing | 9d | 2026-12-18 | 2026-12-27 | 730, 745 |  |
| 747 |  | Internal Plumbing Works | 8d | 2026-12-18 | 2026-12-26 | 731, 745 |  |
| 748 |  | Waterproofing | 10d | 2026-12-26 | 2027-01-05 | 732, 747 |  |
| 749 |  | Internal Plaster | 8d | 2027-01-05 | 2027-01-13 | 733, 746, 747, 748 |  |
| 750 |  | IPS flooring work | 10d | 2027-01-25 | 2027-02-04 | 734, 746, 748, 749 |  |
| 751 |  | Toilet dado work | 8d | 2027-01-13 | 2027-01-21 | 735, 748, 749 |  |
| 752 |  | Toilet flooring work | 8d | 2027-01-21 | 2027-01-29 | 736, 751 |  |
| 753 |  | Living dinning flooring | 19d | 2027-02-22 | 2027-03-13 | 737, 746, 752 |  |
| 754 |  | Aluminium door-window fixing | 12d | 2027-03-14 | 2027-03-26 | 738, 750, 753 |  |
| 755 |  | Putty primer coat | 6d | 2027-03-13 | 2027-03-19 | 739, 753 |  |
| 756 |  | Door shutter fixing | 8d | 2027-03-13 | 2027-03-21 | 740, 753 |  |
| 757 |  | Electrical wiring work | 8d | 2027-08-14 | 2027-08-22 | 741, 756 |  |
| 758 |  | Painting 1st coat | 8d | 2027-08-29 | 2027-09-06 | 742, 755, 756, 757 |  |
| 759 |  | False ceiling | 8d | 2027-09-06 | 2027-09-14 | 743, 758 |  |
| 760 | 37100.37300.37600.37900.38900.40300.41300.60500 | **32nd Floor** | 244.62d | 2027-01-21 | 2027-09-22 |  | start no earlier than 2027-01-21 |
| 761 |  | Block Work | 8d | 2027-01-21 | 2027-01-29 | 255, 745 |  |
| 762 |  | Door Frame Fixing | 9d | 2027-01-29 | 2027-02-07 | 746, 761 |  |
| 763 |  | Internal Plumbing Works | 8d | 2027-01-29 | 2027-02-06 | 747, 761 |  |
| 764 |  | Waterproofing | 10d | 2027-02-06 | 2027-02-16 | 748, 763 |  |
| 765 |  | Internal Plaster | 8d | 2027-02-16 | 2027-02-24 | 749, 762, 763, 764 |  |
| 766 |  | IPS flooring work | 10d | 2027-02-24 | 2027-03-06 | 750, 762, 764, 765 |  |
| 767 |  | Toilet dado work | 8d | 2027-02-24 | 2027-03-04 | 751, 764, 765 |  |
| 768 |  | Toilet flooring work | 8d | 2027-03-04 | 2027-03-12 | 752, 767 |  |
| 769 |  | Living dinning flooring | 12d | 2027-03-13 | 2027-03-25 | 753, 762, 768 |  |
| 770 |  | Aluminium door-window fixing | 12d | 2027-03-26 | 2027-04-07 | 754, 766, 769 |  |

| ID | WBS | Task | Duration | Start | Finish | Predecessors | Constraint |
| --- | --- | --- | --- | --- | --- | --- | --- |
| 771 |  | Putty primer coat | 6d | 2027-03-25 | 2027-03-31 | 755, 769 |  |
| 772 |  | Door shutter fixing | 8d | 2027-03-25 | 2027-04-02 | 756, 769 |  |
| 773 |  | Electrical wiring work | 8d | 2027-08-22 | 2027-08-30 | 757, 772 |  |
| 774 |  | Painting 1st coat | 8d | 2027-09-06 | 2027-09-14 | 758, 771, 772, 773 |  |
| 775 |  | False ceiling | 8d | 2027-09-14 | 2027-09-22 | 759, 774 |  |
| 776 | 37100.37300.37600.37900.38900.40300.41300.60600 | **33rd Floor** | 244.62d | 2027-01-29 | 2027-09-30 |  | start no earlier than 2027-01-29 |
| 777 |  | Block Work | 8d | 2027-01-29 | 2027-02-06 | 256, 761 |  |
| 778 |  | Door Frame Fixing | 9d | 2027-02-07 | 2027-02-16 | 762, 777 |  |
| 779 |  | Internal Plumbing Works | 8d | 2027-02-06 | 2027-02-14 | 763, 777 |  |
| 780 |  | Waterproofing | 10d | 2027-02-16 | 2027-02-26 | 764, 779 |  |
| 781 |  | Internal Plaster | 8d | 2027-02-26 | 2027-03-06 | 765, 778, 779, 780 |  |
| 782 |  | IPS flooring work | 10d | 2027-03-06 | 2027-03-16 | 766, 778, 780, 781 |  |
| 783 |  | Toilet dado work | 8d | 2027-03-06 | 2027-03-14 | 767, 780, 781 |  |
| 784 |  | Toilet flooring work | 8d | 2027-03-14 | 2027-03-22 | 768, 783 |  |
| 785 |  | Living dinning flooring | 12d | 2027-03-25 | 2027-04-06 | 769, 778, 784 |  |
| 786 |  | Aluminium door-window fixing | 12d | 2027-04-07 | 2027-04-19 | 770, 782, 785 |  |
| 787 |  | Putty primer coat | 6d | 2027-04-06 | 2027-04-12 | 771, 785 |  |
| 788 |  | Door shutter fixing | 8d | 2027-04-06 | 2027-04-14 | 772, 785 |  |
| 789 |  | Electrical wiring work | 8d | 2027-08-30 | 2027-09-07 | 773, 788 |  |
| 790 |  | Painting 1st coat | 8d | 2027-09-14 | 2027-09-22 | 774, 787, 788, 789 |  |
| 791 |  | False ceiling | 8d | 2027-09-22 | 2027-09-30 | 775, 790 |  |
| 792 | 37100.37300.37600.37900.38900.40300.41300.60700 | **34th Floor** | 244.62d | 2027-02-06 | 2027-10-08 |  | start no earlier than 2027-02-06 |
| 793 |  | Block Work | 8d | 2027-02-06 | 2027-02-14 | 257, 777 |  |
| 794 |  | Door Frame Fixing | 9d | 2027-02-16 | 2027-02-25 | 778, 793 |  |
| 795 |  | Internal Plumbing Works | 8d | 2027-02-14 | 2027-02-22 | 779, 793 |  |
| 796 |  | Waterproofing | 10d | 2027-02-26 | 2027-03-08 | 780, 795 |  |
| 797 |  | Internal Plaster | 8d | 2027-03-08 | 2027-03-16 | 781, 794, 795, 796 |  |
| 798 |  | IPS flooring work | 10d | 2027-03-16 | 2027-03-26 | 782, 794, 796, 797 |  |
| 799 |  | Toilet dado work | 8d | 2027-03-16 | 2027-03-24 | 783, 796, 797 |  |
| 800 |  | Toilet flooring work | 8d | 2027-03-24 | 2027-04-01 | 784, 799 |  |
| 801 |  | Living dinning flooring | 20d | 2027-04-06 | 2027-04-26 | 785, 794, 800 |  |
| 802 |  | Aluminium door-window fixing | 12d | 2027-04-26 | 2027-05-08 | 786, 798, 801 |  |
| 803 |  | Putty primer coat | 6d | 2027-04-26 | 2027-05-02 | 787, 801 |  |
| 804 |  | Door shutter fixing | 8d | 2027-04-26 | 2027-05-04 | 788, 801 |  |
| 805 |  | Electrical wiring work | 8d | 2027-09-07 | 2027-09-15 | 789, 804 |  |
| 806 |  | Painting 1st coat | 8d | 2027-09-22 | 2027-09-30 | 790, 803, 804, 805 |  |
| 807 |  | False ceiling | 8d | 2027-09-30 | 2027-10-08 | 791, 806 |  |
| 808 | 37100.37300.37600.37900.38900.40300.41300.60800 | **35th Floor** | 244.62d | 2027-02-14 | 2027-10-16 |  | start no earlier than 2027-02-14 |
| 809 |  | Block Work | 8d | 2027-02-14 | 2027-02-22 | 258, 793 |  |
| 810 |  | Door Frame Fixing | 9d | 2027-02-25 | 2027-03-06 | 794, 809 |  |
| 811 |  | Internal Plumbing Works | 8d | 2027-02-22 | 2027-03-02 | 795, 809 |  |
| 812 |  | Waterproofing | 10d | 2027-03-08 | 2027-03-18 | 796, 811 |  |
| 813 |  | Internal Plaster | 15d | 2027-03-18 | 2027-04-02 | 797, 810, 811, 812 |  |
| 814 |  | IPS flooring work | 10d | 2027-04-02 | 2027-04-12 | 798, 810, 812, 813 |  |
| 815 |  | Toilet dado work | 8d | 2027-04-02 | 2027-04-10 | 799, 812, 813 |  |
| 816 |  | Toilet flooring work | 8d | 2027-04-10 | 2027-04-18 | 800, 815 |  |
| 817 |  | Living dinning flooring | 20d | 2027-04-26 | 2027-05-16 | 801, 810, 816 |  |
| 818 |  | Aluminium door-window fixing | 12d | 2027-05-16 | 2027-05-28 | 802, 814, 817 |  |
| 819 |  | Putty primer coat | 6d | 2027-05-16 | 2027-05-22 | 803, 817 |  |
| 820 |  | Door shutter fixing | 8d | 2027-05-16 | 2027-05-24 | 804, 817 |  |
| 821 |  | Electrical wiring work | 8d | 2027-09-15 | 2027-09-23 | 805, 820 |  |
| 822 |  | Painting 1st coat | 8d | 2027-09-30 | 2027-10-08 | 806, 819, 820, 821 |  |
| 823 |  | False ceiling | 8d | 2027-10-08 | 2027-10-16 | 807, 822 |  |
| 824 | 37100.37300.37600.37900.38900.40300.191600 | **Terrace Finishing** | 79.88d | 2026-10-19 | 2027-02-21 |  | start no earlier than 2026-10-19 |
| 825 |  | Terrace waterproofing | 39.94d | 2026-10-19 | 2027-01-12 | 217 |  |
| 826 |  | Terrace finishing | 39.94d | 2027-01-12 | 2027-02-21 | 825 |  |
| 827 | 37100.37300.37600.37900.38900.40300.101300 | **Common Area Finishing** | 600.38d | 2026-01-14 | 2027-10-21 |  | start no earlier than 2026-01-14 |
| 828 |  | Block Work | 39.94d | 2026-01-14 | 2026-02-23 | 228FS+0.25d |  |
| 829 |  | Internal Plaster | 119.94d | 2026-02-19 | 2026-06-19 | 834SS+17.88d |  |
| 830 |  | Staircase railing fixing | 149.94d | 2026-05-23 | 2026-10-20 | 832SS+26.75d, 831SS+26.75d |  |
| 831 |  | Main staircase flooring | 149.94d | 2026-04-27 | 2026-09-24 | 832SS+13.38d |  |
| 832 |  | Fire staircase flooring | 149.94d | 2026-04-13 | 2026-09-10 | 829SS+13.38d, 836SS+26.75d |  |
| 833 |  | Fire door work | 59.94d | 2026-05-23 | 2026-07-22 | 831SS+26.75d, 832SS+26.75d |  |
| 834 |  | Electrical wiring work | 119.94d | 2026-02-01 | 2026-06-01 | 828SS+17.88d |  |
| 835 |  | Lobby flooring | 270d | 2026-07-25 | 2027-06-05 | 817FF+20d |  |
| 836 |  | Ceiling & wall putty-primer | 109.94d | 2026-03-18 | 2026-07-05 | 829SS+26.75d |  |
| 837 |  | Ceiling & wall painting | 99.94d | 2026-04-04 | 2026-07-13 | 836SS+17.88d |  |
| 838 |  | Light fixture supply & installation | 210d | 2027-03-25 | 2027-10-21 | 837SS+310d |  |
| 839 | 37100.37300.37600.37900.38900.40300.46300 | **Balcony Glass Railing** | 646.38d | 2025-12-01 | 2027-11-01 |  | start no earlier than 2025-12-01 |
| 840 |  | 1st Floor | 1.94d | 2027-08-25 | 2027-08-27 | 911 |  |

| ID | WBS | Task | Duration | Start | Finish | Predecessors | Constraint |
| --- | --- | --- | --- | --- | --- | --- | --- |
| 841 |  | 2nd Floor | 1.94d | 2027-08-27 | 2027-08-29 | 840 |  |
| 842 |  | 3rd Floor | 1.94d | 2027-08-29 | 2027-08-31 | 841 |  |
| 843 |  | 4th Floor | 1.94d | 2027-08-31 | 2027-09-02 | 842 |  |
| 844 |  | 5th Floor | 1.94d | 2027-09-02 | 2027-09-04 | 843 |  |
| 845 |  | 2nd Floor | 1.94d | 2027-09-17 | 2027-09-18 | 844 |  |
| 846 |  | 6th Floor | 1.94d | 2027-09-04 | 2027-09-06 | 844 |  |
| 847 |  | 7th Floor | 1.94d | 2027-09-06 | 2027-09-08 | 846 |  |
| 848 |  | 8th Floor | 1.94d | 2027-09-08 | 2027-09-10 | 847 |  |
| 849 |  | 9th Floor | 1.94d | 2027-09-10 | 2027-09-12 | 848 |  |
| 850 |  | 10th Floor | 1.94d | 2027-09-12 | 2027-09-14 | 849 |  |
| 851 |  | 11th Floor | 1.94d | 2027-09-14 | 2027-09-16 | 850 |  |
| 852 |  | 12th Floor | 1.94d | 2027-09-16 | 2027-09-18 | 851 |  |
| 853 |  | 13th Floor | 1.94d | 2027-09-18 | 2027-09-20 | 852 |  |
| 854 |  | 14th Floor | 1.94d | 2027-09-20 | 2027-09-22 | 853 |  |
| 855 |  | 15th Floor | 1.94d | 2027-09-22 | 2027-09-23 | 854 |  |
| 856 |  | 16th Floor | 1.94d | 2027-09-24 | 2027-09-25 | 855 |  |
| 857 |  | 17th Floor | 1.94d | 2027-09-25 | 2027-09-27 | 856 |  |
| 858 |  | 18th Floor | 1.94d | 2027-09-27 | 2027-09-29 | 857 |  |
| 859 |  | 19th Floor | 1.94d | 2027-09-29 | 2027-10-01 | 858 |  |
| 860 |  | 20th Floor | 1.94d | 2027-10-01 | 2027-10-03 | 859 |  |
| 861 |  | 21st Floor | 1.94d | 2027-10-03 | 2027-10-05 | 860 |  |
| 862 |  | 22nd Floor | 1.94d | 2027-10-05 | 2027-10-07 | 861 |  |
| 863 |  | 23rd Floor | 1.94d | 2027-10-07 | 2027-10-09 | 862 |  |
| 864 |  | 24th Floor | 1.94d | 2027-10-09 | 2027-10-11 | 863 |  |
| 865 |  | 25th Floor | 1.94d | 2027-10-11 | 2027-10-13 | 864 |  |
| 866 |  | 26th Floor | 1.94d | 2027-10-13 | 2027-10-15 | 865 |  |
| 867 |  | 27th Floor | 1.94d | 2027-10-15 | 2027-10-17 | 866 |  |
| 868 |  | 28th Floor | 1.94d | 2027-10-17 | 2027-10-19 | 867 |  |
| 869 |  | 29th Floor | 5d | 2025-12-01 | 2025-12-05 |  | start no earlier than 2025-12-01 |
| 870 |  | 29th Floor | 1.94d | 2027-10-19 | 2027-10-21 | 868, 869 |  |
| 871 |  | 30th Floor | 1.94d | 2027-10-21 | 2027-10-23 | 870 |  |
| 872 |  | 31st Floor | 5d | 2026-03-16 | 2026-03-20 |  | start no earlier than 2026-03-16 |
| 873 |  | 31st Floor | 1.94d | 2027-10-23 | 2027-10-24 | 871, 872 |  |
| 874 |  | 32nd Floor | 1.94d | 2027-10-25 | 2027-10-26 | 873 |  |
| 875 |  | 33rd Floor | 1.94d | 2027-10-26 | 2027-10-28 | 874 |  |
| 876 |  | 34th Floor | 1.94d | 2027-10-28 | 2027-10-30 | 875 |  |
| 877 |  | 35th Floor | 1.94d | 2027-10-30 | 2027-11-01 | 876 |  |
| 878 | 37100.37300.37600.37900.95200 | **MEP work** | 1033.25d | 2025-11-30 | 2028-11-21 |  | start no earlier than 2025-11-30 |
| 879 | 37100.37300.37600.37900.95200.98300 | **Electrical work** | 268.19d | 2027-01-14 | 2027-10-09 |  | start no earlier than 2027-01-14 |
| 880 |  | Cable Tray | 89.94d | 2027-01-14 | 2027-04-14 | 222 |  |
| 881 |  | Cable, main & sub main | 79.94d | 2027-02-23 | 2027-05-14 | 880SS+40d |  |
| 882 |  | LT panel & DB | 119.94d | 2027-04-14 | 2027-08-12 | 880 |  |
| 883 |  | Rising main | 89.94d | 2027-06-06 | 2027-09-04 | 880FS+53.38d |  |
| 884 |  | EARTHING Works | 59.94d | 2027-04-27 | 2027-06-26 | 880FS+13.38d |  |
| 885 |  | Advance lightening protection | 59.94d | 2027-02-21 | 2027-04-22 | 826 |  |
| 886 |  | Inverter | 34.94d | 2027-09-04 | 2027-10-09 | 883, 884, 887 |  |
| 887 |  | Energy meter | 59.94d | 2027-05-14 | 2027-07-13 | 881 |  |
| 888 |  | Exhast fan | 60d | 2027-04-03 | 2027-06-02 | 818FF+4.5d |  |
| 889 |  | FTTH | 59.94d | 2027-06-17 | 2027-08-16 | 884FS-9d |  |
| 890 |  | Security System - FA & PA | 54.94d | 2027-08-12 | 2027-10-05 | 882, 889FF |  |
| 891 |  | Solar water heater | 59.94d | 2027-02-21 | 2027-04-22 | 826 |  |
| 892 | 37100.37300.37600.37900.95200.128800 | **Plumbing wrok** | 578.31d | 2025-11-30 | 2027-08-24 |  | start no earlier than 2025-11-30 |
| 893 |  | Terrace looping | 44.94d | 2027-01-12 | 2027-02-26 | 825 |  |
| 894 |  | Shaft Plumbing | 119.94d | 2027-02-26 | 2027-06-26 | 35, 893 |  |
| 895 |  | CP sanitary fixture supply | 75d | 2027-06-10 | 2027-08-24 | 813, 816FS+53.38d |  |
| 896 |  | Cold & flushing water supply | 89.94d | 2025-11-30 | 2026-03-09 | 829SS-80d |  |
| 897 |  | Misc work | 29.94d | 2026-02-28 | 2026-03-30 | 896FS-9d |  |
| 898 | 37100.37300.37600.37900.95200.184300 | **Fire fighting work** | 589.94d | 2026-02-19 | 2027-11-16 |  | start no earlier than 2026-02-19 |
| 899 |  | Fire hydrant work | 89.94d | 2026-02-19 | 2026-05-20 | 829SS+0.38d |  |
| 900 |  | Sprinkler & piping work | 240d | 2027-03-21 | 2027-11-16 | 899FS+260d |  |
| 901 |  | Shaft Downtake works | 89.94d | 2027-01-12 | 2027-04-12 | 825 |  |
| 902 |  | Connection to pump room | 29.94d | 2027-04-12 | 2027-05-12 | 901 |  |
| 903 | 37100.37300.37600.37900.95200.188200 | **Lift work** | 304.88d | 2027-01-14 | 2027-11-15 |  | start no earlier than 2027-01-14 |
| 904 |  | Lift Shaft Handover | 39.94d | 2027-01-14 | 2027-02-23 | 222 |  |
| 905 |  | Lift installation work | 180d | 2027-02-23 | 2027-08-22 | 904 |  |
| 906 |  | Lift testing and commissioning | 84.94d | 2027-08-22 | 2027-11-15 | 905 |  |
| 907 | 37100.37300.37600.37900.95200.195000 | **AC work** | 62.94d | 2028-09-19 | 2028-11-21 |  | start no earlier than 2028-09-19 |
| 908 |  | Split AC | 62.94d | 2028-09-19 | 2028-11-21 | 924FS+132d |  |
| 909 | 37100.37300.37600.37900.184500 | **Tower Completion** | 265.88d | 2027-02-27 | 2027-11-19 |  | start no earlier than 2027-02-27 |
| 910 |  | SURFACE PREPARATION | 79.94d | 2027-02-27 | 2027-05-17 | 260FS+1.88d |  |

| ID | WBS | Task | Duration | Start | Finish | Predecessors | Complete | Constraint |
| --- | --- | --- | --- | --- | --- | --- | --- | --- |
| 911 |  | External Painting | 99.94d | 2027-05-18 | 2027-08-25 | 910 |  |  |
| 912 |  | Final coat of painting | 86d | 2027-08-25 | 2027-11-19 | 911 |  |  |
| 913 |  | Misc. work | 59.94d | 2027-08-25 | 2027-10-24 | 911 |  |  |
| 914 | 37100.37300.37600.37900.195100 | **Entrance lobby** | 60d | 2028-03-11 | 2028-05-10 |  |  | start no earlier than 2028-03-11 |
| 915 |  | Entrance lobby | 60d | 2028-03-11 | 2028-05-10 | 835FS+280d |  |  |
| 916 | 37100.37300.37600.37900.107400 | **Post OC activities** | 301.69d | 2028-04-13 | 2029-02-09 |  |  | start no earlier than 2028-04-13 |
| 917 |  | Wardrobe installation | 142.94d | 2028-04-13 | 2028-09-03 | 924FS-26.75d |  |  |
| 918 |  | Home Automation | 82.94d | 2028-09-19 | 2028-12-11 | 924FS+132d |  |  |
| 919 |  | Wooden Flooring | 142.94d | 2028-09-19 | 2029-02-09 | 924FS+132d |  |  |
| 920 |  | Shaft Closer | 79.94d | 2028-09-19 | 2028-12-08 | 924FS+132d |  |  |
| 921 |  | Modular Kitchen | 142.94d | 2028-09-19 | 2029-02-09 | 924FS+132d |  |  |
| 922 |  | External Elevation Façade | 67.94d | 2028-09-19 | 2028-11-26 | 924FS+132d |  |  |
| 923 |  | OC Application/Readiness | 0.94d | 2027-11-16 | 2027-11-17 | 222, 830FS+7.12d, 906, 823, 888, 890, 891, 886, 885, 877FS-44.5d, 34, 833, 894, 897, 900, 902, 913 |  |  |
| 924 |  | OC Receipt | 0d | 2028-05-10 | 2028-05-10 | 923FS+53.38d, 912, 915 |  |  |
| 925 |  | Offer To Possession | 29.94d | 2029-02-09 | 2029-03-11 | 917, 918, 919, 920, 921, 922, 908 |  |  |
| 926 | 37100.37300.37600.38000 | **Tower 4** | 2016.19d | 2023-09-30 | 2029-08-27 |  | 6% | start no earlier than 2023-09-30 |
| 927 | 37100.37300.37600.38000.97700 | **Substructure** | 833.69d | 2023-09-30 | 2026-04-18 |  | 60% | start no earlier than 2023-09-30 |
| 928 | 37100.37300.37600.38000.97700.108100 | **Soil Bed Preparation** | 763.81d | 2023-09-30 | 2026-02-07 |  | 77% | start no earlier than 2023-09-30 |
| 929 |  | Test Piling | 24.94d | 2023-09-30 | 2023-10-24 |  | 100% | start no earlier than 2023-09-30 |
| 930 |  | Excavation | 29.94d | 2024-01-10 | 2024-02-08 | 7SS+36.74d | 100% | start no earlier than 2024-01-10 |
| 931 |  | Main Piling Work | 168.94d | 2024-04-12 | 2024-12-23 | 7FS-7.45d | 100% | start no earlier than 2024-04-12 |
| 932 |  | Anti-termite | 5d | 2025-11-30 | 2025-12-04 | 931FS+13.38d |  |  |
| 933 |  | PCC | 3.01d | 2024-10-25 | 2024-10-28 | 930FS-14.7d, 932SS+2.98d | 100% | start no earlier than 2024-10-25 |
| 934 |  | Backfilling | 59.94d | 2025-11-30 | 2026-02-07 | 947FS-0.94d |  |  |
| 935 | 37100.37300.37600.38000.97700.103100 | **RCC Structure** | 124.5d | 2024-12-21 | 2025-04-24 |  | 100% | start no earlier than 2024-12-21 |
| 936 | 37100.37300.37600.38000.97700.103100.180800 | **Raft Foundation** | 36.5d | 2024-12-21 | 2025-01-26 |  | 100% | start no earlier than 2024-12-21 |
| 937 |  | Reinforcement | 23d | 2024-12-21 | 2025-01-22 | 933FS-31.15d | 100% | start no earlier than 2024-12-21 |
| 938 |  | Formwork | 24d | 2024-12-31 | 2025-01-23 | 937FF+2d | 100% | start no earlier than 2024-12-31 |
| 939 |  | Concreting | 4d | 2025-01-23 | 2025-01-26 | 938FS-1d | 100% | start no earlier than 2025-01-23 |
| 940 | 37100.37300.37600.38000.97700.103100.180700 | **Basement 1 Slab** | 26d | 2025-01-25 | 2025-02-19 |  | 100% | start no earlier than 2025-01-25 |
| 941 |  | Reinforcement | 22d | 2025-01-25 | 2025-02-15 | 939 | 100% | start no earlier than 2025-01-25 |
| 942 |  | Formwork | 19d | 2025-01-31 | 2025-02-18 | 941SS+3d | 100% | start no earlier than 2025-01-31 |
| 943 |  | Concreting | 4d | 2025-02-16 | 2025-02-19 | 942FS+6.4d | 100% | start no earlier than 2025-02-16 |
| 944 | 37100.37300.37600.38000.97700.103100.180600 | **Basement 2 Slab/GF** | 21.94d | 2025-02-17 | 2025-03-10 |  | 100% | start no earlier than 2025-02-17 |
| 945 |  | Reinforcement | 19d | 2025-02-17 | 2025-03-09 | 943FS-1d | 100% | start no earlier than 2025-02-17 |
| 946 |  | Formwork | 18d | 2025-02-20 | 2025-03-09 | 945SS+3d | 100% | start no earlier than 2025-02-20 |
| 947 |  | Concreting | 1.94d | 2025-03-09 | 2025-03-10 | 946FS-1d | 100% | start no earlier than 2025-03-09 |
| 948 | 37100.37300.37600.38000.97700.103100.180500 | **Podium** | 45d | 2025-03-11 | 2025-04-24 |  | 100% | start no earlier than 2025-03-11 |
| 949 |  | Reinforcement | 15d | 2025-03-11 | 2025-04-21 | 947FS+0.06d | 100% | start no earlier than 2025-03-11 |
| 950 |  | Formwork | 15d | 2025-03-17 | 2025-04-21 | 949SS+1d | 100% | start no earlier than 2025-03-17 |
| 951 |  | Concreting | 1d | 2025-04-24 | 2025-04-24 | 950 | 100% | start no earlier than 2025-04-24 |
| 952 | 37100.37300.37600.38000.97700.173800 | **Substructure Finishing** | 129.81d | 2025-11-30 | 2026-04-18 |  |  | start no earlier than 2025-11-30 |
| 953 |  | Masonary work | 44.94d | 2025-11-30 | 2026-01-23 | 951FS+26.75d |  |  |
| 954 |  | Plaster | 39.94d | 2026-01-23 | 2026-03-04 | 953 |  |  |
| 955 |  | Structural steel | 59.94d | 2025-11-30 | 2026-02-07 | 951FS+53.38d |  |  |
| 956 |  | White Wash | 44.94d | 2026-03-04 | 2026-04-18 | 954 |  |  |
| 957 | 37100.37300.37600.38000.39000 | **Superstructure** | 1405.06d | 2025-04-25 | 2029-05-06 |  | 3% | start no earlier than 2025-04-25 |
| 958 | 37100.37300.37600.38000.39000.43400 | **RCC structure** | 564.75d | 2025-04-25 | 2027-01-17 |  | 29% | start no earlier than 2025-04-25 |
| 959 | 37100.37300.37600.38000.39000.43400.125200 | **1st floor slab** | 69.25d | 2025-04-25 | 2025-07-03 |  | 100% | start no earlier than 2025-04-25 |
| 960 |  | Reinforcement | 20d | 2025-04-25 | 2025-06-01 | 951FS+2.75d | 100% | start no earlier than 2025-04-25 |
| 961 |  | Wall conduiting | 4d | 2025-04-28 | 2025-05-02 | 960SS+2.75d | 100% | start no earlier than 2025-04-28 |
| 962 |  | Formwork | 35d | 2025-04-28 | 2025-07-03 | 960SS+3d | 100% | start no earlier than 2025-04-28 |
| 963 |  | Concreting | 10d | 2025-05-16 | 2025-07-03 | 962FS-45d | 100% | start no earlier than 2025-05-16 |
| 964 | 37100.37300.37600.38000.39000.43400.125100 | **2nd floor slab** | 47d | 2025-07-07 | 2025-08-22 |  | 100% | start no earlier than 2025-07-07 |
| 965 |  | Reinforcement | 20d | 2025-07-07 | 2025-08-18 | 963FS+1d | 100% | start no earlier than 2025-07-07 |
| 966 |  | Wall conduiting | 14d | 2025-07-14 | 2025-08-18 | 961, 965SS+2.75d | 100% | start no earlier than 2025-07-14 |
| 967 |  | Formwork | 17d | 2025-07-14 | 2025-08-18 | 965SS+3d | 100% | start no earlier than 2025-07-14 |
| 968 |  | Concreting | 4d | 2025-08-15 | 2025-08-22 | 967FS-6d | 100% | start no earlier than 2025-08-15 |
| 969 | 37100.37300.37600.38000.39000.43400.125000 | **3rd floor slab** | 17d | 2025-08-24 | 2025-09-09 |  | 100% | start no earlier than 2025-08-24 |
| 970 |  | Reinforcement | 11d | 2025-08-24 | 2025-09-08 | 968FS+1d | 100% | start no earlier than 2025-08-24 |
| 971 |  | Wall conduiting | 8d | 2025-08-28 | 2025-09-08 | 966, 970SS+2.75d | 100% | start no earlier than 2025-08-28 |
| 972 |  | Formwork | 11d | 2025-08-26 | 2025-09-08 | 970SS+3d | 100% | start no earlier than 2025-08-26 |
| 973 |  | Concreting | 4d | 2025-09-06 | 2025-09-09 | 972 | 100% | start no earlier than 2025-09-06 |
| 974 | 37100.37300.37600.38000.39000.43400.124900 | **4th floor slab** | 19d | 2025-09-05 | 2025-09-23 |  | 100% | start no earlier than 2025-09-05 |
| 975 |  | Reinforcement | 8d | 2025-09-07 | 2025-09-22 | 973FS-7d | 100% | start no earlier than 2025-09-07 |
| 976 |  | Wall conduiting | 7d | 2025-09-05 | 2025-09-22 | 971, 975SS+1d | 100% | start no earlier than 2025-09-05 |
| 977 |  | Formwork | 7d | 2025-09-08 | 2025-09-22 | 975SS+1d | 100% | start no earlier than 2025-09-08 |
| 978 |  | Concreting | 5d | 2025-09-15 | 2025-09-23 | 977FS-5d | 100% | start no earlier than 2025-09-15 |
| 979 | 37100.37300.37600.38000.39000.43400.124800 | **5th floor slab** | 16d | 2025-09-18 | 2025-10-03 |  | 100% | start no earlier than 2025-09-18 |
| 980 |  | Reinforcement | 7d | 2025-09-18 | 2025-10-03 | 978FS-10d | 100% | start no earlier than 2025-09-18 |

| ID | WBS | Task | Duration | Start | Finish | Predecessors | Complete | Constraint |
| --- | --- | --- | --- | --- | --- | --- | --- | --- |
| 981 |  | Wall conduiting | 3d | 2025-09-18 | 2025-09-30 | 976, 980SS+1d | 100% | start no earlier than 2025-09-18 |
| 982 |  | Formwork | 6d | 2025-09-18 | 2025-10-02 | 980SS+1d | 100% | start no earlier than 2025-09-18 |
| 983 |  | Concreting | 2d | 2025-09-30 | 2025-10-01 | 982FS-1d | 100% | start no earlier than 2025-09-30 |
| 984 | 37100.37300.37600.38000.39000.43400.124700 | **6th floor slab** | 13d | 2025-10-01 | 2025-10-13 |  | 100% | start no earlier than 2025-10-01 |
| 985 |  | Reinforcement | 12d | 2025-10-01 | 2025-10-12 | 983FS+1d | 100% | start no earlier than 2025-10-01 |
| 986 |  | Wall conduiting | 3d | 2025-10-01 | 2025-10-12 | 981, 985SS+1d | 100% | start no earlier than 2025-10-01 |
| 987 |  | Formwork | 7d | 2025-10-01 | 2025-10-12 | 985SS+1d | 100% | start no earlier than 2025-10-01 |
| 988 |  | Concreting | 3d | 2025-10-11 | 2025-10-13 | 987 | 100% | start no earlier than 2025-10-11 |
| 989 | 37100.37300.37600.38000.39000.43400.124100 | **7th floor slab** | 13d | 2025-10-19 | 2025-10-31 |  | 100% | start no earlier than 2025-10-19 |
| 990 |  | Reinforcement | 8d | 2025-10-19 | 2025-10-30 | 988FS+1d | 100% | start no earlier than 2025-10-19 |
| 991 |  | Wall conduiting | 3d | 2025-10-19 | 2025-10-30 | 986, 990SS+1d | 100% | start no earlier than 2025-10-19 |
| 992 |  | Formwork | 7d | 2025-10-19 | 2025-10-30 | 990SS+1d | 100% | start no earlier than 2025-10-19 |
| 993 |  | Concreting | 5d | 2025-10-27 | 2025-10-31 | 992FS-3d | 100% | start no earlier than 2025-10-27 |
| 994 | 37100.37300.37600.38000.39000.43400.124000 | **8th floor slab** | 19.62d | 2025-10-27 | 2025-11-28 |  | 100% | start no earlier than 2025-10-27 |
| 995 |  | Reinforcement | 8.88d | 2025-10-28 | 2025-11-27 | 993FS+1d | 100% | start no earlier than 2025-10-28 |
| 996 |  | Wall conduiting | 7d | 2025-10-27 | 2025-11-27 | 991, 995SS+1d | 100% | start no earlier than 2025-10-27 |
| 997 |  | Formwork | 10d | 2025-10-28 | 2025-11-27 | 995SS+1d | 100% | start no earlier than 2025-10-28 |
| 998 |  | Concreting | 1d | 2025-11-27 | 2025-11-28 | 997 | 100% | start no earlier than 2025-11-27 |
| 999 | 37100.37300.37600.38000.39000.43400.180400 | **9th floor slab** | 8d | 2025-12-17 | 2025-12-25 |  |  | start no earlier than 2025-12-17 |
| 1000 |  | Reinforcement | 7d | 2025-12-17 | 2025-12-24 | 998 |  |  |
| 1001 |  | Wall conduiting | 3d | 2025-12-18 | 2025-12-21 | 1000SS+1d, 996 |  |  |
| 1002 |  | Formwork | 6d | 2025-12-18 | 2025-12-24 | 1000SS+1d |  |  |
| 1003 |  | Concreting | 1d | 2025-12-24 | 2025-12-25 | 1002 |  |  |
| 1004 | 37100.37300.37600.38000.39000.43400.180300 | **10th floor slab** | 9d | 2025-12-22 | 2025-12-31 |  |  | start no earlier than 2025-12-22 |
| 1005 |  | Reinforcement | 8d | 2025-12-22 | 2025-12-30 | 1000SS+5d |  |  |
| 1006 |  | Wall conduiting | 3d | 2025-12-23 | 2025-12-26 | 1001, 1005SS+1d |  |  |
| 1007 |  | Formwork | 7d | 2025-12-23 | 2025-12-30 | 1005SS+1d |  |  |
| 1008 |  | Concreting | 1d | 2025-12-30 | 2025-12-31 | 1007 |  |  |
| 1009 | 37100.37300.37600.38000.39000.43400.180200 | **11th floor slab** | 8d | 2025-12-31 | 2026-01-08 |  |  | start no earlier than 2025-12-31 |
| 1010 |  | Reinforcement | 7d | 2025-12-31 | 2026-01-07 | 1008 |  |  |
| 1011 |  | Wall conduiting | 3d | 2026-01-01 | 2026-01-04 | 1006, 1010SS+1d |  |  |
| 1012 |  | Formwork | 6d | 2026-01-01 | 2026-01-07 | 1010SS+1d |  |  |
| 1013 |  | Concreting | 1d | 2026-01-07 | 2026-01-08 | 1012 |  |  |
| 1014 | 37100.37300.37600.38000.39000.43400.180100 | **12th floor slab** | 8d | 2026-01-08 | 2026-01-16 |  |  | start no earlier than 2026-01-08 |
| 1015 |  | Reinforcement | 7d | 2026-01-08 | 2026-01-15 | 1013 |  |  |
| 1016 |  | Wall conduiting | 3d | 2026-01-09 | 2026-01-12 | 1011, 1015SS+1d |  |  |
| 1017 |  | Formwork | 6d | 2026-01-09 | 2026-01-15 | 1015SS+1d |  |  |
| 1018 |  | Concreting | 1d | 2026-01-15 | 2026-01-16 | 1017 |  |  |
| 1019 | 37100.37300.37600.38000.39000.43400.180000 | **13th floor slab** | 8d | 2026-01-16 | 2026-01-24 |  |  | start no earlier than 2026-01-16 |
| 1020 |  | Reinforcement | 7d | 2026-01-16 | 2026-01-23 | 1018 |  |  |
| 1021 |  | Wall conduiting | 3d | 2026-01-17 | 2026-01-20 | 1016, 1020SS+1d |  |  |
| 1022 |  | Formwork | 6d | 2026-01-17 | 2026-01-23 | 1020SS+1d |  |  |
| 1023 |  | Concreting | 1d | 2026-01-23 | 2026-01-24 | 1022 |  |  |
| 1024 | 37100.37300.37600.38000.39000.43400.179900 | **14th floor slab** | 8d | 2026-01-24 | 2026-02-01 |  |  | start no earlier than 2026-01-24 |
| 1025 |  | Reinforcement | 7d | 2026-01-24 | 2026-01-31 | 1023 |  |  |
| 1026 |  | Wall conduiting | 3d | 2026-01-25 | 2026-01-28 | 1021, 1025SS+1d |  |  |
| 1027 |  | Formwork | 6d | 2026-01-25 | 2026-01-31 | 1025SS+1d |  |  |
| 1028 |  | Concreting | 1d | 2026-01-31 | 2026-02-01 | 1027 |  |  |
| 1029 | 37100.37300.37600.38000.39000.43400.179800 | **15th floor slab** | 9d | 2026-02-02 | 2026-02-11 |  |  | start no earlier than 2026-02-02 |
| 1030 |  | Reinforcement | 8d | 2026-02-02 | 2026-02-10 | 1028FS+1d |  |  |
| 1031 |  | Wall conduiting | 3d | 2026-02-03 | 2026-02-06 | 1026, 1030SS+1d |  |  |
| 1032 |  | Formwork | 7d | 2026-02-03 | 2026-02-10 | 1030SS+1d |  |  |
| 1033 |  | Concreting | 1d | 2026-02-10 | 2026-02-11 | 1032 |  |  |
| 1034 | 37100.37300.37600.38000.39000.43400.179700 | **16th floor slab** | 8d | 2026-02-11 | 2026-02-19 |  |  | start no earlier than 2026-02-11 |
| 1035 |  | Reinforcement | 7d | 2026-02-11 | 2026-02-18 | 1033 |  |  |
| 1036 |  | Wall conduiting | 3d | 2026-02-12 | 2026-02-15 | 1031, 1035SS+1d |  |  |
| 1037 |  | Formwork | 6d | 2026-02-12 | 2026-02-18 | 1035SS+1d |  |  |
| 1038 |  | Concreting | 1d | 2026-02-18 | 2026-02-19 | 1037 |  |  |
| 1039 | 37100.37300.37600.38000.39000.43400.179600 | **17th floor slab** | 8d | 2026-02-18 | 2026-02-26 |  |  | start no earlier than 2026-02-18 |
| 1040 |  | Reinforcement | 7d | 2026-02-18 | 2026-02-25 | 1038FS-1d |  |  |
| 1041 |  | Wall conduiting | 3d | 2026-02-19 | 2026-02-22 | 1036, 1040SS+1d |  |  |
| 1042 |  | Formwork | 6d | 2026-02-19 | 2026-02-25 | 1040SS+1d |  |  |
| 1043 |  | Concreting | 1d | 2026-02-25 | 2026-02-26 | 1042 |  |  |
| 1044 | 37100.37300.37600.38000.39000.43400.179500 | **18th floor slab** | 8d | 2026-02-25 | 2026-03-05 |  |  | start no earlier than 2026-02-25 |
| 1045 |  | Reinforcement | 7d | 2026-02-25 | 2026-03-04 | 1043FS-1d |  |  |
| 1046 |  | Wall conduiting | 3d | 2026-02-26 | 2026-03-01 | 1041, 1045SS+1d |  |  |
| 1047 |  | Formwork | 6d | 2026-02-26 | 2026-03-04 | 1045SS+1d |  |  |
| 1048 |  | Concreting | 1d | 2026-03-04 | 2026-03-05 | 1047 |  |  |
| 1049 | 37100.37300.37600.38000.39000.43400.179400 | **19th floor slab** | 8d | 2026-03-05 | 2026-03-13 |  |  | start no earlier than 2026-03-05 |
| 1050 |  | Reinforcement | 7d | 2026-03-05 | 2026-03-12 | 1048 |  |  |

| ID | WBS | Task | Duration | Start | Finish | Predecessors | Constraint |
| --- | --- | --- | --- | --- | --- | --- | --- |
| 1051 |  | Wall conduiting | 3d | 2026-03-06 | 2026-03-09 | 1046, 1050SS+1d |  |
| 1052 |  | Formwork | 6d | 2026-03-06 | 2026-03-12 | 1050SS+1d |  |
| 1053 |  | Concreting | 1d | 2026-03-12 | 2026-03-13 | 1052 |  |
| 1054 | 37100.37300.37600.38000.39000.43400.179300 | **20th floor slab** | 9d | 2026-03-14 | 2026-03-23 |  | start no earlier than 2026-03-14 |
| 1055 |  | Reinforcement | 7d | 2026-03-14 | 2026-03-21 | 1053FS+1d |  |
| 1056 |  | Wall conduiting | 3d | 2026-03-15 | 2026-03-18 | 1051, 1055SS+1d |  |
| 1057 |  | Formwork | 6d | 2026-03-15 | 2026-03-21 | 1055SS+1d |  |
| 1058 |  | Concreting | 2d | 2026-03-21 | 2026-03-23 | 1057 |  |
| 1059 | 37100.37300.37600.38000.39000.43400.179200 | **21st floor slab** | 9d | 2026-03-24 | 2026-04-02 |  | start no earlier than 2026-03-24 |
| 1060 |  | Reinforcement | 9d | 2026-03-24 | 2026-04-02 | 1058FS+1d |  |
| 1061 |  | Wall conduiting | 3d | 2026-03-25 | 2026-03-28 | 1056, 1060SS+1d |  |
| 1062 |  | Formwork | 7d | 2026-03-25 | 2026-04-01 | 1060SS+1d |  |
| 1063 |  | Concreting | 1d | 2026-04-01 | 2026-04-02 | 1062 |  |
| 1064 | 37100.37300.37600.38000.39000.43400.179100 | **22nd floor slab** | 10d | 2026-04-09 | 2026-04-19 |  | start no earlier than 2026-04-09 |
| 1065 |  | Reinforcement | 9d | 2026-04-09 | 2026-04-18 | 1063FS+7d |  |
| 1066 |  | Wall conduiting | 3d | 2026-04-10 | 2026-04-13 | 1061, 1065SS+1d |  |
| 1067 |  | Formwork | 8d | 2026-04-10 | 2026-04-18 | 1065SS+1d |  |
| 1068 |  | Concreting | 1d | 2026-04-18 | 2026-04-19 | 1067 |  |
| 1069 | 37100.37300.37600.38000.39000.43400.179000 | **23rd floor slab** | 10d | 2026-04-20 | 2026-04-30 |  | start no earlier than 2026-04-20 |
| 1070 |  | Reinforcement | 9d | 2026-04-20 | 2026-04-29 | 1068FS+1d |  |
| 1071 |  | Wall conduiting | 3d | 2026-04-21 | 2026-04-24 | 1066, 1070SS+1d |  |
| 1072 |  | Formwork | 8d | 2026-04-21 | 2026-04-29 | 1070SS+1d |  |
| 1073 |  | Concreting | 1d | 2026-04-29 | 2026-04-30 | 1072 |  |
| 1074 | 37100.37300.37600.38000.39000.43400.178900 | **24th floor slab** | 14d | 2026-05-01 | 2026-05-15 |  | start no earlier than 2026-05-01 |
| 1075 |  | Reinforcement | 10d | 2026-05-01 | 2026-05-11 | 1073FS+1d |  |
| 1076 |  | Wall conduiting | 3d | 2026-05-02 | 2026-05-05 | 1071, 1075SS+1d |  |
| 1077 |  | Formwork | 12d | 2026-05-02 | 2026-05-14 | 1075SS+1d |  |
| 1078 |  | Concreting | 1d | 2026-05-14 | 2026-05-15 | 1077 |  |
| 1079 | 37100.37300.37600.38000.39000.43400.178800 | **25th floor slab** | 15d | 2026-05-16 | 2026-05-31 |  | start no earlier than 2026-05-16 |
| 1080 |  | Reinforcement | 10d | 2026-05-16 | 2026-05-26 | 1078FS+1d |  |
| 1081 |  | Wall conduiting | 3d | 2026-05-17 | 2026-05-20 | 1076, 1080SS+1d |  |
| 1082 |  | Formwork | 13d | 2026-05-17 | 2026-05-30 | 1080SS+1d |  |
| 1083 |  | Concreting | 1d | 2026-05-30 | 2026-05-31 | 1082 |  |
| 1084 | 37100.37300.37600.38000.39000.43400.178700 | **26th floor slab** | 10d | 2026-06-01 | 2026-06-11 |  | start no earlier than 2026-06-01 |
| 1085 |  | Reinforcement | 9d | 2026-06-01 | 2026-06-10 | 1083FS+1d |  |
| 1086 |  | Wall conduiting | 3d | 2026-06-02 | 2026-06-05 | 1081, 1085SS+1d |  |
| 1087 |  | Formwork | 8d | 2026-06-02 | 2026-06-10 | 1085SS+1d |  |
| 1088 |  | Concreting | 1d | 2026-06-10 | 2026-06-11 | 1087 |  |
| 1089 | 37100.37300.37600.38000.39000.43400.178600 | **27th floor slab** | 10d | 2026-06-12 | 2026-06-22 |  | start no earlier than 2026-06-12 |
| 1090 |  | Reinforcement | 9d | 2026-06-12 | 2026-06-21 | 1088FS+1d |  |
| 1091 |  | Wall conduiting | 3d | 2026-06-13 | 2026-06-16 | 1086, 1090SS+1d |  |
| 1092 |  | Formwork | 8d | 2026-06-13 | 2026-06-21 | 1090SS+1d |  |
| 1093 |  | Concreting | 1d | 2026-06-21 | 2026-06-22 | 1092 |  |
| 1094 | 37100.37300.37600.38000.39000.43400.178500 | **28th floor slab** | 10d | 2026-06-23 | 2026-07-03 |  | start no earlier than 2026-06-23 |
| 1095 |  | Reinforcement | 9d | 2026-06-23 | 2026-07-02 | 1093FS+1d |  |
| 1096 |  | Wall conduiting | 3d | 2026-06-24 | 2026-06-27 | 1091, 1095SS+1d |  |
| 1097 |  | Formwork | 8d | 2026-06-24 | 2026-07-02 | 1095SS+1d |  |
| 1098 |  | Concreting | 1d | 2026-07-02 | 2026-07-03 | 1097 |  |
| 1099 | 37100.37300.37600.38000.39000.43400.178400 | **29th floor slab** | 10d | 2026-07-07 | 2026-07-17 |  | start no earlier than 2026-07-07 |
| 1100 |  | Reinforcement | 9d | 2026-07-07 | 2026-07-16 | 1098FS+4d |  |
| 1101 |  | Wall conduiting | 3d | 2026-07-08 | 2026-07-11 | 1096, 1100SS+1d |  |
| 1102 |  | Formwork | 8d | 2026-07-08 | 2026-07-16 | 1100SS+1d |  |
| 1103 |  | Concreting | 1d | 2026-07-16 | 2026-07-17 | 1102 |  |
| 1104 | 37100.37300.37600.38000.39000.43400.178300 | **30th floor slab** | 10d | 2026-07-17 | 2026-07-27 |  | start no earlier than 2026-07-17 |
| 1105 |  | Reinforcement | 9d | 2026-07-17 | 2026-07-26 | 1103 |  |
| 1106 |  | Wall conduiting | 3d | 2026-07-18 | 2026-07-21 | 1101, 1105SS+1d |  |
| 1107 |  | Formwork | 8d | 2026-07-18 | 2026-07-26 | 1105SS+1d |  |
| 1108 |  | Concreting | 1d | 2026-07-26 | 2026-07-27 | 1107 |  |
| 1109 | 37100.37300.37600.38000.39000.43400.178200 | **31st floor slab** | 11.75d | 2026-07-27 | 2026-08-07 |  | start no earlier than 2026-07-27 |
| 1110 |  | Reinforcement | 8.94d | 2026-07-27 | 2026-08-05 | 1108 |  |
| 1111 |  | Wall conduiting | 1.94d | 2026-07-28 | 2026-07-30 | 1106, 1110SS+1d |  |
| 1112 |  | Formwork | 8.94d | 2026-07-29 | 2026-08-07 | 1110SS+1.88d |  |
| 1113 |  | Concreting | 0.94d | 2026-08-07 | 2026-08-07 | 1112 |  |
| 1114 | 37100.37300.37600.38000.39000.43400.178100 | **32nd floor slab** | 12.75d | 2026-08-12 | 2026-08-24 |  | start no earlier than 2026-08-12 |
| 1115 |  | Reinforcement | 9.94d | 2026-08-12 | 2026-08-21 | 1113FS+4d |  |
| 1116 |  | Wall conduiting | 1.94d | 2026-08-13 | 2026-08-14 | 1111, 1115SS+1d |  |
| 1117 |  | Formwork | 9.94d | 2026-08-13 | 2026-08-23 | 1115SS+1.88d |  |
| 1118 |  | Concreting | 0.94d | 2026-08-23 | 2026-08-24 | 1117 |  |
| 1119 | 37100.37300.37600.38000.39000.43400.178000 | **33rd floor slab** | 11.75d | 2026-08-26 | 2026-09-07 |  | start no earlier than 2026-08-26 |
| 1120 |  | Reinforcement | 8.94d | 2026-08-26 | 2026-09-04 | 1118FS+2d |  |

| ID | WBS | Task | Duration | Start | Finish | Predecessors | Constraint |
| --- | --- | --- | --- | --- | --- | --- | --- |
| 1121 |  | Wall conduiting | 1.94d | 2026-08-27 | 2026-08-29 | 1116, 1120SS+1d |  |
| 1122 |  | Formwork | 8.94d | 2026-08-28 | 2026-09-06 | 1120SS+1.88d |  |
| 1123 |  | Concreting | 0.94d | 2026-09-06 | 2026-09-07 | 1122 |  |
| 1124 | 37100.37300.37600.38000.39000.43400.177900 | **34th floor slab** | 12.75d | 2026-09-07 | 2026-09-20 |  | start no earlier than 2026-09-07 |
| 1125 |  | Reinforcement | 9.94d | 2026-09-07 | 2026-09-17 | 1123 |  |
| 1126 |  | Wall conduiting | 1.94d | 2026-09-08 | 2026-09-10 | 1121, 1125SS+1d |  |
| 1127 |  | Formwork | 9.94d | 2026-09-09 | 2026-09-19 | 1125SS+1.88d |  |
| 1128 |  | Concreting | 0.94d | 2026-09-19 | 2026-09-20 | 1127 |  |
| 1129 | 37100.37300.37600.38000.39000.43400.177800 | **35th floor slab** | 11.75d | 2026-09-26 | 2026-10-07 |  | start no earlier than 2026-09-26 |
| 1130 |  | Reinforcement | 8.94d | 2026-09-26 | 2026-10-05 | 1128FS+6d |  |
| 1131 |  | Wall conduiting | 1.94d | 2026-09-27 | 2026-09-29 | 1126, 1130SS+1d |  |
| 1132 |  | Formwork | 7.94d | 2026-09-29 | 2026-10-07 | 1131SS+1.88d |  |
| 1133 |  | Concreting | 0.94d | 2026-10-07 | 2026-10-07 | 1132 |  |
| 1134 | 37100.37300.37600.38000.39000.43400.177700 | **Terrace floor slab** | 21d | 2026-10-08 | 2026-10-28 |  | start no earlier than 2026-10-08 |
| 1135 |  | Reinforcement | 21d | 2026-10-08 | 2026-10-28 | 1133 |  |
| 1136 |  | Wall conduiting | 8d | 2026-10-09 | 2026-10-16 | 1131, 1135SS+1d |  |
| 1137 |  | Formwork | 14d | 2026-10-09 | 2026-10-23 | 1135SS+1.88d |  |
| 1138 |  | Concreting | 1d | 2026-10-23 | 2026-10-24 | 1137 |  |
| 1139 | 37100.37300.37600.38000.39000.43400.177500 | **OHT & Mumty** | 39.5d | 2026-10-24 | 2027-01-17 |  | start no earlier than 2026-10-24 |
| 1140 |  | Reinforcement | 29.94d | 2026-10-24 | 2027-01-07 | 1138 |  |
| 1141 |  | Wall conduiting | 4.94d | 2026-10-25 | 2026-10-30 | 1136, 1140SS+1d |  |
| 1142 |  | Formwork | 32.94d | 2026-10-28 | 2027-01-14 | 1140SS+3.62d |  |
| 1143 |  | Concreting | 2.94d | 2027-01-14 | 2027-01-17 | 1142 |  |
| 1144 | 37100.37300.37600.38000.39000.45900 | **Post Pour Activities** | 401.12d | 2025-11-30 | 2027-02-28 |  | start no earlier than 2025-11-30 |
| 1145 |  | 1st Floor | 7d | 2025-11-30 | 2025-12-16 | 973FS+0.25d |  |
| 1146 |  | 2nd Floor | 7d | 2025-12-16 | 2025-12-23 | 1145FS+0.25d, 978FS+0.25d |  |
| 1147 |  | 3rd Floor | 7d | 2025-12-23 | 2025-12-30 | 1146FS+0.25d, 993FS+0.25d |  |
| 1148 |  | 4th Floor | 7d | 2025-12-31 | 2026-01-06 | 1147FS+0.25d, 998FS+0.25d |  |
| 1149 |  | 5th Floor | 7d | 2026-01-07 | 2026-01-14 | 1148FS+0.25d, 1003FS+0.25d |  |
| 1150 |  | 6th Floor | 7d | 2026-01-14 | 2026-01-21 | 1149FS+0.25d, 1008FS+0.25d |  |
| 1151 |  | 7th Floor | 7d | 2026-01-21 | 2026-01-28 | 1150FS+0.25d, 1013FS+0.25d |  |
| 1152 |  | 8th Floor | 7d | 2026-01-29 | 2026-02-04 | 1151FS+0.25d, 1018FS+0.25d |  |
| 1153 |  | 9th Floor | 7d | 2026-02-05 | 2026-02-12 | 1152FS+0.25d, 1023FS+0.25d |  |
| 1154 |  | 10th Floor | 7d | 2026-02-12 | 2026-02-19 | 1153FS+0.25d, 1028FS+0.25d |  |
| 1155 |  | 11th Floor | 7d | 2026-02-19 | 2026-02-26 | 1154, 1038 |  |
| 1156 |  | 12th Floor | 7d | 2026-02-26 | 2026-03-05 | 1155, 1043 |  |
| 1157 |  | 13th Floor | 7d | 2026-03-05 | 2026-03-12 | 1156, 1048 |  |
| 1158 |  | 14th Floor | 7d | 2026-03-13 | 2026-03-20 | 1157, 1053 |  |
| 1159 |  | 15th Floor | 7d | 2026-03-23 | 2026-03-30 | 1158, 1058 |  |
| 1160 |  | 16th Floor | 7d | 2026-04-02 | 2026-04-09 | 1159, 1063 |  |
| 1161 |  | 17th Floor | 7d | 2026-04-19 | 2026-04-26 | 1160, 1068 |  |
| 1162 |  | 18th Floor | 7d | 2026-04-30 | 2026-05-07 | 1161, 1073 |  |
| 1163 |  | 19th Floor | 7d | 2026-05-15 | 2026-05-22 | 1162, 1078 |  |
| 1164 |  | 20th Floor | 7d | 2026-05-31 | 2026-06-07 | 1163, 1083 |  |
| 1165 |  | 21st Floor | 7d | 2026-06-11 | 2026-06-18 | 1164, 1088 |  |
| 1166 |  | 22nd Floor | 7d | 2026-06-22 | 2026-06-29 | 1165, 1093 |  |
| 1167 |  | 23rd Floor | 7d | 2026-07-03 | 2026-07-10 | 1166, 1098 |  |
| 1168 |  | 24th Floor | 7d | 2026-07-17 | 2026-07-24 | 1167, 1103 |  |
| 1169 |  | 25th Floor | 7d | 2026-07-27 | 2026-08-03 | 1168, 1108 |  |
| 1170 |  | 26th Floor | 7d | 2026-08-08 | 2026-08-14 | 1169, 1113 |  |
| 1171 |  | 27th Floor | 7d | 2026-08-24 | 2026-08-31 | 1170, 1118 |  |
| 1172 |  | 28th Floor | 7d | 2026-09-07 | 2026-09-14 | 1171, 1123 |  |
| 1173 |  | 29th Floor | 7d | 2026-09-20 | 2026-09-27 | 1172, 1128 |  |
| 1174 |  | 30th Floor | 7d | 2026-10-08 | 2026-10-14 | 1173, 1133 |  |
| 1175 |  | 31st Floor | 7d | 2026-10-24 | 2026-10-31 | 1174, 1138 |  |
| 1176 |  | 32nd Flood | 7d | 2027-01-17 | 2027-01-24 | 1175, 1143 |  |
| 1177 |  | 33rd Floor | 7d | 2027-01-24 | 2027-01-31 | 1176 |  |
| 1178 |  | 34th Floor | 7d | 2027-01-31 | 2027-02-07 | 1177 |  |
| 1179 |  | 35th Floor | 7d | 2027-02-07 | 2027-02-14 | 1178 |  |
| 1180 |  | Terrace | 7d | 2027-02-14 | 2027-02-21 | 1179 |  |
| 1181 |  | Mumty & Machine Room | 7d | 2027-02-21 | 2027-02-28 | 1180 |  |
| 1182 | 37100.37300.37600.38000.39000.40400 | **Finishing work** | 1192.19d | 2025-12-16 | 2029-05-06 |  | start no earlier than 2025-12-16 |
| 1183 | 37100.37300.37600.38000.39000.40400.41400 | **Flat finishing** | 1192.19d | 2025-12-16 | 2029-05-06 |  | start no earlier than 2025-12-16 |
| 1184 | 37100.37300.37600.38000.39000.40400.41400.61100 | **1st Floor** | 785.19d | 2025-12-16 | 2028-03-25 |  | start no earlier than 2025-12-16 |
| 1185 |  | Block Work | 5d | 2025-12-16 | 2025-12-21 | 1145FS+0.25d |  |
| 1186 |  | Door Frame Fixing | 5d | 2025-12-21 | 2025-12-26 | 1185 |  |
| 1187 |  | Internal Plumbing Works | 5d | 2025-12-17 | 2025-12-22 | 1185SS+1d |  |
| 1188 |  | Waterproofing | 8d | 2025-12-22 | 2025-12-30 | 1187 |  |
| 1189 |  | Internal Plaster | 7d | 2025-12-22 | 2025-12-29 | 1185FS+1d |  |
| 1190 |  | IPS flooring work | 7d | 2025-12-30 | 2026-01-06 | 1186, 1187, 1188 |  |

| ID | WBS | Task | Duration | Start | Finish | Predecessors | Constraint |
| --- | --- | --- | --- | --- | --- | --- | --- |
| 1191 |  | Toilet dado work | 7d | 2025-12-30 | 2026-01-06 | 1188, 1189 |  |
| 1192 |  | Toilet flooring work | 7d | 2026-01-06 | 2026-01-13 | 1191 |  |
| 1193 |  | Living dinning flooring | 8d | 2026-02-09 | 2026-02-17 | 1186FS+45d |  |
| 1194 |  | Aluminium door-window fixing | 7d | 2026-02-20 | 2026-02-27 | 1190FS+45d |  |
| 1195 |  | Putty primer coat | 6d | 2026-02-17 | 2026-02-23 | 1193 |  |
| 1196 |  | Door shutter fixing | 8d | 2026-02-17 | 2026-02-25 | 1193 |  |
| 1197 |  | Electrical wiring work | 8d | 2028-03-01 | 2028-03-09 | 1842FS-90d |  |
| 1198 |  | Painting 1st coat | 8d | 2028-03-09 | 2028-03-17 | 1195, 1196, 1197 |  |
| 1199 |  | False ceiling | 8d | 2028-03-17 | 2028-03-25 | 1198 |  |
| 1200 | 37100.37300.37600.38000.39000.40400.41400.61200 | **2nd Floor** | 787.94d | 2025-12-21 | 2028-04-02 |  | start no earlier than 2025-12-21 |
| 1201 |  | Block Work | 8d | 2025-12-21 | 2025-12-29 | 1185FS+0.25d |  |
| 1202 |  | Door Frame Fixing | 9d | 2025-12-29 | 2026-01-07 | 1186, 1201 |  |
| 1203 |  | Internal Plumbing Works | 8d | 2025-12-29 | 2026-01-06 | 1187, 1201 |  |
| 1204 |  | Waterproofing | 10d | 2026-01-06 | 2026-01-16 | 1188, 1203 |  |
| 1205 |  | Internal Plaster | 8d | 2025-12-29 | 2026-01-06 | 1189FS+0.25d |  |
| 1206 |  | IPS flooring work | 10d | 2026-01-16 | 2026-01-26 | 1190, 1202, 1203, 1204 |  |
| 1207 |  | Toilet dado work | 8d | 2026-01-16 | 2026-01-24 | 1191, 1204, 1205 |  |
| 1208 |  | Toilet flooring work | 8d | 2026-01-24 | 2026-02-01 | 1192, 1207 |  |
| 1209 |  | Living dinning flooring | 12d | 2026-02-17 | 2026-03-01 | 1193FS+0.25d |  |
| 1210 |  | Aluminium door-window fixing | 12d | 2026-02-27 | 2026-03-11 | 1194FS+0.25d |  |
| 1211 |  | Putty primer coat | 6d | 2026-03-01 | 2026-03-07 | 1195, 1209 |  |
| 1212 |  | Door shutter fixing | 8d | 2026-03-01 | 2026-03-09 | 1196, 1209 |  |
| 1213 |  | Electrical wiring work | 8d | 2028-03-09 | 2028-03-17 | 1197, 1212 |  |
| 1214 |  | Painting 1st coat | 8d | 2028-03-17 | 2028-03-25 | 1198, 1211, 1212, 1213 |  |
| 1215 |  | False ceiling | 8d | 2028-03-25 | 2028-04-02 | 1199, 1214 |  |
| 1216 | 37100.37300.37600.38000.39000.40400.41400.61300 | **3rd Floor** | 787.69d | 2025-12-30 | 2028-04-10 |  | start no earlier than 2025-12-30 |
| 1217 |  | Block Work | 8d | 2025-12-30 | 2026-01-06 | 1201FS+0.25d |  |
| 1218 |  | Door Frame Fixing | 9d | 2026-01-07 | 2026-01-16 | 1202, 1217 |  |
| 1219 |  | Internal Plumbing Works | 8d | 2026-01-07 | 2026-01-14 | 1203, 1217 |  |
| 1220 |  | Waterproofing | 10d | 2026-01-16 | 2026-01-26 | 1204, 1219 |  |
| 1221 |  | Internal Plaster | 8d | 2026-01-07 | 2026-01-14 | 1205FS+0.25d |  |
| 1222 |  | IPS flooring work | 10d | 2026-01-26 | 2026-02-05 | 1206, 1218, 1220, 1221 |  |
| 1223 |  | Toilet dado work | 8d | 2026-01-26 | 2026-02-03 | 1207, 1220, 1221 |  |
| 1224 |  | Toilet flooring work | 8d | 2026-02-02 | 2026-02-09 | 1208FS+0.25d |  |
| 1225 |  | Living dinning flooring | 12d | 2026-03-02 | 2026-03-13 | 1209FS+0.25d |  |
| 1226 |  | Aluminium door-window fixing | 12d | 2026-03-12 | 2026-03-23 | 1210FS+0.25d |  |
| 1227 |  | Putty primer coat | 6d | 2026-03-14 | 2026-03-19 | 1211, 1225 |  |
| 1228 |  | Door shutter fixing | 8d | 2026-03-14 | 2026-03-21 | 1212, 1225 |  |
| 1229 |  | Electrical wiring work | 8d | 2028-03-17 | 2028-03-25 | 1213, 1228 |  |
| 1230 |  | Painting 1st coat | 8d | 2028-03-25 | 2028-04-02 | 1214, 1227, 1228, 1229 |  |
| 1231 |  | False ceiling | 8d | 2028-04-02 | 2028-04-10 | 1215, 1230 |  |
| 1232 | 37100.37300.37600.38000.39000.40400.41400.61400 | **4th Floor** | 773.19d | 2026-01-21 | 2028-04-18 |  | start no earlier than 2026-01-21 |
| 1233 |  | Block Work | 8d | 2026-01-21 | 2026-01-29 | 1150, 1217 |  |
| 1234 |  | Door Frame Fixing | 9d | 2026-01-29 | 2026-02-07 | 1218, 1233 |  |
| 1235 |  | Internal Plumbing Works | 8d | 2026-01-29 | 2026-02-06 | 1219, 1233 |  |
| 1236 |  | Waterproofing | 10d | 2026-02-06 | 2026-02-16 | 1220, 1235 |  |
| 1237 |  | Internal Plaster | 8d | 2026-02-16 | 2026-02-24 | 1221, 1234, 1235, 1236 |  |
| 1238 |  | IPS flooring work | 10d | 2026-02-24 | 2026-03-06 | 1222, 1234, 1236, 1237 |  |
| 1239 |  | Toilet dado work | 8d | 2026-02-24 | 2026-03-04 | 1223, 1236, 1237 |  |
| 1240 |  | Toilet flooring work | 8d | 2026-03-04 | 2026-03-12 | 1224, 1239 |  |
| 1241 |  | Living dinning flooring | 12d | 2026-03-14 | 2026-03-26 | 1225FS+0.25d |  |
| 1242 |  | Aluminium door-window fixing | 12d | 2026-03-24 | 2026-04-05 | 1226FS+0.25d |  |
| 1243 |  | Putty primer coat | 6d | 2026-03-26 | 2026-04-01 | 1227, 1241 |  |
| 1244 |  | Door shutter fixing | 8d | 2026-03-26 | 2026-04-03 | 1228, 1241 |  |
| 1245 |  | Electrical wiring work | 8d | 2028-03-25 | 2028-04-02 | 1229, 1244 |  |
| 1246 |  | Painting 1st coat | 8d | 2028-04-02 | 2028-04-10 | 1230, 1243, 1244, 1245 |  |
| 1247 |  | False ceiling | 8d | 2028-04-10 | 2028-04-18 | 1231, 1246 |  |
| 1248 | 37100.37300.37600.38000.39000.40400.41400.61500 | **5th Floor** | 781.94d | 2026-01-29 | 2028-05-05 |  | start no earlier than 2026-01-29 |
| 1249 |  | Block Work | 8d | 2026-01-29 | 2026-02-06 | 1233FS+0.25d |  |
| 1250 |  | Door Frame Fixing | 9d | 2026-02-07 | 2026-02-16 | 1234, 1249 |  |
| 1251 |  | Internal Plumbing Works | 8d | 2026-02-06 | 2026-02-14 | 1235, 1249 |  |
| 1252 |  | Waterproofing | 10d | 2026-02-16 | 2026-02-26 | 1236, 1251 |  |
| 1253 |  | Internal Plaster | 8d | 2026-02-27 | 2026-03-07 | 1237FS+2.75d |  |
| 1254 |  | IPS flooring work | 10d | 2026-03-07 | 2026-03-17 | 1238, 1250, 1252, 1253 |  |
| 1255 |  | Toilet dado work | 8d | 2026-03-07 | 2026-03-15 | 1239, 1252, 1253 |  |
| 1256 |  | Toilet flooring work | 8d | 2026-03-15 | 2026-03-23 | 1240, 1255 |  |
| 1257 |  | Living dinning flooring | 12d | 2026-03-26 | 2026-04-07 | 1241FS+0.25d |  |
| 1258 |  | Aluminium door-window fixing | 12d | 2026-04-05 | 2026-04-17 | 1242FS+0.25d |  |
| 1259 |  | Putty primer coat | 6d | 2026-04-07 | 2026-04-13 | 1243, 1257 |  |
| 1260 |  | Door shutter fixing | 8d | 2026-04-07 | 2026-04-15 | 1244, 1257 |  |

| ID | WBS | Task | Duration | Start | Finish | Predecessors | Constraint |
| --- | --- | --- | --- | --- | --- | --- | --- |
| 1261 |  | Electrical wiring work | 17d | 2028-04-02 | 2028-04-19 | 1245, 1260 |  |
| 1262 |  | Painting 1st coat | 8d | 2028-04-19 | 2028-04-27 | 1246, 1259, 1260, 1261 |  |
| 1263 |  | False ceiling | 8d | 2028-04-27 | 2028-05-05 | 1247, 1262 |  |
| 1264 | 37100.37300.37600.38000.39000.40400.41400.61600 | **6th Floor** | 781.69d | 2026-02-07 | 2028-05-13 |  | start no earlier than 2026-02-07 |
| 1265 |  | Block Work | 5d | 2026-02-07 | 2026-02-11 | 1249FS+0.25d |  |
| 1266 |  | Door Frame Fixing | 5d | 2026-02-16 | 2026-02-21 | 998, 1250 |  |
| 1267 |  | Internal Plumbing Works | 5d | 2026-02-14 | 2026-02-19 | 1251, 1265 |  |
| 1268 |  | Waterproofing | 8d | 2026-02-26 | 2026-03-06 | 1252, 1267 |  |
| 1269 |  | Internal Plaster | 7d | 2026-03-07 | 2026-03-14 | 1253FS+0.25d |  |
| 1270 |  | IPS flooring work | 7d | 2026-03-17 | 2026-03-24 | 1254, 1266, 1268, 1269 |  |
| 1271 |  | Toilet dado work | 7d | 2026-03-15 | 2026-03-22 | 1255, 1268, 1269 |  |
| 1272 |  | Toilet flooring work | 7d | 2026-03-23 | 2026-03-30 | 1256, 1271 |  |
| 1273 |  | Living dinning flooring | 8d | 2026-04-07 | 2026-04-15 | 1257FS+0.25d |  |
| 1274 |  | Aluminium door-window fixing | 7d | 2026-04-17 | 2026-04-24 | 1258FS+0.25d |  |
| 1275 |  | Putty primer coat | 6d | 2026-04-15 | 2026-04-21 | 1259, 1273 |  |
| 1276 |  | Door shutter fixing | 8d | 2026-04-15 | 2026-04-23 | 1260, 1273 |  |
| 1277 |  | Electrical wiring work | 8d | 2028-04-19 | 2028-04-27 | 1261, 1276 |  |
| 1278 |  | Painting 1st coat | 8d | 2028-04-27 | 2028-05-05 | 1262, 1275, 1276, 1277 |  |
| 1279 |  | False ceiling | 8d | 2028-05-05 | 2028-05-13 | 1263, 1278 |  |
| 1280 | 37100.37300.37600.38000.39000.40400.41400.61700 | **7th Floor** | 784.44d | 2026-02-12 | 2028-05-21 |  | start no earlier than 2026-02-12 |
| 1281 |  | Block Work | 5d | 2026-02-12 | 2026-02-17 | 1265FS+0.25d |  |
| 1282 |  | Door Frame Fixing | 5d | 2026-02-21 | 2026-02-26 | 1266, 1281 |  |
| 1283 |  | Internal Plumbing Works | 5d | 2026-02-19 | 2026-02-24 | 1267, 1281 |  |
| 1284 |  | Waterproofing | 8d | 2026-03-06 | 2026-03-14 | 1268, 1283 |  |
| 1285 |  | Internal Plaster | 7d | 2026-03-14 | 2026-03-21 | 1269FS+0.25d |  |
| 1286 |  | IPS flooring work | 7d | 2026-03-24 | 2026-03-31 | 1270, 1282, 1284, 1285 |  |
| 1287 |  | Toilet dado work | 7d | 2026-03-22 | 2026-03-29 | 1271, 1284, 1285 |  |
| 1288 |  | Toilet flooring work | 7d | 2026-03-30 | 2026-04-06 | 1272, 1287 |  |
| 1289 |  | Living dinning flooring | 8d | 2026-04-16 | 2026-04-23 | 1273FS+0.25d |  |
| 1290 |  | Aluminium door-window fixing | 7d | 2026-04-25 | 2026-05-01 | 1274FS+0.25d |  |
| 1291 |  | Putty primer coat | 6d | 2026-04-24 | 2026-04-29 | 1275, 1289 |  |
| 1292 |  | Door shutter fixing | 8d | 2026-04-24 | 2026-05-01 | 1276, 1289 |  |
| 1293 |  | Electrical wiring work | 8d | 2028-04-27 | 2028-05-05 | 1277, 1292 |  |
| 1294 |  | Painting 1st coat | 8d | 2028-05-05 | 2028-05-13 | 1278, 1291, 1292, 1293 |  |
| 1295 |  | False ceiling | 8d | 2028-05-13 | 2028-05-21 | 1279, 1294 |  |
| 1296 | 37100.37300.37600.38000.39000.40400.41400.61800 | **8th Floor** | 787.19d | 2026-02-17 | 2028-05-29 |  | start no earlier than 2026-02-17 |
| 1297 |  | Block Work | 5d | 2026-02-17 | 2026-02-22 | 1281FS+0.25d |  |
| 1298 |  | Door Frame Fixing | 5d | 2026-02-26 | 2026-03-03 | 1282, 1297 |  |
| 1299 |  | Internal Plumbing Works | 5d | 2026-02-24 | 2026-03-01 | 1283, 1297 |  |
| 1300 |  | Waterproofing | 8d | 2026-03-14 | 2026-03-22 | 1284, 1299 |  |
| 1301 |  | Internal Plaster | 7d | 2026-03-22 | 2026-03-28 | 1285FS+0.25d |  |
| 1302 |  | IPS flooring work | 7d | 2026-03-31 | 2026-04-07 | 1286, 1298, 1300, 1301 |  |
| 1303 |  | Toilet dado work | 7d | 2026-03-29 | 2026-04-05 | 1287, 1300, 1301 |  |
| 1304 |  | Toilet flooring work | 7d | 2026-04-06 | 2026-04-13 | 1288, 1303 |  |
| 1305 |  | Living dinning flooring | 8d | 2026-04-24 | 2026-05-02 | 1289FS+0.25d |  |
| 1306 |  | Aluminium door-window fixing | 7d | 2026-05-02 | 2026-05-09 | 1290FS+0.25d |  |
| 1307 |  | Putty primer coat | 6d | 2026-05-02 | 2026-05-08 | 1291, 1305 |  |
| 1308 |  | Door shutter fixing | 8d | 2026-05-02 | 2026-05-10 | 1292, 1305 |  |
| 1309 |  | Electrical wiring work | 8d | 2028-05-05 | 2028-05-13 | 1293, 1308 |  |
| 1310 |  | Painting 1st coat | 8d | 2028-05-13 | 2028-05-21 | 1294, 1307, 1308, 1309 |  |
| 1311 |  | False ceiling | 8d | 2028-05-21 | 2028-05-29 | 1295, 1310 |  |
| 1312 | 37100.37300.37600.38000.39000.40400.41400.61900 | **9th Floor** | 796.19d | 2026-02-26 | 2028-06-16 |  | start no earlier than 2026-02-26 |
| 1313 |  | Block Work | 5d | 2026-02-26 | 2026-03-03 | 1155, 1297 |  |
| 1314 |  | Door Frame Fixing | 5d | 2026-03-03 | 2026-03-08 | 1298, 1313 |  |
| 1315 |  | Internal Plumbing Works | 5d | 2026-03-03 | 2026-03-08 | 1299, 1313 |  |
| 1316 |  | Waterproofing | 8d | 2026-03-22 | 2026-03-30 | 1300, 1315 |  |
| 1317 |  | Internal Plaster | 7d | 2026-03-29 | 2026-04-05 | 1301FS+0.25d |  |
| 1318 |  | IPS flooring work | 7d | 2026-04-07 | 2026-04-14 | 1302, 1314, 1316, 1317 |  |
| 1319 |  | Toilet dado work | 7d | 2026-04-05 | 2026-04-12 | 1303, 1316, 1317 |  |
| 1320 |  | Toilet flooring work | 7d | 2026-04-13 | 2026-04-20 | 1304, 1319 |  |
| 1321 |  | Living dinning flooring | 8d | 2026-05-02 | 2026-05-10 | 1305FS+0.25d |  |
| 1322 |  | Aluminium door-window fixing | 7d | 2026-05-09 | 2026-05-16 | 1306FS+0.25d |  |
| 1323 |  | Putty primer coat | 6d | 2026-05-10 | 2026-05-16 | 1307, 1321 |  |
| 1324 |  | Door shutter fixing | 8d | 2026-05-10 | 2026-05-18 | 1308, 1321 |  |
| 1325 |  | Electrical wiring work | 12d | 2028-05-13 | 2028-05-25 | 1309, 1324 |  |
| 1326 |  | Painting 1st coat | 12d | 2028-05-25 | 2028-06-06 | 1310, 1323, 1324, 1325 |  |
| 1327 |  | False ceiling | 10d | 2028-06-06 | 2028-06-16 | 1311, 1326 |  |
| 1328 | 37100.37300.37600.38000.39000.40400.41400.62000 | **10th Floor** | 802.94d | 2026-03-03 | 2028-06-28 |  | start no earlier than 2026-03-03 |
| 1329 |  | Block Work | 5d | 2026-03-03 | 2026-03-08 | 1313FS+0.25d |  |
| 1330 |  | Door Frame Fixing | 5d | 2026-03-08 | 2026-03-13 | 1314, 1329 |  |

| ID | WBS | Task | Duration | Start | Finish | Predecessors | Constraint |
| --- | --- | --- | --- | --- | --- | --- | --- |
| 1331 |  | Internal Plumbing Works | 5d | 2026-03-08 | 2026-03-13 | 1315, 1329 |  |
| 1332 |  | Waterproofing | 8d | 2026-03-30 | 2026-04-07 | 1316, 1331 |  |
| 1333 |  | Internal Plaster | 7d | 2026-04-05 | 2026-04-12 | 1317FS+0.25d |  |
| 1334 |  | IPS flooring work | 7d | 2026-04-14 | 2026-04-21 | 1318, 1330, 1332, 1333 |  |
| 1335 |  | Toilet dado work | 7d | 2026-04-12 | 2026-04-19 | 1319, 1332, 1333 |  |
| 1336 |  | Toilet flooring work | 7d | 2026-04-20 | 2026-04-27 | 1320, 1335 |  |
| 1337 |  | Living dinning flooring | 8d | 2026-05-10 | 2026-05-18 | 1321FS+0.25d |  |
| 1338 |  | Aluminium door-window fixing | 7d | 2026-05-16 | 2026-05-23 | 1322FS+0.25d |  |
| 1339 |  | Putty primer coat | 6d | 2026-05-18 | 2026-05-24 | 1323, 1337 |  |
| 1340 |  | Door shutter fixing | 8d | 2026-05-18 | 2026-05-26 | 1324, 1337 |  |
| 1341 |  | Electrical wiring work | 12d | 2028-05-25 | 2028-06-06 | 1325, 1340 |  |
| 1342 |  | Painting 1st coat | 12d | 2028-06-06 | 2028-06-18 | 1326, 1339, 1340, 1341 |  |
| 1343 |  | False ceiling | 10d | 2028-06-18 | 2028-06-28 | 1327, 1342 |  |
| 1344 | 37100.37300.37600.38000.39000.40400.41400.62100 | **11th Floor** | 809.69d | 2026-03-09 | 2028-07-10 |  | start no earlier than 2026-03-09 |
| 1345 |  | Block Work | 5d | 2026-03-09 | 2026-03-13 | 1329FS+0.25d |  |
| 1346 |  | Door Frame Fixing | 5d | 2026-03-14 | 2026-03-18 | 1330, 1345 |  |
| 1347 |  | Internal Plumbing Works | 5d | 2026-03-14 | 2026-03-18 | 1331, 1345 |  |
| 1348 |  | Waterproofing | 8d | 2026-04-07 | 2026-04-15 | 1332, 1347 |  |
| 1349 |  | Internal Plaster | 7d | 2026-04-12 | 2026-04-19 | 1333FS+0.25d |  |
| 1350 |  | IPS flooring work | 7d | 2026-04-21 | 2026-04-28 | 1334, 1346, 1347, 1348 |  |
| 1351 |  | Toilet dado work | 7d | 2026-04-19 | 2026-04-26 | 1335, 1348, 1349 |  |
| 1352 |  | Toilet flooring work | 7d | 2026-04-27 | 2026-05-04 | 1336, 1351 |  |
| 1353 |  | Living dinning flooring | 8d | 2026-05-19 | 2026-05-26 | 1337FS+0.25d |  |
| 1354 |  | Aluminium door-window fixing | 7d | 2026-05-24 | 2026-05-30 | 1338FS+0.25d |  |
| 1355 |  | Putty primer coat | 6d | 2026-05-27 | 2026-06-01 | 1339, 1353 |  |
| 1356 |  | Door shutter fixing | 8d | 2026-05-27 | 2026-06-03 | 1340, 1353 |  |
| 1357 |  | Electrical wiring work | 12d | 2028-06-06 | 2028-06-18 | 1341, 1356 |  |
| 1358 |  | Painting 1st coat | 12d | 2028-06-18 | 2028-06-30 | 1342, 1355, 1356, 1357 |  |
| 1359 |  | False ceiling | 10d | 2028-06-30 | 2028-07-10 | 1343, 1358 |  |
| 1360 | 37100.37300.37600.38000.39000.40400.41400.62200 | **12th Floor** | 816.44d | 2026-03-14 | 2028-07-22 |  | start no earlier than 2026-03-14 |
| 1361 |  | Block Work | 5d | 2026-03-14 | 2026-03-19 | 1345FS+0.25d |  |
| 1362 |  | Door Frame Fixing | 9d | 2026-03-19 | 2026-03-28 | 1346, 1361 |  |
| 1363 |  | Internal Plumbing Works | 15d | 2026-03-19 | 2026-04-03 | 1347, 1361 |  |
| 1364 |  | Waterproofing | 15d | 2026-04-15 | 2026-04-30 | 1348, 1363 |  |
| 1365 |  | Internal Plaster | 8d | 2026-04-20 | 2026-04-27 | 1349FS+0.25d |  |
| 1366 |  | IPS flooring work | 12d | 2026-04-30 | 2026-05-12 | 1350, 1362, 1363, 1364 |  |
| 1367 |  | Toilet dado work | 12d | 2026-04-30 | 2026-05-12 | 1351, 1364, 1365 |  |
| 1368 |  | Toilet flooring work | 12d | 2026-05-12 | 2026-05-24 | 1352, 1367 |  |
| 1369 |  | Living dinning flooring | 7d | 2026-05-27 | 2026-06-03 | 1353FS+0.25d |  |
| 1370 |  | Aluminium door-window fixing | 8d | 2026-05-31 | 2026-06-08 | 1354FS+0.25d |  |
| 1371 |  | Putty primer coat | 6d | 2026-06-03 | 2026-06-09 | 1355, 1369 |  |
| 1372 |  | Door shutter fixing | 8d | 2026-06-04 | 2026-06-11 | 1356, 1369 |  |
| 1373 |  | Electrical wiring work | 12d | 2028-06-18 | 2028-06-30 | 1357, 1372 |  |
| 1374 |  | Painting 1st coat | 12d | 2028-06-30 | 2028-07-12 | 1358, 1371, 1372, 1373 |  |
| 1375 |  | False ceiling | 10d | 2028-07-12 | 2028-07-22 | 1359, 1374 |  |
| 1376 | 37100.37300.37600.38000.39000.40400.41400.62300 | **13th Floor** | 823.19d | 2026-03-19 | 2028-08-03 |  | start no earlier than 2026-03-19 |
| 1377 |  | Block Work | 5d | 2026-03-19 | 2026-03-24 | 1361FS+0.25d |  |
| 1378 |  | Door Frame Fixing | 5d | 2026-03-28 | 2026-04-02 | 1362, 1377 |  |
| 1379 |  | Internal Plumbing Works | 5d | 2026-04-03 | 2026-04-08 | 1363, 1377 |  |
| 1380 |  | Waterproofing | 8d | 2026-04-30 | 2026-05-08 | 1364, 1379 |  |
| 1381 |  | Internal Plaster | 7d | 2026-04-30 | 2026-05-07 | 1365FS+2.75d |  |
| 1382 |  | IPS flooring work | 7d | 2026-05-12 | 2026-05-19 | 1366, 1378, 1380, 1381 |  |
| 1383 |  | Toilet dado work | 7d | 2026-05-12 | 2026-05-19 | 1367, 1380, 1381 |  |
| 1384 |  | Toilet flooring work | 7d | 2026-05-24 | 2026-05-31 | 1368, 1383 |  |
| 1385 |  | Living dinning flooring | 8d | 2026-06-03 | 2026-06-11 | 1369FS+0.25d |  |
| 1386 |  | Aluminium door-window fixing | 7d | 2026-06-08 | 2026-06-15 | 1370FS+0.25d |  |
| 1387 |  | Putty primer coat | 6d | 2026-06-11 | 2026-06-17 | 1371, 1385 |  |
| 1388 |  | Door shutter fixing | 8d | 2026-06-12 | 2026-06-19 | 1372, 1385 |  |
| 1389 |  | Electrical wiring work | 12d | 2028-06-30 | 2028-07-12 | 1373, 1388 |  |
| 1390 |  | Painting 1st coat | 12d | 2028-07-12 | 2028-07-24 | 1374, 1387, 1388, 1389 |  |
| 1391 |  | False ceiling | 10d | 2028-07-24 | 2028-08-03 | 1375, 1390 |  |
| 1392 | 37100.37300.37600.38000.39000.40400.41400.62400 | **14th Floor** | 829.94d | 2026-03-24 | 2028-08-15 |  | start no earlier than 2026-03-24 |
| 1393 |  | Block Work | 5d | 2026-03-24 | 2026-03-29 | 1377FS+0.25d |  |
| 1394 |  | Door Frame Fixing | 9d | 2026-04-02 | 2026-04-11 | 1378, 1393 |  |
| 1395 |  | Internal Plumbing Works | 15d | 2026-04-08 | 2026-04-23 | 1379, 1393 |  |
| 1396 |  | Waterproofing | 15d | 2026-05-08 | 2026-05-23 | 1380, 1395 |  |
| 1397 |  | Internal Plaster | 8d | 2026-05-08 | 2026-05-15 | 1381FS+0.25d |  |
| 1398 |  | IPS flooring work | 12d | 2026-05-23 | 2026-06-04 | 1382, 1394, 1395, 1396 |  |
| 1399 |  | Toilet dado work | 12d | 2026-05-23 | 2026-06-04 | 1383, 1396, 1397 |  |
| 1400 |  | Toilet flooring work | 12d | 2026-06-04 | 2026-06-16 | 1384, 1399 |  |

| ID | WBS | Task | Duration | Start | Finish | Predecessors | Constraint |
| --- | --- | --- | --- | --- | --- | --- | --- |
| 1401 |  | Living dinning flooring | 7d | 2026-06-11 | 2026-06-18 | 1385FS+0.25d |  |
| 1402 |  | Aluminium door-window fixing | 8d | 2026-06-15 | 2026-06-23 | 1386FS+0.25d |  |
| 1403 |  | Putty primer coat | 6d | 2026-06-18 | 2026-06-24 | 1387, 1401 |  |
| 1404 |  | Door shutter fixing | 8d | 2026-06-20 | 2026-06-27 | 1388, 1401 |  |
| 1405 |  | Electrical wiring work | 12d | 2028-07-12 | 2028-07-24 | 1389, 1404 |  |
| 1406 |  | Painting 1st coat | 12d | 2028-07-24 | 2028-08-05 | 1390, 1403, 1404, 1405 |  |
| 1407 |  | False ceiling | 10d | 2028-08-05 | 2028-08-15 | 1391, 1406 |  |
| 1408 | 37100.37300.37600.38000.39000.40400.41400.62500 | **15th Floor** | 836.69d | 2026-03-30 | 2028-08-27 |  | start no earlier than 2026-03-30 |
| 1409 |  | Block Work | 8d | 2026-03-30 | 2026-04-06 | 1393FS+0.25d |  |
| 1410 |  | Door Frame Fixing | 9d | 2026-04-11 | 2026-04-20 | 1394, 1409 |  |
| 1411 |  | Internal Plumbing Works | 10d | 2026-04-23 | 2026-05-03 | 1395, 1409 |  |
| 1412 |  | Waterproofing | 12d | 2026-05-23 | 2026-06-04 | 1396, 1411 |  |
| 1413 |  | Internal Plaster | 5d | 2026-05-16 | 2026-05-21 | 1397FS+0.25d |  |
| 1414 |  | IPS flooring work | 9d | 2026-06-04 | 2026-06-13 | 1398, 1410, 1411, 1412 |  |
| 1415 |  | Toilet dado work | 8d | 2026-06-04 | 2026-06-12 | 1399, 1412, 1413 |  |
| 1416 |  | Toilet flooring work | 7d | 2026-06-16 | 2026-06-23 | 1400, 1415 |  |
| 1417 |  | Living dinning flooring | 12d | 2026-06-19 | 2026-06-30 | 1401FS+0.25d |  |
| 1418 |  | Aluminium door-window fixing | 12d | 2026-06-24 | 2026-07-05 | 1402FS+0.25d |  |
| 1419 |  | Putty primer coat | 6d | 2026-07-01 | 2026-07-06 | 1403, 1417 |  |
| 1420 |  | Door shutter fixing | 8d | 2026-07-01 | 2026-07-08 | 1404, 1417 |  |
| 1421 |  | Electrical wiring work | 12d | 2028-07-24 | 2028-08-05 | 1405, 1420 |  |
| 1422 |  | Painting 1st coat | 12d | 2028-08-05 | 2028-08-17 | 1406, 1419, 1420, 1421 |  |
| 1423 |  | False ceiling | 10d | 2028-08-17 | 2028-08-27 | 1407, 1422 |  |
| 1424 | 37100.37300.37600.38000.39000.40400.41400.62600 | **16th Floor** | 840.44d | 2026-04-07 | 2028-09-08 |  | start no earlier than 2026-04-07 |
| 1425 |  | Block Work | 8d | 2026-04-07 | 2026-04-15 | 1409FS+0.25d |  |
| 1426 |  | Door Frame Fixing | 9d | 2026-04-20 | 2026-04-29 | 1410, 1425 |  |
| 1427 |  | Internal Plumbing Works | 10d | 2026-05-03 | 2026-05-13 | 1411, 1425 |  |
| 1428 |  | Waterproofing | 12d | 2026-06-04 | 2026-06-16 | 1412, 1427 |  |
| 1429 |  | Internal Plaster | 5d | 2026-05-21 | 2026-05-26 | 1413FS+0.25d |  |
| 1430 |  | IPS flooring work | 9d | 2026-06-16 | 2026-06-25 | 1414, 1426, 1427, 1428 |  |
| 1431 |  | Toilet dado work | 8d | 2026-06-16 | 2026-06-24 | 1415, 1428, 1429 |  |
| 1432 |  | Toilet flooring work | 7d | 2026-06-24 | 2026-07-01 | 1416, 1431 |  |
| 1433 |  | Living dinning flooring | 12d | 2026-07-01 | 2026-07-13 | 1417FS+0.25d |  |
| 1434 |  | Aluminium door-window fixing | 12d | 2026-07-06 | 2026-07-18 | 1418FS+0.25d |  |
| 1435 |  | Putty primer coat | 6d | 2026-07-13 | 2026-07-19 | 1419, 1433 |  |
| 1436 |  | Door shutter fixing | 8d | 2026-07-13 | 2026-07-21 | 1420, 1433 |  |
| 1437 |  | Electrical wiring work | 12d | 2028-08-05 | 2028-08-17 | 1421, 1436 |  |
| 1438 |  | Painting 1st coat | 12d | 2028-08-17 | 2028-08-29 | 1422, 1435, 1436, 1437 |  |
| 1439 |  | False ceiling | 10d | 2028-08-29 | 2028-09-08 | 1423, 1438 |  |
| 1440 | 37100.37300.37600.38000.39000.40400.41400.62700 | **17th Floor** | 844.19d | 2026-04-15 | 2028-09-20 |  | start no earlier than 2026-04-15 |
| 1441 |  | Block Work | 8d | 2026-04-15 | 2026-04-23 | 1425FS+0.25d |  |
| 1442 |  | Door Frame Fixing | 9d | 2026-04-29 | 2026-05-08 | 1426, 1441 |  |
| 1443 |  | Internal Plumbing Works | 10d | 2026-05-13 | 2026-05-23 | 1427, 1441 |  |
| 1444 |  | Waterproofing | 12d | 2026-06-16 | 2026-06-28 | 1428, 1443 |  |
| 1445 |  | Internal Plaster | 5d | 2026-05-26 | 2026-05-31 | 1429FS+0.25d |  |
| 1446 |  | IPS flooring work | 9d | 2026-06-28 | 2026-07-07 | 1430, 1442, 1443, 1444 |  |
| 1447 |  | Toilet dado work | 8d | 2026-06-28 | 2026-07-06 | 1431, 1444, 1445 |  |
| 1448 |  | Toilet flooring work | 7d | 2026-07-06 | 2026-07-13 | 1432, 1447 |  |
| 1449 |  | Living dinning flooring | 12d | 2026-07-13 | 2026-07-25 | 1433FS+0.25d |  |
| 1450 |  | Aluminium door-window fixing | 12d | 2026-07-25 | 2026-08-06 | 1434, 1446, 1449 |  |
| 1451 |  | Putty primer coat | 6d | 2026-07-25 | 2026-07-31 | 1435, 1449 |  |
| 1452 |  | Door shutter fixing | 8d | 2026-07-25 | 2026-08-02 | 1436, 1449 |  |
| 1453 |  | Electrical wiring work | 12d | 2028-08-17 | 2028-08-29 | 1437, 1452 |  |
| 1454 |  | Painting 1st coat | 12d | 2028-08-29 | 2028-09-10 | 1438, 1451, 1452, 1453 |  |
| 1455 |  | False ceiling | 10d | 2028-09-10 | 2028-09-20 | 1439, 1454 |  |
| 1456 | 37100.37300.37600.38000.39000.40400.41400.62800 | **18th Floor** | 847.94d | 2026-04-23 | 2028-10-02 |  | start no earlier than 2026-04-23 |
| 1457 |  | Block Work | 8d | 2026-04-23 | 2026-05-01 | 1441FS+0.25d |  |
| 1458 |  | Door Frame Fixing | 9d | 2026-05-08 | 2026-05-17 | 1442, 1457 |  |
| 1459 |  | Internal Plumbing Works | 10d | 2026-05-23 | 2026-06-02 | 1443, 1457 |  |
| 1460 |  | Waterproofing | 12d | 2026-06-28 | 2026-07-10 | 1444, 1459 |  |
| 1461 |  | Internal Plaster | 9d | 2026-05-31 | 2026-06-09 | 1445 |  |
| 1462 |  | IPS flooring work | 9d | 2026-07-10 | 2026-07-19 | 1446, 1458, 1459, 1460 |  |
| 1463 |  | Toilet dado work | 8d | 2026-07-10 | 2026-07-18 | 1447, 1460, 1461 |  |
| 1464 |  | Toilet flooring work | 7d | 2026-07-18 | 2026-07-25 | 1448, 1463 |  |
| 1465 |  | Living dinning flooring | 12d | 2026-07-25 | 2026-08-06 | 1449FS+0.25d |  |
| 1466 |  | Aluminium door-window fixing | 12d | 2026-08-06 | 2026-08-18 | 1450FS+0.25d |  |
| 1467 |  | Putty primer coat | 6d | 2026-08-06 | 2026-08-12 | 1451, 1465 |  |
| 1468 |  | Door shutter fixing | 8d | 2026-08-06 | 2026-08-14 | 1452, 1465 |  |
| 1469 |  | Electrical wiring work | 12d | 2028-08-29 | 2028-09-10 | 1453, 1468 |  |
| 1470 |  | Painting 1st coat | 12d | 2028-09-10 | 2028-09-22 | 1454, 1467, 1468, 1469 |  |

| ID | WBS | Task | Duration | Start | Finish | Predecessors | Constraint |
| --- | --- | --- | --- | --- | --- | --- | --- |
| 1471 |  | False ceiling | 10d | 2028-09-22 | 2028-10-02 | 1455, 1470 |  |
| 1472 | 37100.37300.37600.38000.39000.40400.41400.62900 | **19th Floor** | 851.69d | 2026-05-02 | 2028-10-14 |  | start no earlier than 2026-05-02 |
| 1473 |  | Block Work | 8d | 2026-05-02 | 2026-05-09 | 1457FS+0.25d |  |
| 1474 |  | Door Frame Fixing | 9d | 2026-05-17 | 2026-05-26 | 1458, 1473 |  |
| 1475 |  | Internal Plumbing Works | 10d | 2026-06-02 | 2026-06-12 | 1459, 1473 |  |
| 1476 |  | Waterproofing | 12d | 2026-07-10 | 2026-07-22 | 1460, 1475 |  |
| 1477 |  | Internal Plaster | 5d | 2026-06-10 | 2026-06-14 | 1461FS+0.25d |  |
| 1478 |  | IPS flooring work | 9d | 2026-07-22 | 2026-07-31 | 1462, 1474, 1476, 1477 |  |
| 1479 |  | Toilet dado work | 8d | 2026-07-22 | 2026-07-30 | 1463, 1476, 1477 |  |
| 1480 |  | Toilet flooring work | 7d | 2026-07-30 | 2026-08-06 | 1464, 1479 |  |
| 1481 |  | Living dinning flooring | 12d | 2026-08-07 | 2026-08-18 | 1465FS+0.25d |  |
| 1482 |  | Aluminium door-window fixing | 12d | 2026-08-19 | 2026-08-30 | 1466FS+0.25d |  |
| 1483 |  | Putty primer coat | 6d | 2026-08-19 | 2026-08-24 | 1467, 1481 |  |
| 1484 |  | Door shutter fixing | 8d | 2026-08-19 | 2026-08-26 | 1468, 1481 |  |
| 1485 |  | Electrical wiring work | 12d | 2028-09-10 | 2028-09-22 | 1469, 1484 |  |
| 1486 |  | Painting 1st coat | 12d | 2028-09-22 | 2028-10-04 | 1470, 1483, 1484, 1485 |  |
| 1487 |  | False ceiling | 10d | 2028-10-04 | 2028-10-14 | 1471, 1486 |  |
| 1488 | 37100.37300.37600.38000.39000.40400.41400.63000 | **20th Floor** | 855.44d | 2026-05-10 | 2028-10-26 |  | start no earlier than 2026-05-10 |
| 1489 |  | Block Work | 8d | 2026-05-10 | 2026-05-18 | 1473FS+0.25d |  |
| 1490 |  | Door Frame Fixing | 9d | 2026-05-26 | 2026-06-04 | 1474, 1489 |  |
| 1491 |  | Internal Plumbing Works | 10d | 2026-06-12 | 2026-06-22 | 1475, 1489 |  |
| 1492 |  | Waterproofing | 12d | 2026-07-22 | 2026-08-03 | 1476, 1491 |  |
| 1493 |  | Internal Plaster | 5d | 2026-06-15 | 2026-06-20 | 1477FS+0.25d |  |
| 1494 |  | IPS flooring work | 9d | 2026-08-03 | 2026-08-12 | 1478, 1490, 1492, 1493 |  |
| 1495 |  | Toilet dado work | 8d | 2026-08-03 | 2026-08-11 | 1479, 1492, 1493 |  |
| 1496 |  | Toilet flooring work | 7d | 2026-08-11 | 2026-08-18 | 1480, 1495 |  |
| 1497 |  | Living dinning flooring | 12d | 2026-08-19 | 2026-08-31 | 1481FS+0.25d |  |
| 1498 |  | Aluminium door-window fixing | 12d | 2026-08-31 | 2026-09-12 | 1482, 1494, 1497 |  |
| 1499 |  | Putty primer coat | 6d | 2026-08-31 | 2026-09-06 | 1483, 1497 |  |
| 1500 |  | Door shutter fixing | 8d | 2026-08-31 | 2026-09-08 | 1484, 1497 |  |
| 1501 |  | Electrical wiring work | 12d | 2028-09-22 | 2028-10-04 | 1485, 1500 |  |
| 1502 |  | Painting 1st coat | 12d | 2028-10-04 | 2028-10-16 | 1486, 1499, 1500, 1501 |  |
| 1503 |  | False ceiling | 10d | 2028-10-16 | 2028-10-26 | 1487, 1502 |  |
| 1504 | 37100.37300.37600.38000.39000.40400.41400.63100 | **21st Floor** | 859.19d | 2026-05-18 | 2028-11-07 |  | start no earlier than 2026-05-18 |
| 1505 |  | Block Work | 8d | 2026-05-18 | 2026-05-26 | 1489FS+0.25d |  |
| 1506 |  | Door Frame Fixing | 9d | 2026-06-04 | 2026-06-13 | 1490, 1505 |  |
| 1507 |  | Internal Plumbing Works | 10d | 2026-06-22 | 2026-07-02 | 1491, 1505 |  |
| 1508 |  | Waterproofing | 12d | 2026-08-03 | 2026-08-15 | 1492, 1507 |  |
| 1509 |  | Internal Plaster | 8d | 2026-06-20 | 2026-06-28 | 1493FS+0.25d |  |
| 1510 |  | IPS flooring work | 9d | 2026-08-15 | 2026-08-24 | 1494, 1506, 1508, 1509 |  |
| 1511 |  | Toilet dado work | 8d | 2026-08-15 | 2026-08-23 | 1495, 1508, 1509 |  |
| 1512 |  | Toilet flooring work | 7d | 2026-08-23 | 2026-08-30 | 1496, 1511 |  |
| 1513 |  | Living dinning flooring | 12d | 2026-08-31 | 2026-09-12 | 1497, 1506, 1512 |  |
| 1514 |  | Aluminium door-window fixing | 12d | 2026-09-12 | 2026-09-24 | 1498, 1510, 1513 |  |
| 1515 |  | Putty primer coat | 6d | 2026-09-12 | 2026-09-18 | 1499, 1513 |  |
| 1516 |  | Door shutter fixing | 8d | 2026-09-12 | 2026-09-20 | 1500, 1513 |  |
| 1517 |  | Electrical wiring work | 12d | 2028-10-04 | 2028-10-16 | 1501, 1516 |  |
| 1518 |  | Painting 1st coat | 12d | 2028-10-16 | 2028-10-28 | 1502, 1515, 1516, 1517 |  |
| 1519 |  | False ceiling | 10d | 2028-10-28 | 2028-11-07 | 1503, 1518 |  |
| 1520 | 37100.37300.37600.38000.39000.40400.41400.63200 | **22nd Floor** | 862.94d | 2026-05-26 | 2028-11-19 |  | start no earlier than 2026-05-26 |
| 1521 |  | Block Work | 5d | 2026-05-26 | 2026-05-31 | 1505FS+0.25d |  |
| 1522 |  | Door Frame Fixing | 9d | 2026-06-13 | 2026-06-22 | 1506, 1521 |  |
| 1523 |  | Internal Plumbing Works | 10d | 2026-07-02 | 2026-07-12 | 1507, 1521 |  |
| 1524 |  | Waterproofing | 12d | 2026-08-15 | 2026-08-27 | 1508, 1523 |  |
| 1525 |  | Internal Plaster | 10d | 2026-06-28 | 2026-07-08 | 1509FS+0.25d |  |
| 1526 |  | IPS flooring work | 9d | 2026-08-27 | 2026-09-05 | 1510, 1522, 1524, 1525 |  |
| 1527 |  | Toilet dado work | 8d | 2026-08-27 | 2026-09-04 | 1511, 1524, 1525 |  |
| 1528 |  | Toilet flooring work | 7d | 2026-09-04 | 2026-09-11 | 1512, 1527 |  |
| 1529 |  | Living dinning flooring | 12d | 2026-09-12 | 2026-09-24 | 1513, 1522, 1528 |  |
| 1530 |  | Aluminium door-window fixing | 12d | 2026-09-24 | 2026-10-06 | 1514, 1526, 1529 |  |
| 1531 |  | Putty primer coat | 6d | 2026-09-24 | 2026-09-30 | 1515, 1529 |  |
| 1532 |  | Door shutter fixing | 8d | 2026-09-24 | 2026-10-02 | 1516, 1529 |  |
| 1533 |  | Electrical wiring work | 12d | 2028-10-16 | 2028-10-28 | 1517, 1532 |  |
| 1534 |  | Painting 1st coat | 12d | 2028-10-28 | 2028-11-09 | 1518, 1531, 1532, 1533 |  |
| 1535 |  | False ceiling | 10d | 2028-11-09 | 2028-11-19 | 1519, 1534 |  |
| 1536 | 37100.37300.37600.38000.39000.40400.41400.63300 | **23rd Floor** | 869.69d | 2026-06-01 | 2028-12-01 |  | start no earlier than 2026-06-01 |
| 1537 |  | Block Work | 7.94d | 2026-06-01 | 2026-06-08 | 1521FS+0.25d |  |
| 1538 |  | Door Frame Fixing | 9d | 2026-06-22 | 2026-07-01 | 1522, 1537 |  |
| 1539 |  | Internal Plumbing Works | 10d | 2026-07-12 | 2026-07-22 | 1523, 1537 |  |
| 1540 |  | Waterproofing | 12d | 2026-08-27 | 2026-09-08 | 1524, 1539 |  |

| ID | WBS | Task | Duration | Start | Finish | Predecessors | Constraint |
| --- | --- | --- | --- | --- | --- | --- | --- |
| 1541 |  | Internal Plaster | 10d | 2026-07-09 | 2026-07-18 | 1525FS+0.25d |  |
| 1542 |  | IPS flooring work | 9d | 2026-09-08 | 2026-09-17 | 1526, 1538, 1540, 1541 |  |
| 1543 |  | Toilet dado work | 8d | 2026-09-08 | 2026-09-16 | 1527, 1540, 1541 |  |
| 1544 |  | Toilet flooring work | 7d | 2026-09-16 | 2026-09-23 | 1528, 1543 |  |
| 1545 |  | Living dinning flooring | 15d | 2026-09-24 | 2026-10-09 | 1529, 1538, 1544 |  |
| 1546 |  | Aluminium door-window fixing | 15d | 2026-10-09 | 2026-10-24 | 1530, 1542, 1545 |  |
| 1547 |  | Putty primer coat | 6d | 2026-10-09 | 2026-10-15 | 1531, 1545 |  |
| 1548 |  | Door shutter fixing | 8d | 2026-10-09 | 2026-10-17 | 1532, 1545 |  |
| 1549 |  | Electrical wiring work | 12d | 2028-10-28 | 2028-11-09 | 1533, 1548 |  |
| 1550 |  | Painting 1st coat | 12d | 2028-11-09 | 2028-11-21 | 1534, 1547, 1548, 1549 |  |
| 1551 |  | False ceiling | 10d | 2028-11-21 | 2028-12-01 | 1535, 1550 |  |
| 1552 | 37100.37300.37600.38000.39000.40400.41400.63400 | **24th Floor** | 873.5d | 2026-06-09 | 2028-12-13 |  | start no earlier than 2026-06-09 |
| 1553 |  | Block Work | 4d | 2026-06-09 | 2026-06-13 | 1537FS+0.25d |  |
| 1554 |  | Door Frame Fixing | 9d | 2026-07-01 | 2026-07-10 | 1538, 1553 |  |
| 1555 |  | Internal Plumbing Works | 10d | 2026-07-22 | 2026-08-01 | 1539, 1553 |  |
| 1556 |  | Waterproofing | 12d | 2026-09-08 | 2026-09-20 | 1540, 1555 |  |
| 1557 |  | Internal Plaster | 9d | 2026-09-20 | 2026-09-29 | 1541, 1554, 1555, 1556 |  |
| 1558 |  | IPS flooring work | 9d | 2026-09-29 | 2026-10-08 | 1542, 1554, 1556, 1557 |  |
| 1559 |  | Toilet dado work | 8d | 2026-09-29 | 2026-10-07 | 1543, 1556, 1557 |  |
| 1560 |  | Toilet flooring work | 7d | 2026-10-07 | 2026-10-14 | 1544, 1559 |  |
| 1561 |  | Living dinning flooring | 15d | 2026-10-14 | 2026-10-29 | 1545, 1554, 1560 |  |
| 1562 |  | Aluminium door-window fixing | 15d | 2026-10-29 | 2026-12-28 | 1546, 1558, 1561 |  |
| 1563 |  | Putty primer coat | 6d | 2026-10-29 | 2026-12-19 | 1547, 1561 |  |
| 1564 |  | Door shutter fixing | 8d | 2026-10-29 | 2026-12-21 | 1548, 1561 |  |
| 1565 |  | Electrical wiring work | 12d | 2028-11-09 | 2028-11-21 | 1549, 1564 |  |
| 1566 |  | Painting 1st coat | 12d | 2028-11-21 | 2028-12-03 | 1550, 1563, 1564, 1565 |  |
| 1567 |  | False ceiling | 10d | 2028-12-03 | 2028-12-13 | 1551, 1566 |  |
| 1568 | 37100.37300.37600.38000.39000.40400.41400.63500 | **25th Floor** | 801.94d | 2026-08-31 | 2028-12-25 |  | start no earlier than 2026-08-31 |
| 1569 |  | Block Work | 7.94d | 2026-08-31 | 2026-09-08 | 1171, 1553 |  |
| 1570 |  | Door Frame Fixing | 9d | 2026-09-08 | 2026-09-17 | 1554, 1569 |  |
| 1571 |  | Internal Plumbing Works | 10d | 2026-09-08 | 2026-09-18 | 1555, 1569 |  |
| 1572 |  | Waterproofing | 12d | 2026-09-20 | 2026-10-02 | 1556, 1571 |  |
| 1573 |  | Internal Plaster | 9d | 2026-10-02 | 2026-10-11 | 1557, 1570, 1571, 1572 |  |
| 1574 |  | IPS flooring work | 9d | 2026-10-11 | 2026-10-20 | 1558, 1570, 1572, 1573 |  |
| 1575 |  | Toilet dado work | 8d | 2026-10-11 | 2026-10-19 | 1559, 1572, 1573 |  |
| 1576 |  | Toilet flooring work | 7d | 2026-10-19 | 2026-10-26 | 1560, 1575 |  |
| 1577 |  | Living dinning flooring | 15d | 2026-10-29 | 2026-12-28 | 1561, 1570, 1576 |  |
| 1578 |  | Aluminium door-window fixing | 15d | 2026-12-28 | 2027-01-12 | 1562, 1574, 1577 |  |
| 1579 |  | Putty primer coat | 6d | 2026-12-28 | 2027-01-03 | 1563, 1577 |  |
| 1580 |  | Door shutter fixing | 8d | 2026-12-28 | 2027-01-05 | 1564, 1577 |  |
| 1581 |  | Electrical wiring work | 12d | 2028-11-21 | 2028-12-03 | 1565, 1580 |  |
| 1582 |  | Painting 1st coat | 12d | 2028-12-03 | 2028-12-15 | 1566, 1579, 1580, 1581 |  |
| 1583 |  | False ceiling | 10d | 2028-12-15 | 2028-12-25 | 1567, 1582 |  |
| 1584 | 37100.37300.37600.38000.39000.40400.41400.63600 | **26th Floor** | 800.19d | 2026-09-14 | 2029-01-06 |  | start no earlier than 2026-09-14 |
| 1585 |  | Block Work | 7.94d | 2026-09-14 | 2026-09-22 | 1172, 1569 |  |
| 1586 |  | Door Frame Fixing | 9d | 2026-09-22 | 2026-10-01 | 1570, 1585 |  |
| 1587 |  | Internal Plumbing Works | 10d | 2026-09-22 | 2026-10-02 | 1571, 1585 |  |
| 1588 |  | Waterproofing | 12d | 2026-10-02 | 2026-10-14 | 1572, 1587 |  |
| 1589 |  | Internal Plaster | 9d | 2026-10-14 | 2026-10-23 | 1573, 1586, 1587, 1588 |  |
| 1590 |  | IPS flooring work | 9d | 2026-10-23 | 2026-12-16 | 1574, 1586, 1588, 1589 |  |
| 1591 |  | Toilet dado work | 8d | 2026-10-23 | 2026-10-31 | 1575, 1588, 1589 |  |
| 1592 |  | Toilet flooring work | 7d | 2026-10-31 | 2026-12-22 | 1576, 1591 |  |
| 1593 |  | Living dinning flooring | 15d | 2026-12-28 | 2027-01-12 | 1577, 1586, 1592 |  |
| 1594 |  | Aluminium door-window fixing | 15d | 2027-01-12 | 2027-01-27 | 1578, 1590, 1593 |  |
| 1595 |  | Putty primer coat | 6d | 2027-01-12 | 2027-01-18 | 1579, 1593 |  |
| 1596 |  | Door shutter fixing | 8d | 2027-01-12 | 2027-01-20 | 1580, 1593 |  |
| 1597 |  | Electrical wiring work | 12d | 2028-12-03 | 2028-12-15 | 1581, 1596 |  |
| 1598 |  | Painting 1st coat | 12d | 2028-12-15 | 2028-12-27 | 1582, 1595, 1596, 1597 |  |
| 1599 |  | False ceiling | 10d | 2028-12-27 | 2029-01-06 | 1583, 1598 |  |
| 1600 | 37100.37300.37600.38000.39000.40400.41400.63700 | **27th Floor** | 799.44d | 2026-09-27 | 2029-01-18 |  | start no earlier than 2026-09-27 |
| 1601 |  | Block Work | 7.94d | 2026-09-27 | 2026-10-05 | 1173, 1585 |  |
| 1602 |  | Door Frame Fixing | 8.94d | 2026-10-05 | 2026-10-14 | 1586, 1601 |  |
| 1603 |  | Internal Plumbing Works | 10d | 2026-10-05 | 2026-10-15 | 1587, 1601 |  |
| 1604 |  | Waterproofing | 12d | 2026-10-15 | 2026-10-27 | 1588, 1603 |  |
| 1605 |  | Internal Plaster | 9d | 2026-10-27 | 2026-12-20 | 1589, 1602, 1603, 1604 |  |
| 1606 |  | IPS flooring work | 9d | 2026-12-20 | 2026-12-29 | 1590, 1602, 1604, 1605 |  |
| 1607 |  | Toilet dado work | 8d | 2026-12-20 | 2026-12-28 | 1591, 1604, 1605 |  |
| 1608 |  | Toilet flooring work | 7d | 2026-12-28 | 2027-01-04 | 1592, 1607 |  |
| 1609 |  | Living dinning flooring | 15d | 2027-01-12 | 2027-01-27 | 1593, 1602, 1608 |  |
| 1610 |  | Aluminium door-window fixing | 15d | 2027-01-27 | 2027-02-11 | 1594, 1606, 1609 |  |

| ID | WBS | Task | Duration | Start | Finish | Predecessors | Constraint |
| --- | --- | --- | --- | --- | --- | --- | --- |
| 1611 |  | Putty primer coat | 6d | 2027-01-27 | 2027-02-02 | 1595, 1609 |  |
| 1612 |  | Door shutter fixing | 8d | 2027-01-27 | 2027-02-04 | 1596, 1609 |  |
| 1613 |  | Electrical wiring work | 12d | 2028-12-15 | 2028-12-27 | 1597, 1612 |  |
| 1614 |  | Painting 1st coat | 12d | 2028-12-27 | 2029-01-08 | 1598, 1611, 1612, 1613 |  |
| 1615 |  | False ceiling | 10d | 2029-01-08 | 2029-01-18 | 1599, 1614 |  |
| 1616 | 37100.37300.37600.38000.39000.40400.41400.63800 | **28th Floor** | 793.69d | 2026-10-15 | 2029-01-30 |  | start no earlier than 2026-10-15 |
| 1617 |  | Block Work | 7.94d | 2026-10-15 | 2026-10-22 | 1174, 1601 |  |
| 1618 |  | Door Frame Fixing | 8.94d | 2026-10-22 | 2026-10-31 | 1602, 1617 |  |
| 1619 |  | Internal Plumbing Works | 10d | 2026-10-22 | 2026-12-16 | 1603, 1617 |  |
| 1620 |  | Waterproofing | 12d | 2026-12-16 | 2026-12-28 | 1604, 1619 |  |
| 1621 |  | Internal Plaster | 9d | 2026-12-28 | 2027-01-06 | 1605, 1618, 1619, 1620 |  |
| 1622 |  | IPS flooring work | 9d | 2027-01-06 | 2027-01-15 | 1606, 1618, 1620, 1621 |  |
| 1623 |  | Toilet dado work | 8d | 2027-01-06 | 2027-01-14 | 1607, 1620, 1621 |  |
| 1624 |  | Toilet flooring work | 7d | 2027-01-14 | 2027-01-21 | 1608, 1623 |  |
| 1625 |  | Living dinning flooring | 15d | 2027-01-27 | 2027-02-11 | 1609, 1618, 1624 |  |
| 1626 |  | Aluminium door-window fixing | 15d | 2027-02-11 | 2027-02-26 | 1610, 1622, 1625 |  |
| 1627 |  | Putty primer coat | 6d | 2027-02-11 | 2027-02-17 | 1611, 1625 |  |
| 1628 |  | Door shutter fixing | 8d | 2027-02-11 | 2027-02-19 | 1612, 1625 |  |
| 1629 |  | Electrical wiring work | 12d | 2028-12-27 | 2029-01-08 | 1613, 1628 |  |
| 1630 |  | Painting 1st coat | 12d | 2029-01-08 | 2029-01-20 | 1614, 1627, 1628, 1629 |  |
| 1631 |  | False ceiling | 10d | 2029-01-20 | 2029-01-30 | 1615, 1630 |  |
| 1632 | 37100.37300.37600.38000.39000.40400.41400.63900 | **29th Floor** | 788.81d | 2026-10-31 | 2029-02-11 |  | start no earlier than 2026-10-31 |
| 1633 |  | Block Work | 7.94d | 2026-10-31 | 2026-12-23 | 1175, 1617 |  |
| 1634 |  | Door Frame Fixing | 8.94d | 2026-12-23 | 2027-01-01 | 1618, 1633 |  |
| 1635 |  | Internal Plumbing Works | 10d | 2026-12-23 | 2027-01-02 | 1619, 1633 |  |
| 1636 |  | Waterproofing | 12d | 2027-01-02 | 2027-01-14 | 1620, 1635 |  |
| 1637 |  | Internal Plaster | 9d | 2027-01-14 | 2027-01-23 | 1621, 1634, 1635, 1636 |  |
| 1638 |  | IPS flooring work | 9d | 2027-01-23 | 2027-02-01 | 1622, 1634, 1636, 1637 |  |
| 1639 |  | Toilet dado work | 8d | 2027-01-23 | 2027-01-31 | 1623, 1636, 1637 |  |
| 1640 |  | Toilet flooring work | 7d | 2027-01-31 | 2027-02-07 | 1624, 1639 |  |
| 1641 |  | Living dinning flooring | 15d | 2027-02-11 | 2027-02-26 | 1625, 1634, 1640 |  |
| 1642 |  | Aluminium door-window fixing | 15d | 2027-02-26 | 2027-03-13 | 1626, 1638, 1641 |  |
| 1643 |  | Putty primer coat | 6d | 2027-02-26 | 2027-03-04 | 1627, 1641 |  |
| 1644 |  | Door shutter fixing | 8d | 2027-02-26 | 2027-03-06 | 1628, 1641 |  |
| 1645 |  | Electrical wiring work | 12d | 2029-01-08 | 2029-01-20 | 1629, 1644 |  |
| 1646 |  | Painting 1st coat | 12d | 2029-01-20 | 2029-02-01 | 1630, 1643, 1644, 1645 |  |
| 1647 |  | False ceiling | 10d | 2029-02-01 | 2029-02-11 | 1631, 1646 |  |
| 1648 | 37100.37300.37600.38000.39000.40400.41400.64000 | **30th Floor** | 767.31d | 2027-01-24 | 2029-03-01 |  | start no earlier than 2027-01-24 |
| 1649 |  | Block Work | 7.94d | 2027-01-24 | 2027-02-01 | 1176, 1633 |  |
| 1650 |  | Door Frame Fixing | 8.94d | 2027-02-01 | 2027-02-10 | 1634, 1649 |  |
| 1651 |  | Internal Plumbing Works | 9.94d | 2027-02-01 | 2027-02-11 | 1635, 1649 |  |
| 1652 |  | Waterproofing | 12d | 2027-02-11 | 2027-02-23 | 1636, 1651 |  |
| 1653 |  | Internal Plaster | 9d | 2027-02-23 | 2027-03-04 | 1637, 1650, 1651, 1652 |  |
| 1654 |  | IPS flooring work | 9d | 2027-03-04 | 2027-03-13 | 1638, 1650, 1652, 1653 |  |
| 1655 |  | Toilet dado work | 8d | 2027-03-04 | 2027-03-12 | 1639, 1652, 1653 |  |
| 1656 |  | Toilet flooring work | 7d | 2027-03-12 | 2027-03-19 | 1640, 1655 |  |
| 1657 |  | Living dinning flooring | 15d | 2027-03-19 | 2027-04-03 | 1641, 1650, 1656 |  |
| 1658 |  | Aluminium door-window fixing | 15d | 2027-04-03 | 2027-04-18 | 1642, 1654, 1657 |  |
| 1659 |  | Putty primer coat | 6d | 2027-04-03 | 2027-04-09 | 1643, 1657 |  |
| 1660 |  | Door shutter fixing | 8d | 2027-04-03 | 2027-04-11 | 1644, 1657 |  |
| 1661 |  | Electrical wiring work | 15d | 2029-01-20 | 2029-02-04 | 1645, 1660 |  |
| 1662 |  | Painting 1st coat | 15d | 2029-02-04 | 2029-02-19 | 1646, 1659, 1660, 1661 |  |
| 1663 |  | False ceiling | 10d | 2029-02-19 | 2029-03-01 | 1647, 1662 |  |
| 1664 | 37100.37300.37600.38000.39000.40400.41400.64100 | **31st Floor** | 774.38d | 2027-02-01 | 2029-03-16 |  | start no earlier than 2027-02-01 |
| 1665 |  | Block Work | 7.94d | 2027-02-01 | 2027-02-09 | 1177, 1649 |  |
| 1666 |  | Door Frame Fixing | 8.94d | 2027-02-10 | 2027-02-19 | 1650, 1665 |  |
| 1667 |  | Internal Plumbing Works | 9.94d | 2027-02-11 | 2027-02-21 | 1651, 1665 |  |
| 1668 |  | Waterproofing | 12d | 2027-02-23 | 2027-03-07 | 1652, 1667 |  |
| 1669 |  | Internal Plaster | 9d | 2027-03-07 | 2027-03-16 | 1653, 1666, 1667, 1668 |  |
| 1670 |  | IPS flooring work | 9d | 2027-03-16 | 2027-03-25 | 1654, 1666, 1668, 1669 |  |
| 1671 |  | Toilet dado work | 8d | 2027-03-16 | 2027-03-24 | 1655, 1668, 1669 |  |
| 1672 |  | Toilet flooring work | 7d | 2027-03-24 | 2027-03-31 | 1656, 1671 |  |
| 1673 |  | Living dinning flooring | 15d | 2027-04-03 | 2027-04-18 | 1657, 1666, 1672 |  |
| 1674 |  | Aluminium door-window fixing | 12d | 2027-04-18 | 2027-04-30 | 1658, 1670, 1673 |  |
| 1675 |  | Putty primer coat | 6d | 2027-04-18 | 2027-04-24 | 1659, 1673 |  |
| 1676 |  | Door shutter fixing | 8d | 2027-04-18 | 2027-04-26 | 1660, 1673 |  |
| 1677 |  | Electrical wiring work | 15d | 2029-02-04 | 2029-02-19 | 1661, 1676 |  |
| 1678 |  | Painting 1st coat | 15d | 2029-02-19 | 2029-03-06 | 1662, 1675, 1676, 1677 |  |
| 1679 |  | False ceiling | 10d | 2029-03-06 | 2029-03-16 | 1663, 1678 |  |
| 1680 | 37100.37300.37600.38000.39000.40400.41400.64200 | **32nd Floor** | 781.44d | 2027-02-09 | 2029-03-31 |  | start no earlier than 2027-02-09 |

| ID | WBS | Task | Duration | Start | Finish | Predecessors | Constraint |
| --- | --- | --- | --- | --- | --- | --- | --- |
| 1681 |  | Block Work | 7.94d | 2027-02-09 | 2027-02-17 | 1178, 1665 |  |
| 1682 |  | Door Frame Fixing | 8.94d | 2027-02-19 | 2027-02-28 | 1666, 1681 |  |
| 1683 |  | Internal Plumbing Works | 9.94d | 2027-02-21 | 2027-03-03 | 1667, 1681 |  |
| 1684 |  | Waterproofing | 12d | 2027-03-07 | 2027-03-19 | 1668, 1683 |  |
| 1685 |  | Internal Plaster | 9d | 2027-03-19 | 2027-03-28 | 1669, 1682, 1683, 1684 |  |
| 1686 |  | IPS flooring work | 9d | 2027-03-28 | 2027-04-06 | 1670, 1682, 1684, 1685 |  |
| 1687 |  | Toilet dado work | 8d | 2027-03-28 | 2027-04-05 | 1671, 1684, 1685 |  |
| 1688 |  | Toilet flooring work | 7d | 2027-04-05 | 2027-04-12 | 1672, 1687 |  |
| 1689 |  | Living dinning flooring | 15d | 2027-04-18 | 2027-05-03 | 1673, 1682, 1688 |  |
| 1690 |  | Aluminium door-window fixing | 12d | 2027-05-03 | 2027-05-15 | 1674, 1686, 1689 |  |
| 1691 |  | Putty primer coat | 6d | 2027-05-03 | 2027-05-09 | 1675, 1689 |  |
| 1692 |  | Door shutter fixing | 8d | 2027-05-03 | 2027-05-11 | 1676, 1689 |  |
| 1693 |  | Electrical wiring work | 15d | 2029-02-19 | 2029-03-06 | 1677, 1692 |  |
| 1694 |  | Painting 1st coat | 15d | 2029-03-06 | 2029-03-21 | 1678, 1691, 1692, 1693 |  |
| 1695 |  | False ceiling | 10d | 2029-03-21 | 2029-03-31 | 1679, 1694 |  |
| 1696 | 37100.37300.37600.38000.39000.40400.41400.64300 | **33rd Floor** | 785.5d | 2027-02-17 | 2029-04-12 |  | start no earlier than 2027-02-17 |
| 1697 |  | Block Work | 7.94d | 2027-02-17 | 2027-02-25 | 1179, 1681 |  |
| 1698 |  | Door Frame Fixing | 8.94d | 2027-02-28 | 2027-03-09 | 1682, 1697 |  |
| 1699 |  | Internal Plumbing Works | 9.94d | 2027-03-03 | 2027-03-13 | 1683, 1697 |  |
| 1700 |  | Waterproofing | 12d | 2027-03-19 | 2027-03-31 | 1684, 1699 |  |
| 1701 |  | Internal Plaster | 9d | 2027-03-31 | 2027-04-09 | 1685, 1698, 1699, 1700 |  |
| 1702 |  | IPS flooring work | 9d | 2027-04-09 | 2027-04-18 | 1686, 1698, 1700, 1701 |  |
| 1703 |  | Toilet dado work | 8d | 2027-04-09 | 2027-04-17 | 1687, 1700, 1701 |  |
| 1704 |  | Toilet flooring work | 7d | 2027-04-17 | 2027-04-24 | 1688, 1703 |  |
| 1705 |  | Living dinning flooring | 15d | 2027-05-03 | 2027-05-18 | 1689, 1698, 1704 |  |
| 1706 |  | Aluminium door-window fixing | 15d | 2027-05-18 | 2027-06-02 | 1690, 1702, 1705 |  |
| 1707 |  | Putty primer coat | 6d | 2027-05-18 | 2027-05-24 | 1691, 1705 |  |
| 1708 |  | Door shutter fixing | 8d | 2027-05-18 | 2027-05-26 | 1692, 1705 |  |
| 1709 |  | Electrical wiring work | 12d | 2029-03-06 | 2029-03-18 | 1693, 1708 |  |
| 1710 |  | Painting 1st coat | 12d | 2029-03-21 | 2029-04-02 | 1694, 1707, 1708, 1709 |  |
| 1711 |  | False ceiling | 10d | 2029-04-02 | 2029-04-12 | 1695, 1710 |  |
| 1712 | 37100.37300.37600.38000.39000.40400.41400.64400 | **34th Floor** | 789.56d | 2027-02-25 | 2029-04-24 |  | start no earlier than 2027-02-25 |
| 1713 |  | Block Work | 7.94d | 2027-02-25 | 2027-03-05 | 1180, 1697 |  |
| 1714 |  | Door Frame Fixing | 8.94d | 2027-03-09 | 2027-03-17 | 1698, 1713 |  |
| 1715 |  | Internal Plumbing Works | 9.94d | 2027-03-13 | 2027-03-22 | 1699, 1713 |  |
| 1716 |  | Waterproofing | 12d | 2027-03-31 | 2027-04-12 | 1700, 1715 |  |
| 1717 |  | Internal Plaster | 4d | 2027-04-12 | 2027-04-16 | 1701, 1714, 1715, 1716 |  |
| 1718 |  | IPS flooring work | 9d | 2027-04-18 | 2027-04-27 | 1702, 1714, 1716, 1717 |  |
| 1719 |  | Toilet dado work | 8d | 2027-04-17 | 2027-04-25 | 1703, 1716, 1717 |  |
| 1720 |  | Toilet flooring work | 7d | 2027-04-25 | 2027-05-02 | 1704, 1719 |  |
| 1721 |  | Living dinning flooring | 15d | 2027-05-18 | 2027-06-02 | 1705, 1714, 1720 |  |
| 1722 |  | Aluminium door-window fixing | 15d | 2027-06-02 | 2027-06-17 | 1706, 1718, 1721 |  |
| 1723 |  | Putty primer coat | 6d | 2027-06-02 | 2027-06-08 | 1707, 1721 |  |
| 1724 |  | Door shutter fixing | 8d | 2027-06-02 | 2027-06-10 | 1708, 1721 |  |
| 1725 |  | Electrical wiring work | 12d | 2029-03-18 | 2029-03-30 | 1709, 1724 |  |
| 1726 |  | Painting 1st coat | 12d | 2029-04-02 | 2029-04-14 | 1710, 1723, 1724, 1725 |  |
| 1727 |  | False ceiling | 10d | 2029-04-14 | 2029-04-24 | 1711, 1726 |  |
| 1728 | 37100.37300.37600.38000.39000.40400.41400.64500 | **35th Floor** | 793.62d | 2027-03-05 | 2029-05-06 |  | start no earlier than 2027-03-05 |
| 1729 |  | Block Work | 7.94d | 2027-03-05 | 2027-03-12 | 1181, 1713 |  |
| 1730 |  | Door Frame Fixing | 8.94d | 2027-03-18 | 2027-03-26 | 1714, 1729 |  |
| 1731 |  | Internal Plumbing Works | 9.94d | 2027-03-23 | 2027-04-01 | 1715, 1729 |  |
| 1732 |  | Waterproofing | 12d | 2027-04-12 | 2027-04-24 | 1716, 1731 |  |
| 1733 |  | Internal Plaster | 4d | 2027-04-16 | 2027-04-20 | 1717FS+0.25d |  |
| 1734 |  | IPS flooring work | 9d | 2027-04-27 | 2027-05-06 | 1718, 1730, 1732, 1733 |  |
| 1735 |  | Toilet dado work | 8d | 2027-04-25 | 2027-05-03 | 1719, 1732, 1733 |  |
| 1736 |  | Toilet flooring work | 7d | 2027-05-03 | 2027-05-10 | 1720, 1735 |  |
| 1737 |  | Living dinning flooring | 7d | 2027-06-02 | 2027-06-09 | 1721, 1730, 1736 |  |
| 1738 |  | Aluminium door-window fixing | 15d | 2027-06-17 | 2027-07-02 | 1722, 1734, 1737 |  |
| 1739 |  | Putty primer coat | 6d | 2027-06-09 | 2027-06-15 | 1723, 1737 |  |
| 1740 |  | Door shutter fixing | 8d | 2027-06-10 | 2027-06-18 | 1724, 1737 |  |
| 1741 |  | Electrical wiring work | 12d | 2029-03-30 | 2029-04-11 | 1725, 1740 |  |
| 1742 |  | Painting 1st coat | 12d | 2029-04-14 | 2029-04-26 | 1726, 1739, 1740, 1741 |  |
| 1743 |  | False ceiling | 10d | 2029-04-26 | 2029-05-06 | 1727, 1742 |  |
| 1744 | 37100.37300.37600.38000.39000.40400.191400 | **Terrace Finishing** | 389.25d | 2026-01-28 | 2027-04-07 |  | start no earlier than 2026-01-28 |
| 1745 |  | Terrace waterproofing | 39.94d | 2027-01-17 | 2027-02-26 | 1143 |  |
| 1746 |  | Terrace finishing | 5d | 2026-01-28 | 2026-02-02 |  | start no earlier than 2026-01-28 |
| 1747 |  | Terrace finishing | 39.94d | 2027-02-26 | 2027-04-07 | 1745, 1746 |  |
| 1748 | 37100.37300.37600.38000.39000.40400.101200 | **Common Area Finishing** | 545.38d | 2026-01-14 | 2027-08-27 |  | start no earlier than 2026-01-14 |
| 1749 |  | Block Work | 39.94d | 2026-01-14 | 2026-02-23 | 1149FS+0.25d |  |
| 1750 |  | Internal Plaster | 119.94d | 2026-02-19 | 2026-06-19 | 1755SS+17.88d |  |

| ID | WBS | Task | Duration | Start | Finish | Predecessors | Constraint |
| --- | --- | --- | --- | --- | --- | --- | --- |
| 1751 |  | Staircase railing fixing | 149.94d | 2026-05-23 | 2026-10-20 | 1753SS+26.75d, 1752SS+26.75d |  |
| 1752 |  | Main staircase flooring | 149.94d | 2026-04-27 | 2026-09-24 | 1753SS+13.38d |  |
| 1753 |  | Fire staircase flooring | 149.94d | 2026-04-13 | 2026-09-10 | 1750SS+13.38d, 1757SS+26.75d |  |
| 1754 |  | Fire door work | 59.94d | 2026-05-23 | 2026-07-22 | 1752SS+26.75d, 1753SS+26.75d |  |
| 1755 |  | Electrical wiring work | 119.94d | 2026-02-01 | 2026-06-01 | 1749SS+17.88d |  |
| 1756 |  | Lobby flooring | 150d | 2026-02-04 | 2026-07-04 | 1755SS+3.38d |  |
| 1757 |  | Ceiling & wall putty-primer | 109.94d | 2026-03-18 | 2026-07-05 | 1750SS+26.75d |  |
| 1758 |  | Ceiling & wall painting | 99.94d | 2026-04-04 | 2026-07-13 | 1757SS+17.88d |  |
| 1759 |  | Light fixture supply & installation | 210d | 2027-01-29 | 2027-08-27 | 1758SS+255d |  |
| 1760 | 37100.37300.37600.38000.39000.40400.46400 | **Balcony Glass Railing** | 67.81d | 2027-12-05 | 2028-02-11 |  | start no earlier than 2027-12-05 |
| 1761 |  | 1st Floor | 1.94d | 2027-12-05 | 2027-12-07 | 1829 |  |
| 1762 |  | 2nd Floor | 1.94d | 2027-12-07 | 2027-12-09 | 1761 |  |
| 1763 |  | 3rd Floor | 1.94d | 2027-12-09 | 2027-12-11 | 1762 |  |
| 1764 |  | 4th Floor | 1.94d | 2027-12-11 | 2027-12-13 | 1763 |  |
| 1765 |  | 5th Floor | 1.94d | 2027-12-13 | 2027-12-15 | 1764 |  |
| 1766 |  | 6th Floor | 1.94d | 2027-12-15 | 2027-12-17 | 1765 |  |
| 1767 |  | 7th Floor | 1.94d | 2027-12-17 | 2027-12-19 | 1766 |  |
| 1768 |  | 8th Floor | 1.94d | 2027-12-19 | 2027-12-20 | 1767 |  |
| 1769 |  | 9th Floor | 1.94d | 2027-12-21 | 2027-12-22 | 1768 |  |
| 1770 |  | 10th Floor | 1.94d | 2027-12-22 | 2027-12-24 | 1769 |  |
| 1771 |  | 11th Floor | 1.94d | 2027-12-24 | 2027-12-26 | 1770 |  |
| 1772 |  | 12th Floor | 1.94d | 2027-12-26 | 2027-12-28 | 1771 |  |
| 1773 |  | 13th Floor | 1.94d | 2027-12-28 | 2027-12-30 | 1772 |  |
| 1774 |  | 14th Floor | 1.94d | 2027-12-30 | 2028-01-01 | 1773 |  |
| 1775 |  | 15th Floor | 1.94d | 2028-01-01 | 2028-01-03 | 1774 |  |
| 1776 |  | 16th Floor | 1.94d | 2028-01-03 | 2028-01-05 | 1775 |  |
| 1777 |  | 17th Floor | 1.94d | 2028-01-05 | 2028-01-07 | 1776 |  |
| 1778 |  | 18th Floor | 1.94d | 2028-01-07 | 2028-01-09 | 1777 |  |
| 1779 |  | 19th Floor | 1.94d | 2028-01-09 | 2028-01-11 | 1778 |  |
| 1780 |  | 20th Floor | 1.94d | 2028-01-11 | 2028-01-13 | 1779 |  |
| 1781 |  | 21st Floor | 1.94d | 2028-01-13 | 2028-01-15 | 1780 |  |
| 1782 |  | 22nd Floor | 1.94d | 2028-01-15 | 2028-01-17 | 1781 |  |
| 1783 |  | 23rd Floor | 1.94d | 2028-01-17 | 2028-01-19 | 1782 |  |
| 1784 |  | 24th Floor | 1.94d | 2028-01-19 | 2028-01-20 | 1783 |  |
| 1785 |  | 25th Floor | 1.94d | 2028-01-21 | 2028-01-22 | 1784 |  |
| 1786 |  | 26th Floor | 1.94d | 2028-01-22 | 2028-01-24 | 1785 |  |
| 1787 |  | 27th Floor | 1.94d | 2028-01-24 | 2028-01-26 | 1786 |  |
| 1788 |  | 28th Floor | 1.94d | 2028-01-26 | 2028-01-28 | 1787 |  |
| 1789 |  | 29th Floor | 1.94d | 2028-01-28 | 2028-01-30 | 1788 |  |
| 1790 |  | 30th Floor | 1.94d | 2028-01-30 | 2028-02-01 | 1789 |  |
| 1791 |  | 31st Floor | 1.94d | 2028-02-01 | 2028-02-03 | 1790 |  |
| 1792 |  | 32nd Floor | 1.94d | 2028-02-03 | 2028-02-05 | 1791 |  |
| 1793 |  | 33rd Floor | 1.94d | 2028-02-05 | 2028-02-07 | 1792 |  |
| 1794 |  | 34th Floor | 1.94d | 2028-02-07 | 2028-02-09 | 1793 |  |
| 1795 |  | 35th Floor | 1.94d | 2028-02-09 | 2028-02-11 | 1794 |  |
| 1796 | 37100.37300.37600.38000.95300 | **MEP work** | 909.62d | 2025-11-30 | 2028-07-20 |  | start no earlier than 2025-11-30 |
| 1797 | 37100.37300.37600.38000.95300.98200 | **Electrical work** | 233.25d | 2027-01-17 | 2027-09-07 |  | start no earlier than 2027-01-17 |
| 1798 |  | Cable Tray | 89.94d | 2027-01-17 | 2027-04-17 | 1143 |  |
| 1799 |  | Cable, main & sub main | 79.94d | 2027-02-26 | 2027-05-17 | 1798SS+40d |  |
| 1800 |  | LT panel & DB | 119.94d | 2027-04-17 | 2027-08-15 | 1798 |  |
| 1801 |  | Rising main | 89.94d | 2027-06-09 | 2027-09-07 | 1798FS+53.38d |  |
| 1802 |  | EARTHING Works | 59.94d | 2027-04-30 | 2027-06-29 | 1798FS+13.38d |  |
| 1803 |  | Advance lightening protection | 59.94d | 2027-04-07 | 2027-06-06 | 1747 |  |
| 1804 |  | Inverter | 34.94d | 2027-06-29 | 2027-08-03 | 1802 |  |
| 1805 |  | Energy meter | 59.94d | 2027-05-17 | 2027-07-16 | 1799 |  |
| 1806 |  | Exhast fan | 60d | 2027-05-07 | 2027-07-06 | 1738FF+4.5d |  |
| 1807 |  | FTTH | 59.94d | 2027-06-20 | 2027-08-19 | 1802FS-9d |  |
| 1808 |  | Security System - FA & PA | 54.94d | 2027-06-25 | 2027-08-19 | 1807FF |  |
| 1809 |  | Solar water heater | 59.94d | 2027-04-07 | 2027-06-06 | 1747 |  |
| 1810 | 37100.37300.37600.38000.95300.130800 | **Plumbing wrok** | 600.38d | 2025-11-30 | 2027-09-15 |  | start no earlier than 2025-11-30 |
| 1811 |  | Terrace looping | 44.94d | 2027-02-26 | 2027-04-12 | 1745 |  |
| 1812 |  | Shaft Plumbing | 119.94d | 2027-04-12 | 2027-08-10 | 1811 |  |
| 1813 |  | CP sanitary fixture supply | 75d | 2027-07-02 | 2027-09-15 | 1733, 1736FS+53.38d |  |
| 1814 |  | Cold & flushing water supply | 89.94d | 2025-11-30 | 2026-03-09 | 1750SS-90d |  |
| 1815 |  | Misc work | 29.94d | 2026-09-25 | 2026-10-25 | 1814FS+200d |  |
| 1816 | 37100.37300.37600.38000.95300.173700 | **Fire fighting work** | 393.56d | 2026-04-13 | 2027-06-26 |  | start no earlier than 2026-04-13 |
| 1817 |  | Fire hydrant work | 89.94d | 2026-04-13 | 2026-07-12 | 1750SS+53.38d |  |
| 1818 |  | Sprinkler & piping work | 89.94d | 2026-07-13 | 2026-10-11 | 1817FS+0.75d |  |
| 1819 |  | Shaft Downtake works | 89.94d | 2027-02-26 | 2027-05-27 | 1745 |  |
| 1820 |  | Connection to pump room | 29.94d | 2027-05-27 | 2027-06-26 | 1819 |  |

| ID | WBS | Task | Duration | Start | Finish | Predecessors | Complete | Constraint |
| --- | --- | --- | --- | --- | --- | --- | --- | --- |
| 1821 | 37100.37300.37600.38000.95300.186000 | **Lift work** | 304.88d | 2027-01-17 | 2027-11-18 |  |  | start no earlier than 2027-01-17 |
| 1822 |  | Lift Shaft Handover | 39.94d | 2027-01-17 | 2027-02-26 | 1143 |  |  |
| 1823 |  | Lift installation work | 180d | 2027-02-26 | 2027-08-25 | 1822 |  |  |
| 1824 |  | Lift testing and commissioning | 84.94d | 2027-08-25 | 2027-11-18 | 1823 |  |  |
| 1825 | 37100.37300.37600.38000.95300.194800 | **AC work** | 77.94d | 2028-05-03 | 2028-07-20 |  |  | start no earlier than 2028-05-03 |
| 1826 |  | Split AC | 77.94d | 2028-05-03 | 2028-07-20 | 1842FS-26.75d |  |  |
| 1827 | 37100.37300.37600.38000.183600 | **Tower Completion** | 251.12d | 2027-06-08 | 2028-02-14 |  |  | start no earlier than 2027-06-08 |
| 1828 |  | SURFACE PREPARATION | 79.94d | 2027-06-08 | 2027-08-27 | 1181FS+100d |  |  |
| 1829 |  | External Painting | 99.94d | 2027-08-27 | 2027-12-05 | 1828FS+0.25d |  |  |
| 1830 |  | Final coat of painting | 71d | 2027-12-05 | 2028-02-14 | 1829 |  |  |
| 1831 |  | Misc. work | 59.94d | 2027-12-05 | 2028-02-03 | 1829 |  |  |
| 1832 | 37100.37300.37600.38000.194900 | **Entrance lobby** | 60d | 2028-02-05 | 2028-04-05 |  |  | start no earlier than 2028-02-05 |
| 1833 |  | Entrance lobby | 60d | 2028-02-05 | 2028-04-05 | 1831FS+2d |  |  |
| 1834 | 37100.37300.37600.38000.107300 | **Post OC activities** | 450.69d | 2028-05-03 | 2029-07-28 |  |  | start no earlier than 2028-05-03 |
| 1835 |  | Wardrobe installation | 157.94d | 2028-05-03 | 2028-10-08 | 1842FS-26.75d |  |  |
| 1836 |  | CP & SANITARYWARE | 97.94d | 2028-05-03 | 2028-08-09 | 1842FS-26.75d, 1813 |  |  |
| 1837 |  | Wooden Flooring | 157.94d | 2028-05-03 | 2028-10-08 | 1842FS-26.75d |  |  |
| 1838 |  | Shaft closer | 75d | 2029-04-11 | 2029-06-25 | 1741FS+0.25d |  |  |
| 1839 |  | Modular Kitchen | 157.94d | 2028-09-27 | 2029-03-04 | 1842FS+120d |  |  |
| 1840 |  | External Elevation Façade | 82.94d | 2029-05-06 | 2029-07-28 | 1842FS-13.38d, 1743 |  |  |
| 1841 |  | OC Application/Readiness | 0.94d | 2028-04-05 | 2028-04-06 | 1143, 1751FS+7.12d, 1759, 1141, 955, 956, 1754, 1824, 1820, 1818, 1815, 1812, 1800, 1801, 1803, 1804, 1805, 1806, 1808, 1809, 1833 |  |  |
| 1842 |  | OC Receipt | 0.94d | 2028-05-29 | 2028-05-30 | 1841FS+53.38d, 1795, 1830, 1831 |  |  |
| 1843 |  | Offer To Possession | 29.94d | 2029-07-28 | 2029-08-27 | 1835, 1836, 1837, 1838, 1839, 1840 |  |  |
| 1844 | 37100.37300.37600.38100 | **Tower 3** | 1993.06d | 2023-09-30 | 2029-08-04 |  | 6% | start no earlier than 2023-09-30 |
| 1845 | 37100.37300.37600.38100.97800 | **Substructure** | 833.69d | 2023-09-30 | 2026-04-18 |  | 64% | start no earlier than 2023-09-30 |
| 1846 | 37100.37300.37600.38100.97800.108200 | **Soil Bed Preparation** | 763.81d | 2023-09-30 | 2026-02-07 |  | 80% | start no earlier than 2023-09-30 |
| 1847 |  | Test Piling | 74.94d | 2023-09-30 | 2024-01-27 |  | 100% | start no earlier than 2023-09-30 |
| 1848 |  | Excavation | 29.94d | 2024-01-10 | 2024-02-08 | 7SS+61.74d | 100% | start no earlier than 2024-01-10 |
| 1849 |  | Main Piling Work | 184.12d | 2024-04-12 | 2024-10-13 | 7FS-5.45d | 100% | start no earlier than 2024-04-12 |
| 1850 |  | Anti-termite | 4.94d | 2025-11-30 | 2025-12-04 | 1849FS-81d |  |  |
| 1851 |  | PCC | 3.94d | 2025-11-30 | 2025-12-03 | 1848FS-14.7d |  |  |
| 1852 |  | Backfilling | 59.94d | 2025-11-30 | 2026-02-07 | 1865FS+4d |  |  |
| 1853 | 37100.37300.37600.38100.97800.103300 | **RCC Structure** | 123.94d | 2025-01-03 | 2025-05-06 |  | 100% | start no earlier than 2025-01-03 |
| 1854 | 37100.37300.37600.38100.97800.103300.177400 | **Raft Foundation** | 35d | 2025-01-03 | 2025-02-06 |  | 100% | start no earlier than 2025-01-03 |
| 1855 |  | Reinforcement | 30d | 2025-01-03 | 2025-02-02 | 1851FS-30.94d | 100% | start no earlier than 2025-01-03 |
| 1856 |  | Formwork | 18d | 2025-01-17 | 2025-02-03 | 1855FF+1.06d | 100% | start no earlier than 2025-01-17 |
| 1857 |  | Concreting | 4d | 2025-02-03 | 2025-02-06 | 1856FS-1d | 100% | start no earlier than 2025-02-03 |
| 1858 | 37100.37300.37600.38100.97800.103300.177300 | **Basement 1 Slab** | 27d | 2025-02-08 | 2025-03-06 |  | 100% | start no earlier than 2025-02-08 |
| 1859 |  | Reinforcement | 21d | 2025-02-08 | 2025-03-06 | 1857FS+1d | 100% | start no earlier than 2025-02-08 |
| 1860 |  | Formwork | 15d | 2025-02-11 | 2025-03-06 | 1859SS+3d | 100% | start no earlier than 2025-02-11 |
| 1861 |  | Concreting | 2d | 2025-03-03 | 2025-03-06 | 1860FF+3.25d | 100% | start no earlier than 2025-03-03 |
| 1862 | 37100.37300.37600.38100.97800.103300.177200 | **Basement 2 Slab/GF** | 18d | 2025-03-04 | 2025-03-21 |  | 100% | start no earlier than 2025-03-04 |
| 1863 |  | Reinforcement | 15d | 2025-03-04 | 2025-03-21 | 1861FS-2d | 100% | start no earlier than 2025-03-04 |
| 1864 |  | Formwork | 15d | 2025-03-05 | 2025-03-21 | 1863SS+1d | 100% | start no earlier than 2025-03-05 |
| 1865 |  | Concreting | 3d | 2025-03-09 | 2025-03-11 | 1864FS-1d | 100% | start no earlier than 2025-03-09 |
| 1866 | 37100.37300.37600.38100.97800.103300.177100 | **Podium** | 49.94d | 2025-03-18 | 2025-05-06 |  | 100% | start no earlier than 2025-03-18 |
| 1867 |  | Reinforcement | 22.94d | 2025-03-18 | 2025-05-04 | 1865FS+5d | 100% | start no earlier than 2025-03-18 |
| 1868 |  | Formwork | 30.94d | 2025-03-21 | 2025-05-05 | 1867SS+2.75d | 100% | start no earlier than 2025-03-21 |
| 1869 |  | Concreting | 1d | 2025-05-05 | 2025-05-06 | 1868 | 100% | start no earlier than 2025-05-05 |
| 1870 | 37100.37300.37600.38100.97800.172800 | **Substructure Finishing** | 129.81d | 2025-11-30 | 2026-04-18 |  |  | start no earlier than 2025-11-30 |
| 1871 |  | Masonary work | 44.94d | 2025-11-30 | 2026-01-23 | 1869FS+26.75d |  |  |
| 1872 |  | Plaster | 39.94d | 2026-01-23 | 2026-03-04 | 1871 |  |  |
| 1873 |  | Structural steel | 59.94d | 2025-11-30 | 2026-02-07 | 1869FS+53.38d |  |  |
| 1874 |  | White Wash | 44.94d | 2026-03-04 | 2026-04-18 | 1872 |  |  |
| 1875 | 37100.37300.37600.38100.39100 | **Superstructure** | 1012.44d | 2025-05-07 | 2028-04-21 |  | 4% | start no earlier than 2025-05-07 |
| 1876 | 37100.37300.37600.38100.39100.43500 | **RCC structure** | 558.75d | 2025-05-07 | 2027-01-23 |  | 32% | start no earlier than 2025-05-07 |
| 1877 | 37100.37300.37600.38100.39100.43500.122700 | **1st floor slab** | 52.25d | 2025-05-07 | 2025-06-28 |  | 100% | start no earlier than 2025-05-07 |
| 1878 |  | Reinforcement | 32d | 2025-05-07 | 2025-06-28 | 1869FS+2.75d | 100% | start no earlier than 2025-05-07 |
| 1879 |  | Wall conduiting | 25d | 2025-05-10 | 2025-06-24 | 1878SS+2.75d | 100% | start no earlier than 2025-05-10 |
| 1880 |  | Formwork | 30d | 2025-05-10 | 2025-06-26 | 1878SS+3d | 100% | start no earlier than 2025-05-10 |
| 1881 |  | Concreting | 14d | 2025-05-24 | 2025-06-27 | 1880SS+15d | 100% | start no earlier than 2025-05-24 |
| 1882 | 37100.37300.37600.38100.39100.43500.123500 | **2nd floor slab** | 40d | 2025-06-28 | 2025-08-06 |  | 100% | start no earlier than 2025-06-28 |
| 1883 |  | Reinforcement | 20d | 2025-06-28 | 2025-07-31 | 1881FS+1d | 100% | start no earlier than 2025-06-28 |
| 1884 |  | Wall conduiting | 8d | 2025-07-02 | 2025-07-31 | 1879, 1883SS+2.75d | 100% | start no earlier than 2025-07-02 |
| 1885 |  | Formwork | 20d | 2025-06-30 | 2025-07-31 | 1883SS | 100% | start no earlier than 2025-06-30 |
| 1886 |  | Concreting | 3d | 2025-07-31 | 2025-08-06 | 1885 | 100% | start no earlier than 2025-07-31 |
| 1887 | 37100.37300.37600.38100.39100.43500.123600 | **3rd floor slab** | 29d | 2025-08-02 | 2025-08-30 |  | 100% | start no earlier than 2025-08-02 |
| 1888 |  | Reinforcement | 11d | 2025-08-02 | 2025-08-26 | 1886FS+1d | 100% | start no earlier than 2025-08-02 |
| 1889 |  | Wall conduiting | 3d | 2025-08-04 | 2025-08-25 | 1884, 1888SS+2.75d | 100% | start no earlier than 2025-08-04 |
| 1890 |  | Formwork | 11d | 2025-08-05 | 2025-08-29 | 1888SS+3d | 100% | start no earlier than 2025-08-05 |

| ID | WBS | Task | Duration | Start | Finish | Predecessors | Complete | Constraint |
| --- | --- | --- | --- | --- | --- | --- | --- | --- |
| 1891 |  | Concreting | 3d | 2025-08-24 | 2025-08-30 | 1890FS-5d | 100% | start no earlier than 2025-08-24 |
| 1892 | 37100.37300.37600.38100.39100.43500.123700 | **4th floor slab** | 17d | 2025-08-28 | 2025-09-13 |  | 100% | start no earlier than 2025-08-28 |
| 1893 |  | Reinforcement | 8d | 2025-08-28 | 2025-09-12 | 1891FS+1d | 100% | start no earlier than 2025-08-28 |
| 1894 |  | Wall conduiting | 6d | 2025-08-28 | 2025-09-12 | 1889, 1893SS+1d | 100% | start no earlier than 2025-08-28 |
| 1895 |  | Formwork | 7d | 2025-08-29 | 2025-09-12 | 1893SS+1d | 100% | start no earlier than 2025-08-29 |
| 1896 |  | Concreting | 2d | 2025-09-12 | 2025-09-13 | 1895 | 100% | start no earlier than 2025-09-12 |
| 1897 | 37100.37300.37600.38100.39100.43500.123900 | **5th floor slab** | 15d | 2025-09-12 | 2025-09-26 |  | 100% | start no earlier than 2025-09-12 |
| 1898 |  | Reinforcement | 8d | 2025-09-12 | 2025-09-25 | 1896FS+1d | 100% | start no earlier than 2025-09-12 |
| 1899 |  | Wall conduiting | 8d | 2025-09-12 | 2025-09-25 | 1894, 1898SS+1d | 100% | start no earlier than 2025-09-12 |
| 1900 |  | Formwork | 7d | 2025-09-12 | 2025-09-25 | 1898SS+1d | 100% | start no earlier than 2025-09-12 |
| 1901 |  | Concreting | 1d | 2025-09-26 | 2025-09-26 | 1900 | 100% | start no earlier than 2025-09-26 |
| 1902 | 37100.37300.37600.38100.39100.43500.124300 | **6th floor slab** | 15d | 2025-09-26 | 2025-10-10 |  | 100% | start no earlier than 2025-09-26 |
| 1903 |  | Reinforcement | 8d | 2025-09-26 | 2025-10-06 | 1901FS+1d | 100% | start no earlier than 2025-09-26 |
| 1904 |  | Wall conduiting | 3d | 2025-09-26 | 2025-10-06 | 1899, 1903SS+1d | 100% | start no earlier than 2025-09-26 |
| 1905 |  | Formwork | 7d | 2025-09-26 | 2025-10-06 | 1903SS+1d | 100% | start no earlier than 2025-09-26 |
| 1906 |  | Concreting | 2d | 2025-10-06 | 2025-10-10 | 1905 | 100% | start no earlier than 2025-10-06 |
| 1907 | 37100.37300.37600.38100.39100.43500.124400 | **7th floor slab** | 16d | 2025-10-10 | 2025-10-25 |  | 100% | start no earlier than 2025-10-10 |
| 1908 |  | Reinforcement | 8d | 2025-10-10 | 2025-10-18 | 1906FS+1d | 100% | start no earlier than 2025-10-10 |
| 1909 |  | Wall conduiting | 5d | 2025-10-10 | 2025-10-18 | 1904, 1908SS+1d | 100% | start no earlier than 2025-10-10 |
| 1910 |  | Formwork | 7d | 2025-10-10 | 2025-10-18 | 1908SS+1d | 100% | start no earlier than 2025-10-10 |
| 1911 |  | Concreting | 2d | 2025-10-18 | 2025-10-25 | 1910 | 100% | start no earlier than 2025-10-18 |
| 1912 | 37100.37300.37600.38100.39100.43500.124500 | **8th floor slab** | 23.88d | 2025-10-20 | 2025-11-10 |  | 100% | start no earlier than 2025-10-20 |
| 1913 |  | Reinforcement | 10d | 2025-10-20 | 2025-11-10 | 1911FS+1d | 100% | start no earlier than 2025-10-20 |
| 1914 |  | Wall conduiting | 3d | 2025-10-20 | 2025-11-10 | 1909, 1913SS+1d | 100% | start no earlier than 2025-10-20 |
| 1915 |  | Formwork | 10d | 2025-10-20 | 2025-11-10 | 1913SS+1d | 100% | start no earlier than 2025-10-20 |
| 1916 |  | Concreting | 5d | 2025-11-03 | 2025-11-07 | 1915 | 100% | start no earlier than 2025-11-03 |
| 1917 | 37100.37300.37600.38100.39100.43500.124600 | **9th floor slab** | 22.31d | 2025-11-05 | 2025-12-19 |  | 60% | start no earlier than 2025-11-05 |
| 1918 |  | Reinforcement | 8d | 2025-11-05 | 2025-12-19 | 1916FS+1d | 62% | start no earlier than 2025-11-05 |
| 1919 |  | Wall conduiting | 3d | 2025-11-05 | 2025-12-17 | 1914, 1918SS+1d | 66% | start no earlier than 2025-11-05 |
| 1920 |  | Formwork | 7d | 2025-11-05 | 2025-12-18 | 1918SS+1d | 71% | start no earlier than 2025-11-05 |
| 1921 |  | Concreting | 5d | 2025-11-29 | 2025-12-04 | 1920FS-2.25d | 40% |  |
| 1922 | 37100.37300.37600.38100.39100.43500.177000 | **10th floor slab** | 9d | 2025-12-03 | 2025-12-22 |  |  | start no earlier than 2025-12-03 |
| 1923 |  | Reinforcement | 8d | 2025-12-03 | 2025-12-21 | 1921FS+1d |  |  |
| 1924 |  | Wall conduiting | 3d | 2025-12-04 | 2025-12-17 | 1919, 1923SS+1d |  |  |
| 1925 |  | Formwork | 7d | 2025-12-04 | 2025-12-21 | 1923SS+1d |  |  |
| 1926 |  | Concreting | 1d | 2025-12-21 | 2025-12-22 | 1925 |  |  |
| 1927 | 37100.37300.37600.38100.39100.43500.176900 | **11th floor slab** | 9d | 2025-12-23 | 2026-01-01 |  |  | start no earlier than 2025-12-23 |
| 1928 |  | Reinforcement | 8d | 2025-12-23 | 2025-12-31 | 1926FS+1d |  |  |
| 1929 |  | Wall conduiting | 3d | 2025-12-24 | 2025-12-27 | 1924, 1928SS+1d |  |  |
| 1930 |  | Formwork | 7d | 2025-12-24 | 2025-12-31 | 1928SS+1d |  |  |
| 1931 |  | Concreting | 1d | 2025-12-31 | 2026-01-01 | 1930 |  |  |
| 1932 | 37100.37300.37600.38100.39100.43500.176800 | **12th floor slab** | 9d | 2026-01-02 | 2026-01-11 |  |  | start no earlier than 2026-01-02 |
| 1933 |  | Reinforcement | 8d | 2026-01-02 | 2026-01-10 | 1931FS+1d |  |  |
| 1934 |  | Wall conduiting | 3d | 2026-01-03 | 2026-01-06 | 1929, 1933SS+1d |  |  |
| 1935 |  | Formwork | 7d | 2026-01-03 | 2026-01-10 | 1933SS+1d |  |  |
| 1936 |  | Concreting | 1d | 2026-01-10 | 2026-01-11 | 1935 |  |  |
| 1937 | 37100.37300.37600.38100.39100.43500.176700 | **13th floor slab** | 9d | 2026-01-13 | 2026-01-22 |  |  | start no earlier than 2026-01-13 |
| 1938 |  | Reinforcement | 8d | 2026-01-13 | 2026-01-21 | 1936FS+2d |  |  |
| 1939 |  | Wall conduiting | 3d | 2026-01-14 | 2026-01-17 | 1934, 1938SS+1d |  |  |
| 1940 |  | Formwork | 7d | 2026-01-14 | 2026-01-21 | 1938SS+1d |  |  |
| 1941 |  | Concreting | 1d | 2026-01-21 | 2026-01-22 | 1940 |  |  |
| 1942 | 37100.37300.37600.38100.39100.43500.176600 | **14th floor slab** | 9d | 2026-01-21 | 2026-01-30 |  |  | start no earlier than 2026-01-21 |
| 1943 |  | Reinforcement | 8d | 2026-01-21 | 2026-01-29 | 1941FS-1d |  |  |
| 1944 |  | Wall conduiting | 3d | 2026-01-22 | 2026-01-25 | 1939, 1943SS+1d |  |  |
| 1945 |  | Formwork | 7d | 2026-01-22 | 2026-01-29 | 1943SS+1d |  |  |
| 1946 |  | Concreting | 1d | 2026-01-29 | 2026-01-30 | 1945 |  |  |
| 1947 | 37100.37300.37600.38100.39100.43500.176500 | **15th floor slab** | 9d | 2026-01-31 | 2026-02-09 |  |  | start no earlier than 2026-01-31 |
| 1948 |  | Reinforcement | 8d | 2026-01-31 | 2026-02-08 | 1946FS+0.88d |  |  |
| 1949 |  | Wall conduiting | 3d | 2026-02-01 | 2026-02-04 | 1944, 1948SS+1d |  |  |
| 1950 |  | Formwork | 7d | 2026-02-01 | 2026-02-08 | 1948SS+1d |  |  |
| 1951 |  | Concreting | 1d | 2026-02-08 | 2026-02-09 | 1950 |  |  |
| 1952 | 37100.37300.37600.38100.39100.43500.176400 | **16th floor slab** | 12d | 2026-02-08 | 2026-02-20 |  |  | start no earlier than 2026-02-08 |
| 1953 |  | Reinforcement | 10d | 2026-02-08 | 2026-02-18 | 1951FS-1d |  |  |
| 1954 |  | Wall conduiting | 3d | 2026-02-09 | 2026-02-12 | 1949, 1953SS+1d |  |  |
| 1955 |  | Formwork | 10d | 2026-02-09 | 2026-02-19 | 1953SS+1d |  |  |
| 1956 |  | Concreting | 1d | 2026-02-19 | 2026-02-20 | 1955 |  |  |
| 1957 | 37100.37300.37600.38100.39100.43500.176300 | **17th floor slab** | 9d | 2026-02-19 | 2026-02-28 |  |  | start no earlier than 2026-02-19 |
| 1958 |  | Reinforcement | 8d | 2026-02-19 | 2026-02-27 | 1956FS-1d |  |  |
| 1959 |  | Wall conduiting | 3d | 2026-02-20 | 2026-02-23 | 1954, 1958SS+1d |  |  |
| 1960 |  | Formwork | 7d | 2026-02-20 | 2026-02-27 | 1958SS+1d |  |  |

| ID | WBS | Task | Duration | Start | Finish | Predecessors | Constraint |
| --- | --- | --- | --- | --- | --- | --- | --- |
| 1961 |  | Concreting | 1d | 2026-02-27 | 2026-02-28 | 1960 |  |
| 1962 | 37100.37300.37600.38100.39100.43500.176200 | **18th floor slab** | 9d | 2026-02-26 | 2026-03-07 |  | start no earlier than 2026-02-26 |
| 1963 |  | Reinforcement | 8d | 2026-02-26 | 2026-03-06 | 1961FS-2d |  |
| 1964 |  | Wall conduiting | 3d | 2026-02-27 | 2026-03-02 | 1959, 1963SS+1d |  |
| 1965 |  | Formwork | 7d | 2026-02-27 | 2026-03-06 | 1963SS+1d |  |
| 1966 |  | Concreting | 1d | 2026-03-06 | 2026-03-07 | 1965 |  |
| 1967 | 37100.37300.37600.38100.39100.43500.176100 | **19th floor slab** | 8d | 2026-03-04 | 2026-03-12 |  | start no earlier than 2026-03-04 |
| 1968 |  | Reinforcement | 7d | 2026-03-04 | 2026-03-11 | 1966FS-3d |  |
| 1969 |  | Wall conduiting | 3d | 2026-03-05 | 2026-03-08 | 1964, 1968SS+1d |  |
| 1970 |  | Formwork | 6d | 2026-03-05 | 2026-03-11 | 1968SS+1d |  |
| 1971 |  | Concreting | 1d | 2026-03-11 | 2026-03-12 | 1970 |  |
| 1972 | 37100.37300.37600.38100.39100.43500.176000 | **20th floor slab** | 8d | 2026-03-13 | 2026-03-21 |  | start no earlier than 2026-03-13 |
| 1973 |  | Reinforcement | 7d | 2026-03-13 | 2026-03-20 | 1971FS+1d |  |
| 1974 |  | Wall conduiting | 3d | 2026-03-14 | 2026-03-17 | 1969, 1973SS+1d |  |
| 1975 |  | Formwork | 6d | 2026-03-14 | 2026-03-20 | 1973SS+1d |  |
| 1976 |  | Concreting | 1d | 2026-03-20 | 2026-03-21 | 1975 |  |
| 1977 | 37100.37300.37600.38100.39100.43500.175900 | **21st floor slab** | 10d | 2026-03-23 | 2026-04-01 |  | start no earlier than 2026-03-23 |
| 1978 |  | Reinforcement | 9d | 2026-03-23 | 2026-03-31 | 1976FS+1.88d |  |
| 1979 |  | Wall conduiting | 3d | 2026-03-24 | 2026-03-26 | 1974, 1978SS+1d |  |
| 1980 |  | Formwork | 8d | 2026-03-24 | 2026-03-31 | 1978SS+1d |  |
| 1981 |  | Concreting | 1d | 2026-04-01 | 2026-04-01 | 1980 |  |
| 1982 | 37100.37300.37600.38100.39100.43500.175800 | **22nd floor slab** | 10d | 2026-04-06 | 2026-04-15 |  | start no earlier than 2026-04-06 |
| 1983 |  | Reinforcement | 9d | 2026-04-06 | 2026-04-14 | 1981FS+4d |  |
| 1984 |  | Wall conduiting | 3d | 2026-04-07 | 2026-04-09 | 1979, 1983SS+1d |  |
| 1985 |  | Formwork | 8d | 2026-04-07 | 2026-04-14 | 1983SS+1d |  |
| 1986 |  | Concreting | 1d | 2026-04-15 | 2026-04-15 | 1985 |  |
| 1987 | 37100.37300.37600.38100.39100.43500.175700 | **23rd floor slab** | 10d | 2026-04-19 | 2026-04-28 |  | start no earlier than 2026-04-19 |
| 1988 |  | Reinforcement | 9d | 2026-04-19 | 2026-04-27 | 1986FS+3d |  |
| 1989 |  | Wall conduiting | 3d | 2026-04-20 | 2026-04-22 | 1984, 1988SS+1d |  |
| 1990 |  | Formwork | 8d | 2026-04-20 | 2026-04-27 | 1988SS+1d |  |
| 1991 |  | Concreting | 1d | 2026-04-28 | 2026-04-28 | 1990 |  |
| 1992 | 37100.37300.37600.38100.39100.43500.175600 | **24th floor slab** | 12d | 2026-05-04 | 2026-05-15 |  | start no earlier than 2026-05-04 |
| 1993 |  | Reinforcement | 10d | 2026-05-04 | 2026-05-13 | 1991FS+5d |  |
| 1994 |  | Wall conduiting | 3d | 2026-05-05 | 2026-05-07 | 1989, 1993SS+1d |  |
| 1995 |  | Formwork | 10d | 2026-05-05 | 2026-05-14 | 1993SS+1d |  |
| 1996 |  | Concreting | 1d | 2026-05-15 | 2026-05-15 | 1995 |  |
| 1997 | 37100.37300.37600.38100.39100.43500.175500 | **25th floor slab** | 12d | 2026-05-17 | 2026-05-28 |  | start no earlier than 2026-05-17 |
| 1998 |  | Reinforcement | 10d | 2026-05-17 | 2026-05-26 | 1996FS+1d |  |
| 1999 |  | Wall conduiting | 3d | 2026-05-18 | 2026-05-20 | 1994, 1998SS+1d |  |
| 2000 |  | Formwork | 10d | 2026-05-18 | 2026-05-27 | 1998SS+1d |  |
| 2001 |  | Concreting | 1d | 2026-05-28 | 2026-05-28 | 2000 |  |
| 2002 | 37100.37300.37600.38100.39100.43500.175400 | **26th floor slab** | 10d | 2026-05-30 | 2026-06-08 |  | start no earlier than 2026-05-30 |
| 2003 |  | Reinforcement | 9d | 2026-05-30 | 2026-06-07 | 2001FS+1d |  |
| 2004 |  | Wall conduiting | 3d | 2026-05-31 | 2026-06-02 | 1999, 2003SS+1d |  |
| 2005 |  | Formwork | 8d | 2026-05-31 | 2026-06-07 | 2003SS+1d |  |
| 2006 |  | Concreting | 1d | 2026-06-08 | 2026-06-08 | 2005 |  |
| 2007 | 37100.37300.37600.38100.39100.43500.175300 | **27th floor slab** | 10d | 2026-06-14 | 2026-06-23 |  | start no earlier than 2026-06-14 |
| 2008 |  | Reinforcement | 9d | 2026-06-14 | 2026-06-22 | 2006FS+5d |  |
| 2009 |  | Wall conduiting | 3d | 2026-06-15 | 2026-06-17 | 2004, 2008SS+1d |  |
| 2010 |  | Formwork | 8d | 2026-06-15 | 2026-06-22 | 2008SS+1d |  |
| 2011 |  | Concreting | 1d | 2026-06-23 | 2026-06-23 | 2010 |  |
| 2012 | 37100.37300.37600.38100.39100.43500.175200 | **28th floor slab** | 10d | 2026-06-25 | 2026-07-04 |  | start no earlier than 2026-06-25 |
| 2013 |  | Reinforcement | 9d | 2026-06-25 | 2026-07-03 | 2011FS+1d |  |
| 2014 |  | Wall conduiting | 3d | 2026-06-26 | 2026-06-28 | 2009, 2013SS+1d |  |
| 2015 |  | Formwork | 8d | 2026-06-26 | 2026-07-03 | 2013SS+1d |  |
| 2016 |  | Concreting | 1d | 2026-07-04 | 2026-07-04 | 2015 |  |
| 2017 | 37100.37300.37600.38100.39100.43500.175100 | **29th floor slab** | 10d | 2026-07-06 | 2026-07-15 |  | start no earlier than 2026-07-06 |
| 2018 |  | Reinforcement | 9d | 2026-07-06 | 2026-07-14 | 2016FS+1d |  |
| 2019 |  | Wall conduiting | 3d | 2026-07-07 | 2026-07-09 | 2014, 2018SS+1d |  |
| 2020 |  | Formwork | 8d | 2026-07-07 | 2026-07-14 | 2018SS+1d |  |
| 2021 |  | Concreting | 1d | 2026-07-15 | 2026-07-15 | 2020 |  |
| 2022 | 37100.37300.37600.38100.39100.43500.175000 | **30th floor slab** | 10d | 2026-07-20 | 2026-07-29 |  | start no earlier than 2026-07-20 |
| 2023 |  | Reinforcement | 9d | 2026-07-20 | 2026-07-28 | 2021FS+4d |  |
| 2024 |  | Wall conduiting | 3d | 2026-07-21 | 2026-07-23 | 2019, 2023SS+1d |  |
| 2025 |  | Formwork | 8d | 2026-07-21 | 2026-07-28 | 2023SS+1d |  |
| 2026 |  | Concreting | 1d | 2026-07-29 | 2026-07-29 | 2025 |  |
| 2027 | 37100.37300.37600.38100.39100.43500.174900 | **31st floor slab** | 10.88d | 2026-08-03 | 2026-08-13 |  | start no earlier than 2026-08-03 |
| 2028 |  | Reinforcement | 8.94d | 2026-08-03 | 2026-08-11 | 2026FS+4d |  |
| 2029 |  | Wall conduiting | 1.94d | 2026-08-04 | 2026-08-05 | 2024, 2028SS+1d |  |
| 2030 |  | Formwork | 8.94d | 2026-08-04 | 2026-08-12 | 2028SS+1d |  |

| ID | WBS | Task | Duration | Start | Finish | Predecessors | Constraint |
| --- | --- | --- | --- | --- | --- | --- | --- |
| 2031 |  | Concreting | 0.94d | 2026-08-12 | 2026-08-13 | 2030 |  |
| 2032 | 37100.37300.37600.38100.39100.43500.174800 | **32nd floor slab** | 12.75d | 2026-08-17 | 2026-08-30 |  | start no earlier than 2026-08-17 |
| 2033 |  | Reinforcement | 9.94d | 2026-08-17 | 2026-08-27 | 2031FS+4d |  |
| 2034 |  | Wall conduiting | 1.94d | 2026-08-18 | 2026-08-20 | 2029, 2033SS+1d |  |
| 2035 |  | Formwork | 9.94d | 2026-08-19 | 2026-08-29 | 2033SS+1.88d |  |
| 2036 |  | Concreting | 0.94d | 2026-08-29 | 2026-08-30 | 2035 |  |
| 2037 | 37100.37300.37600.38100.39100.43500.174700 | **33rd floor slab** | 14d | 2026-08-31 | 2026-09-14 |  | start no earlier than 2026-08-31 |
| 2038 |  | Reinforcement | 14d | 2026-08-31 | 2026-09-14 | 2036FS+1d |  |
| 2039 |  | Wall conduiting | 5d | 2026-09-01 | 2026-09-06 | 2034, 2038SS+1d |  |
| 2040 |  | Formwork | 10d | 2026-09-02 | 2026-09-12 | 2038SS+1.88d |  |
| 2041 |  | Concreting | 1d | 2026-09-12 | 2026-09-13 | 2040 |  |
| 2042 | 37100.37300.37600.38100.39100.43500.174600 | **34th floor slab** | 12.75d | 2026-09-14 | 2026-09-27 |  | start no earlier than 2026-09-14 |
| 2043 |  | Reinforcement | 9.94d | 2026-09-14 | 2026-09-24 | 2041FS+1d |  |
| 2044 |  | Wall conduiting | 1.94d | 2026-09-15 | 2026-09-17 | 2039, 2043SS+1d |  |
| 2045 |  | Formwork | 9.94d | 2026-09-16 | 2026-09-26 | 2043SS+1.88d |  |
| 2046 |  | Concreting | 0.94d | 2026-09-26 | 2026-09-27 | 2045 |  |
| 2047 | 37100.37300.37600.38100.39100.43500.174500 | **35th floor slab** | 11.75d | 2026-09-29 | 2026-10-10 |  | start no earlier than 2026-09-29 |
| 2048 |  | Reinforcement | 8.94d | 2026-09-29 | 2026-10-08 | 2046FS+2d |  |
| 2049 |  | Wall conduiting | 1.94d | 2026-09-30 | 2026-10-02 | 2044, 2048SS+1d |  |
| 2050 |  | Formwork | 7.94d | 2026-10-02 | 2026-10-10 | 2049SS+1.88d |  |
| 2051 |  | Concreting | 0.94d | 2026-10-10 | 2026-10-10 | 2050 |  |
| 2052 | 37100.37300.37600.38100.39100.43500.174400 | **Terrace floor slab** | 21d | 2026-10-12 | 2026-12-16 |  | start no earlier than 2026-10-12 |
| 2053 |  | Reinforcement | 21d | 2026-10-12 | 2026-12-16 | 2051FS+1d |  |
| 2054 |  | Wall conduiting | 1.94d | 2026-10-13 | 2026-10-14 | 2049, 2053SS+1d |  |
| 2055 |  | Formwork | 13d | 2026-10-13 | 2026-10-26 | 2053SS+1.88d |  |
| 2056 |  | Concreting | 2d | 2026-10-26 | 2026-10-28 | 2055 |  |
| 2057 | 37100.37300.37600.38100.39100.43500.174300 | **OHT & Mumty** | 39.5d | 2026-10-30 | 2027-01-23 |  | start no earlier than 2026-10-30 |
| 2058 |  | Reinforcement | 29.94d | 2026-10-30 | 2027-01-13 | 2056FS+2d |  |
| 2059 |  | Wall conduiting | 4.94d | 2026-10-31 | 2026-12-20 | 2054, 2058SS+1d |  |
| 2060 |  | Formwork | 32.94d | 2026-12-18 | 2027-01-20 | 2058SS+3.62d |  |
| 2061 |  | Concreting | 2.94d | 2027-01-20 | 2027-01-23 | 2060 |  |
| 2062 | 37100.37300.37600.38100.39100.45800 | **Post Pour Activities** | 407.12d | 2025-11-30 | 2027-03-06 |  | start no earlier than 2025-11-30 |
| 2063 |  | 1st Floor | 7d | 2025-11-30 | 2025-12-16 | 1901 |  |
| 2064 |  | 2nd Floor | 7d | 2025-12-16 | 2025-12-23 | 2063, 1911 |  |
| 2065 |  | 3rd Floor | 7d | 2025-12-23 | 2025-12-30 | 2064, 1916 |  |
| 2066 |  | 4th Floor | 7d | 2025-12-30 | 2026-01-06 | 2065, 1921 |  |
| 2067 |  | 5th Floor | 7d | 2026-01-06 | 2026-01-13 | 2066, 1926 |  |
| 2068 |  | 6th Floor | 7d | 2026-01-13 | 2026-01-20 | 2067, 1931 |  |
| 2069 |  | 7th Floor | 7d | 2026-01-20 | 2026-01-27 | 2068, 1936 |  |
| 2070 |  | 8th Floor | 7d | 2026-01-27 | 2026-02-03 | 2069, 1941 |  |
| 2071 |  | 9th Floor | 7d | 2026-02-03 | 2026-02-10 | 2070, 1946 |  |
| 2072 |  | 10th Floor | 7d | 2026-02-10 | 2026-02-17 | 2071, 1951 |  |
| 2073 |  | 11th Floor | 7d | 2026-02-20 | 2026-02-27 | 2072, 1956 |  |
| 2074 |  | 12th Floor | 7d | 2026-02-28 | 2026-03-07 | 2073, 1961 |  |
| 2075 |  | 13th Floor | 7d | 2026-03-07 | 2026-03-14 | 2074, 1966 |  |
| 2076 |  | 14th Floor | 7d | 2026-03-14 | 2026-03-21 | 2075, 1971 |  |
| 2077 |  | 15th Floor | 7d | 2026-03-21 | 2026-03-28 | 2076, 1976 |  |
| 2078 |  | 16th Floor | 7d | 2026-04-02 | 2026-04-08 | 2077, 1981 |  |
| 2079 |  | 17th Floor | 7d | 2026-04-16 | 2026-04-22 | 2078, 1986 |  |
| 2080 |  | 18th Floor | 7d | 2026-04-29 | 2026-05-05 | 2079, 1991 |  |
| 2081 |  | 19th Floor | 7d | 2026-05-16 | 2026-05-22 | 2080, 1996 |  |
| 2082 |  | 20th Floor | 7d | 2026-05-29 | 2026-06-04 | 2081, 2001 |  |
| 2083 |  | 21st Floor | 7d | 2026-06-09 | 2026-06-15 | 2082, 2006 |  |
| 2084 |  | 22nd Floor | 7d | 2026-06-24 | 2026-06-30 | 2083, 2011 |  |
| 2085 |  | 23rd Floor | 7d | 2026-07-05 | 2026-07-11 | 2084, 2016 |  |
| 2086 |  | 24th Floor | 7d | 2026-07-16 | 2026-07-22 | 2085, 2021 |  |
| 2087 |  | 25th Floor | 7d | 2026-07-30 | 2026-08-05 | 2086, 2026 |  |
| 2088 |  | 26th Floor | 7d | 2026-08-13 | 2026-08-20 | 2087, 2031 |  |
| 2089 |  | 27th Floor | 7d | 2026-08-30 | 2026-09-06 | 2088, 2036 |  |
| 2090 |  | 28th Floor | 7d | 2026-09-13 | 2026-09-20 | 2089, 2041 |  |
| 2091 |  | 29th Floor | 7d | 2026-09-27 | 2026-10-04 | 2090, 2046 |  |
| 2092 |  | 30th Floor | 7d | 2026-10-11 | 2026-10-17 | 2091, 2051 |  |
| 2093 |  | 31st Floor | 7d | 2026-10-28 | 2026-12-19 | 2092, 2056 |  |
| 2094 |  | 32nd Flood | 7d | 2027-01-23 | 2027-01-30 | 2093, 2061 |  |
| 2095 |  | 33rd Floor | 7d | 2027-01-30 | 2027-02-06 | 2094 |  |
| 2096 |  | 34th Floor | 7d | 2027-02-06 | 2027-02-13 | 2095 |  |
| 2097 |  | 35th Floor | 7d | 2027-02-13 | 2027-02-20 | 2096 |  |
| 2098 |  | Terrace | 7d | 2027-02-20 | 2027-02-27 | 2097 |  |
| 2099 |  | Mumty & Machine Room | 7d | 2027-02-27 | 2027-03-06 | 2098 |  |
| 2100 | 37100.37300.37600.38100.39100.40500 | **Finishing work** | 818.81d | 2025-11-30 | 2028-04-21 |  | start no earlier than 2025-11-30 |

| ID | WBS | Task | Duration | Start | Finish | Predecessors | Constraint |
| --- | --- | --- | --- | --- | --- | --- | --- |
| 2101 | 37100.37300.37600.38100.39100.40500.41500 | **Flat finishing** | 818.81d | 2025-11-30 | 2028-04-21 |  | start no earlier than 2025-11-30 |
| 2102 | 37100.37300.37600.38100.39100.40500.41500.64600 | **1st Floor** | 448.25d | 2025-11-30 | 2027-04-16 |  | start no earlier than 2025-11-30 |
| 2103 |  | Block Work | 8d | 2025-11-30 | 2025-12-18 | 2063SS+1d |  |
| 2104 |  | Door Frame Fixing | 9d | 2025-12-18 | 2025-12-27 | 2103 |  |
| 2105 |  | Internal Plumbing Works | 8d | 2025-12-18 | 2025-12-26 | 2103 |  |
| 2106 |  | Waterproofing | 10d | 2025-12-26 | 2026-01-05 | 2105 |  |
| 2107 |  | Internal Plaster | 8d | 2025-11-30 | 2025-12-17 | 1896FS+1d |  |
| 2108 |  | IPS flooring work | 10d | 2026-01-05 | 2026-01-15 | 2104, 2105, 2106 |  |
| 2109 |  | Toilet dado work | 8d | 2026-01-05 | 2026-01-13 | 2106, 2107 |  |
| 2110 |  | Toilet flooring work | 8d | 2026-01-13 | 2026-01-21 | 2109 |  |
| 2111 |  | Living dinning flooring | 8d | 2025-12-27 | 2026-01-04 | 2104FS+0.25d |  |
| 2112 |  | Aluminium door-window fixing | 8d | 2026-01-15 | 2026-01-23 | 2108FS+0.25d |  |
| 2113 |  | Putty primer coat | 6d | 2026-01-04 | 2026-01-10 | 2111 |  |
| 2114 |  | Door shutter fixing | 8d | 2026-01-04 | 2026-01-12 | 2111 |  |
| 2115 |  | Electrical wiring work | 8d | 2027-03-23 | 2027-03-31 | 2114FS+390d |  |
| 2116 |  | Painting 1st coat | 8d | 2027-03-31 | 2027-04-08 | 2113, 2114, 2115 |  |
| 2117 |  | False ceiling | 8d | 2027-04-08 | 2027-04-16 | 2116 |  |
| 2118 | 37100.37300.37600.38100.39100.40500.41500.64700 | **2nd Floor** | 448d | 2025-12-17 | 2027-04-24 |  | start no earlier than 2025-12-17 |
| 2119 |  | Block Work | 8d | 2025-12-18 | 2025-12-26 | 2103FS+0.25d |  |
| 2120 |  | Door Frame Fixing | 9d | 2025-12-26 | 2026-01-04 | 2119FS+0.25d |  |
| 2121 |  | Internal Plumbing Works | 8d | 2025-12-26 | 2026-01-03 | 2105, 2119 |  |
| 2122 |  | Waterproofing | 10d | 2026-01-05 | 2026-01-15 | 2106, 2121 |  |
| 2123 |  | Internal Plaster | 8d | 2025-12-17 | 2025-12-25 | 2107FS+0.25d |  |
| 2124 |  | IPS flooring work | 10d | 2026-01-15 | 2026-01-25 | 2108, 2120, 2121, 2122 |  |
| 2125 |  | Toilet dado work | 8d | 2026-01-15 | 2026-01-23 | 2109, 2122, 2123 |  |
| 2126 |  | Toilet flooring work | 8d | 2026-01-23 | 2026-01-31 | 2110, 2125 |  |
| 2127 |  | Living dinning flooring | 8d | 2026-01-04 | 2026-01-12 | 2111FS+0.25d |  |
| 2128 |  | Aluminium door-window fixing | 8d | 2026-01-23 | 2026-01-31 | 2112FS+0.25d |  |
| 2129 |  | Putty primer coat | 6d | 2026-01-12 | 2026-01-18 | 2113, 2127 |  |
| 2130 |  | Door shutter fixing | 8d | 2026-01-12 | 2026-01-20 | 2114, 2127 |  |
| 2131 |  | Electrical wiring work | 8d | 2027-03-31 | 2027-04-08 | 2115, 2130 |  |
| 2132 |  | Painting 1st coat | 8d | 2027-04-08 | 2027-04-16 | 2116, 2129, 2130, 2131 |  |
| 2133 |  | False ceiling | 8d | 2027-04-16 | 2027-04-24 | 2117, 2132 |  |
| 2134 | 37100.37300.37600.38100.39100.40500.41500.94900 | **3rd Floor** | 447.75d | 2025-12-25 | 2027-05-02 |  | start no earlier than 2025-12-25 |
| 2135 |  | Block Work | 8d | 2025-12-26 | 2026-01-03 | 2119FS+0.25d |  |
| 2136 |  | Door Frame Fixing | 9d | 2026-01-04 | 2026-01-13 | 2120, 2135 |  |
| 2137 |  | Internal Plumbing Works | 8d | 2026-01-03 | 2026-01-11 | 2121, 2135 |  |
| 2138 |  | Waterproofing | 10d | 2026-01-15 | 2026-01-25 | 2122, 2137 |  |
| 2139 |  | Internal Plaster | 8d | 2025-12-25 | 2026-01-02 | 2123FS+0.25d |  |
| 2140 |  | IPS flooring work | 10d | 2026-01-25 | 2026-02-04 | 2124, 2136, 2138, 2139 |  |
| 2141 |  | Toilet dado work | 8d | 2026-01-25 | 2026-02-02 | 2125, 2138, 2139 |  |
| 2142 |  | Toilet flooring work | 8d | 2026-02-02 | 2026-02-10 | 2126, 2141 |  |
| 2143 |  | Living dinning flooring | 12d | 2026-01-13 | 2026-01-24 | 2127FS+0.25d |  |
| 2144 |  | Aluminium door-window fixing | 12d | 2026-02-01 | 2026-02-12 | 2128FS+0.25d |  |
| 2145 |  | Putty primer coat | 6d | 2026-01-25 | 2026-01-30 | 2129, 2143 |  |
| 2146 |  | Door shutter fixing | 8d | 2026-01-25 | 2026-02-01 | 2130, 2143 |  |
| 2147 |  | Electrical wiring work | 8d | 2027-04-08 | 2027-04-16 | 2131, 2146 |  |
| 2148 |  | Painting 1st coat | 8d | 2027-04-16 | 2027-04-24 | 2132, 2145, 2146, 2147 |  |
| 2149 |  | False ceiling | 8d | 2027-04-24 | 2027-05-02 | 2133, 2148 |  |
| 2150 | 37100.37300.37600.38100.39100.40500.41500.64800 | **4th Floor** | 447.5d | 2026-01-03 | 2027-05-10 |  | start no earlier than 2026-01-03 |
| 2151 |  | Block Work | 8d | 2026-01-04 | 2026-01-11 | 2135FS+0.25d |  |
| 2152 |  | Door Frame Fixing | 9d | 2026-01-13 | 2026-01-22 | 2136, 2151 |  |
| 2153 |  | Internal Plumbing Works | 8d | 2026-01-12 | 2026-01-19 | 2137, 2151 |  |
| 2154 |  | Waterproofing | 10d | 2026-01-25 | 2026-02-04 | 2138, 2153 |  |
| 2155 |  | Internal Plaster | 8d | 2026-01-03 | 2026-01-10 | 2139FS+0.25d |  |
| 2156 |  | IPS flooring work | 10d | 2026-02-04 | 2026-02-14 | 2140, 2152, 2154, 2155 |  |
| 2157 |  | Toilet dado work | 8d | 2026-02-04 | 2026-02-12 | 2141, 2154, 2155 |  |
| 2158 |  | Toilet flooring work | 8d | 2026-02-12 | 2026-02-20 | 2142, 2157 |  |
| 2159 |  | Living dinning flooring | 12d | 2026-01-25 | 2026-02-06 | 2143FS+0.25d |  |
| 2160 |  | Aluminium door-window fixing | 12d | 2026-02-13 | 2026-02-25 | 2144FS+0.25d |  |
| 2161 |  | Putty primer coat | 6d | 2026-02-06 | 2026-02-12 | 2145, 2159 |  |
| 2162 |  | Door shutter fixing | 8d | 2026-02-06 | 2026-02-14 | 2146, 2159 |  |
| 2163 |  | Electrical wiring work | 8d | 2027-04-16 | 2027-04-24 | 2147, 2162 |  |
| 2164 |  | Painting 1st coat | 8d | 2027-04-24 | 2027-05-02 | 2148, 2161, 2162, 2163 |  |
| 2165 |  | False ceiling | 8d | 2027-05-02 | 2027-05-10 | 2149, 2164 |  |
| 2166 | 37100.37300.37600.38100.39100.40500.41500.64900 | **5th Floor** | 447.25d | 2026-01-11 | 2027-05-18 |  | start no earlier than 2026-01-11 |
| 2167 |  | Block Work | 8d | 2026-01-12 | 2026-01-20 | 2151FS+0.25d |  |
| 2168 |  | Door Frame Fixing | 9d | 2026-01-22 | 2026-01-31 | 2152, 2167 |  |
| 2169 |  | Internal Plumbing Works | 8d | 2026-01-20 | 2026-01-28 | 2153, 2167 |  |
| 2170 |  | Waterproofing | 10d | 2026-02-04 | 2026-02-14 | 2154, 2169 |  |

| ID | WBS | Task | Duration | Start | Finish | Predecessors | Constraint |
| --- | --- | --- | --- | --- | --- | --- | --- |
| 2171 |  | Internal Plaster | 8d | 2026-01-11 | 2026-01-19 | 2155FS+0.25d |  |
| 2172 |  | IPS flooring work | 10d | 2026-02-14 | 2026-02-24 | 2156, 2168, 2170, 2171 |  |
| 2173 |  | Toilet dado work | 8d | 2026-02-14 | 2026-02-22 | 2157, 2170, 2171 |  |
| 2174 |  | Toilet flooring work | 8d | 2026-02-22 | 2026-03-02 | 2158, 2173 |  |
| 2175 |  | Living dinning flooring | 12d | 2026-02-06 | 2026-02-18 | 2159FS+0.25d |  |
| 2176 |  | Aluminium door-window fixing | 12d | 2026-02-25 | 2026-03-09 | 2160FS+0.25d |  |
| 2177 |  | Putty primer coat | 6d | 2026-02-18 | 2026-02-24 | 2161, 2175 |  |
| 2178 |  | Door shutter fixing | 8d | 2026-02-18 | 2026-02-26 | 2162, 2175 |  |
| 2179 |  | Electrical wiring work | 8d | 2027-04-24 | 2027-05-02 | 2163, 2178 |  |
| 2180 |  | Painting 1st coat | 8d | 2027-05-02 | 2027-05-10 | 2164, 2177, 2178, 2179 |  |
| 2181 |  | False ceiling | 8d | 2027-05-10 | 2027-05-18 | 2165, 2180 |  |
| 2182 | 37100.37300.37600.38100.39100.40500.41500.65000 | **6th Floor** | 447d | 2026-01-19 | 2027-05-26 |  | start no earlier than 2026-01-19 |
| 2183 |  | Block Work | 8d | 2026-01-20 | 2026-01-28 | 2167FS+0.25d |  |
| 2184 |  | Door Frame Fixing | 9d | 2026-01-31 | 2026-02-09 | 1916, 2168 |  |
| 2185 |  | Internal Plumbing Works | 8d | 2026-01-28 | 2026-02-05 | 2169, 2183 |  |
| 2186 |  | Waterproofing | 10d | 2026-02-14 | 2026-02-24 | 2170, 2185 |  |
| 2187 |  | Internal Plaster | 8d | 2026-01-19 | 2026-01-27 | 2171FS+0.25d |  |
| 2188 |  | IPS flooring work | 10d | 2026-02-24 | 2026-03-06 | 2172, 2184, 2186, 2187 |  |
| 2189 |  | Toilet dado work | 8d | 2026-02-24 | 2026-03-04 | 2173, 2186, 2187 |  |
| 2190 |  | Toilet flooring work | 8d | 2026-03-04 | 2026-03-12 | 2174, 2189 |  |
| 2191 |  | Living dinning flooring | 12d | 2026-02-18 | 2026-03-02 | 2175FS+0.25d |  |
| 2192 |  | Aluminium door-window fixing | 12d | 2026-03-09 | 2026-03-21 | 2176FS+0.25d |  |
| 2193 |  | Putty primer coat | 6d | 2026-03-02 | 2026-03-08 | 2177, 2191 |  |
| 2194 |  | Door shutter fixing | 8d | 2026-03-02 | 2026-03-10 | 2178, 2191 |  |
| 2195 |  | Electrical wiring work | 8d | 2027-05-02 | 2027-05-10 | 2179, 2194 |  |
| 2196 |  | Painting 1st coat | 8d | 2027-05-10 | 2027-05-18 | 2180, 2193, 2194, 2195 |  |
| 2197 |  | False ceiling | 8d | 2027-05-18 | 2027-05-26 | 2181, 2196 |  |
| 2198 | 37100.37300.37600.38100.39100.40500.41500.65100 | **7th Floor** | 446.75d | 2026-01-27 | 2027-06-03 |  | start no earlier than 2026-01-27 |
| 2199 |  | Block Work | 8d | 2026-01-28 | 2026-02-05 | 2183FS+0.25d |  |
| 2200 |  | Door Frame Fixing | 9d | 2026-02-09 | 2026-02-18 | 2184, 2199 |  |
| 2201 |  | Internal Plumbing Works | 8d | 2026-02-05 | 2026-02-13 | 2185, 2199 |  |
| 2202 |  | Waterproofing | 10d | 2026-02-24 | 2026-03-06 | 2186, 2201 |  |
| 2203 |  | Internal Plaster | 8d | 2026-01-27 | 2026-02-04 | 2187FS+0.25d |  |
| 2204 |  | IPS flooring work | 10d | 2026-03-06 | 2026-03-16 | 2188, 2200, 2202, 2203 |  |
| 2205 |  | Toilet dado work | 8d | 2026-03-06 | 2026-03-14 | 2189, 2202, 2203 |  |
| 2206 |  | Toilet flooring work | 8d | 2026-03-14 | 2026-03-22 | 2190, 2205 |  |
| 2207 |  | Living dinning flooring | 12d | 2026-03-03 | 2026-03-14 | 2191FS+0.25d |  |
| 2208 |  | Aluminium door-window fixing | 12d | 2026-03-22 | 2026-04-02 | 2192FS+0.25d |  |
| 2209 |  | Putty primer coat | 6d | 2026-03-15 | 2026-03-20 | 2193, 2207 |  |
| 2210 |  | Door shutter fixing | 8d | 2026-03-15 | 2026-03-22 | 2194, 2207 |  |
| 2211 |  | Electrical wiring work | 8d | 2027-05-10 | 2027-05-18 | 2195, 2210 |  |
| 2212 |  | Painting 1st coat | 8d | 2027-05-18 | 2027-05-26 | 2196, 2209, 2210, 2211 |  |
| 2213 |  | False ceiling | 8d | 2027-05-26 | 2027-06-03 | 2197, 2212 |  |
| 2214 | 37100.37300.37600.38100.39100.40500.41500.65200 | **8th Floor** | 446.5d | 2026-02-05 | 2027-06-11 |  | start no earlier than 2026-02-05 |
| 2215 |  | Block Work | 8d | 2026-02-06 | 2026-02-13 | 2199FS+0.25d |  |
| 2216 |  | Door Frame Fixing | 9d | 2026-02-18 | 2026-02-27 | 2200, 2215 |  |
| 2217 |  | Internal Plumbing Works | 8d | 2026-02-14 | 2026-02-21 | 2201, 2215 |  |
| 2218 |  | Waterproofing | 10d | 2026-03-06 | 2026-03-16 | 2202, 2217 |  |
| 2219 |  | Internal Plaster | 8d | 2026-02-05 | 2026-02-12 | 2203FS+0.25d |  |
| 2220 |  | IPS flooring work | 10d | 2026-03-16 | 2026-03-26 | 2204, 2216, 2218, 2219 |  |
| 2221 |  | Toilet dado work | 8d | 2026-03-16 | 2026-03-24 | 2205, 2218, 2219 |  |
| 2222 |  | Toilet flooring work | 8d | 2026-03-24 | 2026-04-01 | 2206, 2221 |  |
| 2223 |  | Living dinning flooring | 12d | 2026-03-15 | 2026-03-27 | 2207FS+0.25d |  |
| 2224 |  | Aluminium door-window fixing | 12d | 2026-04-03 | 2026-04-15 | 2208FS+0.25d |  |
| 2225 |  | Putty primer coat | 6d | 2026-03-27 | 2026-04-02 | 2209, 2223 |  |
| 2226 |  | Door shutter fixing | 8d | 2026-03-27 | 2026-04-04 | 2210, 2223 |  |
| 2227 |  | Electrical wiring work | 8d | 2027-05-18 | 2027-05-26 | 2211, 2226 |  |
| 2228 |  | Painting 1st coat | 8d | 2027-05-26 | 2027-06-03 | 2212, 2225, 2226, 2227 |  |
| 2229 |  | False ceiling | 8d | 2027-06-03 | 2027-06-11 | 2213, 2228 |  |
| 2230 | 37100.37300.37600.38100.39100.40500.41500.65300 | **9th Floor** | 446.25d | 2026-02-13 | 2027-06-19 |  | start no earlier than 2026-02-13 |
| 2231 |  | Block Work | 8d | 2026-02-14 | 2026-02-22 | 2215FS+0.25d |  |
| 2232 |  | Door Frame Fixing | 9d | 2026-02-27 | 2026-03-08 | 2216, 2231 |  |
| 2233 |  | Internal Plumbing Works | 8d | 2026-02-22 | 2026-03-02 | 2217, 2231 |  |
| 2234 |  | Waterproofing | 10d | 2026-03-16 | 2026-03-26 | 2218, 2233 |  |
| 2235 |  | Internal Plaster | 8d | 2026-02-13 | 2026-02-21 | 2219FS+0.25d |  |
| 2236 |  | IPS flooring work | 10d | 2026-03-26 | 2026-04-05 | 2220, 2232, 2234, 2235 |  |
| 2237 |  | Toilet dado work | 8d | 2026-03-26 | 2026-04-03 | 2221, 2234, 2235 |  |
| 2238 |  | Toilet flooring work | 8d | 2026-04-03 | 2026-04-11 | 2222, 2237 |  |
| 2239 |  | Living dinning flooring | 12d | 2026-03-27 | 2026-04-08 | 2223FS+0.25d |  |
| 2240 |  | Aluminium door-window fixing | 12d | 2026-04-15 | 2026-04-27 | 2224FS+0.25d |  |

| ID | WBS | Task | Duration | Start | Finish | Predecessors | Constraint |
| --- | --- | --- | --- | --- | --- | --- | --- |
| 2241 |  | Putty primer coat | 6d | 2026-04-08 | 2026-04-14 | 2225, 2239 |  |
| 2242 |  | Door shutter fixing | 8d | 2026-04-08 | 2026-04-16 | 2226, 2239 |  |
| 2243 |  | Electrical wiring work | 8d | 2027-05-26 | 2027-06-03 | 2227, 2242 |  |
| 2244 |  | Painting 1st coat | 8d | 2027-06-03 | 2027-06-11 | 2228, 2241, 2242, 2243 |  |
| 2245 |  | False ceiling | 8d | 2027-06-11 | 2027-06-19 | 2229, 2244 |  |
| 2246 | 37100.37300.37600.38100.39100.40500.41500.65400 | **10th Floor** | 446d | 2026-02-21 | 2027-06-27 |  | start no earlier than 2026-02-21 |
| 2247 |  | Block Work | 8d | 2026-02-22 | 2026-03-02 | 2231FS+0.25d |  |
| 2248 |  | Door Frame Fixing | 9d | 2026-03-08 | 2026-03-17 | 2232, 2247 |  |
| 2249 |  | Internal Plumbing Works | 8d | 2026-03-02 | 2026-03-10 | 2233, 2247 |  |
| 2250 |  | Waterproofing | 10d | 2026-03-26 | 2026-04-05 | 2234, 2249 |  |
| 2251 |  | Internal Plaster | 8d | 2026-02-21 | 2026-03-01 | 2235FS+0.25d |  |
| 2252 |  | IPS flooring work | 10d | 2026-04-05 | 2026-04-15 | 2236, 2248, 2250, 2251 |  |
| 2253 |  | Toilet dado work | 8d | 2026-04-05 | 2026-04-13 | 2237, 2250, 2251 |  |
| 2254 |  | Toilet flooring work | 8d | 2026-04-13 | 2026-04-21 | 2238, 2253 |  |
| 2255 |  | Living dinning flooring | 12d | 2026-04-08 | 2026-04-20 | 2239FS+0.25d |  |
| 2256 |  | Aluminium door-window fixing | 12d | 2026-04-27 | 2026-05-09 | 2240FS+0.25d |  |
| 2257 |  | Putty primer coat | 6d | 2026-04-20 | 2026-04-26 | 2241, 2255 |  |
| 2258 |  | Door shutter fixing | 8d | 2026-04-20 | 2026-04-28 | 2242, 2255 |  |
| 2259 |  | Electrical wiring work | 8d | 2027-06-03 | 2027-06-11 | 2243, 2258 |  |
| 2260 |  | Painting 1st coat | 8d | 2027-06-11 | 2027-06-19 | 2244, 2257, 2258, 2259 |  |
| 2261 |  | False ceiling | 8d | 2027-06-19 | 2027-06-27 | 2245, 2260 |  |
| 2262 | 37100.37300.37600.38100.39100.40500.41500.65500 | **11th Floor** | 444.75d | 2026-03-02 | 2027-07-05 |  | start no earlier than 2026-03-02 |
| 2263 |  | Block Work | 8d | 2026-03-02 | 2026-03-10 | 2247FS+0.25d |  |
| 2264 |  | Door Frame Fixing | 9d | 2026-03-17 | 2026-03-26 | 2248, 2263 |  |
| 2265 |  | Internal Plumbing Works | 8d | 2026-03-10 | 2026-03-18 | 2249, 2263 |  |
| 2266 |  | Waterproofing | 10d | 2026-04-05 | 2026-04-15 | 2250, 2265 |  |
| 2267 |  | Internal Plaster | 8d | 2026-03-11 | 2026-03-18 | 2251FS+0.25d, 2263FS+0.25d |  |
| 2268 |  | IPS flooring work | 10d | 2026-04-15 | 2026-04-25 | 2252, 2264, 2265, 2266 |  |
| 2269 |  | Toilet dado work | 8d | 2026-04-15 | 2026-04-23 | 2253, 2266, 2267 |  |
| 2270 |  | Toilet flooring work | 8d | 2026-04-23 | 2026-05-01 | 2254, 2269 |  |
| 2271 |  | Living dinning flooring | 12d | 2026-04-21 | 2026-05-02 | 2255FS+0.25d |  |
| 2272 |  | Aluminium door-window fixing | 12d | 2026-05-10 | 2026-05-21 | 2256FS+0.25d |  |
| 2273 |  | Putty primer coat | 6d | 2026-05-03 | 2026-05-08 | 2257, 2271 |  |
| 2274 |  | Door shutter fixing | 8d | 2026-05-03 | 2026-05-10 | 2258, 2271 |  |
| 2275 |  | Electrical wiring work | 8d | 2027-06-11 | 2027-06-19 | 2259, 2274 |  |
| 2276 |  | Painting 1st coat | 8d | 2027-06-19 | 2027-06-27 | 2260, 2273, 2274, 2275 |  |
| 2277 |  | False ceiling | 8d | 2027-06-27 | 2027-07-05 | 2261, 2276 |  |
| 2278 | 37100.37300.37600.38100.39100.40500.41500.65600 | **12th Floor** | 444.5d | 2026-03-11 | 2027-07-13 |  | start no earlier than 2026-03-11 |
| 2279 |  | Block Work | 8d | 2026-03-11 | 2026-03-18 | 2263FS+0.25d |  |
| 2280 |  | Door Frame Fixing | 9d | 2026-03-26 | 2026-04-04 | 2264, 2279 |  |
| 2281 |  | Internal Plumbing Works | 8d | 2026-03-19 | 2026-03-26 | 2265, 2279 |  |
| 2282 |  | Waterproofing | 10d | 2026-04-15 | 2026-04-25 | 2266, 2281 |  |
| 2283 |  | Internal Plaster | 8d | 2026-03-19 | 2026-03-27 | 2267FS+0.25d, 2279FS+0.25d |  |
| 2284 |  | IPS flooring work | 10d | 2026-04-25 | 2026-05-05 | 2268, 2280, 2281, 2282 |  |
| 2285 |  | Toilet dado work | 8d | 2026-04-25 | 2026-05-03 | 2269, 2282, 2283 |  |
| 2286 |  | Toilet flooring work | 8d | 2026-05-03 | 2026-05-11 | 2270, 2285 |  |
| 2287 |  | Living dinning flooring | 12d | 2026-05-11 | 2026-05-23 | 2271, 2280, 2286 |  |
| 2288 |  | Aluminium door-window fixing | 12d | 2026-05-23 | 2026-06-04 | 2272, 2284, 2287 |  |
| 2289 |  | Putty primer coat | 6d | 2026-05-23 | 2026-05-29 | 2273, 2287 |  |
| 2290 |  | Door shutter fixing | 8d | 2026-05-23 | 2026-05-31 | 2274, 2287 |  |
| 2291 |  | Electrical wiring work | 8d | 2027-06-19 | 2027-06-27 | 2275, 2290 |  |
| 2292 |  | Painting 1st coat | 8d | 2027-06-27 | 2027-07-05 | 2276, 2289, 2290, 2291 |  |
| 2293 |  | False ceiling | 8d | 2027-07-05 | 2027-07-13 | 2277, 2292 |  |
| 2294 | 37100.37300.37600.38100.39100.40500.41500.65700 | **13th Floor** | 444.25d | 2026-03-19 | 2027-07-21 |  | start no earlier than 2026-03-19 |
| 2295 |  | Block Work | 8d | 2026-03-19 | 2026-03-27 | 2279FS+0.25d |  |
| 2296 |  | Door Frame Fixing | 9d | 2026-04-04 | 2026-04-13 | 2280, 2295 |  |
| 2297 |  | Internal Plumbing Works | 8d | 2026-03-27 | 2026-04-04 | 2281, 2295 |  |
| 2298 |  | Waterproofing | 10d | 2026-04-25 | 2026-05-05 | 2282, 2297 |  |
| 2299 |  | Internal Plaster | 8d | 2026-03-27 | 2026-04-04 | 2283FS+0.25d, 2295FS+0.25d |  |
| 2300 |  | IPS flooring work | 10d | 2026-05-05 | 2026-05-15 | 2284, 2296, 2298, 2299 |  |
| 2301 |  | Toilet dado work | 8d | 2026-05-05 | 2026-05-13 | 2285, 2298, 2299 |  |
| 2302 |  | Toilet flooring work | 8d | 2026-05-13 | 2026-05-21 | 2286, 2301 |  |
| 2303 |  | Living dinning flooring | 12d | 2026-05-23 | 2026-06-04 | 2287FS+0.25d |  |
| 2304 |  | Aluminium door-window fixing | 12d | 2026-06-04 | 2026-06-16 | 2288FS+0.25d |  |
| 2305 |  | Putty primer coat | 6d | 2026-06-04 | 2026-06-10 | 2289, 2303 |  |
| 2306 |  | Door shutter fixing | 8d | 2026-06-04 | 2026-06-12 | 2290, 2303 |  |
| 2307 |  | Electrical wiring work | 8d | 2027-06-27 | 2027-07-05 | 2291, 2306 |  |
| 2308 |  | Painting 1st coat | 8d | 2027-07-05 | 2027-07-13 | 2292, 2305, 2306, 2307 |  |
| 2309 |  | False ceiling | 8d | 2027-07-13 | 2027-07-21 | 2293, 2308 |  |
| 2310 | 37100.37300.37600.38100.39100.40500.41500.65800 | **14th Floor** | 442d | 2026-03-27 | 2027-07-27 |  | start no earlier than 2026-03-27 |

| ID | WBS | Task | Duration | Start | Finish | Predecessors | Constraint |
| --- | --- | --- | --- | --- | --- | --- | --- |
| 2311 |  | Block Work | 5d | 2026-03-27 | 2026-04-01 | 2295FS+0.25d |  |
| 2312 |  | Door Frame Fixing | 9d | 2026-04-13 | 2026-04-22 | 2296, 2311 |  |
| 2313 |  | Internal Plumbing Works | 15d | 2026-04-04 | 2026-04-19 | 2297, 2311 |  |
| 2314 |  | Waterproofing | 15d | 2026-05-05 | 2026-05-20 | 2298, 2313 |  |
| 2315 |  | Internal Plaster | 8d | 2026-04-04 | 2026-04-12 | 2299FS+0.25d |  |
| 2316 |  | IPS flooring work | 12d | 2026-05-20 | 2026-06-01 | 2300, 2312, 2313, 2314 |  |
| 2317 |  | Toilet dado work | 12d | 2026-05-20 | 2026-06-01 | 2301, 2314, 2315 |  |
| 2318 |  | Toilet flooring work | 12d | 2026-06-01 | 2026-06-13 | 2302, 2317 |  |
| 2319 |  | Living dinning flooring | 7d | 2026-06-04 | 2026-06-11 | 2303FS+0.25d |  |
| 2320 |  | Aluminium door-window fixing | 18d | 2026-06-16 | 2026-07-04 | 2304FS+0.25d |  |
| 2321 |  | Putty primer coat | 6d | 2026-06-11 | 2026-06-17 | 2305, 2319 |  |
| 2322 |  | Door shutter fixing | 6d | 2026-06-12 | 2026-06-18 | 2306, 2319 |  |
| 2323 |  | Electrical wiring work | 6d | 2027-07-05 | 2027-07-11 | 2307, 2322 |  |
| 2324 |  | Painting 1st coat | 6d | 2027-07-13 | 2027-07-19 | 2308, 2321, 2322, 2323 |  |
| 2325 |  | False ceiling | 6d | 2027-07-21 | 2027-07-27 | 2309, 2324 |  |
| 2326 | 37100.37300.37600.38100.39100.40500.41500.65900 | **15th Floor** | 454.56d | 2026-04-01 | 2027-08-14 |  | start no earlier than 2026-04-01 |
| 2327 |  | Block Work | 5d | 2026-04-01 | 2026-04-06 | 2311FS+0.25d |  |
| 2328 |  | Door Frame Fixing | 9d | 2026-04-22 | 2026-05-01 | 2312, 2327 |  |
| 2329 |  | Internal Plumbing Works | 15d | 2026-04-19 | 2026-05-04 | 2313, 2327 |  |
| 2330 |  | Waterproofing | 15d | 2026-05-20 | 2026-06-04 | 2314, 2329 |  |
| 2331 |  | Internal Plaster | 8d | 2026-04-13 | 2026-04-20 | 2315FS+0.25d |  |
| 2332 |  | IPS flooring work | 12d | 2026-06-04 | 2026-06-16 | 2316, 2328, 2329, 2330 |  |
| 2333 |  | Toilet dado work | 12d | 2026-06-04 | 2026-06-16 | 2317, 2330, 2331 |  |
| 2334 |  | Toilet flooring work | 12d | 2026-06-16 | 2026-06-28 | 2318, 2333 |  |
| 2335 |  | Living dinning flooring | 7d | 2026-06-12 | 2026-06-18 | 2319FS+0.25d |  |
| 2336 |  | Aluminium door-window fixing | 18d | 2026-07-04 | 2026-07-22 | 2320, 2332, 2335 |  |
| 2337 |  | Putty primer coat | 6d | 2026-06-19 | 2026-06-24 | 2321, 2335 |  |
| 2338 |  | Door shutter fixing | 7.94d | 2026-06-19 | 2026-06-26 | 2322, 2335 |  |
| 2339 |  | Electrical wiring work | 11.94d | 2027-07-11 | 2027-07-23 | 2323, 2338 |  |
| 2340 |  | Painting 1st coat | 11.94d | 2027-07-23 | 2027-08-04 | 2324, 2337, 2338, 2339 |  |
| 2341 |  | False ceiling | 9.94d | 2027-08-04 | 2027-08-14 | 2325, 2340 |  |
| 2342 | 37100.37300.37600.38100.39100.40500.41500.66000 | **16th Floor** | 461.25d | 2026-04-07 | 2027-08-26 |  | start no earlier than 2026-04-07 |
| 2343 |  | Block Work | 10d | 2026-04-07 | 2026-04-16 | 2327FS+0.25d |  |
| 2344 |  | Door Frame Fixing | 9d | 2026-05-01 | 2026-05-10 | 2328, 2343 |  |
| 2345 |  | Internal Plumbing Works | 15d | 2026-05-04 | 2026-05-19 | 2329, 2343 |  |
| 2346 |  | Waterproofing | 15d | 2026-06-04 | 2026-06-19 | 2330, 2345 |  |
| 2347 |  | Internal Plaster | 12d | 2026-04-21 | 2026-05-03 | 2331FS+0.25d |  |
| 2348 |  | IPS flooring work | 12d | 2026-06-19 | 2026-07-01 | 2332, 2344, 2345, 2346 |  |
| 2349 |  | Toilet dado work | 12d | 2026-06-19 | 2026-07-01 | 2333, 2346, 2347 |  |
| 2350 |  | Toilet flooring work | 12d | 2026-07-01 | 2026-07-13 | 2334, 2349 |  |
| 2351 |  | Living dinning flooring | 7d | 2026-06-19 | 2026-06-26 | 2335FS+0.25d |  |
| 2352 |  | Aluminium door-window fixing | 18d | 2026-07-23 | 2026-08-09 | 2336FS+0.25d |  |
| 2353 |  | Putty primer coat | 5.94d | 2026-06-26 | 2026-07-02 | 2337, 2351 |  |
| 2354 |  | Door shutter fixing | 7.94d | 2026-06-26 | 2026-07-04 | 2338, 2351 |  |
| 2355 |  | Electrical wiring work | 11.94d | 2027-07-23 | 2027-08-04 | 2339, 2354 |  |
| 2356 |  | Painting 1st coat | 11.94d | 2027-08-04 | 2027-08-16 | 2340, 2353, 2354, 2355 |  |
| 2357 |  | False ceiling | 9.94d | 2027-08-16 | 2027-08-26 | 2341, 2356 |  |
| 2358 | 37100.37300.37600.38100.39100.40500.41500.66100 | **17th Floor** | 462.94d | 2026-04-17 | 2027-09-07 |  | start no earlier than 2026-04-17 |
| 2359 |  | Block Work | 12d | 2026-04-17 | 2026-04-29 | 2343FS+0.25d |  |
| 2360 |  | Door Frame Fixing | 9d | 2026-05-10 | 2026-05-19 | 2344, 2359 |  |
| 2361 |  | Internal Plumbing Works | 15d | 2026-05-19 | 2026-06-03 | 2345, 2359 |  |
| 2362 |  | Waterproofing | 15d | 2026-06-19 | 2026-07-04 | 2346, 2361 |  |
| 2363 |  | Internal Plaster | 12d | 2026-05-03 | 2026-05-15 | 2347FS+0.25d |  |
| 2364 |  | IPS flooring work | 12d | 2026-07-04 | 2026-07-16 | 2348, 2360, 2361, 2362 |  |
| 2365 |  | Toilet dado work | 12d | 2026-07-04 | 2026-07-16 | 2349, 2362, 2363 |  |
| 2366 |  | Toilet flooring work | 12d | 2026-07-16 | 2026-07-28 | 2350, 2365 |  |
| 2367 |  | Living dinning flooring | 7d | 2026-06-26 | 2026-07-03 | 2351FS+0.25d |  |
| 2368 |  | Aluminium door-window fixing | 18d | 2026-08-10 | 2026-08-27 | 2352, 2364, 2367 |  |
| 2369 |  | Putty primer coat | 5.94d | 2026-07-03 | 2026-07-09 | 2353, 2367 |  |
| 2370 |  | Door shutter fixing | 7.94d | 2026-07-04 | 2026-07-12 | 2354, 2367 |  |
| 2371 |  | Electrical wiring work | 11.94d | 2027-08-04 | 2027-08-16 | 2355, 2370 |  |
| 2372 |  | Painting 1st coat | 11.94d | 2027-08-16 | 2027-08-28 | 2356, 2369, 2370, 2371 |  |
| 2373 |  | False ceiling | 9.94d | 2027-08-28 | 2027-09-07 | 2357, 2372 |  |
| 2374 | 37100.37300.37600.38100.39100.40500.41500.66200 | **18th Floor** | 462.62d | 2026-04-29 | 2027-09-19 |  | start no earlier than 2026-04-29 |
| 2375 |  | Block Work | 12d | 2026-04-29 | 2026-05-11 | 2359FS+0.25d |  |
| 2376 |  | Door Frame Fixing | 9d | 2026-05-19 | 2026-05-28 | 2360, 2375 |  |
| 2377 |  | Internal Plumbing Works | 15d | 2026-06-03 | 2026-06-18 | 2361, 2375 |  |
| 2378 |  | Waterproofing | 15d | 2026-07-04 | 2026-07-19 | 2362, 2377 |  |
| 2379 |  | Internal Plaster | 12d | 2026-05-15 | 2026-05-27 | 2363FS+0.25d |  |
| 2380 |  | IPS flooring work | 12d | 2026-07-19 | 2026-07-31 | 2364, 2376, 2377, 2378 |  |

| ID | WBS | Task | Duration | Start | Finish | Predecessors | Constraint |
| --- | --- | --- | --- | --- | --- | --- | --- |
| 2381 |  | Toilet dado work | 12d | 2026-07-19 | 2026-07-31 | 2365, 2378, 2379 |  |
| 2382 |  | Toilet flooring work | 12d | 2026-07-31 | 2026-08-12 | 2366, 2381 |  |
| 2383 |  | Living dinning flooring | 7d | 2026-07-03 | 2026-07-10 | 2367FS+0.25d |  |
| 2384 |  | Aluminium door-window fixing | 18d | 2026-08-28 | 2026-09-14 | 2368, 2380, 2383 |  |
| 2385 |  | Putty primer coat | 5.94d | 2026-07-10 | 2026-07-16 | 2369, 2383 |  |
| 2386 |  | Door shutter fixing | 7.94d | 2026-07-12 | 2026-07-20 | 2370, 2383 |  |
| 2387 |  | Electrical wiring work | 11.94d | 2027-08-16 | 2027-08-28 | 2371, 2386 |  |
| 2388 |  | Painting 1st coat | 11.94d | 2027-08-28 | 2027-09-09 | 2372, 2385, 2386, 2387 |  |
| 2389 |  | False ceiling | 9.94d | 2027-09-09 | 2027-09-19 | 2373, 2388 |  |
| 2390 | 37100.37300.37600.38100.39100.40500.41500.66300 | **19th Floor** | 462.31d | 2026-05-11 | 2027-10-01 |  | start no earlier than 2026-05-11 |
| 2391 |  | Block Work | 12d | 2026-05-11 | 2026-05-23 | 2375FS+0.25d |  |
| 2392 |  | Door Frame Fixing | 9d | 2026-05-28 | 2026-06-06 | 2376, 2391 |  |
| 2393 |  | Internal Plumbing Works | 15d | 2026-06-18 | 2026-07-03 | 2377, 2391 |  |
| 2394 |  | Waterproofing | 15d | 2026-07-19 | 2026-08-03 | 2378, 2393 |  |
| 2395 |  | Internal Plaster | 12d | 2026-05-28 | 2026-06-08 | 2379FS+0.25d |  |
| 2396 |  | IPS flooring work | 12d | 2026-08-03 | 2026-08-15 | 2380, 2392, 2394, 2395 |  |
| 2397 |  | Toilet dado work | 12d | 2026-08-03 | 2026-08-15 | 2381, 2394, 2395 |  |
| 2398 |  | Toilet flooring work | 12d | 2026-08-15 | 2026-08-27 | 2382, 2397 |  |
| 2399 |  | Living dinning flooring | 7d | 2026-08-27 | 2026-09-03 | 2383, 2392, 2398 |  |
| 2400 |  | Aluminium door-window fixing | 18d | 2026-09-15 | 2026-10-02 | 2384, 2396, 2399 |  |
| 2401 |  | Putty primer coat | 5.94d | 2026-09-03 | 2026-09-09 | 2385, 2399 |  |
| 2402 |  | Door shutter fixing | 7.94d | 2026-09-03 | 2026-09-11 | 2386, 2399 |  |
| 2403 |  | Electrical wiring work | 11.94d | 2027-08-28 | 2027-09-09 | 2387, 2402 |  |
| 2404 |  | Painting 1st coat | 11.94d | 2027-09-09 | 2027-09-21 | 2388, 2401, 2402, 2403 |  |
| 2405 |  | False ceiling | 9.94d | 2027-09-21 | 2027-10-01 | 2389, 2404 |  |
| 2406 | 37100.37300.37600.38100.39100.40500.41500.66400 | **20th Floor** | 462d | 2026-05-24 | 2027-10-12 |  | start no earlier than 2026-05-24 |
| 2407 |  | Block Work | 12d | 2026-05-24 | 2026-06-04 | 2391FS+0.25d |  |
| 2408 |  | Door Frame Fixing | 9d | 2026-06-06 | 2026-06-15 | 2392, 2407 |  |
| 2409 |  | Internal Plumbing Works | 15d | 2026-07-03 | 2026-07-18 | 2393, 2407 |  |
| 2410 |  | Waterproofing | 15d | 2026-08-03 | 2026-08-18 | 2394, 2409 |  |
| 2411 |  | Internal Plaster | 12d | 2026-06-09 | 2026-06-21 | 2395FS+0.25d |  |
| 2412 |  | IPS flooring work | 12d | 2026-08-18 | 2026-08-30 | 2396, 2408, 2410, 2411 |  |
| 2413 |  | Toilet dado work | 12d | 2026-08-18 | 2026-08-30 | 2397, 2410, 2411 |  |
| 2414 |  | Toilet flooring work | 12d | 2026-08-30 | 2026-09-11 | 2398, 2413 |  |
| 2415 |  | Living dinning flooring | 7d | 2026-09-11 | 2026-09-18 | 2399, 2408, 2414 |  |
| 2416 |  | Aluminium door-window fixing | 18d | 2026-10-03 | 2026-10-20 | 2400, 2412, 2415 |  |
| 2417 |  | Putty primer coat | 5.94d | 2026-09-18 | 2026-09-24 | 2401, 2415 |  |
| 2418 |  | Door shutter fixing | 7.94d | 2026-09-18 | 2026-09-26 | 2402, 2415 |  |
| 2419 |  | Electrical wiring work | 11.94d | 2027-09-09 | 2027-09-21 | 2403, 2418 |  |
| 2420 |  | Painting 1st coat | 11.94d | 2027-09-21 | 2027-10-03 | 2404, 2417, 2418, 2419 |  |
| 2421 |  | False ceiling | 9.94d | 2027-10-03 | 2027-10-12 | 2405, 2420 |  |
| 2422 | 37100.37300.37600.38100.39100.40500.41500.66500 | **21st Floor** | 461.69d | 2026-06-05 | 2027-10-24 |  | start no earlier than 2026-06-05 |
| 2423 |  | Block Work | 7.94d | 2026-06-05 | 2026-06-13 | 2080FS+0.25d, 2407FS+0.25d |  |
| 2424 |  | Door Frame Fixing | 8.94d | 2026-06-15 | 2026-06-24 | 2408, 2423 |  |
| 2425 |  | Internal Plumbing Works | 9.94d | 2026-06-13 | 2026-06-23 | 2423FS+0.25d |  |
| 2426 |  | Waterproofing | 11.94d | 2026-08-18 | 2026-08-30 | 2410, 2425 |  |
| 2427 |  | Internal Plaster | 8.94d | 2026-06-23 | 2026-07-02 | 2411FS+0.25d, 2423FS+10d |  |
| 2428 |  | IPS flooring work | 8.94d | 2026-08-30 | 2026-09-08 | 2412, 2424, 2426, 2427 |  |
| 2429 |  | Toilet dado work | 7.94d | 2026-08-30 | 2026-09-07 | 2413, 2426, 2427 |  |
| 2430 |  | Toilet flooring work | 6.94d | 2026-09-11 | 2026-09-18 | 2414, 2429 |  |
| 2431 |  | Living dinning flooring | 11.94d | 2026-09-18 | 2026-09-30 | 2415, 2424, 2430 |  |
| 2432 |  | Aluminium door-window fixing | 11.94d | 2026-10-21 | 2026-12-16 | 2416, 2428, 2431 |  |
| 2433 |  | Putty primer coat | 5.94d | 2026-09-30 | 2026-10-06 | 2417, 2431 |  |
| 2434 |  | Door shutter fixing | 7.94d | 2026-09-30 | 2026-10-08 | 2418, 2431 |  |
| 2435 |  | Electrical wiring work | 11.94d | 2027-09-21 | 2027-10-03 | 2419, 2434 |  |
| 2436 |  | Painting 1st coat | 11.94d | 2027-10-03 | 2027-10-14 | 2420, 2433, 2434, 2435 |  |
| 2437 |  | False ceiling | 9.94d | 2027-10-15 | 2027-10-24 | 2421, 2436 |  |
| 2438 | 37100.37300.37600.38100.39100.40500.41500.66600 | **22nd Floor** | 425.88d | 2026-07-23 | 2027-11-05 |  | start no earlier than 2026-07-23 |
| 2439 |  | Block Work | 7.94d | 2026-07-23 | 2026-07-30 | 2086, 2423 |  |
| 2440 |  | Door Frame Fixing | 8.94d | 2026-07-30 | 2026-08-08 | 2424, 2439 |  |
| 2441 |  | Internal Plumbing Works | 9.94d | 2026-07-30 | 2026-08-09 | 2425, 2439 |  |
| 2442 |  | Waterproofing | 11.94d | 2026-08-30 | 2026-09-11 | 2426, 2441 |  |
| 2443 |  | Internal Plaster | 8.94d | 2026-09-11 | 2026-09-20 | 2427, 2440, 2441, 2442 |  |
| 2444 |  | IPS flooring work | 8.94d | 2026-09-20 | 2026-09-28 | 2428, 2440, 2442, 2443 |  |
| 2445 |  | Toilet dado work | 7.94d | 2026-09-20 | 2026-09-27 | 2429, 2442, 2443 |  |
| 2446 |  | Toilet flooring work | 6.94d | 2026-09-28 | 2026-10-04 | 2430, 2445 |  |
| 2447 |  | Living dinning flooring | 11.94d | 2026-10-04 | 2026-10-16 | 2431, 2440, 2446 |  |
| 2448 |  | Aluminium door-window fixing | 11.94d | 2026-12-16 | 2026-12-28 | 2432, 2444, 2447 |  |
| 2449 |  | Putty primer coat | 5.94d | 2026-10-16 | 2026-10-22 | 2433, 2447 |  |
| 2450 |  | Door shutter fixing | 7.94d | 2026-10-16 | 2026-10-24 | 2434, 2447 |  |

| ID | WBS | Task | Duration | Start | Finish | Predecessors | Constraint |
| --- | --- | --- | --- | --- | --- | --- | --- |
| 2451 |  | Electrical wiring work | 11.94d | 2027-10-03 | 2027-10-14 | 2435, 2450 |  |
| 2452 |  | Painting 1st coat | 11.94d | 2027-10-15 | 2027-10-26 | 2436, 2449, 2450, 2451 |  |
| 2453 |  | False ceiling | 9.94d | 2027-10-26 | 2027-11-05 | 2437, 2452 |  |
| 2454 | 37100.37300.37600.38100.39100.40500.41500.66700 | **23rd Floor** | 423.81d | 2026-08-06 | 2027-11-17 |  | start no earlier than 2026-08-06 |
| 2455 |  | Block Work | 7.94d | 2026-08-06 | 2026-08-13 | 2087, 2439 |  |
| 2456 |  | Door Frame Fixing | 8.94d | 2026-08-13 | 2026-08-22 | 2440, 2455 |  |
| 2457 |  | Internal Plumbing Works | 9.94d | 2026-08-13 | 2026-08-23 | 2441, 2455 |  |
| 2458 |  | Waterproofing | 11.94d | 2026-09-11 | 2026-09-23 | 2442, 2457 |  |
| 2459 |  | Internal Plaster | 8.94d | 2026-09-23 | 2026-10-01 | 2443, 2456, 2457, 2458 |  |
| 2460 |  | IPS flooring work | 8.94d | 2026-10-02 | 2026-10-10 | 2444, 2456, 2458, 2459 |  |
| 2461 |  | Toilet dado work | 7.94d | 2026-10-02 | 2026-10-09 | 2445, 2458, 2459 |  |
| 2462 |  | Toilet flooring work | 6.94d | 2026-10-09 | 2026-10-16 | 2446, 2461 |  |
| 2463 |  | Living dinning flooring | 14.94d | 2026-10-16 | 2026-10-31 | 2447, 2456, 2462 |  |
| 2464 |  | Aluminium door-window fixing | 14.94d | 2026-12-28 | 2027-01-12 | 2448, 2460, 2463 |  |
| 2465 |  | Putty primer coat | 5.94d | 2026-10-31 | 2026-12-21 | 2449, 2463 |  |
| 2466 |  | Door shutter fixing | 7.94d | 2026-10-31 | 2026-12-23 | 2450, 2463 |  |
| 2467 |  | Electrical wiring work | 11.94d | 2027-10-15 | 2027-10-26 | 2451, 2466 |  |
| 2468 |  | Painting 1st coat | 11.94d | 2027-10-26 | 2027-11-07 | 2452, 2465, 2466, 2467 |  |
| 2469 |  | False ceiling | 9.94d | 2027-11-07 | 2027-11-17 | 2453, 2468 |  |
| 2470 | 37100.37300.37600.38100.39100.40500.41500.66800 | **24th Floor** | 420.88d | 2026-08-20 | 2027-11-29 |  | start no earlier than 2026-08-20 |
| 2471 |  | Block Work | 7.94d | 2026-08-20 | 2026-08-28 | 2088, 2455 |  |
| 2472 |  | Door Frame Fixing | 8.94d | 2026-08-28 | 2026-09-06 | 2456, 2471 |  |
| 2473 |  | Internal Plumbing Works | 9.94d | 2026-08-28 | 2026-09-07 | 2457, 2471 |  |
| 2474 |  | Waterproofing | 11.94d | 2026-09-23 | 2026-10-04 | 2458, 2473 |  |
| 2475 |  | Internal Plaster | 8.94d | 2026-10-05 | 2026-10-13 | 2459, 2472, 2473, 2474 |  |
| 2476 |  | IPS flooring work | 8.94d | 2026-10-13 | 2026-10-22 | 2460, 2472, 2474, 2475 |  |
| 2477 |  | Toilet dado work | 7.94d | 2026-10-13 | 2026-10-21 | 2461, 2474, 2475 |  |
| 2478 |  | Toilet flooring work | 6.94d | 2026-10-21 | 2026-10-28 | 2462, 2477 |  |
| 2479 |  | Living dinning flooring | 14.94d | 2026-10-31 | 2026-12-30 | 2463, 2472, 2478 |  |
| 2480 |  | Aluminium door-window fixing | 14.94d | 2027-01-12 | 2027-01-27 | 2464, 2476, 2479 |  |
| 2481 |  | Putty primer coat | 5.94d | 2026-12-30 | 2027-01-05 | 2465, 2479 |  |
| 2482 |  | Door shutter fixing | 7.94d | 2026-12-30 | 2027-01-07 | 2466, 2479 |  |
| 2483 |  | Electrical wiring work | 11.94d | 2027-10-26 | 2027-11-07 | 2467, 2482 |  |
| 2484 |  | Painting 1st coat | 11.94d | 2027-11-07 | 2027-11-19 | 2468, 2481, 2482, 2483 |  |
| 2485 |  | False ceiling | 9.94d | 2027-11-19 | 2027-11-29 | 2469, 2484 |  |
| 2486 | 37100.37300.37600.38100.39100.40500.41500.66900 | **25th Floor** | 416.06d | 2026-09-06 | 2027-12-11 |  | start no earlier than 2026-09-06 |
| 2487 |  | Block Work | 7.94d | 2026-09-06 | 2026-09-14 | 2089, 2471 |  |
| 2488 |  | Door Frame Fixing | 8.94d | 2026-09-14 | 2026-09-23 | 2472, 2487 |  |
| 2489 |  | Internal Plumbing Works | 9.94d | 2026-09-14 | 2026-09-24 | 2473, 2487 |  |
| 2490 |  | Waterproofing | 11.94d | 2026-10-05 | 2026-10-16 | 2474, 2489 |  |
| 2491 |  | Internal Plaster | 8.94d | 2026-10-16 | 2026-10-25 | 2475, 2488, 2489, 2490 |  |
| 2492 |  | IPS flooring work | 8.94d | 2026-10-25 | 2026-12-18 | 2476, 2488, 2490, 2491 |  |
| 2493 |  | Toilet dado work | 7.94d | 2026-10-25 | 2026-12-17 | 2477, 2490, 2491 |  |
| 2494 |  | Toilet flooring work | 6.94d | 2026-12-17 | 2026-12-24 | 2478, 2493 |  |
| 2495 |  | Living dinning flooring | 14.94d | 2026-12-30 | 2027-01-14 | 2479, 2488, 2494 |  |
| 2496 |  | Aluminium door-window fixing | 14.94d | 2027-01-27 | 2027-02-11 | 2480, 2492, 2495 |  |
| 2497 |  | Putty primer coat | 5.94d | 2027-01-14 | 2027-01-20 | 2481, 2495 |  |
| 2498 |  | Door shutter fixing | 7.94d | 2027-01-14 | 2027-01-22 | 2482, 2495 |  |
| 2499 |  | Electrical wiring work | 11.94d | 2027-11-07 | 2027-11-19 | 2483, 2498 |  |
| 2500 |  | Painting 1st coat | 11.94d | 2027-11-19 | 2027-12-01 | 2484, 2497, 2498, 2499 |  |
| 2501 |  | False ceiling | 9.94d | 2027-12-01 | 2027-12-11 | 2485, 2500 |  |
| 2502 | 37100.37300.37600.38100.39100.40500.41500.67000 | **26th Floor** | 414.12d | 2026-09-20 | 2027-12-23 |  | start no earlier than 2026-09-20 |
| 2503 |  | Block Work | 7.94d | 2026-09-20 | 2026-09-28 | 2090, 2487 |  |
| 2504 |  | Door Frame Fixing | 8.94d | 2026-09-28 | 2026-10-07 | 2488, 2503 |  |
| 2505 |  | Internal Plumbing Works | 9.94d | 2026-09-28 | 2026-10-08 | 2489, 2503 |  |
| 2506 |  | Waterproofing | 11.94d | 2026-10-16 | 2026-10-28 | 2490, 2505 |  |
| 2507 |  | Internal Plaster | 8.94d | 2026-10-28 | 2026-12-21 | 2491, 2504, 2505, 2506 |  |
| 2508 |  | IPS flooring work | 8.94d | 2026-12-21 | 2026-12-30 | 2492, 2504, 2506, 2507 |  |
| 2509 |  | Toilet dado work | 7.94d | 2026-12-21 | 2026-12-29 | 2493, 2506, 2507 |  |
| 2510 |  | Toilet flooring work | 6.94d | 2026-12-29 | 2027-01-05 | 2494, 2509 |  |
| 2511 |  | Living dinning flooring | 14.94d | 2027-01-14 | 2027-01-29 | 2495, 2504, 2510 |  |
| 2512 |  | Aluminium door-window fixing | 14.94d | 2027-02-11 | 2027-02-26 | 2496, 2508, 2511 |  |
| 2513 |  | Putty primer coat | 5.94d | 2027-01-29 | 2027-02-04 | 2497, 2511 |  |
| 2514 |  | Door shutter fixing | 7.94d | 2027-01-29 | 2027-02-06 | 2498, 2511 |  |
| 2515 |  | Electrical wiring work | 11.94d | 2027-11-19 | 2027-12-01 | 2499, 2514 |  |
| 2516 |  | Painting 1st coat | 11.94d | 2027-12-01 | 2027-12-13 | 2500, 2513, 2514, 2515 |  |
| 2517 |  | False ceiling | 9.94d | 2027-12-13 | 2027-12-23 | 2501, 2516 |  |
| 2518 | 37100.37300.37600.38100.39100.40500.41500.67100 | **27th Floor** | 412.31d | 2026-10-04 | 2028-01-04 |  | start no earlier than 2026-10-04 |
| 2519 |  | Block Work | 7.94d | 2026-10-04 | 2026-10-12 | 2091, 2503 |  |
| 2520 |  | Door Frame Fixing | 8.94d | 2026-10-12 | 2026-10-21 | 2504, 2519 |  |

| ID | WBS | Task | Duration | Start | Finish | Predecessors | Constraint |
| --- | --- | --- | --- | --- | --- | --- | --- |
| 2521 |  | Internal Plumbing Works | 9.94d | 2026-10-12 | 2026-10-22 | 2505, 2519 |  |
| 2522 |  | Waterproofing | 11.94d | 2026-10-28 | 2026-12-24 | 2506, 2521 |  |
| 2523 |  | Internal Plaster | 8.94d | 2026-12-24 | 2027-01-02 | 2507, 2520, 2521, 2522 |  |
| 2524 |  | IPS flooring work | 8.94d | 2027-01-02 | 2027-01-11 | 2508, 2520, 2522, 2523 |  |
| 2525 |  | Toilet dado work | 7.94d | 2027-01-02 | 2027-01-10 | 2509, 2522, 2523 |  |
| 2526 |  | Toilet flooring work | 6.94d | 2027-01-10 | 2027-01-17 | 2510, 2525 |  |
| 2527 |  | Living dinning flooring | 14.94d | 2027-01-29 | 2027-02-13 | 2511, 2520, 2526 |  |
| 2528 |  | Aluminium door-window fixing | 14.94d | 2027-02-26 | 2027-03-13 | 2512, 2524, 2527 |  |
| 2529 |  | Putty primer coat | 5.94d | 2027-02-13 | 2027-02-19 | 2513, 2527 |  |
| 2530 |  | Door shutter fixing | 7.94d | 2027-02-13 | 2027-02-21 | 2514, 2527 |  |
| 2531 |  | Electrical wiring work | 11.94d | 2027-12-01 | 2027-12-13 | 2515, 2530 |  |
| 2532 |  | Painting 1st coat | 11.94d | 2027-12-13 | 2027-12-25 | 2516, 2529, 2530, 2531 |  |
| 2533 |  | False ceiling | 9.94d | 2027-12-25 | 2028-01-04 | 2517, 2532 |  |
| 2534 | 37100.37300.37600.38100.39100.40500.41500.67200 | **28th Floor** | 410.5d | 2026-10-18 | 2028-01-16 |  | start no earlier than 2026-10-18 |
| 2535 |  | Block Work | 7.94d | 2026-10-18 | 2026-10-25 | 2092, 2519 |  |
| 2536 |  | Door Frame Fixing | 8.94d | 2026-10-25 | 2026-12-18 | 2520, 2535 |  |
| 2537 |  | Internal Plumbing Works | 9.94d | 2026-10-25 | 2026-12-19 | 2521, 2535 |  |
| 2538 |  | Waterproofing | 11.94d | 2026-12-24 | 2027-01-05 | 2522, 2537 |  |
| 2539 |  | Internal Plaster | 8.94d | 2027-01-05 | 2027-01-14 | 2523, 2536, 2537, 2538 |  |
| 2540 |  | IPS flooring work | 8.94d | 2027-01-14 | 2027-01-23 | 2524, 2536, 2538, 2539 |  |
| 2541 |  | Toilet dado work | 7.94d | 2027-01-14 | 2027-01-22 | 2525, 2538, 2539 |  |
| 2542 |  | Toilet flooring work | 6.94d | 2027-01-22 | 2027-01-29 | 2526, 2541 |  |
| 2543 |  | Living dinning flooring | 14.94d | 2027-02-13 | 2027-02-28 | 2527, 2536, 2542 |  |
| 2544 |  | Aluminium door-window fixing | 14.94d | 2027-03-13 | 2027-03-28 | 2528, 2540, 2543 |  |
| 2545 |  | Putty primer coat | 5.94d | 2027-02-28 | 2027-03-06 | 2529, 2543 |  |
| 2546 |  | Door shutter fixing | 7.94d | 2027-02-28 | 2027-03-08 | 2530, 2543 |  |
| 2547 |  | Electrical wiring work | 11.94d | 2027-12-13 | 2027-12-25 | 2531, 2546 |  |
| 2548 |  | Painting 1st coat | 11.94d | 2027-12-25 | 2028-01-06 | 2532, 2545, 2546, 2547 |  |
| 2549 |  | False ceiling | 9.94d | 2028-01-06 | 2028-01-16 | 2533, 2548 |  |
| 2550 | 37100.37300.37600.38100.39100.40500.41500.67300 | **29th Floor** | 404.56d | 2026-12-19 | 2028-01-28 |  | start no earlier than 2026-12-19 |
| 2551 |  | Block Work | 7.94d | 2026-12-19 | 2026-12-27 | 2093, 2535 |  |
| 2552 |  | Door Frame Fixing | 8.94d | 2026-12-27 | 2027-01-05 | 2536, 2551 |  |
| 2553 |  | Internal Plumbing Works | 9.94d | 2026-12-27 | 2027-01-06 | 2537, 2551 |  |
| 2554 |  | Waterproofing | 11.94d | 2027-01-06 | 2027-01-18 | 2538, 2553 |  |
| 2555 |  | Internal Plaster | 8.94d | 2027-01-18 | 2027-01-27 | 2539, 2552, 2553, 2554 |  |
| 2556 |  | IPS flooring work | 8.94d | 2027-01-27 | 2027-02-05 | 2540, 2552, 2554, 2555 |  |
| 2557 |  | Toilet dado work | 7.94d | 2027-01-27 | 2027-02-04 | 2541, 2554, 2555 |  |
| 2558 |  | Toilet flooring work | 6.94d | 2027-02-04 | 2027-02-11 | 2542, 2557 |  |
| 2559 |  | Living dinning flooring | 14.94d | 2027-02-28 | 2027-03-15 | 2543, 2552, 2558 |  |
| 2560 |  | Aluminium door-window fixing | 14.94d | 2027-03-28 | 2027-04-12 | 2544, 2556, 2559 |  |
| 2561 |  | Putty primer coat | 5.94d | 2027-03-15 | 2027-03-21 | 2545, 2559 |  |
| 2562 |  | Door shutter fixing | 7.94d | 2027-03-15 | 2027-03-23 | 2546, 2559 |  |
| 2563 |  | Electrical wiring work | 11.94d | 2027-12-25 | 2028-01-06 | 2547, 2562 |  |
| 2564 |  | Painting 1st coat | 11.94d | 2028-01-06 | 2028-01-18 | 2548, 2561, 2562, 2563 |  |
| 2565 |  | False ceiling | 9.94d | 2028-01-18 | 2028-01-28 | 2549, 2564 |  |
| 2566 | 37100.37300.37600.38100.39100.40500.41500.67400 | **30th Floor** | 381d | 2027-01-30 | 2028-02-15 |  | start no earlier than 2027-01-30 |
| 2567 |  | Block Work | 7.94d | 2027-01-30 | 2027-02-07 | 2094, 2551 |  |
| 2568 |  | Door Frame Fixing | 8.94d | 2027-02-07 | 2027-02-16 | 2552, 2567 |  |
| 2569 |  | Internal Plumbing Works | 9.94d | 2027-02-07 | 2027-02-17 | 2553, 2567 |  |
| 2570 |  | Waterproofing | 11.94d | 2027-02-17 | 2027-03-01 | 2554, 2569 |  |
| 2571 |  | Internal Plaster | 15d | 2027-03-01 | 2027-03-16 | 2555, 2568, 2569, 2570 |  |
| 2572 |  | IPS flooring work | 8.94d | 2027-03-16 | 2027-03-25 | 2556, 2568, 2570, 2571 |  |
| 2573 |  | Toilet dado work | 7.94d | 2027-03-16 | 2027-03-24 | 2557, 2570, 2571 |  |
| 2574 |  | Toilet flooring work | 6.94d | 2027-03-24 | 2027-03-31 | 2558, 2573 |  |
| 2575 |  | Living dinning flooring | 20d | 2027-03-31 | 2027-04-20 | 2559, 2568, 2574 |  |
| 2576 |  | Aluminium door-window fixing | 14.94d | 2027-04-20 | 2027-05-04 | 2560, 2572, 2575 |  |
| 2577 |  | Putty primer coat | 5.94d | 2027-04-20 | 2027-04-25 | 2561, 2575 |  |
| 2578 |  | Door shutter fixing | 7.94d | 2027-04-20 | 2027-04-27 | 2562, 2575 |  |
| 2579 |  | Electrical wiring work | 14.94d | 2028-01-06 | 2028-01-21 | 2563, 2578 |  |
| 2580 |  | Painting 1st coat | 14.94d | 2028-01-21 | 2028-02-05 | 2564, 2577, 2578, 2579 |  |
| 2581 |  | False ceiling | 9.94d | 2028-02-05 | 2028-02-15 | 2565, 2580 |  |
| 2582 | 37100.37300.37600.38100.39100.40500.41500.67500 | **31st Floor** | 388d | 2027-02-07 | 2028-03-01 |  | start no earlier than 2027-02-07 |
| 2583 |  | Block Work | 7.94d | 2027-02-07 | 2027-02-15 | 2095, 2567 |  |
| 2584 |  | Door Frame Fixing | 8.94d | 2027-02-16 | 2027-02-25 | 2568, 2583 |  |
| 2585 |  | Internal Plumbing Works | 9.94d | 2027-02-17 | 2027-02-27 | 2569, 2583 |  |
| 2586 |  | Waterproofing | 11.94d | 2027-03-01 | 2027-03-13 | 2570, 2585 |  |
| 2587 |  | Internal Plaster | 15d | 2027-03-16 | 2027-03-31 | 2571, 2584, 2585, 2586 |  |
| 2588 |  | IPS flooring work | 8.94d | 2027-03-31 | 2027-04-09 | 2572, 2584, 2586, 2587 |  |
| 2589 |  | Toilet dado work | 7.94d | 2027-03-31 | 2027-04-08 | 2573, 2586, 2587 |  |
| 2590 |  | Toilet flooring work | 6.94d | 2027-04-08 | 2027-04-15 | 2574, 2589 |  |

| ID | WBS | Task | Duration | Start | Finish | Predecessors | Constraint |
| --- | --- | --- | --- | --- | --- | --- | --- |
| 2591 |  | Living dinning flooring | 20d | 2027-04-20 | 2027-05-10 | 2575, 2584, 2590 |  |
| 2592 |  | Aluminium door-window fixing | 11.94d | 2027-05-10 | 2027-05-21 | 2576, 2588, 2591 |  |
| 2593 |  | Putty primer coat | 5.94d | 2027-05-10 | 2027-05-15 | 2577, 2591 |  |
| 2594 |  | Door shutter fixing | 7.94d | 2027-05-10 | 2027-05-17 | 2578, 2591 |  |
| 2595 |  | Electrical wiring work | 14.94d | 2028-01-21 | 2028-02-05 | 2579, 2594 |  |
| 2596 |  | Painting 1st coat | 14.94d | 2028-02-05 | 2028-02-20 | 2580, 2593, 2594, 2595 |  |
| 2597 |  | False ceiling | 9.94d | 2028-02-20 | 2028-03-01 | 2581, 2596 |  |
| 2598 | 37100.37300.37600.38100.39100.40500.41500.67600 | **32nd Floor** | 395d | 2027-02-15 | 2028-03-16 |  | start no earlier than 2027-02-15 |
| 2599 |  | Block Work | 7.94d | 2027-02-15 | 2027-02-23 | 2096, 2583 |  |
| 2600 |  | Door Frame Fixing | 8.94d | 2027-02-25 | 2027-03-06 | 2584, 2599 |  |
| 2601 |  | Internal Plumbing Works | 9.94d | 2027-02-27 | 2027-03-09 | 2585, 2599 |  |
| 2602 |  | Waterproofing | 11.94d | 2027-03-13 | 2027-03-25 | 2586, 2601 |  |
| 2603 |  | Internal Plaster | 8d | 2027-03-31 | 2027-04-08 | 2587, 2600, 2601, 2602 |  |
| 2604 |  | IPS flooring work | 8.94d | 2027-04-09 | 2027-04-18 | 2588, 2600, 2602, 2603 |  |
| 2605 |  | Toilet dado work | 7.94d | 2027-04-08 | 2027-04-16 | 2589, 2602, 2603 |  |
| 2606 |  | Toilet flooring work | 6.94d | 2027-04-16 | 2027-04-23 | 2590, 2605 |  |
| 2607 |  | Living dinning flooring | 12d | 2027-05-10 | 2027-05-22 | 2591, 2600, 2606 |  |
| 2608 |  | Aluminium door-window fixing | 11.94d | 2027-05-22 | 2027-06-02 | 2592, 2604, 2607 |  |
| 2609 |  | Putty primer coat | 5.94d | 2027-05-22 | 2027-05-27 | 2593, 2607 |  |
| 2610 |  | Door shutter fixing | 7.94d | 2027-05-22 | 2027-05-29 | 2594, 2607 |  |
| 2611 |  | Electrical wiring work | 14.94d | 2028-02-05 | 2028-02-20 | 2595, 2610 |  |
| 2612 |  | Painting 1st coat | 14.94d | 2028-02-20 | 2028-03-06 | 2596, 2609, 2610, 2611 |  |
| 2613 |  | False ceiling | 9.94d | 2028-03-06 | 2028-03-16 | 2597, 2612 |  |
| 2614 | 37100.37300.37600.38100.39100.40500.41500.67700 | **33rd Floor** | 399d | 2027-02-23 | 2028-03-28 |  | start no earlier than 2027-02-23 |
| 2615 |  | Block Work | 7.94d | 2027-02-23 | 2027-03-03 | 2097, 2599 |  |
| 2616 |  | Door Frame Fixing | 8.94d | 2027-03-06 | 2027-03-15 | 2600, 2615 |  |
| 2617 |  | Internal Plumbing Works | 9.94d | 2027-03-09 | 2027-03-19 | 2601, 2615 |  |
| 2618 |  | Waterproofing | 11.94d | 2027-03-25 | 2027-04-05 | 2602, 2617 |  |
| 2619 |  | Internal Plaster | 20d | 2027-04-08 | 2027-04-28 | 2603, 2616, 2617, 2618 |  |
| 2620 |  | IPS flooring work | 8.94d | 2027-04-28 | 2027-05-07 | 2604, 2616, 2618, 2619 |  |
| 2621 |  | Toilet dado work | 7.94d | 2027-04-28 | 2027-05-06 | 2605, 2618, 2619 |  |
| 2622 |  | Toilet flooring work | 6.94d | 2027-05-06 | 2027-05-13 | 2606, 2621 |  |
| 2623 |  | Living dinning flooring | 14.94d | 2027-05-22 | 2027-06-05 | 2607, 2616, 2622 |  |
| 2624 |  | Aluminium door-window fixing | 14.94d | 2027-06-06 | 2027-06-20 | 2608, 2620, 2623 |  |
| 2625 |  | Putty primer coat | 5.94d | 2027-06-06 | 2027-06-11 | 2609, 2623 |  |
| 2626 |  | Door shutter fixing | 7.94d | 2027-06-06 | 2027-06-13 | 2610, 2623 |  |
| 2627 |  | Electrical wiring work | 11.94d | 2028-02-20 | 2028-03-03 | 2611, 2626 |  |
| 2628 |  | Painting 1st coat | 11.94d | 2028-03-06 | 2028-03-18 | 2612, 2625, 2626, 2627 |  |
| 2629 |  | False ceiling | 9.94d | 2028-03-18 | 2028-03-28 | 2613, 2628 |  |
| 2630 | 37100.37300.37600.38100.39100.40500.41500.67800 | **34th Floor** | 403d | 2027-03-03 | 2028-04-09 |  | start no earlier than 2027-03-03 |
| 2631 |  | Block Work | 7.94d | 2027-03-03 | 2027-03-11 | 2098, 2615 |  |
| 2632 |  | Door Frame Fixing | 8.94d | 2027-03-15 | 2027-03-23 | 2616, 2631 |  |
| 2633 |  | Internal Plumbing Works | 9.94d | 2027-03-19 | 2027-03-28 | 2617, 2631 |  |
| 2634 |  | Waterproofing | 11.94d | 2027-04-06 | 2027-04-17 | 2618, 2633 |  |
| 2635 |  | Internal Plaster | 8.94d | 2027-04-28 | 2027-05-07 | 2619, 2632, 2633, 2634 |  |
| 2636 |  | IPS flooring work | 8.94d | 2027-05-07 | 2027-05-16 | 2620, 2632, 2634, 2635 |  |
| 2637 |  | Toilet dado work | 7.94d | 2027-05-07 | 2027-05-15 | 2621, 2634, 2635 |  |
| 2638 |  | Toilet flooring work | 6.94d | 2027-05-15 | 2027-05-21 | 2622, 2637 |  |
| 2639 |  | Living dinning flooring | 9d | 2027-06-06 | 2027-06-14 | 2623, 2632, 2638 |  |
| 2640 |  | Aluminium door-window fixing | 14.94d | 2027-06-20 | 2027-07-05 | 2624, 2636, 2639 |  |
| 2641 |  | Putty primer coat | 5.94d | 2027-06-15 | 2027-06-20 | 2625, 2639 |  |
| 2642 |  | Door shutter fixing | 7.94d | 2027-06-15 | 2027-06-22 | 2626, 2639 |  |
| 2643 |  | Electrical wiring work | 11.94d | 2028-03-03 | 2028-03-15 | 2627, 2642 |  |
| 2644 |  | Painting 1st coat | 11.94d | 2028-03-18 | 2028-03-30 | 2628, 2641, 2642, 2643 |  |
| 2645 |  | False ceiling | 9.94d | 2028-03-30 | 2028-04-09 | 2629, 2644 |  |
| 2646 | 37100.37300.37600.38100.39100.40500.41500.67900 | **35th Floor** | 407d | 2027-03-11 | 2028-04-21 |  | start no earlier than 2027-03-11 |
| 2647 |  | Block Work | 7.94d | 2027-03-11 | 2027-03-18 | 2099, 2631 |  |
| 2648 |  | Door Frame Fixing | 8.94d | 2027-03-24 | 2027-04-01 | 2632, 2647 |  |
| 2649 |  | Internal Plumbing Works | 9.94d | 2027-03-29 | 2027-04-07 | 2633, 2647 |  |
| 2650 |  | Waterproofing | 11.94d | 2027-04-17 | 2027-04-29 | 2634, 2649 |  |
| 2651 |  | Internal Plaster | 11d | 2027-05-07 | 2027-05-18 | 2635, 2648, 2649, 2650 |  |
| 2652 |  | IPS flooring work | 8.94d | 2027-05-18 | 2027-05-27 | 2636, 2648, 2650, 2651 |  |
| 2653 |  | Toilet dado work | 7.94d | 2027-05-18 | 2027-05-26 | 2637, 2650, 2651 |  |
| 2654 |  | Toilet flooring work | 6.94d | 2027-05-26 | 2027-06-01 | 2638, 2653 |  |
| 2655 |  | Living dinning flooring | 9d | 2027-06-15 | 2027-06-23 | 2639, 2648, 2654 |  |
| 2656 |  | Aluminium door-window fixing | 14.94d | 2027-07-05 | 2027-07-20 | 2640, 2652, 2655 |  |
| 2657 |  | Putty primer coat | 5.94d | 2027-06-24 | 2027-06-29 | 2641, 2655 |  |
| 2658 |  | Door shutter fixing | 7.94d | 2027-06-24 | 2027-07-01 | 2642, 2655 |  |
| 2659 |  | Electrical wiring work | 11.94d | 2028-03-15 | 2028-03-27 | 2643, 2658 |  |
| 2660 |  | Painting 1st coat | 11.94d | 2028-03-30 | 2028-04-11 | 2644, 2657, 2658, 2659 |  |

| ID | WBS | Task | Duration | Start | Finish | Predecessors | Constraint |
| --- | --- | --- | --- | --- | --- | --- | --- |
| 2661 |  | False ceiling | 9.94d | 2028-04-11 | 2028-04-21 | 2645, 2660 |  |
| 2662 | 37100.37300.37600.38100.39100.40500.191100 | **Terrace Finishing** | 79.88d | 2026-10-28 | 2027-03-02 |  | start no earlier than 2026-10-28 |
| 2663 |  | Terrace waterproofing | 39.94d | 2026-10-28 | 2027-01-21 | 2056 |  |
| 2664 |  | Terrace finishing | 39.94d | 2027-01-21 | 2027-03-02 | 2663 |  |
| 2665 | 37100.37300.37600.38100.39100.40500.100800 | **Common Area Finishing** | 279.31d | 2026-01-13 | 2026-10-19 |  | start no earlier than 2026-01-13 |
| 2666 |  | Block Work | 39.94d | 2026-01-13 | 2026-02-22 | 2067FS+0.25d |  |
| 2667 |  | Internal Plaster | 119.94d | 2026-02-18 | 2026-06-18 | 2672SS+17.88d |  |
| 2668 |  | Staircase railing fixing | 149.94d | 2026-05-22 | 2026-10-19 | 2670SS+26.75d, 2669SS+26.75d |  |
| 2669 |  | Main staircase flooring | 149.94d | 2026-04-26 | 2026-09-23 | 2670SS+13.38d |  |
| 2670 |  | Fire staircase flooring | 149.94d | 2026-04-12 | 2026-09-09 | 2667SS+13.38d, 2674SS+26.75d |  |
| 2671 |  | Fire door work | 59.94d | 2026-05-22 | 2026-07-21 | 2669SS+26.75d, 2670SS+26.75d |  |
| 2672 |  | Electrical wiring work | 119.94d | 2026-01-31 | 2026-05-31 | 2666SS+17.88d |  |
| 2673 |  | Lobby flooring | 150d | 2026-02-03 | 2026-07-03 | 2672SS+3.38d |  |
| 2674 |  | Ceiling & wall putty-primer | 109.94d | 2026-03-17 | 2026-07-04 | 2667SS+26.75d |  |
| 2675 |  | Ceiling & wall painting | 99.94d | 2026-04-03 | 2026-07-12 | 2674SS+17.88d |  |
| 2676 |  | Light fixture supply & installation | 44.94d | 2026-05-27 | 2026-07-11 | 2675SS+53.38d |  |
| 2677 | 37100.37300.37600.38100.39100.40500.46500 | **Balcony Glass Railing** | 58.12d | 2027-09-04 | 2027-11-01 |  | start no earlier than 2027-09-04 |
| 2678 |  | 1st Floor | 1.94d | 2027-09-04 | 2027-09-06 | 2746 |  |
| 2679 |  | 2nd Floor | 1.94d | 2027-09-06 | 2027-09-07 | 2678 |  |
| 2680 |  | 3rd Floor | 1.94d | 2027-09-08 | 2027-09-09 | 2679 |  |
| 2681 |  | 4th Floor | 1.94d | 2027-09-09 | 2027-09-11 | 2680 |  |
| 2682 |  | 5th Floor | 1.94d | 2027-09-11 | 2027-09-13 | 2681 |  |
| 2683 |  | 6th Floor | 1.94d | 2027-09-13 | 2027-09-15 | 2682 |  |
| 2684 |  | 7th Floor | 1.94d | 2027-09-15 | 2027-09-17 | 2683 |  |
| 2685 |  | 8th Floor | 1.94d | 2027-09-17 | 2027-09-19 | 2684 |  |
| 2686 |  | 9th Floor | 1.94d | 2027-09-19 | 2027-09-21 | 2685 |  |
| 2687 |  | 10th Floor | 1.94d | 2027-09-21 | 2027-09-23 | 2686 |  |
| 2688 |  | 11th Floor | 1.94d | 2027-09-23 | 2027-09-25 | 2687 |  |
| 2689 |  | 12th Floor | 1.94d | 2027-09-25 | 2027-09-27 | 2688 |  |
| 2690 |  | 13th Floor | 1.94d | 2027-09-27 | 2027-09-29 | 2689 |  |
| 2691 |  | 14th Floor | 1.94d | 2027-09-29 | 2027-10-01 | 2690 |  |
| 2692 |  | 15th Floor | 1.94d | 2027-10-01 | 2027-10-03 | 2691 |  |
| 2693 |  | 16th Floor | 1.94d | 2027-10-03 | 2027-10-05 | 2692 |  |
| 2694 |  | 17th Floor | 1.94d | 2027-10-05 | 2027-10-07 | 2693 |  |
| 2695 |  | 18th Floor | 1.94d | 2027-10-07 | 2027-10-08 | 2694 |  |
| 2696 |  | 19th Floor | 1.94d | 2027-10-09 | 2027-10-10 | 2695 |  |
| 2697 |  | 20th Floor | 1.94d | 2027-10-10 | 2027-10-12 | 2696 |  |
| 2698 |  | 21st Floor | 1.94d | 2027-10-12 | 2027-10-14 | 2697 |  |
| 2699 |  | 22nd Floor | 1.94d | 2027-10-14 | 2027-10-16 | 2698 |  |
| 2700 |  | 23rd Floor | 1.94d | 2027-10-16 | 2027-10-18 | 2699 |  |
| 2701 |  | 24th Floor | 1.94d | 2027-10-18 | 2027-10-20 | 2700 |  |
| 2702 |  | 25th Floor | 1.94d | 2027-10-20 | 2027-10-22 | 2701 |  |
| 2703 |  | 26th Floor | 1.94d | 2027-10-22 | 2027-10-24 | 2702 |  |
| 2704 |  | 27th Floor | 1.94d | 2027-10-24 | 2027-10-26 | 2703 |  |
| 2705 |  | 28th Floor | 1.94d | 2027-10-26 | 2027-10-28 | 2704 |  |
| 2706 |  | 29th Floor | 1.94d | 2027-10-28 | 2027-10-30 | 2705 |  |
| 2707 |  | 30th Floor | 1.94d | 2027-10-30 | 2027-11-01 | 2706 |  |
| 2708 |  | 31st Floor | 0d | 2027-11-01 | 2027-11-01 | 2707 |  |
| 2709 |  | 32nd Floor | 0d | 2027-11-01 | 2027-11-01 | 2708 |  |
| 2710 |  | 33rd Floor | 0d | 2027-11-01 | 2027-11-01 | 2709 |  |
| 2711 |  | 34th Floor | 0d | 2027-11-01 | 2027-11-01 | 2710 |  |
| 2712 |  | 35th Floor | 0d | 2027-11-01 | 2027-11-01 | 2711 |  |
| 2713 | 37100.37300.37600.38100.95400 | **MEP work** | 964.69d | 2026-04-12 | 2029-01-16 |  | start no earlier than 2026-04-12 |
| 2714 | 37100.37300.37600.38100.95400.98100 | **Electrical work** | 233.25d | 2027-01-23 | 2027-09-13 |  | start no earlier than 2027-01-23 |
| 2715 |  | Cable Tray | 89.94d | 2027-01-23 | 2027-04-23 | 2061 |  |
| 2716 |  | Cable, main & sub main | 79.94d | 2027-03-04 | 2027-05-23 | 2715SS+40d |  |
| 2717 |  | LT panel & DB | 119.94d | 2027-04-23 | 2027-08-21 | 2715 |  |
| 2718 |  | Rising main | 89.94d | 2027-06-15 | 2027-09-13 | 2715FS+53.38d |  |
| 2719 |  | EARTHING Works | 59.94d | 2027-05-06 | 2027-07-05 | 2715FS+13.38d |  |
| 2720 |  | Advance lightening protection | 59.94d | 2027-03-02 | 2027-05-01 | 2664 |  |
| 2721 |  | Inverter | 34.94d | 2027-07-05 | 2027-08-09 | 2719 |  |
| 2722 |  | Energy meter | 59.94d | 2027-05-23 | 2027-07-22 | 2716 |  |
| 2723 |  | Exhast fan | 59.94d | 2027-05-26 | 2027-07-25 | 2656FF+4.5d |  |
| 2724 |  | FTTH | 59.94d | 2027-06-26 | 2027-08-25 | 2719FS-9d |  |
| 2725 |  | Security System - FA & PA | 54.94d | 2027-07-01 | 2027-08-25 | 2724FF |  |
| 2726 |  | Solar water heater | 59.94d | 2027-03-02 | 2027-05-01 | 2664 |  |
| 2727 | 37100.37300.37600.38100.95400.128900 | **Plumbing wrok** | 397.31d | 2027-01-21 | 2028-02-23 |  | start no earlier than 2027-01-21 |
| 2728 |  | Terrace looping | 44.94d | 2027-01-21 | 2027-03-07 | 2663 |  |
| 2729 |  | Shaft Plumbing | 119.94d | 2027-03-07 | 2027-07-05 | 2728 |  |
| 2730 |  | CP sanitary fixture supply | 74.94d | 2027-07-25 | 2027-10-08 | 2651, 2654FS+53.38d |  |

| ID | WBS | Task | Duration | Start | Finish | Predecessors | Complete | Constraint |
| --- | --- | --- | --- | --- | --- | --- | --- | --- |
| 2731 |  | Cold & flushing water supply | 89.94d | 2027-04-19 | 2027-07-18 | 2667SS+380d |  |  |
| 2732 |  | Misc work | 29.94d | 2028-01-24 | 2028-02-23 | 2731FS+190d |  |  |
| 2733 | 37100.37300.37600.38100.95400.172600 | **Fire fighting work** | 437.94d | 2026-04-12 | 2027-08-08 |  |  | start no earlier than 2026-04-12 |
| 2734 |  | Fire hydrant work | 89.94d | 2026-04-12 | 2026-07-11 | 2667SS+53.38d |  |  |
| 2735 |  | Sprinkler & piping work | 88d | 2027-05-12 | 2027-08-08 | 2734FS+260d |  |  |
| 2736 |  | Shaft Downtake works | 89.94d | 2027-01-21 | 2027-04-21 | 2663 |  |  |
| 2737 |  | Connection to pump room | 29.94d | 2027-04-21 | 2027-05-21 | 2736 |  |  |
| 2738 | 37100.37300.37600.38100.95400.186300 | **Lift work** | 304.88d | 2027-01-23 | 2027-11-24 |  |  | start no earlier than 2027-01-23 |
| 2739 |  | Lift Shaft Handover | 39.94d | 2027-01-23 | 2027-03-04 | 2061 |  |  |
| 2740 |  | Lift installation work | 180d | 2027-03-04 | 2027-08-31 | 2739 |  |  |
| 2741 |  | Lift testing and commissioning | 84.94d | 2027-08-31 | 2027-11-24 | 2740 |  |  |
| 2742 | 37100.37300.37600.38100.95400.194700 | **AC work** | 96.94d | 2028-10-11 | 2029-01-16 |  |  | start no earlier than 2028-10-11 |
| 2743 |  | Split AC | 96.94d | 2028-10-11 | 2029-01-16 | 2759FS+119d |  |  |
| 2744 | 37100.37300.37600.38100.169000 | **Tower Completion** | 239.88d | 2027-03-08 | 2027-11-03 |  |  | start no earlier than 2027-03-08 |
| 2745 |  | SURFACE PREPARATION | 79.94d | 2027-03-08 | 2027-05-27 | 2099FS+1.88d |  |  |
| 2746 |  | External Painting | 99.94d | 2027-05-27 | 2027-09-04 | 2745 |  |  |
| 2747 |  | Final coat of painting | 60d | 2027-09-04 | 2027-11-03 | 2746 |  |  |
| 2748 |  | Misc. work | 59.94d | 2027-09-04 | 2027-11-03 | 2746 |  |  |
| 2749 | 37100.37300.37600.38100.194400 | **Basement lobby** | 60d | 2026-07-03 | 2026-09-01 |  |  | start no earlier than 2026-07-03 |
| 2750 |  | Basement lobby | 60d | 2026-07-03 | 2026-09-01 | 2673 |  |  |
| 2751 | 37100.37300.37600.38100.107200 | **Post OC activities** | 465.31d | 2028-03-27 | 2029-07-05 |  |  | start no earlier than 2028-03-27 |
| 2752 |  | Wardrobe installation | 176.94d | 2028-05-18 | 2028-11-11 | 2759FS-26.75d |  |  |
| 2753 |  | CP & SANITARYWARE | 116.94d | 2028-05-18 | 2028-09-12 | 2759FS-26.75d, 2730 |  |  |
| 2754 |  | Wooden Flooring | 176.94d | 2028-05-18 | 2028-11-11 | 2759FS-26.75d |  |  |
| 2755 |  | Electrical Fixtures And Fittings | 74.94d | 2028-03-27 | 2028-06-10 | 2659 |  |  |
| 2756 |  | Modular Kitchen | 176.94d | 2029-01-09 | 2029-07-05 | 2753FS+119d |  |  |
| 2757 |  | External Elevation Façade | 89.94d | 2028-10-11 | 2029-01-09 | 2759FS+119d |  |  |
| 2758 |  | OC Application/Readiness | 0d | 2028-04-21 | 2028-04-21 | 2061, 2668FS+7.12d, 1873, 1874, 2059, 2671, 2661, 2712, 2717, 2718, 2720, 2721, 2722, 2723, 2725, 2726, 2729, 2732, 2735, 2737, 2741 |  |  |
| 2759 |  | OC Receipt | 0.94d | 2028-06-13 | 2028-06-14 | 2758FS+53.38d, 2747, 2748 |  |  |
| 2760 |  | Offer To Possession | 29.94d | 2029-07-05 | 2029-08-04 | 2752, 2753, 2754, 2755, 2756, 2757 |  |  |
| 2761 | 37100.37300.37600.38200 | **Tower 2** | 1728d | 2024-01-10 | 2029-01-08 |  | 6% | start no earlier than 2024-01-10 |
| 2762 | 37100.37300.37600.38200.97900 | **Substructure** | 776.69d | 2024-01-10 | 2026-04-18 |  | 62% | start no earlier than 2024-01-10 |
| 2763 | 37100.37300.37600.38200.97900.108300 | **Soil Bed Preparation** | 706.81d | 2024-01-10 | 2026-02-07 |  | 78% | start no earlier than 2024-01-10 |
| 2764 |  | Test Piling | 24.94d | 2024-02-01 | 2024-02-25 |  | 100% | start no earlier than 2024-02-01 |
| 2765 |  | Excavation | 29.94d | 2024-01-10 | 2024-02-08 | 7SS+36.74d | 100% | start no earlier than 2024-01-10 |
| 2766 |  | Main Piling Work | 169.06d | 2024-04-12 | 2024-10-11 | 7FS-12.45d | 100% | start no earlier than 2024-04-12 |
| 2767 |  | Anti-termite | 4.94d | 2025-11-30 | 2025-12-04 | 2765FS-14.7d, 2766FS+1.94d |  |  |
| 2768 |  | PCC | 9.69d | 2024-10-18 | 2024-10-27 | 2767SS+21.89d | 100% | start no earlier than 2024-10-18 |
| 2769 |  | Backfilling | 59.94d | 2025-11-30 | 2026-02-07 | 2782FS-8d |  |  |
| 2770 | 37100.37300.37600.38200.97900.103400 | **RCC Structure** | 142d | 2024-12-16 | 2025-05-06 |  | 100% | start no earlier than 2024-12-16 |
| 2771 | 37100.37300.37600.38200.97900.103400.174200 | **Raft Foundation** | 32d | 2024-12-16 | 2025-01-16 |  | 100% | start no earlier than 2024-12-16 |
| 2772 |  | Reinforcement | 26d | 2024-12-16 | 2025-01-11 | 2768SS+5d | 100% | start no earlier than 2024-12-16 |
| 2773 |  | Formwork | 21d | 2024-12-24 | 2025-01-13 | 2772FF | 100% | start no earlier than 2024-12-24 |
| 2774 |  | Concreting | 4d | 2025-01-13 | 2025-01-16 | 2773FS+2d | 100% | start no earlier than 2025-01-13 |
| 2775 | 37100.37300.37600.38200.97900.103400.174100 | **Basement 1 Slab** | 40d | 2025-01-17 | 2025-02-25 |  | 100% | start no earlier than 2025-01-17 |
| 2776 |  | Reinforcement | 21d | 2025-01-17 | 2025-02-20 | 2774 | 100% | start no earlier than 2025-01-17 |
| 2777 |  | Formwork | 21d | 2025-01-20 | 2025-02-24 | 2776SS+3d | 100% | start no earlier than 2025-01-20 |
| 2778 |  | Concreting | 1d | 2025-02-25 | 2025-02-25 | 2777 | 100% | start no earlier than 2025-02-25 |
| 2779 | 37100.37300.37600.38200.97900.103400.174000 | **Basement 2 Slab/GF** | 25d | 2025-02-13 | 2025-03-09 |  | 100% | start no earlier than 2025-02-13 |
| 2780 |  | Reinforcement | 16d | 2025-02-13 | 2025-03-06 | 2778 | 100% | start no earlier than 2025-02-13 |
| 2781 |  | Formwork | 14d | 2025-02-17 | 2025-03-07 | 2780SS+3d | 100% | start no earlier than 2025-02-17 |
| 2782 |  | Concreting | 3d | 2025-03-01 | 2025-03-09 | 2781FS-6d | 100% | start no earlier than 2025-03-01 |
| 2783 | 37100.37300.37600.38200.97900.103400.173900 | **Podium** | 67d | 2025-03-01 | 2025-05-06 |  | 100% | start no earlier than 2025-03-01 |
| 2784 |  | Reinforcement | 36d | 2025-03-01 | 2025-05-05 | 2782FS-8d | 100% | start no earlier than 2025-03-01 |
| 2785 |  | Formwork | 33d | 2025-03-04 | 2025-05-05 | 2784SS+3d | 100% | start no earlier than 2025-03-04 |
| 2786 |  | Concreting | 1d | 2025-05-06 | 2025-05-06 | 2785 | 100% | start no earlier than 2025-05-06 |
| 2787 | 37100.37300.37600.38200.97900.170600 | **Substructure Finishing** | 129.81d | 2025-11-30 | 2026-04-18 |  |  | start no earlier than 2025-11-30 |
| 2788 |  | Masonary work | 44.94d | 2025-11-30 | 2026-01-23 | 2786FS+26.75d |  |  |
| 2789 |  | Plaster | 39.94d | 2026-01-23 | 2026-03-04 | 2788 |  |  |
| 2790 |  | Structural steel | 59.94d | 2025-11-30 | 2026-02-07 | 2786FS+53.38d |  |  |
| 2791 |  | White Wash | 44.94d | 2026-03-04 | 2026-04-18 | 2789 |  |  |
| 2792 | 37100.37300.37600.38200.39200 | **Superstructure** | 1008.94d | 2025-05-06 | 2028-04-15 |  | 4% | start no earlier than 2025-05-06 |
| 2793 | 37100.37300.37600.38200.39200.43600 | **RCC structure** | 550.12d | 2025-05-06 | 2027-01-12 |  | 33% | start no earlier than 2025-05-06 |
| 2794 | 37100.37300.37600.38200.39200.43600.131000 | **1st floor slab** | 59d | 2025-05-06 | 2025-07-03 |  | 100% | start no earlier than 2025-05-06 |
| 2795 |  | Reinforcement | 28d | 2025-05-06 | 2025-06-29 | 2786FS+1d | 100% | start no earlier than 2025-05-06 |
| 2796 |  | Wall conduiting | 22d | 2025-05-08 | 2025-07-01 | 2795SS+2.75d | 100% | start no earlier than 2025-05-08 |
| 2797 |  | Formwork | 26d | 2025-05-09 | 2025-07-02 | 2795SS+3d | 100% | start no earlier than 2025-05-09 |
| 2798 |  | Concreting | 13d | 2025-06-13 | 2025-07-03 | 2797FS-13d | 100% | start no earlier than 2025-06-13 |
| 2799 | 37100.37300.37600.38200.39200.43600.131100 | **2nd floor slab** | 49d | 2025-07-07 | 2025-08-24 |  | 100% | start no earlier than 2025-07-07 |
| 2800 |  | Reinforcement | 15d | 2025-07-07 | 2025-08-24 | 2798FS+1d | 100% | start no earlier than 2025-07-07 |

| ID | WBS | Task | Duration | Start | Finish | Predecessors | Complete | Constraint |
| --- | --- | --- | --- | --- | --- | --- | --- | --- |
| 2801 |  | Wall conduiting | 8d | 2025-07-09 | 2025-08-24 | 2796, 2800SS+2.75d | 100% | start no earlier than 2025-07-09 |
| 2802 |  | Formwork | 20d | 2025-07-07 | 2025-08-24 | 2800SS | 100% | start no earlier than 2025-07-07 |
| 2803 |  | Concreting | 3d | 2025-08-08 | 2025-08-24 | 2802FS-15d | 100% | start no earlier than 2025-08-08 |
| 2804 | 37100.37300.37600.38200.39200.43600.131200 | **3rd floor slab** | 30d | 2025-08-10 | 2025-09-08 |  | 100% | start no earlier than 2025-08-10 |
| 2805 |  | Reinforcement | 11d | 2025-08-10 | 2025-09-08 | 2803FS-15d | 100% | start no earlier than 2025-08-10 |
| 2806 |  | Wall conduiting | 6d | 2025-08-16 | 2025-09-07 | 2805SS+14.75d, 2801FS-8.25d | 100% | start no earlier than 2025-08-16 |
| 2807 |  | Formwork | 14d | 2025-08-16 | 2025-09-08 | 2805SS | 100% | start no earlier than 2025-08-16 |
| 2808 |  | Concreting | 1d | 2025-09-08 | 2025-09-08 | 2807 | 100% | start no earlier than 2025-09-08 |
| 2809 | 37100.37300.37600.38200.39200.43600.128200 | **4th floor slab** | 14d | 2025-09-09 | 2025-09-22 |  | 100% | start no earlier than 2025-09-09 |
| 2810 |  | Reinforcement | 8d | 2025-09-09 | 2025-09-21 | 2808FS+1d | 100% | start no earlier than 2025-09-09 |
| 2811 |  | Wall conduiting | 8d | 2025-09-09 | 2025-09-21 | 2806, 2810SS+1d | 100% | start no earlier than 2025-09-09 |
| 2812 |  | Formwork | 7d | 2025-09-09 | 2025-09-21 | 2810SS+1d | 100% | start no earlier than 2025-09-09 |
| 2813 |  | Concreting | 4d | 2025-09-14 | 2025-09-22 | 2812FS-7d | 100% | start no earlier than 2025-09-14 |
| 2814 | 37100.37300.37600.38200.39200.43600.128300 | **5th floor slab** | 12d | 2025-09-18 | 2025-09-29 |  | 100% | start no earlier than 2025-09-18 |
| 2815 |  | Reinforcement | 8d | 2025-09-18 | 2025-09-28 | 2813FS+1d | 100% | start no earlier than 2025-09-18 |
| 2816 |  | Wall conduiting | 3d | 2025-09-18 | 2025-09-28 | 2811, 2815SS+1d | 100% | start no earlier than 2025-09-18 |
| 2817 |  | Formwork | 7d | 2025-09-18 | 2025-09-28 | 2815SS+1d | 100% | start no earlier than 2025-09-18 |
| 2818 |  | Concreting | 1d | 2025-09-29 | 2025-09-29 | 2817 | 100% | start no earlier than 2025-09-29 |
| 2819 | 37100.37300.37600.38200.39200.43600.128400 | **6th floor slab** | 13d | 2025-09-28 | 2025-10-10 |  | 100% | start no earlier than 2025-09-28 |
| 2820 |  | Reinforcement | 8d | 2025-09-28 | 2025-10-09 | 2818FS+1d | 100% | start no earlier than 2025-09-28 |
| 2821 |  | Wall conduiting | 7d | 2025-09-28 | 2025-10-09 | 2816, 2820SS+1d | 100% | start no earlier than 2025-09-28 |
| 2822 |  | Formwork | 7d | 2025-09-28 | 2025-10-09 | 2820SS+1d | 100% | start no earlier than 2025-09-28 |
| 2823 |  | Concreting | 3d | 2025-10-06 | 2025-10-10 | 2822 | 100% | start no earlier than 2025-10-06 |
| 2824 | 37100.37300.37600.38200.39200.43600.128500 | **7th floor slab** | 14d | 2025-10-07 | 2025-10-20 |  | 100% | start no earlier than 2025-10-07 |
| 2825 |  | Reinforcement | 8d | 2025-10-07 | 2025-10-18 | 2823FS+1d | 100% | start no earlier than 2025-10-07 |
| 2826 |  | Wall conduiting | 6d | 2025-10-07 | 2025-10-18 | 2821, 2825SS+1d | 100% | start no earlier than 2025-10-07 |
| 2827 |  | Formwork | 7d | 2025-10-07 | 2025-10-18 | 2825SS+1d | 100% | start no earlier than 2025-10-07 |
| 2828 |  | Concreting | 3d | 2025-10-16 | 2025-10-20 | 2827 | 100% | start no earlier than 2025-10-16 |
| 2829 | 37100.37300.37600.38200.39200.43600.128600 | **8th floor slab** | 22.69d | 2025-10-20 | 2025-11-09 |  | 100% | start no earlier than 2025-10-20 |
| 2830 |  | Reinforcement | 10d | 2025-10-20 | 2025-11-09 | 2828FS+1d | 100% | start no earlier than 2025-10-20 |
| 2831 |  | Wall conduiting | 6d | 2025-10-20 | 2025-11-09 | 2826, 2830SS+1d | 100% | start no earlier than 2025-10-20 |
| 2832 |  | Formwork | 10d | 2025-10-20 | 2025-11-09 | 2830SS+1d | 100% | start no earlier than 2025-10-20 |
| 2833 |  | Concreting | 9.94d | 2025-10-31 | 2025-11-09 | 2832FS-15.06d | 100% | start no earlier than 2025-10-31 |
| 2834 | 37100.37300.37600.38200.39200.43600.128700 | **9th floor slab** | 8.12d | 2025-11-06 | 2025-11-27 |  | 100% | start no earlier than 2025-11-06 |
| 2835 |  | Reinforcement | 7d | 2025-11-06 | 2025-11-26 | 2833FS-2.5d | 100% | start no earlier than 2025-11-06 |
| 2836 |  | Wall conduiting | 3d | 2025-11-06 | 2025-11-26 | 2831, 2835SS+1d | 100% | start no earlier than 2025-11-06 |
| 2837 |  | Formwork | 7d | 2025-11-06 | 2025-11-26 | 2835SS+1d | 100% | start no earlier than 2025-11-06 |
| 2838 |  | Concreting | 3.25d | 2025-11-10 | 2025-11-27 | 2837 | 100% | start no earlier than 2025-11-10 |
| 2839 | 37100.37300.37600.38200.39200.43600.173600 | **10th floor slab** | 8.25d | 2025-11-28 | 2025-12-05 |  | 26% | start no earlier than 2025-11-28 |
| 2840 |  | Reinforcement | 8d | 2025-11-28 | 2025-12-05 | 2838FS+1d | 25% | start no earlier than 2025-11-28 |
| 2841 |  | Wall conduiting | 3d | 2025-11-28 | 2025-12-01 | 2836, 2840SS+1d | 33% | start no earlier than 2025-11-28 |
| 2842 |  | Formwork | 7d | 2025-11-28 | 2025-12-05 | 2840SS+1d | 28% | start no earlier than 2025-11-28 |
| 2843 |  | Concreting | 1d | 2025-12-04 | 2025-12-05 | 2842 |  |  |
| 2844 | 37100.37300.37600.38200.39200.43600.173500 | **11th floor slab** | 9d | 2025-12-24 | 2026-01-02 |  |  | start no earlier than 2025-12-24 |
| 2845 |  | Reinforcement | 8d | 2025-12-24 | 2026-01-01 | 2843FS+1d |  |  |
| 2846 |  | Wall conduiting | 3d | 2025-12-25 | 2025-12-28 | 2841, 2845SS+1d |  |  |
| 2847 |  | Formwork | 7d | 2025-12-25 | 2026-01-01 | 2845SS+1d |  |  |
| 2848 |  | Concreting | 1d | 2026-01-01 | 2026-01-02 | 2847 |  |  |
| 2849 | 37100.37300.37600.38200.39200.43600.173400 | **12th floor slab** | 9d | 2026-01-03 | 2026-01-12 |  |  | start no earlier than 2026-01-03 |
| 2850 |  | Reinforcement | 8d | 2026-01-03 | 2026-01-11 | 2848FS+1d |  |  |
| 2851 |  | Wall conduiting | 3d | 2026-01-04 | 2026-01-07 | 2846, 2850SS+1d |  |  |
| 2852 |  | Formwork | 7d | 2026-01-04 | 2026-01-11 | 2850SS+1d |  |  |
| 2853 |  | Concreting | 1d | 2026-01-11 | 2026-01-12 | 2852 |  |  |
| 2854 | 37100.37300.37600.38200.39200.43600.173300 | **13th floor slab** | 9d | 2026-01-08 | 2026-01-17 |  |  | start no earlier than 2026-01-08 |
| 2855 |  | Reinforcement | 8d | 2026-01-08 | 2026-01-16 | 2853FS-4d |  |  |
| 2856 |  | Wall conduiting | 3d | 2026-01-09 | 2026-01-12 | 2851, 2855SS+1d |  |  |
| 2857 |  | Formwork | 7d | 2026-01-09 | 2026-01-16 | 2855SS+1d |  |  |
| 2858 |  | Concreting | 1d | 2026-01-16 | 2026-01-17 | 2857 |  |  |
| 2859 | 37100.37300.37600.38200.39200.43600.173200 | **14th floor slab** | 9d | 2026-01-12 | 2026-01-21 |  |  | start no earlier than 2026-01-12 |
| 2860 |  | Reinforcement | 8d | 2026-01-12 | 2026-01-20 | 2858FS-5d |  |  |
| 2861 |  | Wall conduiting | 3d | 2026-01-13 | 2026-01-16 | 2856, 2860SS+1d |  |  |
| 2862 |  | Formwork | 7d | 2026-01-13 | 2026-01-20 | 2860SS+1d |  |  |
| 2863 |  | Concreting | 1d | 2026-01-20 | 2026-01-21 | 2862 |  |  |
| 2864 | 37100.37300.37600.38200.39200.43600.173100 | **15th floor slab** | 9d | 2026-01-20 | 2026-01-29 |  |  | start no earlier than 2026-01-20 |
| 2865 |  | Reinforcement | 8d | 2026-01-20 | 2026-01-28 | 2863FS-1d |  |  |
| 2866 |  | Wall conduiting | 3d | 2026-01-21 | 2026-01-24 | 2861, 2865SS+1d |  |  |
| 2867 |  | Formwork | 7d | 2026-01-21 | 2026-01-28 | 2865SS+1d |  |  |
| 2868 |  | Concreting | 1d | 2026-01-28 | 2026-01-29 | 2867 |  |  |
| 2869 | 37100.37300.37600.38200.39200.43600.173000 | **16th floor slab** | 7d | 2026-01-30 | 2026-02-06 |  |  | start no earlier than 2026-01-30 |
| 2870 |  | Reinforcement | 6d | 2026-01-30 | 2026-02-05 | 2868FS+1d |  |  |

| ID | WBS | Task | Duration | Start | Finish | Predecessors | Constraint |
| --- | --- | --- | --- | --- | --- | --- | --- |
| 2871 |  | Wall conduiting | 3d | 2026-01-31 | 2026-02-03 | 2866, 2870SS+1d |  |
| 2872 |  | Formwork | 5d | 2026-01-31 | 2026-02-05 | 2870SS+1d |  |
| 2873 |  | Concreting | 1d | 2026-02-05 | 2026-02-06 | 2872 |  |
| 2874 | 37100.37300.37600.38200.39200.43600.172900 | **17th floor slab** | 7d | 2026-02-06 | 2026-02-13 |  | start no earlier than 2026-02-06 |
| 2875 |  | Reinforcement | 6d | 2026-02-06 | 2026-02-12 | 2873 |  |
| 2876 |  | Wall conduiting | 3d | 2026-02-07 | 2026-02-10 | 2871, 2875SS+1d |  |
| 2877 |  | Formwork | 5d | 2026-02-07 | 2026-02-12 | 2875SS+1d |  |
| 2878 |  | Concreting | 1d | 2026-02-12 | 2026-02-13 | 2877 |  |
| 2879 | 37100.37300.37600.38200.39200.43600.172700 | **18th floor slab** | 7d | 2026-02-12 | 2026-02-19 |  | start no earlier than 2026-02-12 |
| 2880 |  | Reinforcement | 6d | 2026-02-12 | 2026-02-18 | 2878FS-1d |  |
| 2881 |  | Wall conduiting | 3d | 2026-02-13 | 2026-02-16 | 2876, 2880SS+1d |  |
| 2882 |  | Formwork | 5d | 2026-02-13 | 2026-02-18 | 2880SS+1d |  |
| 2883 |  | Concreting | 1d | 2026-02-18 | 2026-02-19 | 2882 |  |
| 2884 | 37100.37300.37600.38200.39200.43600.172500 | **19th floor slab** | 7d | 2026-02-18 | 2026-02-25 |  | start no earlier than 2026-02-18 |
| 2885 |  | Reinforcement | 6d | 2026-02-18 | 2026-02-24 | 2883FS-1d |  |
| 2886 |  | Wall conduiting | 3d | 2026-02-19 | 2026-02-22 | 2881, 2885SS+1d |  |
| 2887 |  | Formwork | 5d | 2026-02-19 | 2026-02-24 | 2885SS+1d |  |
| 2888 |  | Concreting | 1d | 2026-02-24 | 2026-02-25 | 2887 |  |
| 2889 | 37100.37300.37600.38200.39200.43600.172400 | **20th floor slab** | 8d | 2026-02-26 | 2026-03-06 |  | start no earlier than 2026-02-26 |
| 2890 |  | Reinforcement | 6d | 2026-02-26 | 2026-03-04 | 2888FS+1d |  |
| 2891 |  | Wall conduiting | 3d | 2026-02-27 | 2026-03-02 | 2886, 2890SS+1d |  |
| 2892 |  | Formwork | 5d | 2026-02-27 | 2026-03-04 | 2890SS+1d |  |
| 2893 |  | Concreting | 2d | 2026-03-04 | 2026-03-06 | 2892 |  |
| 2894 | 37100.37300.37600.38200.39200.43600.172300 | **21st floor slab** | 10d | 2026-03-10 | 2026-03-20 |  | start no earlier than 2026-03-10 |
| 2895 |  | Reinforcement | 9d | 2026-03-10 | 2026-03-19 | 2893FS+4d |  |
| 2896 |  | Wall conduiting | 3d | 2026-03-11 | 2026-03-14 | 2891, 2895SS+1d |  |
| 2897 |  | Formwork | 8d | 2026-03-11 | 2026-03-19 | 2895SS+1d |  |
| 2898 |  | Concreting | 1d | 2026-03-19 | 2026-03-20 | 2897 |  |
| 2899 | 37100.37300.37600.38200.39200.43600.172200 | **22nd floor slab** | 10d | 2026-03-24 | 2026-04-03 |  | start no earlier than 2026-03-24 |
| 2900 |  | Reinforcement | 9d | 2026-03-24 | 2026-04-02 | 2898FS+4d |  |
| 2901 |  | Wall conduiting | 3d | 2026-03-25 | 2026-03-28 | 2896, 2900SS+1d |  |
| 2902 |  | Formwork | 8d | 2026-03-25 | 2026-04-02 | 2900SS+1d |  |
| 2903 |  | Concreting | 1d | 2026-04-02 | 2026-04-03 | 2902 |  |
| 2904 | 37100.37300.37600.38200.39200.43600.172100 | **23rd floor slab** | 10d | 2026-04-07 | 2026-04-17 |  | start no earlier than 2026-04-07 |
| 2905 |  | Reinforcement | 9d | 2026-04-07 | 2026-04-16 | 2903FS+4d |  |
| 2906 |  | Wall conduiting | 3d | 2026-04-08 | 2026-04-11 | 2901, 2905SS+1d |  |
| 2907 |  | Formwork | 8d | 2026-04-08 | 2026-04-16 | 2905SS+1d |  |
| 2908 |  | Concreting | 1d | 2026-04-16 | 2026-04-17 | 2907 |  |
| 2909 | 37100.37300.37600.38200.39200.43600.172000 | **24th floor slab** | 12d | 2026-04-19 | 2026-05-01 |  | start no earlier than 2026-04-19 |
| 2910 |  | Reinforcement | 10d | 2026-04-19 | 2026-04-29 | 2908FS+2d |  |
| 2911 |  | Wall conduiting | 3d | 2026-04-20 | 2026-04-23 | 2906, 2910SS+1d |  |
| 2912 |  | Formwork | 10d | 2026-04-20 | 2026-04-30 | 2910SS+1d |  |
| 2913 |  | Concreting | 1d | 2026-04-30 | 2026-05-01 | 2912 |  |
| 2914 | 37100.37300.37600.38200.39200.43600.171900 | **25th floor slab** | 13d | 2026-05-02 | 2026-05-15 |  | start no earlier than 2026-05-02 |
| 2915 |  | Reinforcement | 10d | 2026-05-02 | 2026-05-12 | 2913FS+1d |  |
| 2916 |  | Wall conduiting | 3d | 2026-05-03 | 2026-05-06 | 2911, 2915SS+1d |  |
| 2917 |  | Formwork | 10d | 2026-05-03 | 2026-05-13 | 2915SS+1d |  |
| 2918 |  | Concreting | 2d | 2026-05-13 | 2026-05-15 | 2917 |  |
| 2919 | 37100.37300.37600.38200.39200.43600.171800 | **26th floor slab** | 10d | 2026-05-16 | 2026-05-26 |  | start no earlier than 2026-05-16 |
| 2920 |  | Reinforcement | 9d | 2026-05-16 | 2026-05-25 | 2918FS+1d |  |
| 2921 |  | Wall conduiting | 3d | 2026-05-17 | 2026-05-20 | 2916, 2920SS+1d |  |
| 2922 |  | Formwork | 8d | 2026-05-17 | 2026-05-25 | 2920SS+1d |  |
| 2923 |  | Concreting | 1d | 2026-05-25 | 2026-05-26 | 2922 |  |
| 2924 | 37100.37300.37600.38200.39200.43600.171700 | **27th floor slab** | 10d | 2026-05-26 | 2026-06-05 |  | start no earlier than 2026-05-26 |
| 2925 |  | Reinforcement | 9d | 2026-05-26 | 2026-06-04 | 2923 |  |
| 2926 |  | Wall conduiting | 3d | 2026-05-27 | 2026-05-30 | 2921, 2925SS+1d |  |
| 2927 |  | Formwork | 8d | 2026-05-27 | 2026-06-04 | 2925SS+1d |  |
| 2928 |  | Concreting | 1d | 2026-06-04 | 2026-06-05 | 2927 |  |
| 2929 | 37100.37300.37600.38200.39200.43600.171600 | **28th floor slab** | 10d | 2026-06-05 | 2026-06-15 |  | start no earlier than 2026-06-05 |
| 2930 |  | Reinforcement | 9d | 2026-06-05 | 2026-06-14 | 2928 |  |
| 2931 |  | Wall conduiting | 3d | 2026-06-06 | 2026-06-09 | 2926, 2930SS+1d |  |
| 2932 |  | Formwork | 8d | 2026-06-06 | 2026-06-14 | 2930SS+1d |  |
| 2933 |  | Concreting | 1d | 2026-06-14 | 2026-06-15 | 2932 |  |
| 2934 | 37100.37300.37600.38200.39200.43600.171500 | **29th floor slab** | 10d | 2026-06-18 | 2026-06-28 |  | start no earlier than 2026-06-18 |
| 2935 |  | Reinforcement | 9d | 2026-06-18 | 2026-06-27 | 2933FS+3d |  |
| 2936 |  | Wall conduiting | 3d | 2026-06-19 | 2026-06-22 | 2931, 2935SS+1d |  |
| 2937 |  | Formwork | 8d | 2026-06-19 | 2026-06-27 | 2935SS+1d |  |
| 2938 |  | Concreting | 1d | 2026-06-27 | 2026-06-28 | 2937 |  |
| 2939 | 37100.37300.37600.38200.39200.43600.171400 | **30th floor slab** | 10d | 2026-06-30 | 2026-07-10 |  | start no earlier than 2026-06-30 |
| 2940 |  | Reinforcement | 9d | 2026-06-30 | 2026-07-09 | 2938FS+2d |  |

| ID | WBS | Task | Duration | Start | Finish | Predecessors | Constraint |
| --- | --- | --- | --- | --- | --- | --- | --- |
| 2941 |  | Wall conduiting | 3d | 2026-07-01 | 2026-07-04 | 2936, 2940SS+1d |  |
| 2942 |  | Formwork | 8d | 2026-07-01 | 2026-07-09 | 2940SS+1d |  |
| 2943 |  | Concreting | 1d | 2026-07-09 | 2026-07-10 | 2942 |  |
| 2944 | 37100.37300.37600.38200.39200.43600.171300 | **31st floor slab** | 10d | 2026-07-14 | 2026-07-24 |  | start no earlier than 2026-07-14 |
| 2945 |  | Reinforcement | 9d | 2026-07-14 | 2026-07-23 | 2943FS+4d |  |
| 2946 |  | Wall conduiting | 3d | 2026-07-15 | 2026-07-18 | 2941, 2945SS+1d |  |
| 2947 |  | Formwork | 8d | 2026-07-15 | 2026-07-23 | 2945SS+1d |  |
| 2948 |  | Concreting | 1d | 2026-07-23 | 2026-07-24 | 2947 |  |
| 2949 | 37100.37300.37600.38200.39200.43600.171200 | **32nd floor slab** | 18d | 2026-07-27 | 2026-08-14 |  | start no earlier than 2026-07-27 |
| 2950 |  | Reinforcement | 18d | 2026-07-27 | 2026-08-14 | 2948FS+3d |  |
| 2951 |  | Wall conduiting | 9d | 2026-07-28 | 2026-08-06 | 2946, 2950SS+1d |  |
| 2952 |  | Formwork | 12d | 2026-07-29 | 2026-08-10 | 2950SS+1.88d |  |
| 2953 |  | Concreting | 1d | 2026-08-10 | 2026-08-11 | 2952 |  |
| 2954 | 37100.37300.37600.38200.39200.43600.171100 | **33rd floor slab** | 11.88d | 2026-08-14 | 2026-08-25 |  | start no earlier than 2026-08-14 |
| 2955 |  | Reinforcement | 9d | 2026-08-14 | 2026-08-23 | 2953FS+3d |  |
| 2956 |  | Wall conduiting | 5d | 2026-08-15 | 2026-08-20 | 2951, 2955SS+1d |  |
| 2957 |  | Formwork | 9d | 2026-08-16 | 2026-08-24 | 2955SS+1.88d |  |
| 2958 |  | Concreting | 1d | 2026-08-25 | 2026-08-25 | 2957 |  |
| 2959 | 37100.37300.37600.38200.39200.43600.171000 | **34th floor slab** | 12.75d | 2026-08-30 | 2026-09-11 |  | start no earlier than 2026-08-30 |
| 2960 |  | Reinforcement | 9.94d | 2026-08-30 | 2026-09-08 | 2958FS+4d |  |
| 2961 |  | Wall conduiting | 1.94d | 2026-08-31 | 2026-09-01 | 2956, 2960SS+1d |  |
| 2962 |  | Formwork | 9.94d | 2026-08-31 | 2026-09-10 | 2960SS+1.88d |  |
| 2963 |  | Concreting | 0.94d | 2026-09-10 | 2026-09-11 | 2962 |  |
| 2964 | 37100.37300.37600.38200.39200.43600.170900 | **35th floor slab** | 14.88d | 2026-09-15 | 2026-09-30 |  | start no earlier than 2026-09-15 |
| 2965 |  | Reinforcement | 12d | 2026-09-15 | 2026-09-27 | 2963FS+4d |  |
| 2966 |  | Wall conduiting | 3d | 2026-09-16 | 2026-09-19 | 2961, 2965SS+1d |  |
| 2967 |  | Formwork | 11d | 2026-09-18 | 2026-09-29 | 2966SS+1.88d |  |
| 2968 |  | Concreting | 1d | 2026-09-29 | 2026-09-30 | 2967 |  |
| 2969 | 37100.37300.37600.38200.39200.43600.170800 | **Terrace floor slab** | 19.88d | 2026-09-30 | 2026-10-20 |  | start no earlier than 2026-09-30 |
| 2970 |  | Reinforcement | 16d | 2026-09-30 | 2026-10-16 | 2968 |  |
| 2971 |  | Wall conduiting | 4d | 2026-10-01 | 2026-10-05 | 2966, 2970SS+1d |  |
| 2972 |  | Formwork | 16d | 2026-10-02 | 2026-10-18 | 2970SS+1.88d |  |
| 2973 |  | Concreting | 2d | 2026-10-18 | 2026-10-20 | 2972 |  |
| 2974 | 37100.37300.37600.38200.39200.43600.170700 | **OHT & Mumty** | 39.5d | 2026-10-20 | 2027-01-12 |  | start no earlier than 2026-10-20 |
| 2975 |  | Reinforcement | 29.94d | 2026-10-20 | 2027-01-03 | 2973 |  |
| 2976 |  | Wall conduiting | 4.94d | 2026-10-21 | 2026-10-26 | 2971, 2975SS+1d |  |
| 2977 |  | Formwork | 32.94d | 2026-10-24 | 2027-01-10 | 2975SS+3.62d |  |
| 2978 |  | Concreting | 2.94d | 2027-01-10 | 2027-01-12 | 2977 |  |
| 2979 | 37100.37300.37600.38200.39200.45600 | **Post Pour Activities** | 396.75d | 2025-11-30 | 2027-02-23 |  | start no earlier than 2025-11-30 |
| 2980 |  | 1st Floor | 7d | 2025-11-30 | 2025-12-16 | 2818 |  |
| 2981 |  | 2nd Floor | 7d | 2025-12-16 | 2025-12-23 | 2980, 2828 |  |
| 2982 |  | 3rd Floor | 7d | 2025-12-23 | 2025-12-30 | 2981, 2833 |  |
| 2983 |  | 4th Floor | 7d | 2025-12-30 | 2026-01-06 | 2982, 2838 |  |
| 2984 |  | 5th Floor | 7d | 2026-01-06 | 2026-01-13 | 2983, 2843 |  |
| 2985 |  | 6th Floor | 7d | 2026-01-13 | 2026-01-20 | 2984, 2848 |  |
| 2986 |  | 7th Floor | 7d | 2026-01-20 | 2026-01-27 | 2985, 2853 |  |
| 2987 |  | 8th Floor | 7d | 2026-01-27 | 2026-02-03 | 2986, 2858 |  |
| 2988 |  | 9th Floor | 7d | 2026-02-03 | 2026-02-10 | 2987, 2863 |  |
| 2989 |  | 10th Floor | 7d | 2026-02-10 | 2026-02-17 | 2988, 2868 |  |
| 2990 |  | 11th Floor | 7d | 2026-02-17 | 2026-02-24 | 2989, 2873 |  |
| 2991 |  | 12th Floor | 7d | 2026-02-24 | 2026-03-03 | 2990, 2878 |  |
| 2992 |  | 13th Floor | 7d | 2026-03-03 | 2026-03-10 | 2991, 2883 |  |
| 2993 |  | 14th Floor | 7d | 2026-03-10 | 2026-03-17 | 2992, 2888 |  |
| 2994 |  | 15th Floor | 7d | 2026-03-17 | 2026-03-24 | 2993, 2893 |  |
| 2995 |  | 16th Floor | 7d | 2026-03-24 | 2026-03-31 | 2994, 2898 |  |
| 2996 |  | 17th Floor | 7d | 2026-04-03 | 2026-04-10 | 2995, 2903 |  |
| 2997 |  | 18th Floor | 7d | 2026-04-17 | 2026-04-24 | 2996, 2908 |  |
| 2998 |  | 19th Floor | 7d | 2026-05-01 | 2026-05-08 | 2997, 2913 |  |
| 2999 |  | 20th Floor | 7d | 2026-05-15 | 2026-05-22 | 2998, 2918 |  |
| 3000 |  | 21st Floor | 7d | 2026-05-26 | 2026-06-02 | 2999, 2923 |  |
| 3001 |  | 22nd Floor | 7d | 2026-06-05 | 2026-06-12 | 3000, 2928 |  |
| 3002 |  | 23rd Floor | 7d | 2026-06-15 | 2026-06-22 | 3001, 2933 |  |
| 3003 |  | 24th Floor | 7d | 2026-06-28 | 2026-07-05 | 3002, 2938 |  |
| 3004 |  | 25th Floor | 7d | 2026-07-10 | 2026-07-17 | 3003, 2943 |  |
| 3005 |  | 26th Floor | 7d | 2026-07-24 | 2026-07-31 | 3004, 2948 |  |
| 3006 |  | 27th Floor | 7d | 2026-08-11 | 2026-08-18 | 3005, 2953 |  |
| 3007 |  | 28th Floor | 7d | 2026-08-26 | 2026-09-01 | 3006, 2958 |  |
| 3008 |  | 29th Floor | 7d | 2026-09-11 | 2026-09-18 | 3007, 2963 |  |
| 3009 |  | 30th Floor | 7d | 2026-09-30 | 2026-10-07 | 3008, 2968 |  |
| 3010 |  | 31st Floor | 7d | 2026-10-20 | 2026-10-27 | 3009, 2973 |  |

| ID | WBS | Task | Duration | Start | Finish | Predecessors | Constraint |
| --- | --- | --- | --- | --- | --- | --- | --- |
| 3011 |  | 32nd Flood | 7d | 2027-01-13 | 2027-01-19 | 3010, 2978 |  |
| 3012 |  | 33rd Floor | 7d | 2027-01-20 | 2027-01-26 | 3011 |  |
| 3013 |  | 34th Floor | 7d | 2027-01-27 | 2027-02-02 | 3012 |  |
| 3014 |  | 35th Floor | 7d | 2027-02-03 | 2027-02-09 | 3013 |  |
| 3015 |  | Terrace | 7d | 2027-02-10 | 2027-02-16 | 3014 |  |
| 3016 |  | Mumty & Machine Room | 7d | 2027-02-17 | 2027-02-23 | 3015 |  |
| 3017 | 37100.37300.37600.38200.39200.40600 | **Finishing work** | 806.31d | 2025-12-16 | 2028-04-15 |  | start no earlier than 2025-12-16 |
| 3018 | 37100.37300.37600.38200.39200.40600.41600 | **Flat finishing** | 806.31d | 2025-12-16 | 2028-04-15 |  | start no earlier than 2025-12-16 |
| 3019 | 37100.37300.37600.38200.39200.40600.41600.68100 | **1st Floor** | 421.25d | 2025-12-16 | 2027-03-27 |  | start no earlier than 2025-12-16 |
| 3020 |  | Block Work | 8d | 2025-12-16 | 2025-12-24 | 2980FS+0.25d |  |
| 3021 |  | Door Frame Fixing | 9d | 2025-12-24 | 2026-01-02 | 3020 |  |
| 3022 |  | Internal Plumbing Works | 8d | 2025-12-24 | 2026-01-01 | 3020 |  |
| 3023 |  | Waterproofing | 10d | 2026-01-01 | 2026-01-11 | 3022 |  |
| 3024 |  | Internal Plaster | 8d | 2026-01-12 | 2026-01-20 | 3020FS+1d, 3022FS+1d, 3023FS+1d |  |
| 3025 |  | IPS flooring work | 10d | 2026-01-11 | 2026-01-21 | 3021, 3022, 3023 |  |
| 3026 |  | Toilet dado work | 8d | 2026-01-21 | 2026-01-29 | 2828, 3024FS+1d |  |
| 3027 |  | Toilet flooring work | 8d | 2026-01-29 | 2026-02-06 | 3026 |  |
| 3028 |  | Living dinning flooring | 12d | 2026-01-02 | 2026-01-14 | 3021FS+0.25d |  |
| 3029 |  | Aluminium door-window fixing | 12d | 2026-01-21 | 2026-02-02 | 3025FS+0.25d |  |
| 3030 |  | Putty primer coat | 6d | 2026-01-14 | 2026-01-20 | 3028 |  |
| 3031 |  | Door shutter fixing | 8d | 2026-01-14 | 2026-01-22 | 3028 |  |
| 3032 |  | Electrical wiring work | 8d | 2027-03-03 | 2027-03-11 | 3031FS+360d |  |
| 3033 |  | Painting 1st coat | 8d | 2027-03-11 | 2027-03-19 | 3030, 3031, 3032 |  |
| 3034 |  | False ceiling | 8d | 2027-03-19 | 2027-03-27 | 3033 |  |
| 3035 | 37100.37300.37600.38200.39200.40600.41600.68200 | **2nd Floor** | 445.25d | 2025-12-24 | 2027-04-28 |  | start no earlier than 2025-12-24 |
| 3036 |  | Block Work | 8d | 2025-12-24 | 2026-01-01 | 3020FS+0.25d |  |
| 3037 |  | Door Frame Fixing | 9d | 2026-01-02 | 2026-01-11 | 3021, 3036 |  |
| 3038 |  | Internal Plumbing Works | 8d | 2026-01-01 | 2026-01-09 | 3022, 3036 |  |
| 3039 |  | Waterproofing | 10d | 2026-01-11 | 2026-01-21 | 3023, 3038 |  |
| 3040 |  | Internal Plaster | 8d | 2026-01-02 | 2026-01-09 | 3036FS+0.25d |  |
| 3041 |  | IPS flooring work | 10d | 2026-01-21 | 2026-01-31 | 3025, 3037, 3038, 3039 |  |
| 3042 |  | Toilet dado work | 8d | 2026-01-29 | 2026-02-06 | 3026FS+0.25d |  |
| 3043 |  | Toilet flooring work | 8d | 2026-02-06 | 2026-02-14 | 3027, 3042 |  |
| 3044 |  | Living dinning flooring | 12d | 2026-01-15 | 2026-01-26 | 3028FS+0.25d |  |
| 3045 |  | Aluminium door-window fixing | 12d | 2026-02-03 | 2026-02-14 | 3029FS+0.25d |  |
| 3046 |  | Putty primer coat | 6d | 2026-01-27 | 2026-02-01 | 3030, 3044 |  |
| 3047 |  | Door shutter fixing | 8d | 2026-01-27 | 2026-02-03 | 3031, 3044 |  |
| 3048 |  | Electrical wiring work | 20d | 2027-03-12 | 2027-03-31 | 3032FS+0.25d, 3047FS+300d |  |
| 3049 |  | Painting 1st coat | 20d | 2027-04-01 | 2027-04-20 | 3033, 3046, 3047, 3048 |  |
| 3050 |  | False ceiling | 8d | 2027-04-21 | 2027-04-28 | 3034, 3049 |  |
| 3051 | 37100.37300.37600.38200.39200.40600.41600.68300 | **3rd Floor** | 445d | 2026-01-02 | 2027-05-06 |  | start no earlier than 2026-01-02 |
| 3052 |  | Block Work | 8d | 2026-01-02 | 2026-01-09 | 3036FS+0.25d |  |
| 3053 |  | Door Frame Fixing | 9d | 2026-01-11 | 2026-01-20 | 3037, 3052 |  |
| 3054 |  | Internal Plumbing Works | 8d | 2026-01-10 | 2026-01-17 | 3038, 3052 |  |
| 3055 |  | Waterproofing | 10d | 2026-01-21 | 2026-01-31 | 3039, 3054 |  |
| 3056 |  | Internal Plaster | 8d | 2026-01-10 | 2026-01-18 | 3040FS+0.25d |  |
| 3057 |  | IPS flooring work | 10d | 2026-01-31 | 2026-02-10 | 3041, 3053, 3055, 3056 |  |
| 3058 |  | Toilet dado work | 8d | 2026-02-07 | 2026-02-14 | 3042FS+0.25d |  |
| 3059 |  | Toilet flooring work | 8d | 2026-02-15 | 2026-02-22 | 3043, 3058 |  |
| 3060 |  | Living dinning flooring | 12d | 2026-01-27 | 2026-02-08 | 3044FS+0.25d |  |
| 3061 |  | Aluminium door-window fixing | 12d | 2026-02-15 | 2026-02-27 | 3045FS+0.25d |  |
| 3062 |  | Putty primer coat | 6d | 2026-02-08 | 2026-02-14 | 3046, 3060 |  |
| 3063 |  | Door shutter fixing | 8d | 2026-02-08 | 2026-02-16 | 3047, 3060 |  |
| 3064 |  | Electrical wiring work | 8d | 2027-04-01 | 2027-04-08 | 3048, 3063 |  |
| 3065 |  | Painting 1st coat | 8d | 2027-04-21 | 2027-04-28 | 3049, 3062, 3063, 3064 |  |
| 3066 |  | False ceiling | 8d | 2027-04-29 | 2027-05-06 | 3050, 3065 |  |
| 3067 | 37100.37300.37600.38200.39200.40600.41600.68400 | **4th Floor** | 444.75d | 2026-01-10 | 2027-05-14 |  | start no earlier than 2026-01-10 |
| 3068 |  | Block Work | 8d | 2026-01-10 | 2026-01-18 | 3052FS+0.25d |  |
| 3069 |  | Door Frame Fixing | 9d | 2026-01-20 | 2026-01-29 | 3053, 3068 |  |
| 3070 |  | Internal Plumbing Works | 8d | 2026-01-18 | 2026-01-26 | 3054, 3068 |  |
| 3071 |  | Waterproofing | 10d | 2026-01-31 | 2026-02-10 | 3055, 3070 |  |
| 3072 |  | Internal Plaster | 8d | 2026-01-18 | 2026-01-26 | 3056FS+0.25d |  |
| 3073 |  | IPS flooring work | 10d | 2026-02-10 | 2026-02-20 | 3057, 3069, 3071, 3072 |  |
| 3074 |  | Toilet dado work | 8d | 2026-02-15 | 2026-02-23 | 3058FS+0.25d |  |
| 3075 |  | Toilet flooring work | 8d | 2026-02-23 | 2026-03-03 | 3059, 3074 |  |
| 3076 |  | Living dinning flooring | 12d | 2026-02-08 | 2026-02-20 | 3060FS+0.25d |  |
| 3077 |  | Aluminium door-window fixing | 12d | 2026-02-27 | 2026-03-11 | 3061FS+0.25d |  |
| 3078 |  | Putty primer coat | 6d | 2026-02-20 | 2026-02-26 | 3062, 3076 |  |
| 3079 |  | Door shutter fixing | 8d | 2026-02-20 | 2026-02-28 | 3063, 3076 |  |
| 3080 |  | Electrical wiring work | 8d | 2027-04-09 | 2027-04-16 | 3064, 3079 |  |

| ID | WBS | Task | Duration | Start | Finish | Predecessors | Constraint |
| --- | --- | --- | --- | --- | --- | --- | --- |
| 3081 |  | Painting 1st coat | 8d | 2027-04-29 | 2027-05-06 | 3065, 3078, 3079, 3080 |  |
| 3082 |  | False ceiling | 8d | 2027-05-07 | 2027-05-14 | 3066, 3081 |  |
| 3083 | 37100.37300.37600.38200.39200.40600.41600.68500 | **5th Floor** | 444.5d | 2026-01-18 | 2027-05-22 |  | start no earlier than 2026-01-18 |
| 3084 |  | Block Work | 8d | 2026-01-18 | 2026-01-26 | 3068FS+0.25d |  |
| 3085 |  | Door Frame Fixing | 9d | 2026-01-29 | 2026-02-07 | 3069, 3084 |  |
| 3086 |  | Internal Plumbing Works | 8d | 2026-01-26 | 2026-02-03 | 3070, 3084 |  |
| 3087 |  | Waterproofing | 10d | 2026-02-10 | 2026-02-20 | 3071, 3086 |  |
| 3088 |  | Internal Plaster | 8d | 2026-01-26 | 2026-02-03 | 3072FS+0.25d |  |
| 3089 |  | IPS flooring work | 10d | 2026-02-20 | 2026-03-02 | 3073, 3085, 3087, 3088 |  |
| 3090 |  | Toilet dado work | 8d | 2026-02-23 | 2026-03-03 | 3074, 3087, 3088 |  |
| 3091 |  | Toilet flooring work | 8d | 2026-03-03 | 2026-03-11 | 3075, 3090 |  |
| 3092 |  | Living dinning flooring | 12d | 2026-02-20 | 2026-03-04 | 3076FS+0.25d |  |
| 3093 |  | Aluminium door-window fixing | 12d | 2026-03-11 | 2026-03-23 | 3077FS+0.25d |  |
| 3094 |  | Putty primer coat | 6d | 2026-03-04 | 2026-03-10 | 3078, 3092 |  |
| 3095 |  | Door shutter fixing | 8d | 2026-03-04 | 2026-03-12 | 3079, 3092 |  |
| 3096 |  | Electrical wiring work | 8d | 2027-04-17 | 2027-04-24 | 3080, 3095 |  |
| 3097 |  | Painting 1st coat | 8d | 2027-05-07 | 2027-05-14 | 3081, 3094, 3095, 3096 |  |
| 3098 |  | False ceiling | 8d | 2027-05-15 | 2027-05-22 | 3082, 3097 |  |
| 3099 | 37100.37300.37600.38200.39200.40600.41600.68600 | **6th Floor** | 444.25d | 2026-01-26 | 2027-05-30 |  | start no earlier than 2026-01-26 |
| 3100 |  | Block Work | 8d | 2026-01-26 | 2026-02-03 | 3084FS+0.25d |  |
| 3101 |  | Door Frame Fixing | 9d | 2026-02-07 | 2026-02-16 | 2833, 3085 |  |
| 3102 |  | Internal Plumbing Works | 8d | 2026-02-03 | 2026-02-11 | 3086, 3100 |  |
| 3103 |  | Waterproofing | 10d | 2026-02-20 | 2026-03-02 | 3087, 3102 |  |
| 3104 |  | Internal Plaster | 8d | 2026-02-04 | 2026-02-11 | 3088FS+0.25d |  |
| 3105 |  | IPS flooring work | 10d | 2026-03-02 | 2026-03-12 | 3089, 3101, 3103, 3104 |  |
| 3106 |  | Toilet dado work | 8d | 2026-03-03 | 2026-03-11 | 3090, 3103, 3104 |  |
| 3107 |  | Toilet flooring work | 8d | 2026-03-11 | 2026-03-19 | 3091, 3106 |  |
| 3108 |  | Living dinning flooring | 12d | 2026-03-05 | 2026-03-16 | 3092FS+0.25d |  |
| 3109 |  | Aluminium door-window fixing | 12d | 2026-03-24 | 2026-04-04 | 3093FS+0.25d |  |
| 3110 |  | Putty primer coat | 6d | 2026-03-17 | 2026-03-22 | 3094, 3108 |  |
| 3111 |  | Door shutter fixing | 8d | 2026-03-17 | 2026-03-24 | 3095, 3108 |  |
| 3112 |  | Electrical wiring work | 8d | 2027-04-25 | 2027-05-02 | 3096, 3111 |  |
| 3113 |  | Painting 1st coat | 8d | 2027-05-15 | 2027-05-22 | 3097, 3110, 3111, 3112 |  |
| 3114 |  | False ceiling | 8d | 2027-05-23 | 2027-05-30 | 3098, 3113 |  |
| 3115 | 37100.37300.37600.38200.39200.40600.41600.68700 | **7th Floor** | 451d | 2026-02-04 | 2027-06-14 |  | start no earlier than 2026-02-04 |
| 3116 |  | Block Work | 8d | 2026-02-04 | 2026-02-11 | 3100FS+0.25d |  |
| 3117 |  | Door Frame Fixing | 9d | 2026-02-16 | 2026-02-25 | 3101, 3116 |  |
| 3118 |  | Internal Plumbing Works | 8d | 2026-02-12 | 2026-02-19 | 3102, 3116 |  |
| 3119 |  | Waterproofing | 10d | 2026-03-02 | 2026-03-12 | 3103, 3118 |  |
| 3120 |  | Internal Plaster | 8d | 2026-02-12 | 2026-02-20 | 3104FS+0.25d |  |
| 3121 |  | IPS flooring work | 10d | 2026-03-12 | 2026-03-22 | 3105, 3117, 3119, 3120 |  |
| 3122 |  | Toilet dado work | 8d | 2026-03-12 | 2026-03-20 | 3106, 3119, 3120 |  |
| 3123 |  | Toilet flooring work | 8d | 2026-03-20 | 2026-03-28 | 3107, 3122 |  |
| 3124 |  | Living dinning flooring | 12d | 2026-03-17 | 2026-03-29 | 3108FS+0.25d |  |
| 3125 |  | Aluminium door-window fixing | 12d | 2026-04-05 | 2026-04-17 | 3109FS+0.25d |  |
| 3126 |  | Putty primer coat | 6d | 2026-03-29 | 2026-04-04 | 3110, 3124 |  |
| 3127 |  | Door shutter fixing | 8d | 2026-03-29 | 2026-04-06 | 3111, 3124 |  |
| 3128 |  | Electrical wiring work | 15d | 2027-05-03 | 2027-05-17 | 3112, 3127 |  |
| 3129 |  | Painting 1st coat | 15d | 2027-05-23 | 2027-06-06 | 3113, 3126, 3127, 3128 |  |
| 3130 |  | False ceiling | 8d | 2027-06-07 | 2027-06-14 | 3114, 3129 |  |
| 3131 | 37100.37300.37600.38200.39200.40600.41600.68800 | **8th Floor** | 450.75d | 2026-02-12 | 2027-06-22 |  | start no earlier than 2026-02-12 |
| 3132 |  | Block Work | 8d | 2026-02-12 | 2026-02-20 | 3116FS+0.25d |  |
| 3133 |  | Door Frame Fixing | 9d | 2026-02-25 | 2026-03-06 | 3117, 3132 |  |
| 3134 |  | Internal Plumbing Works | 8d | 2026-02-20 | 2026-02-28 | 3118, 3132 |  |
| 3135 |  | Waterproofing | 10d | 2026-03-12 | 2026-03-22 | 3119, 3134 |  |
| 3136 |  | Internal Plaster | 8d | 2026-02-20 | 2026-02-28 | 3120FS+0.25d |  |
| 3137 |  | IPS flooring work | 10d | 2026-03-22 | 2026-04-01 | 3121, 3133, 3135, 3136 |  |
| 3138 |  | Toilet dado work | 8d | 2026-03-22 | 2026-03-30 | 3122, 3135, 3136 |  |
| 3139 |  | Toilet flooring work | 8d | 2026-03-30 | 2026-04-07 | 3123, 3138 |  |
| 3140 |  | Living dinning flooring | 12d | 2026-03-29 | 2026-04-10 | 3124FS+0.25d |  |
| 3141 |  | Aluminium door-window fixing | 12d | 2026-04-17 | 2026-04-29 | 3125FS+0.25d |  |
| 3142 |  | Putty primer coat | 6d | 2026-04-10 | 2026-04-16 | 3126, 3140 |  |
| 3143 |  | Door shutter fixing | 8d | 2026-04-10 | 2026-04-18 | 3127, 3140 |  |
| 3144 |  | Electrical wiring work | 8d | 2027-05-18 | 2027-05-25 | 3128, 3143 |  |
| 3145 |  | Painting 1st coat | 8d | 2027-06-07 | 2027-06-14 | 3129, 3142, 3143, 3144 |  |
| 3146 |  | False ceiling | 8d | 2027-06-15 | 2027-06-22 | 3130, 3145 |  |
| 3147 | 37100.37300.37600.38200.39200.40600.41600.68900 | **9th Floor** | 450.5d | 2026-02-20 | 2027-06-30 |  | start no earlier than 2026-02-20 |
| 3148 |  | Block Work | 8d | 2026-02-20 | 2026-02-28 | 3132FS+0.25d |  |
| 3149 |  | Door Frame Fixing | 9d | 2026-03-06 | 2026-03-15 | 3133, 3148 |  |
| 3150 |  | Internal Plumbing Works | 8d | 2026-02-28 | 2026-03-08 | 3134, 3148 |  |

| ID | WBS | Task | Duration | Start | Finish | Predecessors | Constraint |
| --- | --- | --- | --- | --- | --- | --- | --- |
| 3151 |  | Waterproofing | 10d | 2026-03-22 | 2026-04-01 | 3135, 3150 |  |
| 3152 |  | Internal Plaster | 8d | 2026-02-28 | 2026-03-08 | 3136FS+0.25d |  |
| 3153 |  | IPS flooring work | 10d | 2026-04-01 | 2026-04-11 | 3137, 3149, 3151, 3152 |  |
| 3154 |  | Toilet dado work | 8d | 2026-04-01 | 2026-04-09 | 3138, 3151, 3152 |  |
| 3155 |  | Toilet flooring work | 8d | 2026-04-09 | 2026-04-17 | 3139, 3154 |  |
| 3156 |  | Living dinning flooring | 12d | 2026-04-10 | 2026-04-22 | 3140FS+0.25d |  |
| 3157 |  | Aluminium door-window fixing | 12d | 2026-04-29 | 2026-05-11 | 3141FS+0.25d |  |
| 3158 |  | Putty primer coat | 6d | 2026-04-22 | 2026-04-28 | 3142, 3156 |  |
| 3159 |  | Door shutter fixing | 8d | 2026-04-22 | 2026-04-30 | 3143, 3156 |  |
| 3160 |  | Electrical wiring work | 8d | 2027-05-26 | 2027-06-02 | 3144, 3159 |  |
| 3161 |  | Painting 1st coat | 8d | 2027-06-15 | 2027-06-22 | 3145, 3158, 3159, 3160 |  |
| 3162 |  | False ceiling | 8d | 2027-06-23 | 2027-06-30 | 3146, 3161 |  |
| 3163 | 37100.37300.37600.38200.39200.40600.41600.69000 | **10th Floor** | 450.25d | 2026-02-28 | 2027-07-08 |  | start no earlier than 2026-02-28 |
| 3164 |  | Block Work | 8d | 2026-02-28 | 2026-03-08 | 3148FS+0.25d |  |
| 3165 |  | Door Frame Fixing | 9d | 2026-03-15 | 2026-03-24 | 3149, 3164 |  |
| 3166 |  | Internal Plumbing Works | 8d | 2026-03-08 | 2026-03-16 | 3150, 3164 |  |
| 3167 |  | Waterproofing | 10d | 2026-04-01 | 2026-04-11 | 3151, 3166 |  |
| 3168 |  | Internal Plaster | 8d | 2026-03-09 | 2026-03-16 | 3152FS+0.25d |  |
| 3169 |  | IPS flooring work | 10d | 2026-04-11 | 2026-04-21 | 3153, 3165, 3167, 3168 |  |
| 3170 |  | Toilet dado work | 8d | 2026-04-11 | 2026-04-19 | 3154, 3167, 3168 |  |
| 3171 |  | Toilet flooring work | 8d | 2026-04-19 | 2026-04-27 | 3155, 3170 |  |
| 3172 |  | Living dinning flooring | 12d | 2026-04-23 | 2026-05-04 | 3156FS+0.25d |  |
| 3173 |  | Aluminium door-window fixing | 12d | 2026-05-12 | 2026-05-23 | 3157FS+0.25d |  |
| 3174 |  | Putty primer coat | 6d | 2026-05-05 | 2026-05-10 | 3158, 3172 |  |
| 3175 |  | Door shutter fixing | 8d | 2026-05-05 | 2026-05-12 | 3159, 3172 |  |
| 3176 |  | Electrical wiring work | 8d | 2027-06-03 | 2027-06-10 | 3160, 3175 |  |
| 3177 |  | Painting 1st coat | 8d | 2027-06-23 | 2027-06-30 | 3161, 3174, 3175, 3176 |  |
| 3178 |  | False ceiling | 8d | 2027-07-01 | 2027-07-08 | 3162, 3177 |  |
| 3179 | 37100.37300.37600.38200.39200.40600.41600.69100 | **11th Floor** | 450d | 2026-03-09 | 2027-07-16 |  | start no earlier than 2026-03-09 |
| 3180 |  | Block Work | 8d | 2026-03-09 | 2026-03-16 | 3164FS+0.25d |  |
| 3181 |  | Door Frame Fixing | 9d | 2026-03-24 | 2026-04-02 | 3165, 3180 |  |
| 3182 |  | Internal Plumbing Works | 8d | 2026-03-17 | 2026-03-24 | 3166, 3180 |  |
| 3183 |  | Waterproofing | 10d | 2026-04-11 | 2026-04-21 | 3167, 3182 |  |
| 3184 |  | Internal Plaster | 8d | 2026-03-17 | 2026-03-25 | 3168FS+0.25d |  |
| 3185 |  | IPS flooring work | 10d | 2026-04-21 | 2026-05-01 | 3169, 3181, 3182, 3183 |  |
| 3186 |  | Toilet dado work | 8d | 2026-04-21 | 2026-04-29 | 3170, 3183, 3184 |  |
| 3187 |  | Toilet flooring work | 8d | 2026-04-29 | 2026-05-07 | 3171, 3186 |  |
| 3188 |  | Living dinning flooring | 7d | 2026-05-05 | 2026-05-12 | 3172FS+0.25d |  |
| 3189 |  | Aluminium door-window fixing | 12d | 2026-05-24 | 2026-06-05 | 3173FS+0.25d |  |
| 3190 |  | Putty primer coat | 6d | 2026-05-12 | 2026-05-18 | 3174, 3188 |  |
| 3191 |  | Door shutter fixing | 8d | 2026-05-13 | 2026-05-20 | 3175, 3188 |  |
| 3192 |  | Electrical wiring work | 8d | 2027-06-11 | 2027-06-18 | 3176, 3191 |  |
| 3193 |  | Painting 1st coat | 8d | 2027-07-01 | 2027-07-08 | 3177, 3190, 3191, 3192 |  |
| 3194 |  | False ceiling | 8d | 2027-07-09 | 2027-07-16 | 3178, 3193 |  |
| 3195 | 37100.37300.37600.38200.39200.40600.41600.69200 | **12th Floor** | 449.75d | 2026-03-17 | 2027-07-24 |  | start no earlier than 2026-03-17 |
| 3196 |  | Block Work | 8d | 2026-03-17 | 2026-03-25 | 3180FS+0.25d |  |
| 3197 |  | Door Frame Fixing | 9d | 2026-04-02 | 2026-04-11 | 3181, 3196 |  |
| 3198 |  | Internal Plumbing Works | 8d | 2026-03-25 | 2026-04-02 | 3182, 3196 |  |
| 3199 |  | Waterproofing | 10d | 2026-04-21 | 2026-05-01 | 3183, 3198 |  |
| 3200 |  | Internal Plaster | 8d | 2026-03-25 | 2026-04-02 | 3184FS+0.25d |  |
| 3201 |  | IPS flooring work | 10d | 2026-05-01 | 2026-05-11 | 3185, 3197, 3198, 3199 |  |
| 3202 |  | Toilet dado work | 8d | 2026-05-01 | 2026-05-09 | 3186, 3199, 3200 |  |
| 3203 |  | Toilet flooring work | 8d | 2026-05-09 | 2026-05-17 | 3187, 3202 |  |
| 3204 |  | Living dinning flooring | 12d | 2026-05-12 | 2026-05-24 | 3188FS+0.25d |  |
| 3205 |  | Aluminium door-window fixing | 12d | 2026-06-05 | 2026-06-17 | 3189FS+0.25d |  |
| 3206 |  | Putty primer coat | 6d | 2026-05-24 | 2026-05-30 | 3190, 3204 |  |
| 3207 |  | Door shutter fixing | 8d | 2026-05-24 | 2026-06-01 | 3191, 3204 |  |
| 3208 |  | Electrical wiring work | 8d | 2027-06-19 | 2027-06-26 | 3192, 3207 |  |
| 3209 |  | Painting 1st coat | 8d | 2027-07-09 | 2027-07-16 | 3193, 3206, 3207, 3208 |  |
| 3210 |  | False ceiling | 8d | 2027-07-17 | 2027-07-24 | 3194, 3209 |  |
| 3211 | 37100.37300.37600.38200.39200.40600.41600.69300 | **13th Floor** | 449.5d | 2026-03-25 | 2027-08-01 |  | start no earlier than 2026-03-25 |
| 3212 |  | Block Work | 8d | 2026-03-25 | 2026-04-02 | 3196FS+0.25d |  |
| 3213 |  | Door Frame Fixing | 9d | 2026-04-11 | 2026-04-20 | 3197, 3212 |  |
| 3214 |  | Internal Plumbing Works | 8d | 2026-04-02 | 2026-04-10 | 3198, 3212 |  |
| 3215 |  | Waterproofing | 10d | 2026-05-01 | 2026-05-11 | 3199, 3214 |  |
| 3216 |  | Internal Plaster | 8d | 2026-04-02 | 2026-04-10 | 3200FS+0.25d |  |
| 3217 |  | IPS flooring work | 10d | 2026-05-11 | 2026-05-21 | 3201, 3213, 3215, 3216 |  |
| 3218 |  | Toilet dado work | 8d | 2026-05-11 | 2026-05-19 | 3202, 3215, 3216 |  |
| 3219 |  | Toilet flooring work | 8d | 2026-05-19 | 2026-05-27 | 3203, 3218 |  |
| 3220 |  | Living dinning flooring | 8d | 2026-05-24 | 2026-06-01 | 3204FS+0.25d |  |

| ID | WBS | Task | Duration | Start | Finish | Predecessors | Constraint |
| --- | --- | --- | --- | --- | --- | --- | --- |
| 3221 |  | Aluminium door-window fixing | 11d | 2026-06-17 | 2026-06-28 | 3205FS+0.25d |  |
| 3222 |  | Putty primer coat | 6d | 2026-06-01 | 2026-06-07 | 3206, 3220 |  |
| 3223 |  | Door shutter fixing | 8d | 2026-06-01 | 2026-06-09 | 3207, 3220 |  |
| 3224 |  | Electrical wiring work | 8d | 2027-06-27 | 2027-07-04 | 3208, 3223 |  |
| 3225 |  | Painting 1st coat | 8d | 2027-07-17 | 2027-07-24 | 3209, 3222, 3223, 3224 |  |
| 3226 |  | False ceiling | 8d | 2027-07-25 | 2027-08-01 | 3210, 3225 |  |
| 3227 | 37100.37300.37600.38200.39200.40600.41600.69400 | **14th Floor** | 449.25d | 2026-04-02 | 2027-08-09 |  | start no earlier than 2026-04-02 |
| 3228 |  | Block Work | 8d | 2026-04-02 | 2026-04-10 | 3212FS+0.25d |  |
| 3229 |  | Door Frame Fixing | 9d | 2026-04-20 | 2026-04-29 | 3213, 3228 |  |
| 3230 |  | Internal Plumbing Works | 8d | 2026-04-10 | 2026-04-18 | 3214, 3228 |  |
| 3231 |  | Waterproofing | 10d | 2026-05-11 | 2026-05-21 | 3215, 3230 |  |
| 3232 |  | Internal Plaster | 8d | 2026-04-11 | 2026-04-18 | 3216FS+0.25d |  |
| 3233 |  | IPS flooring work | 10d | 2026-05-21 | 2026-05-31 | 3217, 3229, 3230, 3231 |  |
| 3234 |  | Toilet dado work | 8d | 2026-05-21 | 2026-05-29 | 3218, 3231, 3232 |  |
| 3235 |  | Toilet flooring work | 8d | 2026-05-29 | 2026-06-06 | 3219, 3234 |  |
| 3236 |  | Living dinning flooring | 8d | 2026-06-02 | 2026-06-09 | 3220FS+0.25d |  |
| 3237 |  | Aluminium door-window fixing | 12d | 2026-06-29 | 2026-07-10 | 3221FS+0.25d |  |
| 3238 |  | Putty primer coat | 6d | 2026-06-10 | 2026-06-15 | 3222, 3236 |  |
| 3239 |  | Door shutter fixing | 8d | 2026-06-10 | 2026-06-17 | 3223, 3236 |  |
| 3240 |  | Electrical wiring work | 8d | 2027-07-05 | 2027-07-12 | 3224, 3239 |  |
| 3241 |  | Painting 1st coat | 8d | 2027-07-25 | 2027-08-01 | 3225, 3238, 3239, 3240 |  |
| 3242 |  | False ceiling | 8d | 2027-08-02 | 2027-08-09 | 3226, 3241 |  |
| 3243 | 37100.37300.37600.38200.39200.40600.41600.69500 | **15th Floor** | 449d | 2026-04-11 | 2027-08-17 |  | start no earlier than 2026-04-11 |
| 3244 |  | Block Work | 8d | 2026-04-11 | 2026-04-18 | 3228FS+0.25d |  |
| 3245 |  | Door Frame Fixing | 9d | 2026-04-29 | 2026-05-08 | 3229, 3244 |  |
| 3246 |  | Internal Plumbing Works | 8d | 2026-04-19 | 2026-04-26 | 3230, 3244 |  |
| 3247 |  | Waterproofing | 10d | 2026-05-21 | 2026-05-31 | 3231, 3246 |  |
| 3248 |  | Internal Plaster | 8d | 2026-04-19 | 2026-04-27 | 3232FS+0.25d |  |
| 3249 |  | IPS flooring work | 10d | 2026-05-31 | 2026-06-10 | 3233, 3245, 3246, 3247 |  |
| 3250 |  | Toilet dado work | 8d | 2026-05-31 | 2026-06-08 | 3234, 3247, 3248 |  |
| 3251 |  | Toilet flooring work | 8d | 2026-06-08 | 2026-06-16 | 3235, 3250 |  |
| 3252 |  | Living dinning flooring | 8d | 2026-06-10 | 2026-06-18 | 3236FS+0.25d |  |
| 3253 |  | Aluminium door-window fixing | 12d | 2026-07-11 | 2026-07-22 | 3237, 3249, 3252 |  |
| 3254 |  | Putty primer coat | 6d | 2026-06-18 | 2026-06-24 | 3238, 3252 |  |
| 3255 |  | Door shutter fixing | 8d | 2026-06-18 | 2026-06-26 | 3239, 3252 |  |
| 3256 |  | Electrical wiring work | 8d | 2027-07-13 | 2027-07-20 | 3240, 3255 |  |
| 3257 |  | Painting 1st coat | 8d | 2027-08-02 | 2027-08-09 | 3241, 3254, 3255, 3256 |  |
| 3258 |  | False ceiling | 8d | 2027-08-10 | 2027-08-17 | 3242, 3257 |  |
| 3259 | 37100.37300.37600.38200.39200.40600.41600.69600 | **16th Floor** | 448.75d | 2026-04-19 | 2027-08-25 |  | start no earlier than 2026-04-19 |
| 3260 |  | Block Work | 8d | 2026-04-19 | 2026-04-27 | 3244FS+0.25d |  |
| 3261 |  | Door Frame Fixing | 9d | 2026-05-08 | 2026-05-17 | 3245, 3260 |  |
| 3262 |  | Internal Plumbing Works | 8d | 2026-04-27 | 2026-05-05 | 3246, 3260 |  |
| 3263 |  | Waterproofing | 10d | 2026-05-31 | 2026-06-10 | 3247, 3262 |  |
| 3264 |  | Internal Plaster | 8d | 2026-04-27 | 2026-05-05 | 3248FS+0.25d |  |
| 3265 |  | IPS flooring work | 10d | 2026-06-10 | 2026-06-20 | 3249, 3261, 3262, 3263 |  |
| 3266 |  | Toilet dado work | 8d | 2026-06-10 | 2026-06-18 | 3250, 3263, 3264 |  |
| 3267 |  | Toilet flooring work | 8d | 2026-06-18 | 2026-06-26 | 3251, 3266 |  |
| 3268 |  | Living dinning flooring | 6d | 2026-06-18 | 2026-06-24 | 3252FS+0.25d |  |
| 3269 |  | Aluminium door-window fixing | 12d | 2026-07-23 | 2026-08-03 | 3253, 3265, 3268 |  |
| 3270 |  | Putty primer coat | 6d | 2026-06-24 | 2026-06-30 | 3254, 3268 |  |
| 3271 |  | Door shutter fixing | 8d | 2026-06-26 | 2026-07-04 | 3255, 3268 |  |
| 3272 |  | Electrical wiring work | 8d | 2027-07-21 | 2027-07-28 | 3256, 3271 |  |
| 3273 |  | Painting 1st coat | 8d | 2027-08-10 | 2027-08-17 | 3257, 3270, 3271, 3272 |  |
| 3274 |  | False ceiling | 8d | 2027-08-18 | 2027-08-25 | 3258, 3273 |  |
| 3275 | 37100.37300.37600.38200.39200.40600.41600.69700 | **17th Floor** | 448.5d | 2026-04-27 | 2027-09-02 |  | start no earlier than 2026-04-27 |
| 3276 |  | Block Work | 8d | 2026-04-27 | 2026-05-05 | 3260FS+0.25d |  |
| 3277 |  | Door Frame Fixing | 9d | 2026-05-17 | 2026-05-26 | 3261, 3276 |  |
| 3278 |  | Internal Plumbing Works | 8d | 2026-05-05 | 2026-05-13 | 3262, 3276 |  |
| 3279 |  | Waterproofing | 10d | 2026-06-10 | 2026-06-20 | 3263, 3278 |  |
| 3280 |  | Internal Plaster | 8d | 2026-05-05 | 2026-05-13 | 3264FS+0.25d |  |
| 3281 |  | IPS flooring work | 10d | 2026-06-20 | 2026-06-30 | 3265, 3277, 3278, 3279 |  |
| 3282 |  | Toilet dado work | 8d | 2026-06-20 | 2026-06-28 | 3266, 3279, 3280 |  |
| 3283 |  | Toilet flooring work | 8d | 2026-06-28 | 2026-07-06 | 3267, 3282 |  |
| 3284 |  | Living dinning flooring | 7d | 2026-06-24 | 2026-07-01 | 3268FS+0.25d |  |
| 3285 |  | Aluminium door-window fixing | 12d | 2026-08-04 | 2026-08-15 | 3269, 3281, 3284 |  |
| 3286 |  | Putty primer coat | 6d | 2026-07-01 | 2026-07-07 | 3270, 3284 |  |
| 3287 |  | Door shutter fixing | 8d | 2026-07-04 | 2026-07-12 | 3271, 3284 |  |
| 3288 |  | Electrical wiring work | 8d | 2027-07-29 | 2027-08-05 | 3272, 3287 |  |
| 3289 |  | Painting 1st coat | 8d | 2027-08-18 | 2027-08-25 | 3273, 3286, 3287, 3288 |  |
| 3290 |  | False ceiling | 8d | 2027-08-26 | 2027-09-02 | 3274, 3289 |  |

| ID | WBS | Task | Duration | Start | Finish | Predecessors | Constraint |
| --- | --- | --- | --- | --- | --- | --- | --- |
| 3291 | 37100.37300.37600.38200.39200.40600.41600.69800 | **18th Floor** | 454.12d | 2026-05-05 | 2027-09-16 |  | start no earlier than 2026-05-05 |
| 3292 |  | Block Work | 7.94d | 2026-05-05 | 2026-05-13 | 3276FS+0.25d |  |
| 3293 |  | Door Frame Fixing | 8.94d | 2026-05-26 | 2026-06-04 | 3277, 3292 |  |
| 3294 |  | Internal Plumbing Works | 9.94d | 2026-05-13 | 2026-05-23 | 3278, 3292 |  |
| 3295 |  | Waterproofing | 11.94d | 2026-06-20 | 2026-07-02 | 3279, 3294 |  |
| 3296 |  | Internal Plaster | 8.94d | 2026-05-14 | 2026-05-22 | 3280FS+0.25d |  |
| 3297 |  | IPS flooring work | 8.94d | 2026-07-02 | 2026-07-11 | 3281, 3293, 3294, 3295 |  |
| 3298 |  | Toilet dado work | 7.94d | 2026-07-02 | 2026-07-10 | 3282, 3295, 3296 |  |
| 3299 |  | Toilet flooring work | 6.94d | 2026-07-10 | 2026-07-17 | 3283, 3298 |  |
| 3300 |  | Living dinning flooring | 11.94d | 2026-07-17 | 2026-07-29 | 3284, 3293, 3299 |  |
| 3301 |  | Aluminium door-window fixing | 11.94d | 2026-08-16 | 2026-08-27 | 3285, 3297, 3300 |  |
| 3302 |  | Putty primer coat | 5.94d | 2026-07-29 | 2026-08-04 | 3286, 3300 |  |
| 3303 |  | Door shutter fixing | 7.94d | 2026-07-29 | 2026-08-06 | 3287, 3300 |  |
| 3304 |  | Electrical wiring work | 11.94d | 2027-08-06 | 2027-08-17 | 3288, 3303 |  |
| 3305 |  | Painting 1st coat | 11.94d | 2027-08-26 | 2027-09-06 | 3289, 3302, 3303, 3304 |  |
| 3306 |  | False ceiling | 9.94d | 2027-09-06 | 2027-09-16 | 3290, 3305 |  |
| 3307 | 37100.37300.37600.38200.39200.40600.41600.69900 | **19th Floor** | 457.88d | 2026-05-13 | 2027-09-28 |  | start no earlier than 2026-05-13 |
| 3308 |  | Block Work | 7.94d | 2026-05-13 | 2026-05-21 | 3292FS+0.25d |  |
| 3309 |  | Door Frame Fixing | 8.94d | 2026-06-04 | 2026-06-13 | 3293, 3308 |  |
| 3310 |  | Internal Plumbing Works | 9.94d | 2026-05-23 | 2026-06-02 | 3294, 3308 |  |
| 3311 |  | Waterproofing | 11.94d | 2026-07-02 | 2026-07-14 | 3295, 3310 |  |
| 3312 |  | Internal Plaster | 8.94d | 2026-05-23 | 2026-06-01 | 3296FS+0.25d |  |
| 3313 |  | IPS flooring work | 8.94d | 2026-07-14 | 2026-07-23 | 3297, 3309, 3311, 3312 |  |
| 3314 |  | Toilet dado work | 7.94d | 2026-07-14 | 2026-07-22 | 3298, 3311, 3312 |  |
| 3315 |  | Toilet flooring work | 6.94d | 2026-07-22 | 2026-07-29 | 3299, 3314 |  |
| 3316 |  | Living dinning flooring | 11.94d | 2026-07-29 | 2026-08-10 | 3300, 3309, 3315 |  |
| 3317 |  | Aluminium door-window fixing | 11.94d | 2026-08-27 | 2026-09-08 | 3301, 3313, 3316 |  |
| 3318 |  | Putty primer coat | 5.94d | 2026-08-10 | 2026-08-16 | 3302, 3316 |  |
| 3319 |  | Door shutter fixing | 7.94d | 2026-08-10 | 2026-08-18 | 3303, 3316 |  |
| 3320 |  | Electrical wiring work | 11.94d | 2027-08-17 | 2027-08-29 | 3304, 3319 |  |
| 3321 |  | Painting 1st coat | 11.94d | 2027-09-06 | 2027-09-18 | 3305, 3318, 3319, 3320 |  |
| 3322 |  | False ceiling | 9.94d | 2027-09-18 | 2027-09-28 | 3306, 3321 |  |
| 3323 | 37100.37300.37600.38200.39200.40600.41600.70000 | **20th Floor** | 461.62d | 2026-05-22 | 2027-10-10 |  | start no earlier than 2026-05-22 |
| 3324 |  | Block Work | 7.94d | 2026-05-22 | 2026-05-30 | 3308FS+0.25d |  |
| 3325 |  | Door Frame Fixing | 8.94d | 2026-06-13 | 2026-06-22 | 3309, 3324 |  |
| 3326 |  | Internal Plumbing Works | 9.94d | 2026-06-02 | 2026-06-12 | 3310, 3324 |  |
| 3327 |  | Waterproofing | 11.94d | 2026-07-14 | 2026-07-26 | 3311, 3326 |  |
| 3328 |  | Internal Plaster | 8.94d | 2026-07-26 | 2026-08-04 | 3312, 3325, 3326, 3327 |  |
| 3329 |  | IPS flooring work | 8.94d | 2026-08-04 | 2026-08-13 | 3313, 3325, 3327, 3328 |  |
| 3330 |  | Toilet dado work | 7.94d | 2026-08-04 | 2026-08-12 | 3314, 3327, 3328 |  |
| 3331 |  | Toilet flooring work | 6.94d | 2026-08-12 | 2026-08-19 | 3315, 3330 |  |
| 3332 |  | Living dinning flooring | 11.94d | 2026-08-19 | 2026-08-31 | 3316, 3325, 3331 |  |
| 3333 |  | Aluminium door-window fixing | 11.94d | 2026-09-08 | 2026-09-20 | 3317, 3329, 3332 |  |
| 3334 |  | Putty primer coat | 5.94d | 2026-08-31 | 2026-09-05 | 3318, 3332 |  |
| 3335 |  | Door shutter fixing | 7.94d | 2026-08-31 | 2026-09-07 | 3319, 3332 |  |
| 3336 |  | Electrical wiring work | 11.94d | 2027-08-29 | 2027-09-10 | 3320, 3335 |  |
| 3337 |  | Painting 1st coat | 11.94d | 2027-09-18 | 2027-09-30 | 3321, 3334, 3335, 3336 |  |
| 3338 |  | False ceiling | 9.94d | 2027-09-30 | 2027-10-10 | 3322, 3337 |  |
| 3339 | 37100.37300.37600.38200.39200.40600.41600.70100 | **21st Floor** | 442.44d | 2026-06-22 | 2027-10-22 |  | start no earlier than 2026-06-22 |
| 3340 |  | Block Work | 7.94d | 2026-06-22 | 2026-06-30 | 3002, 3324 |  |
| 3341 |  | Door Frame Fixing | 8.94d | 2026-06-30 | 2026-07-09 | 3325, 3340 |  |
| 3342 |  | Internal Plumbing Works | 9.94d | 2026-06-30 | 2026-07-10 | 3326, 3340 |  |
| 3343 |  | Waterproofing | 11.94d | 2026-07-26 | 2026-08-07 | 3327, 3342 |  |
| 3344 |  | Internal Plaster | 8.94d | 2026-08-07 | 2026-08-16 | 3328, 3341, 3342, 3343 |  |
| 3345 |  | IPS flooring work | 8.94d | 2026-08-16 | 2026-08-25 | 3329, 3341, 3343, 3344 |  |
| 3346 |  | Toilet dado work | 7.94d | 2026-08-16 | 2026-08-24 | 3330, 3343, 3344 |  |
| 3347 |  | Toilet flooring work | 6.94d | 2026-08-24 | 2026-08-31 | 3331, 3346 |  |
| 3348 |  | Living dinning flooring | 11.94d | 2026-08-31 | 2026-09-11 | 3332, 3341, 3347 |  |
| 3349 |  | Aluminium door-window fixing | 11.94d | 2026-09-20 | 2026-10-02 | 3333, 3345, 3348 |  |
| 3350 |  | Putty primer coat | 5.94d | 2026-09-12 | 2026-09-17 | 3334, 3348 |  |
| 3351 |  | Door shutter fixing | 7.94d | 2026-09-12 | 2026-09-19 | 3335, 3348 |  |
| 3352 |  | Electrical wiring work | 11.94d | 2027-09-10 | 2027-09-22 | 3336, 3351 |  |
| 3353 |  | Painting 1st coat | 11.94d | 2027-09-30 | 2027-10-12 | 3337, 3350, 3351, 3352 |  |
| 3354 |  | False ceiling | 9.94d | 2027-10-12 | 2027-10-22 | 3338, 3353 |  |
| 3355 | 37100.37300.37600.38200.39200.40600.41600.70200 | **22nd Floor** | 441.38d | 2026-07-05 | 2027-11-03 |  | start no earlier than 2026-07-05 |
| 3356 |  | Block Work | 7.94d | 2026-07-05 | 2026-07-13 | 3003, 3340 |  |
| 3357 |  | Door Frame Fixing | 8.94d | 2026-07-13 | 2026-07-22 | 3341, 3356 |  |
| 3358 |  | Internal Plumbing Works | 9.94d | 2026-07-13 | 2026-07-23 | 3342, 3356 |  |
| 3359 |  | Waterproofing | 11.94d | 2026-08-07 | 2026-08-19 | 3343, 3358 |  |
| 3360 |  | Internal Plaster | 8.94d | 2026-08-19 | 2026-08-28 | 3344, 3357, 3358, 3359 |  |

| ID | WBS | Task | Duration | Start | Finish | Predecessors | Constraint |
| --- | --- | --- | --- | --- | --- | --- | --- |
| 3361 |  | IPS flooring work | 8.94d | 2026-08-28 | 2026-09-06 | 3345, 3357, 3359, 3360 |  |
| 3362 |  | Toilet dado work | 7.94d | 2026-08-28 | 2026-09-05 | 3346, 3359, 3360 |  |
| 3363 |  | Toilet flooring work | 6.94d | 2026-09-05 | 2026-09-11 | 3347, 3362 |  |
| 3364 |  | Living dinning flooring | 11.94d | 2026-09-12 | 2026-09-23 | 3348, 3357, 3363 |  |
| 3365 |  | Aluminium door-window fixing | 11.94d | 2026-10-02 | 2026-10-14 | 3349, 3361, 3364 |  |
| 3366 |  | Putty primer coat | 5.94d | 2026-09-23 | 2026-09-29 | 3350, 3364 |  |
| 3367 |  | Door shutter fixing | 7.94d | 2026-09-23 | 2026-10-01 | 3351, 3364 |  |
| 3368 |  | Electrical wiring work | 11.94d | 2027-09-22 | 2027-10-04 | 3352, 3367 |  |
| 3369 |  | Painting 1st coat | 11.94d | 2027-10-12 | 2027-10-24 | 3353, 3366, 3367, 3368 |  |
| 3370 |  | False ceiling | 9.94d | 2027-10-24 | 2027-11-03 | 3354, 3369 |  |
| 3371 | 37100.37300.37600.38200.39200.40600.41600.70300 | **23rd Floor** | 441.31d | 2026-07-17 | 2027-11-15 |  | start no earlier than 2026-07-17 |
| 3372 |  | Block Work | 7.94d | 2026-07-17 | 2026-07-25 | 3004, 3356 |  |
| 3373 |  | Door Frame Fixing | 8.94d | 2026-07-25 | 2026-08-03 | 3357, 3372 |  |
| 3374 |  | Internal Plumbing Works | 9.94d | 2026-07-25 | 2026-08-04 | 3358, 3372 |  |
| 3375 |  | Waterproofing | 11.94d | 2026-08-19 | 2026-08-31 | 3359, 3374 |  |
| 3376 |  | Internal Plaster | 8.94d | 2026-08-31 | 2026-09-09 | 3360, 3373, 3374, 3375 |  |
| 3377 |  | IPS flooring work | 8.94d | 2026-09-09 | 2026-09-17 | 3361, 3373, 3375, 3376 |  |
| 3378 |  | Toilet dado work | 7.94d | 2026-09-09 | 2026-09-16 | 3362, 3375, 3376 |  |
| 3379 |  | Toilet flooring work | 6.94d | 2026-09-17 | 2026-09-23 | 3363, 3378 |  |
| 3380 |  | Living dinning flooring | 14.94d | 2026-09-23 | 2026-10-08 | 3364, 3373, 3379 |  |
| 3381 |  | Aluminium door-window fixing | 14.94d | 2026-10-14 | 2026-10-29 | 3365, 3377, 3380 |  |
| 3382 |  | Putty primer coat | 5.94d | 2026-10-08 | 2026-10-14 | 3366, 3380 |  |
| 3383 |  | Door shutter fixing | 7.94d | 2026-10-08 | 2026-10-16 | 3367, 3380 |  |
| 3384 |  | Electrical wiring work | 11.94d | 2027-10-04 | 2027-10-16 | 3368, 3383 |  |
| 3385 |  | Painting 1st coat | 11.94d | 2027-10-24 | 2027-11-05 | 3369, 3382, 3383, 3384 |  |
| 3386 |  | False ceiling | 9.94d | 2027-11-05 | 2027-11-15 | 3370, 3385 |  |
| 3387 | 37100.37300.37600.38200.39200.40600.41600.70400 | **24th Floor** | 439.25d | 2026-07-31 | 2027-11-27 |  | start no earlier than 2026-07-31 |
| 3388 |  | Block Work | 7.94d | 2026-07-31 | 2026-08-08 | 3005, 3372 |  |
| 3389 |  | Door Frame Fixing | 8.94d | 2026-08-08 | 2026-08-17 | 3373, 3388 |  |
| 3390 |  | Internal Plumbing Works | 9.94d | 2026-08-08 | 2026-08-18 | 3374, 3388 |  |
| 3391 |  | Waterproofing | 11.94d | 2026-08-31 | 2026-09-12 | 3375, 3390 |  |
| 3392 |  | Internal Plaster | 8.94d | 2026-09-12 | 2026-09-20 | 3376, 3389, 3390, 3391 |  |
| 3393 |  | IPS flooring work | 8.94d | 2026-09-21 | 2026-09-29 | 3377, 3389, 3391, 3392 |  |
| 3394 |  | Toilet dado work | 7.94d | 2026-09-21 | 2026-09-28 | 3378, 3391, 3392 |  |
| 3395 |  | Toilet flooring work | 6.94d | 2026-09-28 | 2026-10-05 | 3379, 3394 |  |
| 3396 |  | Living dinning flooring | 14.94d | 2026-10-08 | 2026-10-23 | 3380, 3389, 3395 |  |
| 3397 |  | Aluminium door-window fixing | 14.94d | 2026-10-29 | 2026-12-28 | 3381, 3393, 3396 |  |
| 3398 |  | Putty primer coat | 5.94d | 2026-10-23 | 2026-10-29 | 3382, 3396 |  |
| 3399 |  | Door shutter fixing | 7.94d | 2026-10-23 | 2026-10-31 | 3383, 3396 |  |
| 3400 |  | Electrical wiring work | 11.94d | 2027-10-16 | 2027-10-28 | 3384, 3399 |  |
| 3401 |  | Painting 1st coat | 11.94d | 2027-11-05 | 2027-11-17 | 3385, 3398, 3399, 3400 |  |
| 3402 |  | False ceiling | 9.94d | 2027-11-17 | 2027-11-27 | 3386, 3401 |  |
| 3403 | 37100.37300.37600.38200.39200.40600.41600.70500 | **25th Floor** | 433.31d | 2026-08-18 | 2027-12-09 |  | start no earlier than 2026-08-18 |
| 3404 |  | Block Work | 7.94d | 2026-08-18 | 2026-08-26 | 3006, 3388 |  |
| 3405 |  | Door Frame Fixing | 8.94d | 2026-08-26 | 2026-09-03 | 3389, 3404 |  |
| 3406 |  | Internal Plumbing Works | 9.94d | 2026-08-26 | 2026-09-04 | 3390, 3404 |  |
| 3407 |  | Waterproofing | 11.94d | 2026-09-12 | 2026-09-23 | 3391, 3406 |  |
| 3408 |  | Internal Plaster | 8.94d | 2026-09-24 | 2026-10-02 | 3392, 3405, 3406, 3407 |  |
| 3409 |  | IPS flooring work | 8.94d | 2026-10-02 | 2026-10-11 | 3393, 3405, 3407, 3408 |  |
| 3410 |  | Toilet dado work | 7.94d | 2026-10-02 | 2026-10-10 | 3394, 3407, 3408 |  |
| 3411 |  | Toilet flooring work | 6.94d | 2026-10-10 | 2026-10-17 | 3395, 3410 |  |
| 3412 |  | Living dinning flooring | 14.94d | 2026-10-23 | 2026-12-22 | 3396, 3405, 3411 |  |
| 3413 |  | Aluminium door-window fixing | 14.94d | 2026-12-28 | 2027-01-12 | 3397, 3409, 3412 |  |
| 3414 |  | Putty primer coat | 5.94d | 2026-12-22 | 2026-12-28 | 3398, 3412 |  |
| 3415 |  | Door shutter fixing | 7.94d | 2026-12-22 | 2026-12-30 | 3399, 3412 |  |
| 3416 |  | Electrical wiring work | 11.94d | 2027-10-28 | 2027-11-09 | 3400, 3415 |  |
| 3417 |  | Painting 1st coat | 11.94d | 2027-11-17 | 2027-11-29 | 3401, 3414, 3415, 3416 |  |
| 3418 |  | False ceiling | 9.94d | 2027-11-29 | 2027-12-09 | 3402, 3417 |  |
| 3419 | 37100.37300.37600.38200.39200.40600.41600.70600 | **26th Floor** | 430.38d | 2026-09-02 | 2027-12-21 |  | start no earlier than 2026-09-02 |
| 3420 |  | Block Work | 7.94d | 2026-09-02 | 2026-09-09 | 3007, 3404 |  |
| 3421 |  | Door Frame Fixing | 8.94d | 2026-09-09 | 2026-09-18 | 3405, 3420 |  |
| 3422 |  | Internal Plumbing Works | 9.94d | 2026-09-09 | 2026-09-19 | 3406, 3420 |  |
| 3423 |  | Waterproofing | 11.94d | 2026-09-24 | 2026-10-05 | 3407, 3422 |  |
| 3424 |  | Internal Plaster | 8.94d | 2026-10-05 | 2026-10-14 | 3408, 3421, 3422, 3423 |  |
| 3425 |  | IPS flooring work | 8.94d | 2026-10-14 | 2026-10-23 | 3409, 3421, 3423, 3424 |  |
| 3426 |  | Toilet dado work | 7.94d | 2026-10-14 | 2026-10-22 | 3410, 3423, 3424 |  |
| 3427 |  | Toilet flooring work | 6.94d | 2026-10-22 | 2026-10-29 | 3411, 3426 |  |
| 3428 |  | Living dinning flooring | 14.94d | 2026-12-22 | 2027-01-06 | 3412, 3421, 3427 |  |
| 3429 |  | Aluminium door-window fixing | 14.94d | 2027-01-12 | 2027-01-27 | 3413, 3425, 3428 |  |
| 3430 |  | Putty primer coat | 5.94d | 2027-01-06 | 2027-01-12 | 3414, 3428 |  |

| ID | WBS | Task | Duration | Start | Finish | Predecessors | Constraint |
| --- | --- | --- | --- | --- | --- | --- | --- |
| 3431 |  | Door shutter fixing | 7.94d | 2027-01-06 | 2027-01-14 | 3415, 3428 |  |
| 3432 |  | Electrical wiring work | 11.94d | 2027-11-09 | 2027-11-21 | 3416, 3431 |  |
| 3433 |  | Painting 1st coat | 11.94d | 2027-11-29 | 2027-12-11 | 3417, 3430, 3431, 3432 |  |
| 3434 |  | False ceiling | 9.94d | 2027-12-11 | 2027-12-21 | 3418, 3433 |  |
| 3435 | 37100.37300.37600.38200.39200.40600.41600.70700 | **27th Floor** | 425.56d | 2026-09-18 | 2028-01-02 |  | start no earlier than 2026-09-18 |
| 3436 |  | Block Work | 7.94d | 2026-09-18 | 2026-09-26 | 3008, 3420 |  |
| 3437 |  | Door Frame Fixing | 8.94d | 2026-09-26 | 2026-10-05 | 3421, 3436 |  |
| 3438 |  | Internal Plumbing Works | 9.94d | 2026-09-26 | 2026-10-06 | 3422, 3436 |  |
| 3439 |  | Waterproofing | 11.94d | 2026-10-06 | 2026-10-18 | 3423, 3438 |  |
| 3440 |  | Internal Plaster | 8.94d | 2026-10-18 | 2026-10-27 | 3424, 3437, 3438, 3439 |  |
| 3441 |  | IPS flooring work | 8.94d | 2026-10-27 | 2026-12-20 | 3425, 3437, 3439, 3440 |  |
| 3442 |  | Toilet dado work | 7.94d | 2026-10-27 | 2026-12-19 | 3426, 3439, 3440 |  |
| 3443 |  | Toilet flooring work | 6.94d | 2026-12-19 | 2026-12-26 | 3427, 3442 |  |
| 3444 |  | Living dinning flooring | 14.94d | 2027-01-06 | 2027-01-21 | 3428, 3437, 3443 |  |
| 3445 |  | Aluminium door-window fixing | 14.94d | 2027-01-27 | 2027-02-11 | 3429, 3441, 3444 |  |
| 3446 |  | Putty primer coat | 5.94d | 2027-01-21 | 2027-01-27 | 3430, 3444 |  |
| 3447 |  | Door shutter fixing | 7.94d | 2027-01-21 | 2027-01-29 | 3431, 3444 |  |
| 3448 |  | Electrical wiring work | 11.94d | 2027-11-21 | 2027-12-03 | 3432, 3447 |  |
| 3449 |  | Painting 1st coat | 11.94d | 2027-12-11 | 2027-12-23 | 3433, 3446, 3447, 3448 |  |
| 3450 |  | False ceiling | 9.94d | 2027-12-23 | 2028-01-02 | 3434, 3449 |  |
| 3451 | 37100.37300.37600.38200.39200.40600.41600.70800 | **28th Floor** | 418.62d | 2026-10-07 | 2028-01-14 |  | start no earlier than 2026-10-07 |
| 3452 |  | Block Work | 7.94d | 2026-10-07 | 2026-10-15 | 3009, 3436 |  |
| 3453 |  | Door Frame Fixing | 8.94d | 2026-10-15 | 2026-10-24 | 3437, 3452 |  |
| 3454 |  | Internal Plumbing Works | 9.94d | 2026-10-15 | 2026-10-25 | 3438, 3452 |  |
| 3455 |  | Waterproofing | 11.94d | 2026-10-25 | 2026-12-21 | 3439, 3454 |  |
| 3456 |  | Internal Plaster | 8.94d | 2026-12-21 | 2026-12-30 | 3440, 3453, 3454, 3455 |  |
| 3457 |  | IPS flooring work | 8.94d | 2026-12-30 | 2027-01-08 | 3441, 3453, 3455, 3456 |  |
| 3458 |  | Toilet dado work | 7.94d | 2026-12-30 | 2027-01-07 | 3442, 3455, 3456 |  |
| 3459 |  | Toilet flooring work | 6.94d | 2027-01-07 | 2027-01-14 | 3443, 3458 |  |
| 3460 |  | Living dinning flooring | 14.94d | 2027-01-21 | 2027-02-05 | 3444, 3453, 3459 |  |
| 3461 |  | Aluminium door-window fixing | 14.94d | 2027-02-11 | 2027-02-26 | 3445, 3457, 3460 |  |
| 3462 |  | Putty primer coat | 5.94d | 2027-02-05 | 2027-02-11 | 3446, 3460 |  |
| 3463 |  | Door shutter fixing | 7.94d | 2027-02-05 | 2027-02-13 | 3447, 3460 |  |
| 3464 |  | Electrical wiring work | 11.94d | 2027-12-03 | 2027-12-15 | 3448, 3463 |  |
| 3465 |  | Painting 1st coat | 11.94d | 2027-12-23 | 2028-01-04 | 3449, 3462, 3463, 3464 |  |
| 3466 |  | False ceiling | 9.94d | 2028-01-04 | 2028-01-14 | 3450, 3465 |  |
| 3467 | 37100.37300.37600.38200.39200.40600.41600.70900 | **29th Floor** | 410.69d | 2026-10-27 | 2028-01-26 |  | start no earlier than 2026-10-27 |
| 3468 |  | Block Work | 7.94d | 2026-10-27 | 2026-12-19 | 3010, 3452 |  |
| 3469 |  | Door Frame Fixing | 8.94d | 2026-12-19 | 2026-12-28 | 3453, 3468 |  |
| 3470 |  | Internal Plumbing Works | 9.94d | 2026-12-19 | 2026-12-29 | 3454, 3468 |  |
| 3471 |  | Waterproofing | 11.94d | 2026-12-29 | 2027-01-10 | 3455, 3470 |  |
| 3472 |  | Internal Plaster | 8.94d | 2027-01-10 | 2027-01-19 | 3456, 3469, 3470, 3471 |  |
| 3473 |  | IPS flooring work | 8.94d | 2027-01-19 | 2027-01-28 | 3457, 3469, 3471, 3472 |  |
| 3474 |  | Toilet dado work | 7.94d | 2027-01-19 | 2027-01-27 | 3458, 3471, 3472 |  |
| 3475 |  | Toilet flooring work | 6.94d | 2027-01-27 | 2027-02-03 | 3459, 3474 |  |
| 3476 |  | Living dinning flooring | 14.94d | 2027-02-05 | 2027-02-20 | 3460, 3469, 3475 |  |
| 3477 |  | Aluminium door-window fixing | 14.94d | 2027-02-26 | 2027-03-13 | 3461, 3473, 3476 |  |
| 3478 |  | Putty primer coat | 5.94d | 2027-02-20 | 2027-02-26 | 3462, 3476 |  |
| 3479 |  | Door shutter fixing | 7.94d | 2027-02-20 | 2027-02-28 | 3463, 3476 |  |
| 3480 |  | Electrical wiring work | 11.94d | 2027-12-15 | 2027-12-27 | 3464, 3479 |  |
| 3481 |  | Painting 1st coat | 11.94d | 2028-01-04 | 2028-01-16 | 3465, 3478, 3479, 3480 |  |
| 3482 |  | False ceiling | 9.94d | 2028-01-16 | 2028-01-26 | 3466, 3481 |  |
| 3483 | 37100.37300.37600.38200.39200.40600.41600.71000 | **30th Floor** | 386.12d | 2027-01-20 | 2028-02-10 |  | start no earlier than 2027-01-20 |
| 3484 |  | Block Work | 7.94d | 2027-01-20 | 2027-01-27 | 3011, 3468 |  |
| 3485 |  | Door Frame Fixing | 8.94d | 2027-01-27 | 2027-02-05 | 3469, 3484 |  |
| 3486 |  | Internal Plumbing Works | 9.94d | 2027-01-27 | 2027-02-06 | 3470, 3484 |  |
| 3487 |  | Waterproofing | 11.94d | 2027-02-06 | 2027-02-18 | 3471, 3486 |  |
| 3488 |  | Internal Plaster | 3d | 2027-02-18 | 2027-02-21 | 3472, 3485, 3486, 3487 |  |
| 3489 |  | IPS flooring work | 8.94d | 2027-02-21 | 2027-03-02 | 3473, 3485, 3487, 3488 |  |
| 3490 |  | Toilet dado work | 7.94d | 2027-02-21 | 2027-03-01 | 3474, 3487, 3488 |  |
| 3491 |  | Toilet flooring work | 6.94d | 2027-03-01 | 2027-03-08 | 3475, 3490 |  |
| 3492 |  | Living dinning flooring | 7d | 2027-03-08 | 2027-03-15 | 3476, 3485, 3491 |  |
| 3493 |  | Aluminium door-window fixing | 14.94d | 2027-03-15 | 2027-03-30 | 3477, 3489, 3492 |  |
| 3494 |  | Putty primer coat | 5.94d | 2027-03-15 | 2027-03-21 | 3478, 3492 |  |
| 3495 |  | Door shutter fixing | 7.94d | 2027-03-15 | 2027-03-23 | 3479, 3492 |  |
| 3496 |  | Electrical wiring work | 14.94d | 2027-12-27 | 2028-01-11 | 3480, 3495 |  |
| 3497 |  | Painting 1st coat | 14.94d | 2028-01-16 | 2028-01-31 | 3481, 3494, 3495, 3496 |  |
| 3498 |  | False ceiling | 9.94d | 2028-01-31 | 2028-02-10 | 3482, 3497 |  |
| 3499 | 37100.37300.37600.38200.39200.40600.41600.71100 | **31st Floor** | 393.12d | 2027-01-27 | 2028-02-25 |  | start no earlier than 2027-01-27 |
| 3500 |  | Block Work | 7.94d | 2027-01-27 | 2027-02-04 | 3012, 3484 |  |

| ID | WBS | Task | Duration | Start | Finish | Predecessors | Constraint |
| --- | --- | --- | --- | --- | --- | --- | --- |
| 3501 |  | Door Frame Fixing | 8.94d | 2027-02-05 | 2027-02-14 | 3485, 3500 |  |
| 3502 |  | Internal Plumbing Works | 9.94d | 2027-02-06 | 2027-02-16 | 3486, 3500 |  |
| 3503 |  | Waterproofing | 11.94d | 2027-02-18 | 2027-03-02 | 3487, 3502 |  |
| 3504 |  | Internal Plaster | 8.94d | 2027-03-02 | 2027-03-11 | 3488, 3501, 3502, 3503 |  |
| 3505 |  | IPS flooring work | 8.94d | 2027-03-11 | 2027-03-20 | 3489, 3501, 3503, 3504 |  |
| 3506 |  | Toilet dado work | 7.94d | 2027-03-11 | 2027-03-19 | 3490, 3503, 3504 |  |
| 3507 |  | Toilet flooring work | 6.94d | 2027-03-19 | 2027-03-26 | 3491, 3506 |  |
| 3508 |  | Living dinning flooring | 14.94d | 2027-03-26 | 2027-04-10 | 3492, 3501, 3507 |  |
| 3509 |  | Aluminium door-window fixing | 11.94d | 2027-04-10 | 2027-04-22 | 3493, 3505, 3508 |  |
| 3510 |  | Putty primer coat | 5.94d | 2027-04-10 | 2027-04-16 | 3494, 3508 |  |
| 3511 |  | Door shutter fixing | 7.94d | 2027-04-10 | 2027-04-18 | 3495, 3508 |  |
| 3512 |  | Electrical wiring work | 14.94d | 2028-01-11 | 2028-01-26 | 3496, 3511 |  |
| 3513 |  | Painting 1st coat | 14.94d | 2028-01-31 | 2028-02-15 | 3497, 3510, 3511, 3512 |  |
| 3514 |  | False ceiling | 9.94d | 2028-02-15 | 2028-02-25 | 3498, 3513 |  |
| 3515 | 37100.37300.37600.38200.39200.40600.41600.71200 | **32nd Floor** | 400.12d | 2027-02-04 | 2028-03-10 |  | start no earlier than 2027-02-04 |
| 3516 |  | Block Work | 7.94d | 2027-02-04 | 2027-02-12 | 3013, 3500 |  |
| 3517 |  | Door Frame Fixing | 8.94d | 2027-02-14 | 2027-02-23 | 3501, 3516 |  |
| 3518 |  | Internal Plumbing Works | 9.94d | 2027-02-16 | 2027-02-26 | 3502, 3516 |  |
| 3519 |  | Waterproofing | 11.94d | 2027-03-02 | 2027-03-14 | 3503, 3518 |  |
| 3520 |  | Internal Plaster | 8.94d | 2027-03-14 | 2027-03-23 | 3504, 3517, 3518, 3519 |  |
| 3521 |  | IPS flooring work | 8.94d | 2027-03-23 | 2027-04-01 | 3505, 3517, 3519, 3520 |  |
| 3522 |  | Toilet dado work | 7.94d | 2027-03-23 | 2027-03-31 | 3506, 3519, 3520 |  |
| 3523 |  | Toilet flooring work | 6.94d | 2027-03-31 | 2027-04-07 | 3507, 3522 |  |
| 3524 |  | Living dinning flooring | 14.94d | 2027-04-10 | 2027-04-25 | 3508, 3517, 3523 |  |
| 3525 |  | Aluminium door-window fixing | 11.94d | 2027-04-25 | 2027-05-07 | 3509, 3521, 3524 |  |
| 3526 |  | Putty primer coat | 5.94d | 2027-04-25 | 2027-05-01 | 3510, 3524 |  |
| 3527 |  | Door shutter fixing | 7.94d | 2027-04-25 | 2027-05-03 | 3511, 3524 |  |
| 3528 |  | Electrical wiring work | 14.94d | 2028-01-26 | 2028-02-10 | 3512, 3527 |  |
| 3529 |  | Painting 1st coat | 14.94d | 2028-02-15 | 2028-03-01 | 3513, 3526, 3527, 3528 |  |
| 3530 |  | False ceiling | 9.94d | 2028-03-01 | 2028-03-10 | 3514, 3529 |  |
| 3531 | 37100.37300.37600.38200.39200.40600.41600.71300 | **33rd Floor** | 404.12d | 2027-02-12 | 2028-03-22 |  | start no earlier than 2027-02-12 |
| 3532 |  | Block Work | 7.94d | 2027-02-12 | 2027-02-20 | 3014, 3516 |  |
| 3533 |  | Door Frame Fixing | 8.94d | 2027-02-23 | 2027-03-04 | 3517, 3532 |  |
| 3534 |  | Internal Plumbing Works | 9.94d | 2027-02-26 | 2027-03-08 | 3518, 3532 |  |
| 3535 |  | Waterproofing | 11.94d | 2027-03-14 | 2027-03-26 | 3519, 3534 |  |
| 3536 |  | Internal Plaster | 3d | 2027-03-26 | 2027-03-29 | 3520, 3533, 3534, 3535 |  |
| 3537 |  | IPS flooring work | 8.94d | 2027-04-01 | 2027-04-10 | 3521, 3533, 3535, 3536 |  |
| 3538 |  | Toilet dado work | 7.94d | 2027-03-31 | 2027-04-08 | 3522, 3535, 3536 |  |
| 3539 |  | Toilet flooring work | 6.94d | 2027-04-08 | 2027-04-15 | 3523, 3538 |  |
| 3540 |  | Living dinning flooring | 14.94d | 2027-04-25 | 2027-05-10 | 3524, 3533, 3539 |  |
| 3541 |  | Aluminium door-window fixing | 14.94d | 2027-05-10 | 2027-05-25 | 3525, 3537, 3540 |  |
| 3542 |  | Putty primer coat | 5.94d | 2027-05-10 | 2027-05-16 | 3526, 3540 |  |
| 3543 |  | Door shutter fixing | 7.94d | 2027-05-10 | 2027-05-18 | 3527, 3540 |  |
| 3544 |  | Electrical wiring work | 11.94d | 2028-02-10 | 2028-02-21 | 3528, 3543 |  |
| 3545 |  | Painting 1st coat | 11.94d | 2028-03-01 | 2028-03-12 | 3529, 3542, 3543, 3544 |  |
| 3546 |  | False ceiling | 9.94d | 2028-03-13 | 2028-03-22 | 3530, 3545 |  |
| 3547 | 37100.37300.37600.38200.39200.40600.41600.71400 | **34th Floor** | 408.12d | 2027-02-20 | 2028-04-03 |  | start no earlier than 2027-02-20 |
| 3548 |  | Block Work | 7.94d | 2027-02-20 | 2027-02-28 | 3015, 3532 |  |
| 3549 |  | Door Frame Fixing | 8.94d | 2027-03-04 | 2027-03-13 | 3533, 3548 |  |
| 3550 |  | Internal Plumbing Works | 9.94d | 2027-03-08 | 2027-03-18 | 3534, 3548 |  |
| 3551 |  | Waterproofing | 11.94d | 2027-03-26 | 2027-04-07 | 3535, 3550 |  |
| 3552 |  | Internal Plaster | 3d | 2027-03-29 | 2027-04-01 | 3536FS+0.25d |  |
| 3553 |  | IPS flooring work | 8.94d | 2027-04-10 | 2027-04-19 | 3537, 3549, 3551, 3552 |  |
| 3554 |  | Toilet dado work | 7.94d | 2027-04-08 | 2027-04-16 | 3538, 3551, 3552 |  |
| 3555 |  | Toilet flooring work | 6.94d | 2027-04-16 | 2027-04-23 | 3539, 3554 |  |
| 3556 |  | Living dinning flooring | 8d | 2027-05-10 | 2027-05-18 | 3540, 3549, 3555 |  |
| 3557 |  | Aluminium door-window fixing | 14.94d | 2027-05-25 | 2027-06-09 | 3541, 3553, 3556 |  |
| 3558 |  | Putty primer coat | 5.94d | 2027-05-18 | 2027-05-24 | 3542, 3556 |  |
| 3559 |  | Door shutter fixing | 7.94d | 2027-05-18 | 2027-05-26 | 3543, 3556 |  |
| 3560 |  | Electrical wiring work | 11.94d | 2028-02-22 | 2028-03-04 | 3544, 3559 |  |
| 3561 |  | Painting 1st coat | 11.94d | 2028-03-13 | 2028-03-24 | 3545, 3558, 3559, 3560 |  |
| 3562 |  | False ceiling | 9.94d | 2028-03-24 | 2028-04-03 | 3546, 3561 |  |
| 3563 | 37100.37300.37600.38200.39200.40600.41600.71500 | **35th Floor** | 412.12d | 2027-02-28 | 2028-04-15 |  | start no earlier than 2027-02-28 |
| 3564 |  | Block Work | 7.94d | 2027-02-28 | 2027-03-08 | 3016, 3548 |  |
| 3565 |  | Door Frame Fixing | 8.94d | 2027-03-13 | 2027-03-22 | 3549, 3564 |  |
| 3566 |  | Internal Plumbing Works | 9.94d | 2027-03-18 | 2027-03-28 | 3550, 3564 |  |
| 3567 |  | Waterproofing | 11.94d | 2027-04-07 | 2027-04-19 | 3551, 3566 |  |
| 3568 |  | Internal Plaster | 3d | 2027-04-02 | 2027-04-05 | 3552FS+0.25d |  |
| 3569 |  | IPS flooring work | 8.94d | 2027-04-19 | 2027-04-28 | 3553, 3565, 3567, 3568 |  |
| 3570 |  | Toilet dado work | 7.94d | 2027-04-19 | 2027-04-27 | 3554, 3567, 3568 |  |

| ID | WBS | Task | Duration | Start | Finish | Predecessors | Constraint |
| --- | --- | --- | --- | --- | --- | --- | --- |
| 3571 |  | Toilet flooring work | 6.94d | 2027-04-27 | 2027-05-04 | 3555, 3570 |  |
| 3572 |  | Living dinning flooring | 5d | 2027-05-18 | 2027-05-23 | 3556FS+0.25d |  |
| 3573 |  | Aluminium door-window fixing | 14.94d | 2027-06-09 | 2027-06-24 | 3557, 3569, 3572 |  |
| 3574 |  | Putty primer coat | 5.94d | 2027-05-24 | 2027-05-30 | 3558, 3572 |  |
| 3575 |  | Door shutter fixing | 7.94d | 2027-05-26 | 2027-06-03 | 3559, 3572 |  |
| 3576 |  | Electrical wiring work | 11.94d | 2028-03-04 | 2028-03-16 | 3560, 3575 |  |
| 3577 |  | Painting 1st coat | 11.94d | 2028-03-24 | 2028-04-05 | 3561, 3574, 3575, 3576 |  |
| 3578 |  | False ceiling | 9.94d | 2028-04-05 | 2028-04-15 | 3562, 3577 |  |
| 3579 | 37100.37300.37600.38200.39200.40600.191000 | **Terrace Finishing** | 79.88d | 2026-10-20 | 2027-02-22 |  | start no earlier than 2026-10-20 |
| 3580 |  | Terrace waterproofing | 39.94d | 2026-10-20 | 2027-01-13 | 2973 |  |
| 3581 |  | Terrace finishing | 39.94d | 2027-01-13 | 2027-02-22 | 3580 |  |
| 3582 | 37100.37300.37600.38200.39200.40600.100700 | **Common Area Finishing** | 573.38d | 2026-01-13 | 2027-09-23 |  | start no earlier than 2026-01-13 |
| 3583 |  | Block Work | 39.94d | 2026-01-13 | 2026-02-22 | 2984FS+0.25d |  |
| 3584 |  | Internal Plaster | 119.94d | 2026-02-18 | 2026-06-18 | 3589SS+17.88d |  |
| 3585 |  | Staircase railing fixing | 149.94d | 2026-05-22 | 2026-10-19 | 3587SS+26.75d, 3586SS+26.75d |  |
| 3586 |  | Main staircase flooring | 149.94d | 2026-04-26 | 2026-09-23 | 3587SS+13.38d |  |
| 3587 |  | Fire staircase flooring | 149.94d | 2026-04-12 | 2026-09-09 | 3584SS+13.38d, 3591SS+26.75d |  |
| 3588 |  | Fire door work | 59.94d | 2026-05-22 | 2026-07-21 | 3586SS+26.75d, 3587SS+26.75d |  |
| 3589 |  | Electrical wiring work | 119.94d | 2026-01-31 | 2026-05-31 | 3583SS+17.88d |  |
| 3590 |  | Lobby flooring | 150d | 2026-02-03 | 2026-07-03 | 3589SS+3.38d |  |
| 3591 |  | Ceiling & wall putty-primer | 109.94d | 2026-03-17 | 2026-07-04 | 3584SS+26.75d |  |
| 3592 |  | Ceiling & wall painting | 99.94d | 2026-04-03 | 2026-07-12 | 3591SS+17.88d |  |
| 3593 |  | Light fixture supply & installation | 240d | 2027-01-26 | 2027-09-23 | 3592SS+253d |  |
| 3594 | 37100.37300.37600.38200.39200.40600.46600 | **Balcony Glass Railing** | 67.81d | 2027-08-24 | 2027-10-31 |  | start no earlier than 2027-08-24 |
| 3595 |  | 1st Floor | 1.94d | 2027-08-24 | 2027-08-26 | 3663 |  |
| 3596 |  | 2nd Floor | 1.94d | 2027-08-26 | 2027-08-28 | 3595 |  |
| 3597 |  | 3rd Floor | 1.94d | 2027-08-28 | 2027-08-30 | 3596 |  |
| 3598 |  | 4th Floor | 1.94d | 2027-08-30 | 2027-09-01 | 3597 |  |
| 3599 |  | 5th Floor | 1.94d | 2027-09-01 | 2027-09-03 | 3598 |  |
| 3600 |  | 6th Floor | 1.94d | 2027-09-03 | 2027-09-05 | 3599 |  |
| 3601 |  | 7th Floor | 1.94d | 2027-09-05 | 2027-09-07 | 3600 |  |
| 3602 |  | 8th Floor | 1.94d | 2027-09-07 | 2027-09-09 | 3601 |  |
| 3603 |  | 9th Floor | 1.94d | 2027-09-09 | 2027-09-11 | 3602 |  |
| 3604 |  | 10th Floor | 1.94d | 2027-09-11 | 2027-09-13 | 3603 |  |
| 3605 |  | 11th Floor | 1.94d | 2027-09-13 | 2027-09-15 | 3604 |  |
| 3606 |  | 12th Floor | 1.94d | 2027-09-15 | 2027-09-16 | 3605 |  |
| 3607 |  | 13th Floor | 1.94d | 2027-09-17 | 2027-09-18 | 3606 |  |
| 3608 |  | 14th Floor | 1.94d | 2027-09-18 | 2027-09-20 | 3607 |  |
| 3609 |  | 15th Floor | 1.94d | 2027-09-20 | 2027-09-22 | 3608 |  |
| 3610 |  | 16th Floor | 1.94d | 2027-09-22 | 2027-09-24 | 3609 |  |
| 3611 |  | 17th Floor | 1.94d | 2027-09-24 | 2027-09-26 | 3610 |  |
| 3612 |  | 18th Floor | 1.94d | 2027-09-26 | 2027-09-28 | 3611 |  |
| 3613 |  | 19th Floor | 1.94d | 2027-09-28 | 2027-09-30 | 3612 |  |
| 3614 |  | 20th Floor | 1.94d | 2027-09-30 | 2027-10-02 | 3613 |  |
| 3615 |  | 21st Floor | 1.94d | 2027-10-02 | 2027-10-04 | 3614 |  |
| 3616 |  | 22nd Floor | 1.94d | 2027-10-04 | 2027-10-06 | 3615 |  |
| 3617 |  | 23rd Floor | 1.94d | 2027-10-06 | 2027-10-08 | 3616 |  |
| 3618 |  | 24th Floor | 1.94d | 2027-10-08 | 2027-10-10 | 3617 |  |
| 3619 |  | 25th Floor | 1.94d | 2027-10-10 | 2027-10-12 | 3618 |  |
| 3620 |  | 26th Floor | 1.94d | 2027-10-12 | 2027-10-14 | 3619 |  |
| 3621 |  | 27th Floor | 1.94d | 2027-10-14 | 2027-10-16 | 3620 |  |
| 3622 |  | 28th Floor | 1.94d | 2027-10-16 | 2027-10-17 | 3621 |  |
| 3623 |  | 29th Floor | 1.94d | 2027-10-18 | 2027-10-19 | 3622 |  |
| 3624 |  | 30th Floor | 1.94d | 2027-10-19 | 2027-10-21 | 3623 |  |
| 3625 |  | 31st Floor | 1.94d | 2027-10-21 | 2027-10-23 | 3624 |  |
| 3626 |  | 32nd Floor | 1.94d | 2027-10-23 | 2027-10-25 | 3625 |  |
| 3627 |  | 33rd Floor | 1.94d | 2027-10-25 | 2027-10-27 | 3626 |  |
| 3628 |  | 34th Floor | 1.94d | 2027-10-27 | 2027-10-29 | 3627 |  |
| 3629 |  | 35th Floor | 1.94d | 2027-10-29 | 2027-10-31 | 3628 |  |
| 3630 | 37100.37300.37600.38200.95500 | **MEP work** | 956.75d | 2026-04-12 | 2029-01-08 |  | start no earlier than 2026-04-12 |
| 3631 | 37100.37300.37600.38200.95500.98000 | **Electrical work** | 233.25d | 2027-01-13 | 2027-09-03 |  | start no earlier than 2027-01-13 |
| 3632 |  | Cable Tray | 89.94d | 2027-01-13 | 2027-04-12 | 2978 |  |
| 3633 |  | Cable, main & sub main | 79.94d | 2027-02-22 | 2027-05-12 | 3632SS+40d |  |
| 3634 |  | LT panel & DB | 119.94d | 2027-04-12 | 2027-08-10 | 3632 |  |
| 3635 |  | Rising main | 89.94d | 2027-06-05 | 2027-09-03 | 3632FS+53.38d |  |
| 3636 |  | EARTHING Works | 59.94d | 2027-04-26 | 2027-06-25 | 3632FS+13.38d |  |
| 3637 |  | Advance lightening protection | 59.94d | 2027-02-22 | 2027-04-23 | 3581 |  |
| 3638 |  | Inverter | 34.94d | 2027-06-25 | 2027-07-30 | 3636 |  |
| 3639 |  | Energy meter | 59.94d | 2027-05-12 | 2027-07-11 | 3633 |  |
| 3640 |  | Exhast fan | 59.94d | 2027-04-29 | 2027-06-28 | 3573FF+4.5d |  |

| ID | WBS | Task | Duration | Start | Finish | Predecessors | Complete | Constraint |
| --- | --- | --- | --- | --- | --- | --- | --- | --- |
| 3641 |  | FTTH | 59.94d | 2027-06-16 | 2027-08-15 | 3636FS-9d |  |  |
| 3642 |  | Security System - FA & PA | 54.94d | 2027-06-21 | 2027-08-15 | 3641FF |  |  |
| 3643 |  | Solar water heater | 59.94d | 2027-02-22 | 2027-04-23 | 3581 |  |  |
| 3644 | 37100.37300.37600.38200.95500.129400 | **Plumbing wrok** | 415.69d | 2027-01-13 | 2028-03-04 |  |  | start no earlier than 2027-01-13 |
| 3645 |  | Terrace looping | 44.94d | 2027-01-13 | 2027-02-27 | 3580 |  |  |
| 3646 |  | Shaft Plumbing | 119.94d | 2027-02-27 | 2027-06-27 | 3645 |  |  |
| 3647 |  | CP sanitary fixture supply | 74.94d | 2027-06-26 | 2027-09-09 | 3568, 3571FS+53.38d |  |  |
| 3648 |  | Cold & flushing water supply | 89.94d | 2027-04-19 | 2027-07-18 | 3584SS+380d |  |  |
| 3649 |  | Misc work | 29.94d | 2028-02-03 | 2028-03-04 | 3648FS+200d |  |  |
| 3650 | 37100.37300.37600.38200.95500.170500 | **Fire fighting work** | 439.88d | 2026-04-12 | 2027-08-10 |  |  | start no earlier than 2026-04-12 |
| 3651 |  | Fire hydrant work | 89.94d | 2026-04-12 | 2026-07-11 | 3584SS+53.38d |  |  |
| 3652 |  | Sprinkler & piping work | 89.94d | 2027-05-12 | 2027-08-10 | 3651FS+260d |  |  |
| 3653 |  | Shaft Downtake works | 89.94d | 2027-01-13 | 2027-04-13 | 3580 |  |  |
| 3654 |  | Connection to pump room | 29.94d | 2027-04-13 | 2027-05-13 | 3653 |  |  |
| 3655 | 37100.37300.37600.38200.95500.187500 | **Lift work** | 304.88d | 2027-01-13 | 2027-11-13 |  |  | start no earlier than 2027-01-13 |
| 3656 |  | Lift Shaft Handover | 39.94d | 2027-01-13 | 2027-02-21 | 2978 |  |  |
| 3657 |  | Lift installation work | 180d | 2027-02-21 | 2027-08-20 | 3656 |  |  |
| 3658 |  | Lift testing and commissioning | 84.94d | 2027-08-20 | 2027-11-13 | 3657 |  |  |
| 3659 | 37100.37300.37600.38200.95500.194600 | **AC work** | 240d | 2028-05-13 | 2029-01-08 |  |  | start no earlier than 2028-05-13 |
| 3660 |  | Split AC | 240d | 2028-05-13 | 2029-01-08 | 3676FS-26.75d |  |  |
| 3661 | 37100.37300.37600.38200.131400 | **Tower Completion** | 253.88d | 2027-02-25 | 2027-11-06 |  |  | start no earlier than 2027-02-25 |
| 3662 |  | SURFACE PREPARATION | 79.94d | 2027-02-25 | 2027-05-16 | 3016FS+1.88d |  |  |
| 3663 |  | External Painting | 99.94d | 2027-05-16 | 2027-08-24 | 3662 |  |  |
| 3664 |  | Final coat of painting | 74d | 2027-08-24 | 2027-11-06 | 3663 |  |  |
| 3665 |  | Misc. work | 59.94d | 2027-08-24 | 2027-10-23 | 3663 |  |  |
| 3666 | 37100.37300.37600.38200.193000 | **Entrance lobby** | 60d | 2027-08-26 | 2027-10-25 |  |  | start no earlier than 2027-08-26 |
| 3667 |  | Entrance lobby | 60d | 2027-08-26 | 2027-10-25 | 3665SS+2d |  |  |
| 3668 | 37100.37300.37600.38200.107100 | **Post OC activities** | 250.88d | 2028-03-16 | 2028-11-22 |  |  | start no earlier than 2028-03-16 |
| 3669 |  | Wardrobe installation | 179.94d | 2028-05-13 | 2028-11-09 | 3676FS-26.75d |  |  |
| 3670 |  | CP & SANITARYWARE | 119.94d | 2028-05-13 | 2028-09-10 | 3676FS-26.75d |  |  |
| 3671 |  | Wooden Flooring | 179.94d | 2028-05-13 | 2028-11-09 | 3676FS-26.75d |  |  |
| 3672 |  | Electrical Fixtures And Fittings | 119.94d | 2028-03-16 | 2028-07-14 | 3576 |  |  |
| 3673 |  | Modular Kitchen | 179.94d | 2028-05-13 | 2028-11-09 | 3669SS |  |  |
| 3674 |  | External Elevation Façade | 180d | 2028-05-26 | 2028-11-22 | 3676FS-13.38d |  |  |
| 3675 |  | OC Application/Readiness | 0d | 2028-04-15 | 2028-04-15 | 2978, 3585FS+7.12d, 3647, 3593, 3578, 3588, 3629, 3634, 3635, 3637, 3638, 3639, 3640, 3642, 3643, 3646, 3649, 3652, 3654, 3658, 3664, 3665, 3667 |  |  |
| 3676 |  | OC Receipt | 0.94d | 2028-06-08 | 2028-06-09 | 3675FS+53.38d |  |  |
| 3677 |  | Offer To Possession | 29.94d | 2028-11-22 | 2028-12-22 | 3669, 3670, 3671, 3672, 3673, 3674 |  |  |
| 3678 | 37100.37300.37600.38300 | **Tower 1** | 1908.44d | 2023-09-30 | 2029-05-11 |  | 7% | start no earlier than 2023-09-30 |
| 3679 | 37100.37300.37600.38300.98400 | **Substructure** | 833.69d | 2023-09-30 | 2026-04-18 |  | 63% | start no earlier than 2023-09-30 |
| 3680 | 37100.37300.37600.38300.98400.108400 | **Soil Bed Preparation** | 783.88d | 2023-09-30 | 2026-02-27 |  | 77% | start no earlier than 2023-09-30 |
| 3681 |  | Test Piling | 74.94d | 2023-09-30 | 2024-01-27 |  | 100% | start no earlier than 2023-09-30 |
| 3682 |  | Excavation | 29.94d | 2024-01-10 | 2024-02-08 | 7SS+36.74d | 100% | start no earlier than 2024-01-10 |
| 3683 |  | Main Piling Work | 182.56d | 2024-04-12 | 2024-10-11 | 7FS+227.55d | 100% | start no earlier than 2024-04-12 |
| 3684 |  | Anti-termite | 4.94d | 2025-11-30 | 2025-12-04 | 3683FF-92.8d |  |  |
| 3685 |  | PCC | 9.81d | 2024-10-18 | 2024-10-27 | 3682FS+55.05d, 3684SS+12.95d | 100% | start no earlier than 2024-10-18 |
| 3686 |  | Backfilling | 20.06d | 2025-11-30 | 2025-12-29 |  |  | start no earlier than 2025-11-30 |
| 3687 |  | Backfilling | 59.94d | 2025-12-29 | 2026-02-27 | 3700, 3686 |  |  |
| 3688 | 37100.37300.37600.38300.98400.103500 | **RCC Structure** | 118.5d | 2024-12-05 | 2025-03-29 |  | 100% | start no earlier than 2024-12-05 |
| 3689 | 37100.37300.37600.38300.98400.103500.170400 | **Raft Foundation** | 30.5d | 2024-12-05 | 2024-12-31 |  | 100% | start no earlier than 2024-12-05 |
| 3690 |  | Reinforcement | 30d | 2024-12-05 | 2024-12-31 | 3685FS-29.5d | 100% | start no earlier than 2024-12-05 |
| 3691 |  | Formwork | 11d | 2024-12-17 | 2024-12-29 | 3690FF+5d | 100% | start no earlier than 2024-12-17 |
| 3692 |  | Concreting | 4d | 2024-12-28 | 2024-12-31 | 3691FF-2d | 100% | start no earlier than 2024-12-28 |
| 3693 | 37100.37300.37600.38300.98400.103500.170300 | **Basement 1 Slab** | 32d | 2025-01-01 | 2025-02-01 |  | 100% | start no earlier than 2025-01-01 |
| 3694 |  | Reinforcement | 23d | 2025-01-01 | 2025-02-01 | 3692FS+1d | 100% | start no earlier than 2025-01-01 |
| 3695 |  | Formwork | 23d | 2025-01-03 | 2025-02-01 | 3694FF | 100% | start no earlier than 2025-01-03 |
| 3696 |  | Concreting | 1.25d | 2025-01-25 | 2025-02-01 | 3695FF-0.75d | 100% | start no earlier than 2025-01-25 |
| 3697 | 37100.37300.37600.38300.98400.103500.170200 | **Basement 2 Slab/GF** | 26d | 2025-01-26 | 2025-02-20 |  | 100% | start no earlier than 2025-01-26 |
| 3698 |  | Reinforcement | 22d | 2025-01-26 | 2025-02-16 | 3696FS-6.25d | 100% | start no earlier than 2025-01-26 |
| 3699 |  | Formwork | 22d | 2025-01-29 | 2025-02-19 | 3698FF+3d | 100% | start no earlier than 2025-01-29 |
| 3700 |  | Concreting | 2d | 2025-02-19 | 2025-02-20 | 3699FS-1d | 100% | start no earlier than 2025-02-19 |
| 3701 | 37100.37300.37600.38300.98400.103500.170100 | **Podium /Ground Floor Slab** | 38d | 2025-02-20 | 2025-03-29 |  | 100% | start no earlier than 2025-02-20 |
| 3702 |  | Reinforcement | 20d | 2025-02-20 | 2025-03-27 | 3700 | 100% | start no earlier than 2025-02-20 |
| 3703 |  | Formwork | 18d | 2025-02-26 | 2025-03-28 | 3702FF+0.75d | 100% | start no earlier than 2025-02-26 |
| 3704 |  | Concreting | 2d | 2025-03-28 | 2025-03-29 | 3703 | 100% | start no earlier than 2025-03-28 |
| 3705 | 37100.37300.37600.38300.98400.170000 | **Substructure Finishing** | 129.81d | 2025-11-30 | 2026-04-18 |  |  | start no earlier than 2025-11-30 |
| 3706 |  | Masonary work | 44.94d | 2025-11-30 | 2026-01-23 | 3704FS+26.75d |  |  |
| 3707 |  | Plaster | 39.94d | 2026-01-23 | 2026-03-04 | 3706 |  |  |
| 3708 |  | Structural steel | 59.94d | 2025-11-30 | 2026-02-07 | 3704FS+53.38d |  |  |
| 3709 |  | White Wash | 44.94d | 2026-03-04 | 2026-04-18 | 3707 |  |  |
| 3710 | 37100.37300.37600.38300.39300 | **Superstructure** | 1260.06d | 2025-03-31 | 2028-11-16 |  | 4% | start no earlier than 2025-03-31 |

| ID | WBS | Task | Duration | Start | Finish | Predecessors | Complete | Constraint |
| --- | --- | --- | --- | --- | --- | --- | --- | --- |
| 3711 | 37100.37300.37600.38300.39300.43700 | **RCC structure** | 582.12d | 2025-03-31 | 2027-01-08 |  | 35% | start no earlier than 2025-03-31 |
| 3712 | 37100.37300.37600.38300.39300.43700.130600 | **1st floor slab** | 55d | 2025-03-31 | 2025-05-24 |  | 100% | start no earlier than 2025-03-31 |
| 3713 |  | Reinforcement | 20d | 2025-03-31 | 2025-05-04 | 3704FS+1d | 100% | start no earlier than 2025-03-31 |
| 3714 |  | Wall conduiting | 4d | 2025-04-01 | 2025-05-01 | 3713SS+2.75d | 100% | start no earlier than 2025-04-01 |
| 3715 |  | Formwork | 21d | 2025-04-14 | 2025-05-21 | 3713SS+3d | 100% | start no earlier than 2025-04-14 |
| 3716 |  | Concreting | 8d | 2025-05-09 | 2025-05-24 | 3715FS-13d | 100% | start no earlier than 2025-05-09 |
| 3717 | 37100.37300.37600.38300.39300.43700.130700 | **2nd floor slab** | 64d | 2025-05-11 | 2025-07-13 |  | 100% | start no earlier than 2025-05-11 |
| 3718 |  | Reinforcement | 30d | 2025-05-11 | 2025-06-30 | 3716FS-16d | 100% | start no earlier than 2025-05-11 |
| 3719 |  | Wall conduiting | 15d | 2025-05-13 | 2025-06-23 | 3714, 3718SS+2.75d | 100% | start no earlier than 2025-05-13 |
| 3720 |  | Formwork | 19d | 2025-05-14 | 2025-07-02 | 3718SS+3d | 100% | start no earlier than 2025-05-14 |
| 3721 |  | Concreting | 11d | 2025-07-03 | 2025-07-13 | 3720 | 100% | start no earlier than 2025-07-03 |
| 3722 | 37100.37300.37600.38300.39300.43700.130900 | **3rd floor slab** | 21d | 2025-07-14 | 2025-08-03 |  | 100% | start no earlier than 2025-07-14 |
| 3723 |  | Reinforcement | 12d | 2025-07-14 | 2025-07-30 | 3721 | 100% | start no earlier than 2025-07-14 |
| 3724 |  | Wall conduiting | 10d | 2025-07-16 | 2025-07-29 | 3719, 3723SS+1.75d | 100% | start no earlier than 2025-07-16 |
| 3725 |  | Formwork | 11d | 2025-07-15 | 2025-07-30 | 3723SS+3d | 100% | start no earlier than 2025-07-15 |
| 3726 |  | Concreting | 5d | 2025-07-27 | 2025-08-03 | 3725FS-3d | 100% | start no earlier than 2025-07-27 |
| 3727 | 37100.37300.37600.38300.39300.43700.128100 | **4th floor slab** | 18d | 2025-08-04 | 2025-08-21 |  | 100% | start no earlier than 2025-08-04 |
| 3728 |  | Reinforcement | 6d | 2025-08-04 | 2025-08-18 | 3726FS+1d | 100% | start no earlier than 2025-08-04 |
| 3729 |  | Wall conduiting | 3d | 2025-08-11 | 2025-08-18 | 3724, 3728SS+1d | 100% | start no earlier than 2025-08-11 |
| 3730 |  | Formwork | 7d | 2025-08-11 | 2025-08-18 | 3728SS+1d | 100% | start no earlier than 2025-08-11 |
| 3731 |  | Concreting | 6d | 2025-08-13 | 2025-08-21 | 3730FS-6d | 100% | start no earlier than 2025-08-13 |
| 3732 | 37100.37300.37600.38300.39300.43700.128000 | **5th floor slab** | 12d | 2025-08-21 | 2025-09-01 |  | 100% | start no earlier than 2025-08-21 |
| 3733 |  | Reinforcement | 8d | 2025-08-21 | 2025-08-30 | 3731FS+1d | 100% | start no earlier than 2025-08-21 |
| 3734 |  | Wall conduiting | 3d | 2025-08-21 | 2025-08-30 | 3729, 3733SS+1d | 100% | start no earlier than 2025-08-21 |
| 3735 |  | Formwork | 7d | 2025-08-21 | 2025-08-30 | 3733SS+1d | 100% | start no earlier than 2025-08-21 |
| 3736 |  | Concreting | 2d | 2025-08-31 | 2025-09-01 | 3735 | 100% | start no earlier than 2025-08-31 |
| 3737 | 37100.37300.37600.38300.39300.43700.127900 | **6th floor slab** | 17d | 2025-08-30 | 2025-09-15 |  | 100% | start no earlier than 2025-08-30 |
| 3738 |  | Reinforcement | 8d | 2025-08-30 | 2025-09-14 | 3736FS+1d | 100% | start no earlier than 2025-08-30 |
| 3739 |  | Wall conduiting | 3d | 2025-08-30 | 2025-09-14 | 3734, 3738SS+1d | 100% | start no earlier than 2025-08-30 |
| 3740 |  | Formwork | 7d | 2025-08-30 | 2025-09-14 | 3738SS+1d | 100% | start no earlier than 2025-08-30 |
| 3741 |  | Concreting | 5d | 2025-09-11 | 2025-09-15 | 3740 | 100% | start no earlier than 2025-09-11 |
| 3742 | 37100.37300.37600.38300.39300.43700.127800 | **7th floor slab** | 17d | 2025-09-12 | 2025-09-28 |  | 100% | start no earlier than 2025-09-12 |
| 3743 |  | Reinforcement | 8d | 2025-09-12 | 2025-09-22 | 3741FS+1d | 100% | start no earlier than 2025-09-12 |
| 3744 |  | Wall conduiting | 3d | 2025-09-12 | 2025-09-22 | 3739, 3743SS+1d | 100% | start no earlier than 2025-09-12 |
| 3745 |  | Formwork | 7d | 2025-09-12 | 2025-09-22 | 3743SS+1d | 100% | start no earlier than 2025-09-12 |
| 3746 |  | Concreting | 8d | 2025-09-16 | 2025-09-28 | 3745 | 100% | start no earlier than 2025-09-16 |
| 3747 | 37100.37300.37600.38300.39300.43700.127700 | **8th floor slab** | 18d | 2025-09-26 | 2025-10-13 |  | 100% | start no earlier than 2025-09-26 |
| 3748 |  | Reinforcement | 10d | 2025-09-26 | 2025-10-12 | 3746FS+1d | 100% | start no earlier than 2025-09-26 |
| 3749 |  | Wall conduiting | 8d | 2025-09-26 | 2025-10-12 | 3744, 3748SS+1d | 100% | start no earlier than 2025-09-26 |
| 3750 |  | Formwork | 10d | 2025-09-26 | 2025-10-12 | 3748SS+1d | 100% | start no earlier than 2025-09-26 |
| 3751 |  | Concreting | 3d | 2025-10-10 | 2025-10-13 | 3750 | 100% | start no earlier than 2025-10-10 |
| 3752 | 37100.37300.37600.38300.39300.43700.127600 | **9th floor slab** | 17d | 2025-10-14 | 2025-10-30 |  | 100% | start no earlier than 2025-10-14 |
| 3753 |  | Reinforcement | 13d | 2025-10-14 | 2025-10-29 | 3751FS-1d | 100% | start no earlier than 2025-10-14 |
| 3754 |  | Wall conduiting | 10d | 2025-10-19 | 2025-10-29 | 3749, 3753SS+1d | 100% | start no earlier than 2025-10-19 |
| 3755 |  | Formwork | 7d | 2025-10-20 | 2025-10-30 | 3753SS+1d | 100% | start no earlier than 2025-10-20 |
| 3756 |  | Concreting | 5d | 2025-10-25 | 2025-10-30 | 3755 | 100% | start no earlier than 2025-10-25 |
| 3757 | 37100.37300.37600.38300.39300.43700.127500 | **10th floor slab** | 18d | 2025-10-27 | 2025-11-26 |  | 100% | start no earlier than 2025-10-27 |
| 3758 |  | Reinforcement | 8d | 2025-10-27 | 2025-11-26 | 3756FS+1d | 100% | start no earlier than 2025-10-27 |
| 3759 |  | Wall conduiting | 3d | 2025-10-27 | 2025-11-26 | 3754, 3758SS+1d | 100% | start no earlier than 2025-10-27 |
| 3760 |  | Formwork | 7d | 2025-10-27 | 2025-11-26 | 3758SS+1d | 100% | start no earlier than 2025-10-27 |
| 3761 |  | Concreting | 1d | 2025-11-10 | 2025-11-26 | 3760 | 100% | start no earlier than 2025-11-10 |
| 3762 | 37100.37300.37600.38300.39300.43700.169900 | **11th floor slab** | 8.12d | 2025-11-26 | 2025-12-03 |  | 47% | start no earlier than 2025-11-26 |
| 3763 |  | Reinforcement | 8d | 2025-11-26 | 2025-12-03 | 3761FS-1d | 50% | start no earlier than 2025-11-26 |
| 3764 |  | Wall conduiting | 3d | 2025-11-26 | 2025-12-01 | 3759, 3763SS+1d | 33% | start no earlier than 2025-11-26 |
| 3765 |  | Formwork | 7d | 2025-11-26 | 2025-12-02 | 3763SS+1d | 57% | start no earlier than 2025-11-26 |
| 3766 |  | Concreting | 1d | 2025-12-02 | 2025-12-03 | 3765 |  |  |
| 3767 | 37100.37300.37600.38300.39300.43700.169800 | **12th floor slab** | 9d | 2025-12-18 | 2025-12-27 |  |  | start no earlier than 2025-12-18 |
| 3768 |  | Reinforcement | 8d | 2025-12-18 | 2025-12-26 | 3766FS-1d |  |  |
| 3769 |  | Wall conduiting | 3d | 2025-12-19 | 2025-12-22 | 3764, 3768SS+1d |  |  |
| 3770 |  | Formwork | 7d | 2025-12-19 | 2025-12-26 | 3768SS+1d |  |  |
| 3771 |  | Concreting | 1d | 2025-12-26 | 2025-12-27 | 3770 |  |  |
| 3772 | 37100.37300.37600.38300.39300.43700.169700 | **13th floor slab** | 9d | 2025-12-28 | 2026-01-06 |  |  | start no earlier than 2025-12-28 |
| 3773 |  | Reinforcement | 8d | 2025-12-28 | 2026-01-05 | 3771FS+1d |  |  |
| 3774 |  | Wall conduiting | 3d | 2025-12-29 | 2026-01-01 | 3769, 3773SS+1d |  |  |
| 3775 |  | Formwork | 7d | 2025-12-29 | 2026-01-05 | 3773SS+1d |  |  |
| 3776 |  | Concreting | 1d | 2026-01-05 | 2026-01-06 | 3775 |  |  |
| 3777 | 37100.37300.37600.38300.39300.43700.169600 | **14th floor slab** | 9d | 2026-01-05 | 2026-01-14 |  |  | start no earlier than 2026-01-05 |
| 3778 |  | Reinforcement | 8d | 2026-01-05 | 2026-01-13 | 3776FS-1d |  |  |
| 3779 |  | Wall conduiting | 3d | 2026-01-06 | 2026-01-09 | 3774, 3778SS+1d |  |  |
| 3780 |  | Formwork | 7d | 2026-01-06 | 2026-01-13 | 3778SS+1d |  |  |

| ID | WBS | Task | Duration | Start | Finish | Predecessors | Constraint |
| --- | --- | --- | --- | --- | --- | --- | --- |
| 3781 |  | Concreting | 1d | 2026-01-13 | 2026-01-14 | 3780 |  |
| 3782 | 37100.37300.37600.38300.39300.43700.169500 | **15th floor slab** | 9d | 2026-01-15 | 2026-01-24 |  | start no earlier than 2026-01-15 |
| 3783 |  | Reinforcement | 8d | 2026-01-15 | 2026-01-23 | 3781FS+1d |  |
| 3784 |  | Wall conduiting | 3d | 2026-01-16 | 2026-01-19 | 3779, 3783SS+1d |  |
| 3785 |  | Formwork | 7d | 2026-01-16 | 2026-01-23 | 3783SS+1d |  |
| 3786 |  | Concreting | 1d | 2026-01-23 | 2026-01-24 | 3785 |  |
| 3787 | 37100.37300.37600.38300.39300.43700.169300 | **16th floor slab** | 12d | 2026-01-21 | 2026-02-02 |  | start no earlier than 2026-01-21 |
| 3788 |  | Reinforcement | 10d | 2026-01-21 | 2026-01-31 | 3786FS-3d |  |
| 3789 |  | Wall conduiting | 3d | 2026-01-22 | 2026-01-25 | 3784, 3788SS+1d |  |
| 3790 |  | Formwork | 10d | 2026-01-22 | 2026-02-01 | 3788SS+1d |  |
| 3791 |  | Concreting | 1d | 2026-02-01 | 2026-02-02 | 3790 |  |
| 3792 | 37100.37300.37600.38300.39300.43700.169200 | **17th floor slab** | 9d | 2026-02-01 | 2026-02-10 |  | start no earlier than 2026-02-01 |
| 3793 |  | Reinforcement | 7d | 2026-02-01 | 2026-02-08 | 3791FS-1d |  |
| 3794 |  | Wall conduiting | 3d | 2026-02-02 | 2026-02-05 | 3789, 3793SS+1d |  |
| 3795 |  | Formwork | 7d | 2026-02-02 | 2026-02-09 | 3793SS+1d |  |
| 3796 |  | Concreting | 1d | 2026-02-09 | 2026-02-10 | 3795 |  |
| 3797 | 37100.37300.37600.38300.39300.43700.169100 | **18th floor slab** | 9d | 2026-02-09 | 2026-02-18 |  | start no earlier than 2026-02-09 |
| 3798 |  | Reinforcement | 7d | 2026-02-09 | 2026-02-16 | 3796FS-1d |  |
| 3799 |  | Wall conduiting | 3d | 2026-02-10 | 2026-02-13 | 3794, 3798SS+1d |  |
| 3800 |  | Formwork | 7d | 2026-02-10 | 2026-02-17 | 3798SS+1d |  |
| 3801 |  | Concreting | 1d | 2026-02-17 | 2026-02-18 | 3800 |  |
| 3802 | 37100.37300.37600.38300.39300.43700.168900 | **19th floor slab** | 8d | 2026-02-17 | 2026-02-25 |  | start no earlier than 2026-02-17 |
| 3803 |  | Reinforcement | 7d | 2026-02-17 | 2026-02-24 | 3801FS-1d |  |
| 3804 |  | Wall conduiting | 3d | 2026-02-18 | 2026-02-21 | 3799, 3803SS+1d |  |
| 3805 |  | Formwork | 6d | 2026-02-18 | 2026-02-24 | 3803SS+1d |  |
| 3806 |  | Concreting | 1d | 2026-02-24 | 2026-02-25 | 3805 |  |
| 3807 | 37100.37300.37600.38300.39300.43700.168800 | **20th floor slab** | 8d | 2026-02-25 | 2026-03-05 |  | start no earlier than 2026-02-25 |
| 3808 |  | Reinforcement | 7d | 2026-02-25 | 2026-03-04 | 3806 |  |
| 3809 |  | Wall conduiting | 3d | 2026-02-26 | 2026-03-01 | 3804, 3808SS+1d |  |
| 3810 |  | Formwork | 6d | 2026-02-26 | 2026-03-04 | 3808SS+1d |  |
| 3811 |  | Concreting | 1d | 2026-03-04 | 2026-03-05 | 3810 |  |
| 3812 | 37100.37300.37600.38300.39300.43700.168700 | **21st floor slab** | 10d | 2026-03-10 | 2026-03-20 |  | start no earlier than 2026-03-10 |
| 3813 |  | Reinforcement | 9d | 2026-03-10 | 2026-03-19 | 3811FS+5d |  |
| 3814 |  | Wall conduiting | 3d | 2026-03-11 | 2026-03-14 | 3809, 3813SS+1d |  |
| 3815 |  | Formwork | 7d | 2026-03-11 | 2026-03-18 | 3813SS+1d |  |
| 3816 |  | Concreting | 2d | 2026-03-18 | 2026-03-20 | 3815 |  |
| 3817 | 37100.37300.37600.38300.39300.43700.168500 | **22nd floor slab** | 10d | 2026-03-24 | 2026-04-03 |  | start no earlier than 2026-03-24 |
| 3818 |  | Reinforcement | 9d | 2026-03-24 | 2026-04-02 | 3816FS+4d |  |
| 3819 |  | Wall conduiting | 3d | 2026-03-25 | 2026-03-28 | 3814, 3818SS+1d |  |
| 3820 |  | Formwork | 7d | 2026-03-25 | 2026-04-01 | 3818SS+1d |  |
| 3821 |  | Concreting | 2d | 2026-04-01 | 2026-04-03 | 3820 |  |
| 3822 | 37100.37300.37600.38300.39300.43700.168400 | **23rd floor slab** | 10d | 2026-04-07 | 2026-04-17 |  | start no earlier than 2026-04-07 |
| 3823 |  | Reinforcement | 9d | 2026-04-07 | 2026-04-16 | 3821FS+4d |  |
| 3824 |  | Wall conduiting | 3d | 2026-04-08 | 2026-04-11 | 3819, 3823SS+1d |  |
| 3825 |  | Formwork | 7d | 2026-04-08 | 2026-04-15 | 3823SS+1d |  |
| 3826 |  | Concreting | 2d | 2026-04-15 | 2026-04-17 | 3825 |  |
| 3827 | 37100.37300.37600.38300.39300.43700.168300 | **24th floor slab** | 12d | 2026-04-19 | 2026-05-01 |  | start no earlier than 2026-04-19 |
| 3828 |  | Reinforcement | 10d | 2026-04-19 | 2026-04-29 | 3826FS+2d |  |
| 3829 |  | Wall conduiting | 3d | 2026-04-20 | 2026-04-23 | 3824, 3828SS+1d |  |
| 3830 |  | Formwork | 10d | 2026-04-20 | 2026-04-30 | 3828SS+1d |  |
| 3831 |  | Concreting | 1d | 2026-04-30 | 2026-05-01 | 3830 |  |
| 3832 | 37100.37300.37600.38300.39300.43700.168200 | **25th floor slab** | 12d | 2026-05-02 | 2026-05-14 |  | start no earlier than 2026-05-02 |
| 3833 |  | Reinforcement | 10d | 2026-05-02 | 2026-05-12 | 3831FS+1d |  |
| 3834 |  | Wall conduiting | 3d | 2026-05-03 | 2026-05-06 | 3829, 3833SS+1d |  |
| 3835 |  | Formwork | 10d | 2026-05-03 | 2026-05-13 | 3833SS+1d |  |
| 3836 |  | Concreting | 1d | 2026-05-13 | 2026-05-14 | 3835 |  |
| 3837 | 37100.37300.37600.38300.39300.43700.168100 | **26th floor slab** | 10d | 2026-05-15 | 2026-05-25 |  | start no earlier than 2026-05-15 |
| 3838 |  | Reinforcement | 9d | 2026-05-15 | 2026-05-24 | 3836FS+1d |  |
| 3839 |  | Wall conduiting | 3d | 2026-05-16 | 2026-05-19 | 3834, 3838SS+1d |  |
| 3840 |  | Formwork | 7d | 2026-05-16 | 2026-05-23 | 3838SS+1d |  |
| 3841 |  | Concreting | 2d | 2026-05-23 | 2026-05-25 | 3840 |  |
| 3842 | 37100.37300.37600.38300.39300.43700.168000 | **27th floor slab** | 10d | 2026-05-30 | 2026-06-09 |  | start no earlier than 2026-05-30 |
| 3843 |  | Reinforcement | 9d | 2026-05-30 | 2026-06-08 | 3841FS+5d |  |
| 3844 |  | Wall conduiting | 3d | 2026-05-31 | 2026-06-03 | 3839, 3843SS+1d |  |
| 3845 |  | Formwork | 7d | 2026-05-31 | 2026-06-07 | 3843SS+1d |  |
| 3846 |  | Concreting | 2d | 2026-06-07 | 2026-06-09 | 3845 |  |
| 3847 | 37100.37300.37600.38300.39300.43700.167900 | **28th floor slab** | 10d | 2026-06-14 | 2026-06-24 |  | start no earlier than 2026-06-14 |
| 3848 |  | Reinforcement | 9d | 2026-06-14 | 2026-06-23 | 3846FS+5d |  |
| 3849 |  | Wall conduiting | 3d | 2026-06-15 | 2026-06-18 | 3844, 3848SS+1d |  |
| 3850 |  | Formwork | 7d | 2026-06-15 | 2026-06-22 | 3848SS+1d |  |

| ID | WBS | Task | Duration | Start | Finish | Predecessors | Constraint |
| --- | --- | --- | --- | --- | --- | --- | --- |
| 3851 |  | Concreting | 2d | 2026-06-22 | 2026-06-24 | 3850 |  |
| 3852 | 37100.37300.37600.38300.39300.43700.167800 | **29th floor slab** | 10d | 2026-06-28 | 2026-07-08 |  | start no earlier than 2026-06-28 |
| 3853 |  | Reinforcement | 7d | 2026-06-28 | 2026-07-05 | 3851FS+4d |  |
| 3854 |  | Wall conduiting | 3d | 2026-06-29 | 2026-07-02 | 3849, 3853SS+1d |  |
| 3855 |  | Formwork | 8d | 2026-06-29 | 2026-07-07 | 3853SS+1d |  |
| 3856 |  | Concreting | 1d | 2026-07-07 | 2026-07-08 | 3855 |  |
| 3857 | 37100.37300.37600.38300.39300.43700.167700 | **30th floor slab** | 10d | 2026-07-12 | 2026-07-22 |  | start no earlier than 2026-07-12 |
| 3858 |  | Reinforcement | 7d | 2026-07-12 | 2026-07-19 | 3856FS+4d |  |
| 3859 |  | Wall conduiting | 3d | 2026-07-13 | 2026-07-16 | 3854, 3858SS+1d |  |
| 3860 |  | Formwork | 8d | 2026-07-13 | 2026-07-21 | 3858SS+1d |  |
| 3861 |  | Concreting | 1d | 2026-07-21 | 2026-07-22 | 3860 |  |
| 3862 | 37100.37300.37600.38300.39300.43700.167600 | **31st floor slab** | 10d | 2026-07-22 | 2026-08-01 |  | start no earlier than 2026-07-22 |
| 3863 |  | Reinforcement | 7d | 2026-07-22 | 2026-07-29 | 3861 |  |
| 3864 |  | Wall conduiting | 3d | 2026-07-23 | 2026-07-26 | 3859, 3863SS+1d |  |
| 3865 |  | Formwork | 8d | 2026-07-23 | 2026-07-31 | 3863SS+1d |  |
| 3866 |  | Concreting | 1d | 2026-07-31 | 2026-08-01 | 3865 |  |
| 3867 | 37100.37300.37600.38300.39300.43700.167500 | **32nd floor slab** | 11d | 2026-08-05 | 2026-08-16 |  | start no earlier than 2026-08-05 |
| 3868 |  | Reinforcement | 10d | 2026-08-05 | 2026-08-15 | 3866FS+4d |  |
| 3869 |  | Wall conduiting | 7d | 2026-08-06 | 2026-08-13 | 3864, 3868SS+1d |  |
| 3870 |  | Formwork | 8d | 2026-08-06 | 2026-08-14 | 3868SS+1d |  |
| 3871 |  | Concreting | 2d | 2026-08-14 | 2026-08-16 | 3870 |  |
| 3872 | 37100.37300.37600.38300.39300.43700.167400 | **33rd floor slab** | 10.88d | 2026-08-20 | 2026-08-31 |  | start no earlier than 2026-08-20 |
| 3873 |  | Reinforcement | 8.94d | 2026-08-20 | 2026-08-29 | 3871FS+4d |  |
| 3874 |  | Wall conduiting | 1.94d | 2026-08-21 | 2026-08-23 | 3869, 3873SS+1d |  |
| 3875 |  | Formwork | 8.94d | 2026-08-21 | 2026-08-30 | 3873SS+1d |  |
| 3876 |  | Concreting | 0.94d | 2026-08-30 | 2026-08-31 | 3875 |  |
| 3877 | 37100.37300.37600.38300.39300.43700.167300 | **34th floor slab** | 11d | 2026-09-04 | 2026-09-15 |  | start no earlier than 2026-09-04 |
| 3878 |  | Reinforcement | 10d | 2026-09-04 | 2026-09-14 | 3876FS+4d |  |
| 3879 |  | Wall conduiting | 7d | 2026-09-05 | 2026-09-12 | 3874, 3878SS+1d |  |
| 3880 |  | Formwork | 8d | 2026-09-05 | 2026-09-13 | 3878SS+1d |  |
| 3881 |  | Concreting | 2d | 2026-09-13 | 2026-09-15 | 3880 |  |
| 3882 | 37100.37300.37600.38300.39300.43700.167200 | **35th floor slab** | 12d | 2026-09-19 | 2026-10-01 |  | start no earlier than 2026-09-19 |
| 3883 |  | Reinforcement | 10d | 2026-09-19 | 2026-09-29 | 3881FS+4d |  |
| 3884 |  | Wall conduiting | 7d | 2026-09-20 | 2026-09-27 | 3879, 3883SS+1d |  |
| 3885 |  | Formwork | 8d | 2026-09-21 | 2026-09-29 | 3884SS+1d |  |
| 3886 |  | Concreting | 2d | 2026-09-29 | 2026-10-01 | 3885 |  |
| 3887 | 37100.37300.37600.38300.39300.43700.167100 | **Terrace floor slab** | 19d | 2026-10-01 | 2026-10-20 |  | start no earlier than 2026-10-01 |
| 3888 |  | Reinforcement | 19d | 2026-10-01 | 2026-10-20 | 3886 |  |
| 3889 |  | Wall conduiting | 10d | 2026-10-02 | 2026-10-12 | 3884, 3888SS+1d |  |
| 3890 |  | Formwork | 13d | 2026-10-02 | 2026-10-15 | 3888SS+1d |  |
| 3891 |  | Concreting | 2d | 2026-10-15 | 2026-10-17 | 3890 |  |
| 3892 | 37100.37300.37600.38300.39300.43700.167000 | **OHT & Mumty** | 38.88d | 2026-10-17 | 2027-01-08 |  | start no earlier than 2026-10-17 |
| 3893 |  | Reinforcement | 29.94d | 2026-10-17 | 2026-12-31 | 3891 |  |
| 3894 |  | Wall conduiting | 4.94d | 2026-10-18 | 2026-10-23 | 3889, 3893SS+1d |  |
| 3895 |  | Formwork | 32.94d | 2026-10-20 | 2027-01-06 | 3893SS+3d |  |
| 3896 |  | Concreting | 2.94d | 2027-01-06 | 2027-01-08 | 3895 |  |
| 3897 | 37100.37300.37600.38300.39300.45500 | **Post Pour Activities** | 392.75d | 2025-11-30 | 2027-02-19 |  | start no earlier than 2025-11-30 |
| 3898 |  | 1st Floor | 7d | 2025-11-30 | 2025-12-16 | 3726FS+0.25d |  |
| 3899 |  | 2nd Floor | 7d | 2025-12-16 | 2025-12-23 | 3898, 3746 |  |
| 3900 |  | 3rd Floor | 7d | 2025-12-23 | 2025-12-30 | 3899, 3751 |  |
| 3901 |  | 4th Floor | 7d | 2025-12-30 | 2026-01-06 | 3900, 3756 |  |
| 3902 |  | 5th Floor | 7d | 2026-01-06 | 2026-01-13 | 3901, 3761 |  |
| 3903 |  | 6th Floor | 7d | 2026-01-13 | 2026-01-20 | 3902, 3766 |  |
| 3904 |  | 7th Floor | 7d | 2026-01-20 | 2026-01-27 | 3903, 3771 |  |
| 3905 |  | 8th Floor | 7d | 2026-01-27 | 2026-02-03 | 3904, 3776 |  |
| 3906 |  | 9th Floor | 7d | 2026-02-03 | 2026-02-10 | 3905, 3781 |  |
| 3907 |  | 10th Floor | 7d | 2026-02-10 | 2026-02-17 | 3906, 3786 |  |
| 3908 |  | 11th Floor | 7d | 2026-02-17 | 2026-02-24 | 3907, 3791 |  |
| 3909 |  | 12th Floor | 7d | 2026-02-24 | 2026-03-03 | 3908, 3796 |  |
| 3910 |  | 13th Floor | 7d | 2026-03-03 | 2026-03-10 | 3909, 3801 |  |
| 3911 |  | 14th Floor | 7d | 2026-03-10 | 2026-03-17 | 3910, 3806 |  |
| 3912 |  | 15th Floor | 7d | 2026-03-17 | 2026-03-24 | 3911, 3811 |  |
| 3913 |  | 16th Floor | 7d | 2026-03-24 | 2026-03-31 | 3912, 3816 |  |
| 3914 |  | 17th Floor | 7d | 2026-04-03 | 2026-04-10 | 3913, 3821 |  |
| 3915 |  | 18th Floor | 7d | 2026-04-17 | 2026-04-24 | 3914, 3826 |  |
| 3916 |  | 19th Floor | 7d | 2026-05-01 | 2026-05-08 | 3915, 3831 |  |
| 3917 |  | 20th Floor | 7d | 2026-05-14 | 2026-05-21 | 3916, 3836 |  |
| 3918 |  | 21st Floor | 7d | 2026-05-25 | 2026-06-01 | 3917, 3841 |  |
| 3919 |  | 22nd Floor | 7d | 2026-06-09 | 2026-06-16 | 3918, 3846 |  |
| 3920 |  | 23rd Floor | 7d | 2026-06-24 | 2026-07-01 | 3919, 3851 |  |

| ID | WBS | Task | Duration | Start | Finish | Predecessors | Constraint |
| --- | --- | --- | --- | --- | --- | --- | --- |
| 3921 |  | 24th Floor | 7d | 2026-07-08 | 2026-07-15 | 3920, 3856 |  |
| 3922 |  | 25th Floor | 7d | 2026-07-22 | 2026-07-29 | 3921, 3861 |  |
| 3923 |  | 26th Floor | 7d | 2026-08-01 | 2026-08-08 | 3922, 3866 |  |
| 3924 |  | 27th Floor | 7d | 2026-08-16 | 2026-08-23 | 3923, 3871 |  |
| 3925 |  | 28th Floor | 7d | 2026-08-31 | 2026-09-07 | 3924, 3876 |  |
| 3926 |  | 29th Floor | 7d | 2026-09-15 | 2026-09-22 | 3925, 3881 |  |
| 3927 |  | 30th Floor | 7d | 2026-10-01 | 2026-10-08 | 3926, 3886 |  |
| 3928 |  | 31st Floor | 7d | 2026-10-17 | 2026-10-24 | 3927, 3891 |  |
| 3929 |  | 32nd Flood | 7d | 2027-01-09 | 2027-01-15 | 3928, 3896 |  |
| 3930 |  | 33rd Floor | 7d | 2027-01-16 | 2027-01-22 | 3929 |  |
| 3931 |  | 34th Floor | 7d | 2027-01-23 | 2027-01-29 | 3930 |  |
| 3932 |  | 35th Floor | 7d | 2027-01-30 | 2027-02-05 | 3931 |  |
| 3933 |  | Terrace | 7d | 2027-02-06 | 2027-02-12 | 3932 |  |
| 3934 |  | Mumty & Machine Room | 7d | 2027-02-13 | 2027-02-19 | 3933, 3894 |  |
| 3935 | 37100.37300.37600.38300.39300.40700 | **Finishing work** | 1021.44d | 2025-12-16 | 2028-11-16 |  | start no earlier than 2025-12-16 |
| 3936 | 37100.37300.37600.38300.39300.40700.41700 | **Flat finishing** | 833.12d | 2025-12-16 | 2028-05-12 |  | start no earlier than 2025-12-16 |
| 3937 | 37100.37300.37600.38300.39300.40700.41700.71600 | **1st Floor** | 480d | 2025-12-16 | 2027-05-25 |  | start no earlier than 2025-12-16 |
| 3938 |  | Block Work | 8d | 2025-12-16 | 2025-12-24 | 3898FS+0.25d |  |
| 3939 |  | Door Frame Fixing | 9d | 2025-12-24 | 2026-01-02 | 3938 |  |
| 3940 |  | Internal Plumbing Works | 8d | 2025-12-24 | 2026-01-01 | 3938 |  |
| 3941 |  | Waterproofing | 10d | 2026-01-01 | 2026-01-11 | 3940 |  |
| 3942 |  | Internal Plaster | 8d | 2025-12-25 | 2026-01-02 | 3938FS+1d |  |
| 3943 |  | IPS flooring work | 10d | 2026-01-11 | 2026-01-21 | 3939, 3940, 3941 |  |
| 3944 |  | Toilet dado work | 8d | 2026-01-11 | 2026-01-19 | 3941, 3942 |  |
| 3945 |  | Toilet flooring work | 8d | 2026-01-19 | 2026-01-27 | 3944 |  |
| 3946 |  | Living dinning flooring | 12d | 2026-01-27 | 2026-02-08 | 3939, 3945 |  |
| 3947 |  | Aluminium door-window fixing | 12d | 2026-02-08 | 2026-02-20 | 3943, 3946 |  |
| 3948 |  | Putty primer coat | 6d | 2026-02-08 | 2026-02-14 | 3946 |  |
| 3949 |  | Door shutter fixing | 8d | 2026-02-08 | 2026-02-16 | 3946 |  |
| 3950 |  | Electrical wiring work | 15d | 2027-04-17 | 2027-05-02 | 3949FS+380d |  |
| 3951 |  | Painting 1st coat | 15d | 2027-05-02 | 2027-05-17 | 3948, 3949, 3950 |  |
| 3952 |  | False ceiling | 8d | 2027-05-17 | 2027-05-25 | 3951 |  |
| 3953 | 37100.37300.37600.38300.39300.40700.41700.71700 | **2nd Floor** | 491.75d | 2025-12-24 | 2027-06-14 |  | start no earlier than 2025-12-24 |
| 3954 |  | Block Work | 8d | 2025-12-24 | 2026-01-01 | 3938FS+0.25d |  |
| 3955 |  | Door Frame Fixing | 9d | 2026-01-02 | 2026-01-11 | 3939, 3954 |  |
| 3956 |  | Internal Plumbing Works | 8d | 2026-01-01 | 2026-01-09 | 3940, 3954 |  |
| 3957 |  | Waterproofing | 10d | 2026-01-11 | 2026-01-21 | 3941, 3956 |  |
| 3958 |  | Internal Plaster | 8d | 2026-01-02 | 2026-01-10 | 3942FS+0.25d |  |
| 3959 |  | IPS flooring work | 10d | 2026-01-21 | 2026-01-31 | 3943, 3955, 3956, 3957 |  |
| 3960 |  | Toilet dado work | 8d | 2026-01-21 | 2026-01-29 | 3944, 3957, 3958 |  |
| 3961 |  | Toilet flooring work | 8d | 2026-01-29 | 2026-02-06 | 3945, 3960 |  |
| 3962 |  | Living dinning flooring | 8d | 2026-02-08 | 2026-02-16 | 3946FS+0.25d |  |
| 3963 |  | Aluminium door-window fixing | 8d | 2026-04-06 | 2026-04-14 | 3947FS+45d |  |
| 3964 |  | Putty primer coat | 6d | 2026-02-16 | 2026-02-22 | 3948, 3962 |  |
| 3965 |  | Door shutter fixing | 8d | 2026-02-16 | 2026-02-24 | 3949, 3962 |  |
| 3966 |  | Electrical wiring work | 20d | 2027-05-02 | 2027-05-22 | 3950, 3965 |  |
| 3967 |  | Painting 1st coat | 15d | 2027-05-22 | 2027-06-06 | 3951, 3964, 3965, 3966 |  |
| 3968 |  | False ceiling | 8d | 2027-06-06 | 2027-06-14 | 3952, 3967 |  |
| 3969 | 37100.37300.37600.38300.39300.40700.41700.71800 | **3rd Floor** | 495.5d | 2026-01-02 | 2027-06-26 |  | start no earlier than 2026-01-02 |
| 3970 |  | Block Work | 8d | 2026-01-02 | 2026-01-09 | 3954FS+0.25d |  |
| 3971 |  | Door Frame Fixing | 9d | 2026-01-11 | 2026-01-20 | 3955, 3970 |  |
| 3972 |  | Internal Plumbing Works | 8d | 2026-01-10 | 2026-01-17 | 3956, 3970 |  |
| 3973 |  | Waterproofing | 10d | 2026-01-21 | 2026-01-31 | 3957, 3972 |  |
| 3974 |  | Internal Plaster | 8d | 2026-01-11 | 2026-01-18 | 3958FS+0.25d |  |
| 3975 |  | IPS flooring work | 10d | 2026-01-31 | 2026-02-10 | 3959, 3971, 3973, 3974 |  |
| 3976 |  | Toilet dado work | 8d | 2026-01-31 | 2026-02-08 | 3960, 3973, 3974 |  |
| 3977 |  | Toilet flooring work | 8d | 2026-02-08 | 2026-02-16 | 3961, 3976 |  |
| 3978 |  | Living dinning flooring | 8d | 2026-02-17 | 2026-02-24 | 3962FS+0.25d |  |
| 3979 |  | Aluminium door-window fixing | 8d | 2026-04-14 | 2026-04-22 | 3963FS+0.25d |  |
| 3980 |  | Putty primer coat | 6d | 2026-02-25 | 2026-03-02 | 3964, 3978 |  |
| 3981 |  | Door shutter fixing | 8d | 2026-02-25 | 2026-03-04 | 3965, 3978 |  |
| 3982 |  | Electrical wiring work | 19d | 2027-05-22 | 2027-06-10 | 3966, 3981 |  |
| 3983 |  | Painting 1st coat | 8d | 2027-06-10 | 2027-06-18 | 3967, 3980, 3981, 3982 |  |
| 3984 |  | False ceiling | 8d | 2027-06-18 | 2027-06-26 | 3968, 3983 |  |
| 3985 | 37100.37300.37600.38300.39300.40700.41700.71900 | **4th Floor** | 495.25d | 2026-01-10 | 2027-07-04 |  | start no earlier than 2026-01-10 |
| 3986 |  | Block Work | 8d | 2026-01-10 | 2026-01-18 | 3970FS+0.25d |  |
| 3987 |  | Door Frame Fixing | 9d | 2026-01-20 | 2026-01-29 | 3971, 3986 |  |
| 3988 |  | Internal Plumbing Works | 8d | 2026-01-18 | 2026-01-26 | 3972, 3986 |  |
| 3989 |  | Waterproofing | 10d | 2026-01-31 | 2026-02-10 | 3973, 3988 |  |
| 3990 |  | Internal Plaster | 8d | 2026-01-19 | 2026-01-27 | 3974FS+0.25d |  |

| ID | WBS | Task | Duration | Start | Finish | Predecessors | Constraint |
| --- | --- | --- | --- | --- | --- | --- | --- |
| 3991 |  | IPS flooring work | 10d | 2026-02-10 | 2026-02-20 | 3975, 3987, 3989, 3990 |  |
| 3992 |  | Toilet dado work | 8d | 2026-02-10 | 2026-02-18 | 3976, 3989, 3990 |  |
| 3993 |  | Toilet flooring work | 8d | 2026-02-18 | 2026-02-26 | 3977, 3992 |  |
| 3994 |  | Living dinning flooring | 12d | 2026-02-25 | 2026-03-09 | 3978FS+0.25d |  |
| 3995 |  | Aluminium door-window fixing | 12d | 2026-04-23 | 2026-05-04 | 3979FS+0.25d |  |
| 3996 |  | Putty primer coat | 6d | 2026-03-09 | 2026-03-15 | 3980, 3994 |  |
| 3997 |  | Door shutter fixing | 8d | 2026-03-09 | 2026-03-17 | 3981, 3994 |  |
| 3998 |  | Electrical wiring work | 8d | 2027-06-10 | 2027-06-18 | 3982, 3997 |  |
| 3999 |  | Painting 1st coat | 8d | 2027-06-18 | 2027-06-26 | 3983, 3996, 3997, 3998 |  |
| 4000 |  | False ceiling | 8d | 2027-06-26 | 2027-07-04 | 3984, 3999 |  |
| 4001 | 37100.37300.37600.38300.39300.40700.41700.72000 | **5th Floor** | 495d | 2026-01-18 | 2027-07-12 |  | start no earlier than 2026-01-18 |
| 4002 |  | Block Work | 8d | 2026-01-18 | 2026-01-26 | 3986FS+0.25d |  |
| 4003 |  | Door Frame Fixing | 9d | 2026-01-29 | 2026-02-07 | 3987, 4002 |  |
| 4004 |  | Internal Plumbing Works | 8d | 2026-01-26 | 2026-02-03 | 3988, 4002 |  |
| 4005 |  | Waterproofing | 10d | 2026-02-10 | 2026-02-20 | 3989, 4004 |  |
| 4006 |  | Internal Plaster | 8d | 2026-01-27 | 2026-02-04 | 3990FS+0.25d |  |
| 4007 |  | IPS flooring work | 10d | 2026-02-20 | 2026-03-02 | 3991, 4003, 4005, 4006 |  |
| 4008 |  | Toilet dado work | 8d | 2026-02-20 | 2026-02-28 | 3992, 4005, 4006 |  |
| 4009 |  | Toilet flooring work | 8d | 2026-02-28 | 2026-03-08 | 3993, 4008 |  |
| 4010 |  | Living dinning flooring | 12d | 2026-03-09 | 2026-03-21 | 3994FS+0.25d |  |
| 4011 |  | Aluminium door-window fixing | 12d | 2026-05-05 | 2026-05-17 | 3995FS+0.25d |  |
| 4012 |  | Putty primer coat | 6d | 2026-03-21 | 2026-03-27 | 3996, 4010 |  |
| 4013 |  | Door shutter fixing | 8d | 2026-03-21 | 2026-03-29 | 3997, 4010 |  |
| 4014 |  | Electrical wiring work | 8d | 2027-06-18 | 2027-06-26 | 3998, 4013 |  |
| 4015 |  | Painting 1st coat | 8d | 2027-06-26 | 2027-07-04 | 3999, 4012, 4013, 4014 |  |
| 4016 |  | False ceiling | 8d | 2027-07-04 | 2027-07-12 | 4000, 4015 |  |
| 4017 | 37100.37300.37600.38300.39300.40700.41700.72100 | **6th Floor** | 494.75d | 2026-01-26 | 2027-07-20 |  | start no earlier than 2026-01-26 |
| 4018 |  | Block Work | 8d | 2026-01-26 | 2026-02-03 | 4002FS+0.25d |  |
| 4019 |  | Door Frame Fixing | 9d | 2026-02-07 | 2026-02-16 | 3751, 4003 |  |
| 4020 |  | Internal Plumbing Works | 8d | 2026-02-03 | 2026-02-11 | 4004, 4018 |  |
| 4021 |  | Waterproofing | 10d | 2026-02-20 | 2026-03-02 | 4005, 4020 |  |
| 4022 |  | Internal Plaster | 8d | 2026-02-04 | 2026-02-12 | 4006FS+0.25d |  |
| 4023 |  | IPS flooring work | 10d | 2026-03-02 | 2026-03-12 | 4007, 4019, 4021, 4022 |  |
| 4024 |  | Toilet dado work | 8d | 2026-03-02 | 2026-03-10 | 4008, 4021, 4022 |  |
| 4025 |  | Toilet flooring work | 8d | 2026-03-10 | 2026-03-18 | 4009, 4024 |  |
| 4026 |  | Living dinning flooring | 12d | 2026-03-21 | 2026-04-02 | 4010FS+0.25d |  |
| 4027 |  | Aluminium door-window fixing | 12d | 2026-05-17 | 2026-05-29 | 4011FS+0.25d |  |
| 4028 |  | Putty primer coat | 6d | 2026-04-02 | 2026-04-08 | 4012, 4026 |  |
| 4029 |  | Door shutter fixing | 8d | 2026-04-02 | 2026-04-10 | 4013, 4026 |  |
| 4030 |  | Electrical wiring work | 8d | 2027-06-26 | 2027-07-04 | 4014, 4029 |  |
| 4031 |  | Painting 1st coat | 8d | 2027-07-04 | 2027-07-12 | 4015, 4028, 4029, 4030 |  |
| 4032 |  | False ceiling | 8d | 2027-07-12 | 2027-07-20 | 4016, 4031 |  |
| 4033 | 37100.37300.37600.38300.39300.40700.41700.72200 | **7th Floor** | 494.5d | 2026-02-04 | 2027-07-28 |  | start no earlier than 2026-02-04 |
| 4034 |  | Block Work | 8d | 2026-02-04 | 2026-02-11 | 4018FS+0.25d |  |
| 4035 |  | Door Frame Fixing | 9d | 2026-02-16 | 2026-02-25 | 4019, 4034 |  |
| 4036 |  | Internal Plumbing Works | 8d | 2026-02-12 | 2026-02-19 | 4020, 4034 |  |
| 4037 |  | Waterproofing | 10d | 2026-03-02 | 2026-03-12 | 4021, 4036 |  |
| 4038 |  | Internal Plaster | 8d | 2026-02-13 | 2026-02-20 | 4022FS+0.25d |  |
| 4039 |  | IPS flooring work | 10d | 2026-03-12 | 2026-03-22 | 4023, 4035, 4037, 4038 |  |
| 4040 |  | Toilet dado work | 8d | 2026-03-12 | 2026-03-20 | 4024, 4037, 4038 |  |
| 4041 |  | Toilet flooring work | 8d | 2026-03-20 | 2026-03-28 | 4025, 4040 |  |
| 4042 |  | Living dinning flooring | 12d | 2026-04-03 | 2026-04-14 | 4026FS+0.25d |  |
| 4043 |  | Aluminium door-window fixing | 12d | 2026-05-29 | 2026-06-10 | 4027FS+0.25d |  |
| 4044 |  | Putty primer coat | 6d | 2026-04-15 | 2026-04-20 | 4028, 4042 |  |
| 4045 |  | Door shutter fixing | 8d | 2026-04-15 | 2026-04-22 | 4029, 4042 |  |
| 4046 |  | Electrical wiring work | 8d | 2027-07-04 | 2027-07-12 | 4030, 4045 |  |
| 4047 |  | Painting 1st coat | 8d | 2027-07-12 | 2027-07-20 | 4031, 4044, 4045, 4046 |  |
| 4048 |  | False ceiling | 8d | 2027-07-20 | 2027-07-28 | 4032, 4047 |  |
| 4049 | 37100.37300.37600.38300.39300.40700.41700.72300 | **8th Floor** | 494.25d | 2026-02-12 | 2027-08-05 |  | start no earlier than 2026-02-12 |
| 4050 |  | Block Work | 8d | 2026-02-12 | 2026-02-20 | 4034FS+0.25d |  |
| 4051 |  | Door Frame Fixing | 9d | 2026-02-25 | 2026-03-06 | 4035, 4050 |  |
| 4052 |  | Internal Plumbing Works | 8d | 2026-02-20 | 2026-02-28 | 4036, 4050 |  |
| 4053 |  | Waterproofing | 10d | 2026-03-12 | 2026-03-22 | 4037, 4052 |  |
| 4054 |  | Internal Plaster | 8d | 2026-02-21 | 2026-03-01 | 4038FS+0.25d |  |
| 4055 |  | IPS flooring work | 10d | 2026-03-22 | 2026-04-01 | 4039, 4051, 4053, 4054 |  |
| 4056 |  | Toilet dado work | 8d | 2026-03-22 | 2026-03-30 | 4040, 4053, 4054 |  |
| 4057 |  | Toilet flooring work | 8d | 2026-03-30 | 2026-04-07 | 4041, 4056 |  |
| 4058 |  | Living dinning flooring | 12d | 2026-04-15 | 2026-04-27 | 4042FS+0.25d |  |
| 4059 |  | Aluminium door-window fixing | 12d | 2026-06-11 | 2026-06-22 | 4043FS+0.25d |  |
| 4060 |  | Putty primer coat | 6d | 2026-04-27 | 2026-05-03 | 4044, 4058 |  |

| ID | WBS | Task | Duration | Start | Finish | Predecessors | Constraint |
| --- | --- | --- | --- | --- | --- | --- | --- |
| 4061 |  | Door shutter fixing | 8d | 2026-04-27 | 2026-05-05 | 4045, 4058 |  |
| 4062 |  | Electrical wiring work | 8d | 2027-07-12 | 2027-07-20 | 4046, 4061 |  |
| 4063 |  | Painting 1st coat | 8d | 2027-07-20 | 2027-07-28 | 4047, 4060, 4061, 4062 |  |
| 4064 |  | False ceiling | 8d | 2027-07-28 | 2027-08-05 | 4048, 4063 |  |
| 4065 | 37100.37300.37600.38300.39300.40700.41700.72400 | **9th Floor** | 494d | 2026-02-20 | 2027-08-13 |  | start no earlier than 2026-02-20 |
| 4066 |  | Block Work | 7d | 2026-02-20 | 2026-02-27 | 4050FS+0.25d |  |
| 4067 |  | Door Frame Fixing | 9d | 2026-03-06 | 2026-03-15 | 4051, 4066 |  |
| 4068 |  | Internal Plumbing Works | 8d | 2026-02-28 | 2026-03-08 | 4052, 4066 |  |
| 4069 |  | Waterproofing | 10d | 2026-03-22 | 2026-04-01 | 4053, 4068 |  |
| 4070 |  | Internal Plaster | 7d | 2026-03-01 | 2026-03-08 | 4054FS+0.25d |  |
| 4071 |  | IPS flooring work | 10d | 2026-04-01 | 2026-04-11 | 4055, 4067, 4069, 4070 |  |
| 4072 |  | Toilet dado work | 8d | 2026-04-01 | 2026-04-09 | 4056, 4069, 4070 |  |
| 4073 |  | Toilet flooring work | 8d | 2026-04-09 | 2026-04-17 | 4057, 4072 |  |
| 4074 |  | Living dinning flooring | 8d | 2026-04-27 | 2026-05-05 | 4058FS+0.25d |  |
| 4075 |  | Aluminium door-window fixing | 8d | 2026-06-23 | 2026-07-01 | 4059FS+0.25d |  |
| 4076 |  | Putty primer coat | 6d | 2026-05-05 | 2026-05-11 | 4060, 4074 |  |
| 4077 |  | Door shutter fixing | 8d | 2026-05-05 | 2026-05-13 | 4061, 4074 |  |
| 4078 |  | Electrical wiring work | 8d | 2027-07-20 | 2027-07-28 | 4062, 4077 |  |
| 4079 |  | Painting 1st coat | 8d | 2027-07-28 | 2027-08-05 | 4063, 4076, 4077, 4078 |  |
| 4080 |  | False ceiling | 8d | 2027-08-05 | 2027-08-13 | 4064, 4079 |  |
| 4081 | 37100.37300.37600.38300.39300.40700.41700.72500 | **10th Floor** | 494.75d | 2026-02-27 | 2027-08-21 |  | start no earlier than 2026-02-27 |
| 4082 |  | Block Work | 7d | 2026-02-27 | 2026-03-06 | 4066FS+0.25d |  |
| 4083 |  | Door Frame Fixing | 9d | 2026-03-15 | 2026-03-24 | 4067, 4082 |  |
| 4084 |  | Internal Plumbing Works | 8d | 2026-03-08 | 2026-03-16 | 4068, 4082 |  |
| 4085 |  | Waterproofing | 10d | 2026-04-01 | 2026-04-11 | 4069, 4084 |  |
| 4086 |  | Internal Plaster | 7d | 2026-03-08 | 2026-03-15 | 4070FS+0.25d |  |
| 4087 |  | IPS flooring work | 10d | 2026-04-11 | 2026-04-21 | 4071, 4083, 4085, 4086 |  |
| 4088 |  | Toilet dado work | 8d | 2026-04-11 | 2026-04-19 | 4072, 4085, 4086 |  |
| 4089 |  | Toilet flooring work | 8d | 2026-04-19 | 2026-04-27 | 4073, 4088 |  |
| 4090 |  | Living dinning flooring | 8d | 2026-05-05 | 2026-05-13 | 4074FS+0.25d |  |
| 4091 |  | Aluminium door-window fixing | 8d | 2026-07-01 | 2026-07-09 | 4075FS+0.25d |  |
| 4092 |  | Putty primer coat | 6d | 2026-05-13 | 2026-05-19 | 4076, 4090 |  |
| 4093 |  | Door shutter fixing | 8d | 2026-05-13 | 2026-05-21 | 4077, 4090 |  |
| 4094 |  | Electrical wiring work | 8d | 2027-07-28 | 2027-08-05 | 4078, 4093 |  |
| 4095 |  | Painting 1st coat | 8d | 2027-08-05 | 2027-08-13 | 4079, 4092, 4093, 4094 |  |
| 4096 |  | False ceiling | 8d | 2027-08-13 | 2027-08-21 | 4080, 4095 |  |
| 4097 | 37100.37300.37600.38300.39300.40700.41700.72600 | **11th Floor** | 495.5d | 2026-03-07 | 2027-08-29 |  | start no earlier than 2026-03-07 |
| 4098 |  | Block Work | 7d | 2026-03-07 | 2026-03-13 | 4082FS+0.25d |  |
| 4099 |  | Door Frame Fixing | 9d | 2026-03-24 | 2026-04-02 | 4083, 4098 |  |
| 4100 |  | Internal Plumbing Works | 8d | 2026-03-16 | 2026-03-24 | 4084, 4098 |  |
| 4101 |  | Waterproofing | 10d | 2026-04-11 | 2026-04-21 | 4085, 4100 |  |
| 4102 |  | Internal Plaster | 7d | 2026-03-16 | 2026-03-22 | 4086FS+0.25d |  |
| 4103 |  | IPS flooring work | 10d | 2026-04-21 | 2026-05-01 | 4087, 4099, 4100, 4101 |  |
| 4104 |  | Toilet dado work | 8d | 2026-04-21 | 2026-04-29 | 4088, 4101, 4102 |  |
| 4105 |  | Toilet flooring work | 8d | 2026-04-29 | 2026-05-07 | 4089, 4104 |  |
| 4106 |  | Living dinning flooring | 8d | 2026-05-14 | 2026-05-21 | 4090FS+0.25d |  |
| 4107 |  | Aluminium door-window fixing | 8d | 2026-07-09 | 2026-07-17 | 4091FS+0.25d |  |
| 4108 |  | Putty primer coat | 6d | 2026-05-22 | 2026-05-27 | 4092, 4106 |  |
| 4109 |  | Door shutter fixing | 8d | 2026-05-22 | 2026-05-29 | 4093, 4106 |  |
| 4110 |  | Electrical wiring work | 8d | 2027-08-05 | 2027-08-13 | 4094, 4109 |  |
| 4111 |  | Painting 1st coat | 8d | 2027-08-13 | 2027-08-21 | 4095, 4108, 4109, 4110 |  |
| 4112 |  | False ceiling | 8d | 2027-08-21 | 2027-08-29 | 4096, 4111 |  |
| 4113 | 37100.37300.37600.38300.39300.40700.41700.72700 | **12th Floor** | 496.25d | 2026-03-14 | 2027-09-06 |  | start no earlier than 2026-03-14 |
| 4114 |  | Block Work | 7d | 2026-03-14 | 2026-03-21 | 4098FS+0.25d |  |
| 4115 |  | Door Frame Fixing | 9d | 2026-04-02 | 2026-04-11 | 4099, 4114 |  |
| 4116 |  | Internal Plumbing Works | 8d | 2026-03-24 | 2026-04-01 | 4100, 4114 |  |
| 4117 |  | Waterproofing | 10d | 2026-04-21 | 2026-05-01 | 4101, 4116 |  |
| 4118 |  | Internal Plaster | 7d | 2026-03-23 | 2026-03-30 | 4102FS+0.25d |  |
| 4119 |  | IPS flooring work | 10d | 2026-05-01 | 2026-05-11 | 4103, 4115, 4116, 4117 |  |
| 4120 |  | Toilet dado work | 8d | 2026-05-01 | 2026-05-09 | 4104, 4117, 4118 |  |
| 4121 |  | Toilet flooring work | 8d | 2026-05-09 | 2026-05-17 | 4105, 4120 |  |
| 4122 |  | Living dinning flooring | 8d | 2026-05-22 | 2026-05-30 | 4106FS+0.25d |  |
| 4123 |  | Aluminium door-window fixing | 8d | 2026-07-18 | 2026-07-25 | 4107FS+0.25d |  |
| 4124 |  | Putty primer coat | 6d | 2026-05-30 | 2026-06-05 | 4108, 4122 |  |
| 4125 |  | Door shutter fixing | 8d | 2026-05-30 | 2026-06-07 | 4109, 4122 |  |
| 4126 |  | Electrical wiring work | 8d | 2027-08-13 | 2027-08-21 | 4110, 4125 |  |
| 4127 |  | Painting 1st coat | 8d | 2027-08-21 | 2027-08-29 | 4111, 4124, 4125, 4126 |  |
| 4128 |  | False ceiling | 8d | 2027-08-29 | 2027-09-06 | 4112, 4127 |  |
| 4129 | 37100.37300.37600.38300.39300.40700.41700.72800 | **13th Floor** | 497d | 2026-03-21 | 2027-09-14 |  | start no earlier than 2026-03-21 |
| 4130 |  | Block Work | 7d | 2026-03-21 | 2026-03-28 | 4114FS+0.25d |  |

| ID | WBS | Task | Duration | Start | Finish | Predecessors | Constraint |
| --- | --- | --- | --- | --- | --- | --- | --- |
| 4131 |  | Door Frame Fixing | 9d | 2026-04-11 | 2026-04-20 | 4115, 4130 |  |
| 4132 |  | Internal Plumbing Works | 8d | 2026-04-01 | 2026-04-09 | 4116, 4130 |  |
| 4133 |  | Waterproofing | 10d | 2026-05-01 | 2026-05-11 | 4117, 4132 |  |
| 4134 |  | Internal Plaster | 7d | 2026-03-30 | 2026-04-06 | 4118FS+0.25d |  |
| 4135 |  | IPS flooring work | 10d | 2026-05-11 | 2026-05-21 | 4119, 4131, 4133, 4134 |  |
| 4136 |  | Toilet dado work | 8d | 2026-05-11 | 2026-05-19 | 4120, 4133, 4134 |  |
| 4137 |  | Toilet flooring work | 8d | 2026-05-19 | 2026-05-27 | 4121, 4136 |  |
| 4138 |  | Living dinning flooring | 8d | 2026-05-30 | 2026-06-07 | 4122FS+0.25d |  |
| 4139 |  | Aluminium door-window fixing | 8d | 2026-07-26 | 2026-08-03 | 4123FS+0.25d |  |
| 4140 |  | Putty primer coat | 6d | 2026-06-07 | 2026-06-13 | 4124, 4138 |  |
| 4141 |  | Door shutter fixing | 8d | 2026-06-07 | 2026-06-15 | 4125, 4138 |  |
| 4142 |  | Electrical wiring work | 8d | 2027-08-21 | 2027-08-29 | 4126, 4141 |  |
| 4143 |  | Painting 1st coat | 8d | 2027-08-29 | 2027-09-06 | 4127, 4140, 4141, 4142 |  |
| 4144 |  | False ceiling | 8d | 2027-09-06 | 2027-09-14 | 4128, 4143 |  |
| 4145 | 37100.37300.37600.38300.39300.40700.41700.72900 | **14th Floor** | 497.75d | 2026-03-28 | 2027-09-22 |  | start no earlier than 2026-03-28 |
| 4146 |  | Block Work | 8d | 2026-03-28 | 2026-04-05 | 4130FS+0.25d |  |
| 4147 |  | Door Frame Fixing | 9d | 2026-04-20 | 2026-04-29 | 4131, 4146 |  |
| 4148 |  | Internal Plumbing Works | 8d | 2026-04-09 | 2026-04-17 | 4132, 4146 |  |
| 4149 |  | Waterproofing | 10d | 2026-05-11 | 2026-05-21 | 4133, 4148 |  |
| 4150 |  | Internal Plaster | 8d | 2026-04-06 | 2026-04-14 | 4134FS+0.25d |  |
| 4151 |  | IPS flooring work | 10d | 2026-05-21 | 2026-05-31 | 4135, 4147, 4148, 4149 |  |
| 4152 |  | Toilet dado work | 8d | 2026-05-21 | 2026-05-29 | 4136, 4149, 4150 |  |
| 4153 |  | Toilet flooring work | 8d | 2026-05-29 | 2026-06-06 | 4137, 4152 |  |
| 4154 |  | Living dinning flooring | 8d | 2026-06-07 | 2026-06-15 | 4138FS+0.25d |  |
| 4155 |  | Aluminium door-window fixing | 8d | 2026-08-03 | 2026-08-11 | 4139FS+0.25d |  |
| 4156 |  | Putty primer coat | 6d | 2026-06-15 | 2026-06-21 | 4140, 4154 |  |
| 4157 |  | Door shutter fixing | 8d | 2026-06-15 | 2026-06-23 | 4141, 4154 |  |
| 4158 |  | Electrical wiring work | 8d | 2027-08-29 | 2027-09-06 | 4142, 4157 |  |
| 4159 |  | Painting 1st coat | 8d | 2027-09-06 | 2027-09-14 | 4143, 4156, 4157, 4158 |  |
| 4160 |  | False ceiling | 8d | 2027-09-14 | 2027-09-22 | 4144, 4159 |  |
| 4161 | 37100.37300.37600.38300.39300.40700.41700.73000 | **15th Floor** | 497.5d | 2026-04-06 | 2027-09-30 |  | start no earlier than 2026-04-06 |
| 4162 |  | Block Work | 8d | 2026-04-06 | 2026-04-13 | 4146FS+0.25d |  |
| 4163 |  | Door Frame Fixing | 9d | 2026-04-29 | 2026-05-08 | 4147, 4162 |  |
| 4164 |  | Internal Plumbing Works | 8d | 2026-04-17 | 2026-04-25 | 4148, 4162 |  |
| 4165 |  | Waterproofing | 10d | 2026-05-21 | 2026-05-31 | 4149, 4164 |  |
| 4166 |  | Internal Plaster | 8d | 2026-04-15 | 2026-04-22 | 4150FS+0.25d |  |
| 4167 |  | IPS flooring work | 10d | 2026-05-31 | 2026-06-10 | 4151, 4163, 4164, 4165 |  |
| 4168 |  | Toilet dado work | 8d | 2026-05-31 | 2026-06-08 | 4152, 4165, 4166 |  |
| 4169 |  | Toilet flooring work | 8d | 2026-06-08 | 2026-06-16 | 4153, 4168 |  |
| 4170 |  | Living dinning flooring | 8d | 2026-06-16 | 2026-06-23 | 4154FS+0.25d |  |
| 4171 |  | Aluminium door-window fixing | 8d | 2026-08-11 | 2026-08-19 | 4155FS+0.25d |  |
| 4172 |  | Putty primer coat | 6d | 2026-06-24 | 2026-06-29 | 4156, 4170 |  |
| 4173 |  | Door shutter fixing | 8d | 2026-06-24 | 2026-07-01 | 4157, 4170 |  |
| 4174 |  | Electrical wiring work | 8d | 2027-09-06 | 2027-09-14 | 4158, 4173 |  |
| 4175 |  | Painting 1st coat | 8d | 2027-09-14 | 2027-09-22 | 4159, 4172, 4173, 4174 |  |
| 4176 |  | False ceiling | 8d | 2027-09-22 | 2027-09-30 | 4160, 4175 |  |
| 4177 | 37100.37300.37600.38300.39300.40700.41700.73100 | **16th Floor** | 497.25d | 2026-04-14 | 2027-10-08 |  | start no earlier than 2026-04-14 |
| 4178 |  | Block Work | 8d | 2026-04-14 | 2026-04-22 | 4162FS+0.25d |  |
| 4179 |  | Door Frame Fixing | 9d | 2026-05-08 | 2026-05-17 | 4163, 4178 |  |
| 4180 |  | Internal Plumbing Works | 8d | 2026-04-25 | 2026-05-03 | 4164, 4178 |  |
| 4181 |  | Waterproofing | 10d | 2026-05-31 | 2026-06-10 | 4165, 4180 |  |
| 4182 |  | Internal Plaster | 8d | 2026-04-23 | 2026-05-01 | 4166FS+0.25d |  |
| 4183 |  | IPS flooring work | 10d | 2026-06-10 | 2026-06-20 | 4167, 4179, 4180, 4181 |  |
| 4184 |  | Toilet dado work | 12d | 2026-06-10 | 2026-06-22 | 4168, 4181, 4182 |  |
| 4185 |  | Toilet flooring work | 12d | 2026-06-22 | 2026-07-04 | 4169, 4184 |  |
| 4186 |  | Living dinning flooring | 8d | 2026-06-24 | 2026-07-02 | 4170FS+0.25d |  |
| 4187 |  | Aluminium door-window fixing | 8d | 2026-08-20 | 2026-08-27 | 4171FS+0.25d |  |
| 4188 |  | Putty primer coat | 6d | 2026-07-02 | 2026-07-08 | 4172, 4186 |  |
| 4189 |  | Door shutter fixing | 8d | 2026-07-02 | 2026-07-10 | 4173, 4186 |  |
| 4190 |  | Electrical wiring work | 8d | 2027-09-14 | 2027-09-22 | 4174, 4189 |  |
| 4191 |  | Painting 1st coat | 8d | 2027-09-22 | 2027-09-30 | 4175, 4188, 4189, 4190 |  |
| 4192 |  | False ceiling | 8d | 2027-09-30 | 2027-10-08 | 4176, 4191 |  |
| 4193 | 37100.37300.37600.38300.39300.40700.41700.73200 | **17th Floor** | 497d | 2026-04-22 | 2027-10-16 |  | start no earlier than 2026-04-22 |
| 4194 |  | Block Work | 7d | 2026-04-22 | 2026-04-29 | 4178FS+0.25d |  |
| 4195 |  | Door Frame Fixing | 9d | 2026-04-29 | 2026-05-08 | 4194FS+0.25d |  |
| 4196 |  | Internal Plumbing Works | 8d | 2026-05-03 | 2026-05-11 | 4180, 4194 |  |
| 4197 |  | Waterproofing | 10d | 2026-06-10 | 2026-06-20 | 4181, 4196 |  |
| 4198 |  | Internal Plaster | 7d | 2026-05-01 | 2026-05-08 | 4182FS+0.25d |  |
| 4199 |  | IPS flooring work | 10d | 2026-06-20 | 2026-06-30 | 4183, 4195, 4196, 4197 |  |
| 4200 |  | Toilet dado work | 8d | 2026-06-22 | 2026-06-30 | 4184, 4197, 4198 |  |

| ID | WBS | Task | Duration | Start | Finish | Predecessors | Constraint |
| --- | --- | --- | --- | --- | --- | --- | --- |
| 4201 |  | Toilet flooring work | 8d | 2026-07-04 | 2026-07-12 | 4185, 4200 |  |
| 4202 |  | Living dinning flooring | 8d | 2026-07-02 | 2026-07-10 | 4186FS+0.25d |  |
| 4203 |  | Aluminium door-window fixing | 8d | 2026-08-28 | 2026-09-05 | 4187FS+0.25d |  |
| 4204 |  | Putty primer coat | 6d | 2026-07-10 | 2026-07-16 | 4188, 4202 |  |
| 4205 |  | Door shutter fixing | 8d | 2026-07-10 | 2026-07-18 | 4189, 4202 |  |
| 4206 |  | Electrical wiring work | 8d | 2027-09-22 | 2027-09-30 | 4190, 4205 |  |
| 4207 |  | Painting 1st coat | 8d | 2027-09-30 | 2027-10-08 | 4191, 4204, 4205, 4206 |  |
| 4208 |  | False ceiling | 8d | 2027-10-08 | 2027-10-16 | 4192, 4207 |  |
| 4209 | 37100.37300.37600.38300.39300.40700.41700.73300 | **18th Floor** | 497.75d | 2026-04-29 | 2027-10-24 |  | start no earlier than 2026-04-29 |
| 4210 |  | Block Work | 8d | 2026-04-29 | 2026-05-07 | 4194FS+0.25d |  |
| 4211 |  | Door Frame Fixing | 9d | 2026-05-08 | 2026-05-17 | 4195, 4210 |  |
| 4212 |  | Internal Plumbing Works | 8d | 2026-05-11 | 2026-05-19 | 4196, 4210 |  |
| 4213 |  | Waterproofing | 10d | 2026-06-20 | 2026-06-30 | 4197, 4212 |  |
| 4214 |  | Internal Plaster | 8d | 2026-05-08 | 2026-05-16 | 4198FS+0.25d |  |
| 4215 |  | IPS flooring work | 10d | 2026-06-30 | 2026-07-10 | 4199, 4211, 4212, 4213 |  |
| 4216 |  | Toilet dado work | 8d | 2026-06-30 | 2026-07-08 | 4200, 4213, 4214 |  |
| 4217 |  | Toilet flooring work | 8d | 2026-07-12 | 2026-07-20 | 4201, 4216 |  |
| 4218 |  | Living dinning flooring | 12d | 2026-07-10 | 2026-07-22 | 4202FS+0.25d |  |
| 4219 |  | Aluminium door-window fixing | 12d | 2026-09-05 | 2026-09-17 | 4203FS+0.25d |  |
| 4220 |  | Putty primer coat | 6d | 2026-07-22 | 2026-07-28 | 4204, 4218 |  |
| 4221 |  | Door shutter fixing | 8d | 2026-07-22 | 2026-07-30 | 4205, 4218 |  |
| 4222 |  | Electrical wiring work | 8d | 2027-09-30 | 2027-10-08 | 4206, 4221 |  |
| 4223 |  | Painting 1st coat | 8d | 2027-10-08 | 2027-10-16 | 4207, 4220, 4221, 4222 |  |
| 4224 |  | False ceiling | 8d | 2027-10-16 | 2027-10-24 | 4208, 4223 |  |
| 4225 | 37100.37300.37600.38300.39300.40700.41700.73400 | **19th Floor** | 497.5d | 2026-05-08 | 2027-11-01 |  | start no earlier than 2026-05-08 |
| 4226 |  | Block Work | 8d | 2026-05-08 | 2026-05-15 | 4210FS+0.25d |  |
| 4227 |  | Door Frame Fixing | 9d | 2026-05-17 | 2026-05-26 | 4211, 4226 |  |
| 4228 |  | Internal Plumbing Works | 8d | 2026-05-19 | 2026-05-27 | 4212, 4226 |  |
| 4229 |  | Waterproofing | 10d | 2026-06-30 | 2026-07-10 | 4213, 4228 |  |
| 4230 |  | Internal Plaster | 8d | 2026-05-17 | 2026-05-24 | 4214FS+0.25d |  |
| 4231 |  | IPS flooring work | 10d | 2026-07-10 | 2026-07-20 | 4215, 4227, 4229, 4230 |  |
| 4232 |  | Toilet dado work | 8d | 2026-07-10 | 2026-07-18 | 4216, 4229, 4230 |  |
| 4233 |  | Toilet flooring work | 8d | 2026-07-20 | 2026-07-28 | 4217, 4232 |  |
| 4234 |  | Living dinning flooring | 7d | 2026-07-23 | 2026-07-29 | 4218FS+0.25d |  |
| 4235 |  | Aluminium door-window fixing | 12d | 2026-09-17 | 2026-09-29 | 4219, 4231, 4234 |  |
| 4236 |  | Putty primer coat | 6d | 2026-07-30 | 2026-08-04 | 4220, 4234 |  |
| 4237 |  | Door shutter fixing | 8d | 2026-07-30 | 2026-08-07 | 4221, 4234 |  |
| 4238 |  | Electrical wiring work | 8d | 2027-10-08 | 2027-10-16 | 4222, 4237 |  |
| 4239 |  | Painting 1st coat | 8d | 2027-10-16 | 2027-10-24 | 4223, 4236, 4237, 4238 |  |
| 4240 |  | False ceiling | 8d | 2027-10-24 | 2027-11-01 | 4224, 4239 |  |
| 4241 | 37100.37300.37600.38300.39300.40700.41700.73500 | **20th Floor** | 497.25d | 2026-05-16 | 2027-11-09 |  | start no earlier than 2026-05-16 |
| 4242 |  | Block Work | 8d | 2026-05-16 | 2026-05-24 | 4226FS+0.25d |  |
| 4243 |  | Door Frame Fixing | 9d | 2026-05-26 | 2026-06-04 | 4227, 4242 |  |
| 4244 |  | Internal Plumbing Works | 8d | 2026-05-27 | 2026-06-04 | 4228, 4242 |  |
| 4245 |  | Waterproofing | 10d | 2026-07-10 | 2026-07-20 | 4229, 4244 |  |
| 4246 |  | Internal Plaster | 8d | 2026-05-25 | 2026-06-02 | 4230FS+0.25d |  |
| 4247 |  | IPS flooring work | 10d | 2026-07-20 | 2026-07-30 | 4231, 4243, 4245, 4246 |  |
| 4248 |  | Toilet dado work | 8d | 2026-07-20 | 2026-07-28 | 4232, 4245, 4246 |  |
| 4249 |  | Toilet flooring work | 8d | 2026-07-28 | 2026-08-05 | 4233, 4248 |  |
| 4250 |  | Living dinning flooring | 8d | 2026-07-30 | 2026-08-07 | 4234FS+0.25d |  |
| 4251 |  | Aluminium door-window fixing | 12d | 2026-09-29 | 2026-10-11 | 4235, 4247, 4250 |  |
| 4252 |  | Putty primer coat | 6d | 2026-08-07 | 2026-08-13 | 4236, 4250 |  |
| 4253 |  | Door shutter fixing | 8d | 2026-08-07 | 2026-08-15 | 4237, 4250 |  |
| 4254 |  | Electrical wiring work | 8d | 2027-10-16 | 2027-10-24 | 4238, 4253 |  |
| 4255 |  | Painting 1st coat | 8d | 2027-10-24 | 2027-11-01 | 4239, 4252, 4253, 4254 |  |
| 4256 |  | False ceiling | 8d | 2027-11-01 | 2027-11-09 | 4240, 4255 |  |
| 4257 | 37100.37300.37600.38300.39300.40700.41700.73600 | **21st Floor** | 497d | 2026-05-24 | 2027-11-17 |  | start no earlier than 2026-05-24 |
| 4258 |  | Block Work | 8d | 2026-05-24 | 2026-06-01 | 4242FS+0.25d |  |
| 4259 |  | Door Frame Fixing | 9d | 2026-06-04 | 2026-06-13 | 4243, 4258 |  |
| 4260 |  | Internal Plumbing Works | 8d | 2026-06-04 | 2026-06-12 | 4244, 4258 |  |
| 4261 |  | Waterproofing | 10d | 2026-07-20 | 2026-07-30 | 4245, 4260 |  |
| 4262 |  | Internal Plaster | 8d | 2026-06-02 | 2026-06-10 | 4246FS+0.25d |  |
| 4263 |  | IPS flooring work | 10d | 2026-07-30 | 2026-08-09 | 4247, 4259, 4261, 4262 |  |
| 4264 |  | Toilet dado work | 8d | 2026-07-30 | 2026-08-07 | 4248, 4261, 4262 |  |
| 4265 |  | Toilet flooring work | 8d | 2026-08-07 | 2026-08-15 | 4249, 4264 |  |
| 4266 |  | Living dinning flooring | 7d | 2026-08-07 | 2026-08-14 | 4250FS+0.25d |  |
| 4267 |  | Aluminium door-window fixing | 12d | 2026-10-11 | 2026-10-23 | 4251, 4263, 4266 |  |
| 4268 |  | Putty primer coat | 6d | 2026-08-14 | 2026-08-20 | 4252, 4266 |  |
| 4269 |  | Door shutter fixing | 8d | 2026-08-15 | 2026-08-23 | 4253, 4266 |  |
| 4270 |  | Electrical wiring work | 8d | 2027-10-24 | 2027-11-01 | 4254, 4269 |  |

| ID | WBS | Task | Duration | Start | Finish | Predecessors | Constraint |
| --- | --- | --- | --- | --- | --- | --- | --- |
| 4271 |  | Painting 1st coat | 8d | 2027-11-01 | 2027-11-09 | 4255, 4268, 4269, 4270 |  |
| 4272 |  | False ceiling | 8d | 2027-11-09 | 2027-11-17 | 4256, 4271 |  |
| 4273 | 37100.37300.37600.38300.39300.40700.41700.73700 | **22nd Floor** | 496.75d | 2026-06-01 | 2027-11-25 |  | start no earlier than 2026-06-01 |
| 4274 |  | Block Work | 8d | 2026-06-01 | 2026-06-09 | 4258FS+0.25d |  |
| 4275 |  | Door Frame Fixing | 9d | 2026-06-13 | 2026-06-22 | 4259, 4274 |  |
| 4276 |  | Internal Plumbing Works | 8d | 2026-06-12 | 2026-06-20 | 4260, 4274 |  |
| 4277 |  | Waterproofing | 10d | 2026-07-30 | 2026-08-09 | 4261, 4276 |  |
| 4278 |  | Internal Plaster | 8d | 2026-06-10 | 2026-06-18 | 4262FS+0.25d |  |
| 4279 |  | IPS flooring work | 10d | 2026-08-09 | 2026-08-19 | 4263, 4275, 4277, 4278 |  |
| 4280 |  | Toilet dado work | 8d | 2026-08-09 | 2026-08-17 | 4264, 4277, 4278 |  |
| 4281 |  | Toilet flooring work | 8d | 2026-08-17 | 2026-08-25 | 4265, 4280 |  |
| 4282 |  | Living dinning flooring | 8d | 2026-08-14 | 2026-08-22 | 4266FS+0.25d |  |
| 4283 |  | Aluminium door-window fixing | 12d | 2026-10-23 | 2026-12-19 | 4267, 4279, 4282 |  |
| 4284 |  | Putty primer coat | 6d | 2026-08-22 | 2026-08-28 | 4268, 4282 |  |
| 4285 |  | Door shutter fixing | 8d | 2026-08-23 | 2026-08-31 | 4269, 4282 |  |
| 4286 |  | Electrical wiring work | 8d | 2027-11-01 | 2027-11-09 | 4270, 4285 |  |
| 4287 |  | Painting 1st coat | 8d | 2027-11-09 | 2027-11-17 | 4271, 4284, 4285, 4286 |  |
| 4288 |  | False ceiling | 8d | 2027-11-17 | 2027-11-25 | 4272, 4287 |  |
| 4289 | 37100.37300.37600.38300.39300.40700.41700.73800 | **23rd Floor** | 496.5d | 2026-06-10 | 2027-12-03 |  | start no earlier than 2026-06-10 |
| 4290 |  | Block Work | 8d | 2026-06-10 | 2026-06-17 | 4274FS+0.25d |  |
| 4291 |  | Door Frame Fixing | 9d | 2026-06-22 | 2026-07-01 | 4275, 4290 |  |
| 4292 |  | Internal Plumbing Works | 8d | 2026-06-20 | 2026-06-28 | 4276, 4290 |  |
| 4293 |  | Waterproofing | 10d | 2026-08-09 | 2026-08-19 | 4277, 4292 |  |
| 4294 |  | Internal Plaster | 8d | 2026-06-19 | 2026-06-26 | 4278FS+0.25d |  |
| 4295 |  | IPS flooring work | 10d | 2026-08-19 | 2026-08-29 | 4279, 4291, 4293, 4294 |  |
| 4296 |  | Toilet dado work | 8d | 2026-08-19 | 2026-08-27 | 4280, 4293, 4294 |  |
| 4297 |  | Toilet flooring work | 8d | 2026-08-27 | 2026-09-04 | 4281, 4296 |  |
| 4298 |  | Living dinning flooring | 12d | 2026-09-04 | 2026-09-16 | 4282, 4291, 4297 |  |
| 4299 |  | Aluminium door-window fixing | 12d | 2026-12-19 | 2026-12-31 | 4283, 4295, 4298 |  |
| 4300 |  | Putty primer coat | 6d | 2026-09-16 | 2026-09-22 | 4284, 4298 |  |
| 4301 |  | Door shutter fixing | 8d | 2026-09-16 | 2026-09-24 | 4285, 4298 |  |
| 4302 |  | Electrical wiring work | 8d | 2027-11-09 | 2027-11-17 | 4286, 4301 |  |
| 4303 |  | Painting 1st coat | 8d | 2027-11-17 | 2027-11-25 | 4287, 4300, 4301, 4302 |  |
| 4304 |  | False ceiling | 8d | 2027-11-25 | 2027-12-03 | 4288, 4303 |  |
| 4305 | 37100.37300.37600.38300.39300.40700.41700.73900 | **24th Floor** | 506.06d | 2026-06-18 | 2027-12-21 |  | start no earlier than 2026-06-18 |
| 4306 |  | Block Work | 7.94d | 2026-06-18 | 2026-06-26 | 4290FS+0.25d |  |
| 4307 |  | Door Frame Fixing | 8.94d | 2026-07-01 | 2026-07-10 | 4291, 4306 |  |
| 4308 |  | Internal Plumbing Works | 9.94d | 2026-06-28 | 2026-07-08 | 4292, 4306 |  |
| 4309 |  | Waterproofing | 11.94d | 2026-08-19 | 2026-08-31 | 4293, 4308 |  |
| 4310 |  | Internal Plaster | 8.94d | 2026-06-27 | 2026-07-06 | 4294FS+0.25d |  |
| 4311 |  | IPS flooring work | 8.94d | 2026-08-31 | 2026-09-09 | 4295, 4307, 4309, 4310 |  |
| 4312 |  | Toilet dado work | 7.94d | 2026-08-31 | 2026-09-08 | 4296, 4309, 4310 |  |
| 4313 |  | Toilet flooring work | 6.94d | 2026-09-08 | 2026-09-15 | 4297, 4312 |  |
| 4314 |  | Living dinning flooring | 14.94d | 2026-09-16 | 2026-10-01 | 4298, 4307, 4313 |  |
| 4315 |  | Aluminium door-window fixing | 14.94d | 2026-12-31 | 2027-01-15 | 4299, 4311, 4314 |  |
| 4316 |  | Putty primer coat | 5.94d | 2026-10-01 | 2026-10-07 | 4300, 4314 |  |
| 4317 |  | Door shutter fixing | 7.94d | 2026-10-01 | 2026-10-09 | 4301, 4314 |  |
| 4318 |  | Electrical wiring work | 11.94d | 2027-11-17 | 2027-11-29 | 4302, 4317 |  |
| 4319 |  | Painting 1st coat | 11.94d | 2027-11-29 | 2027-12-11 | 4303, 4316, 4317, 4318 |  |
| 4320 |  | False ceiling | 9.94d | 2027-12-11 | 2027-12-21 | 4304, 4319 |  |
| 4321 | 37100.37300.37600.38300.39300.40700.41700.74000 | **25th Floor** | 509.81d | 2026-06-26 | 2028-01-02 |  | start no earlier than 2026-06-26 |
| 4322 |  | Block Work | 7.94d | 2026-06-26 | 2026-07-04 | 4306FS+0.25d |  |
| 4323 |  | Door Frame Fixing | 8.94d | 2026-07-10 | 2026-07-19 | 4307, 4322 |  |
| 4324 |  | Internal Plumbing Works | 9.94d | 2026-07-08 | 2026-07-18 | 4308, 4322 |  |
| 4325 |  | Waterproofing | 11.94d | 2026-08-31 | 2026-09-12 | 4309, 4324 |  |
| 4326 |  | Internal Plaster | 8.94d | 2026-07-06 | 2026-07-15 | 4310FS+0.25d |  |
| 4327 |  | IPS flooring work | 8.94d | 2026-09-12 | 2026-09-21 | 4311, 4323, 4325, 4326 |  |
| 4328 |  | Toilet dado work | 7.94d | 2026-09-12 | 2026-09-20 | 4312, 4325, 4326 |  |
| 4329 |  | Toilet flooring work | 6.94d | 2026-09-20 | 2026-09-27 | 4313, 4328 |  |
| 4330 |  | Living dinning flooring | 14.94d | 2026-10-01 | 2026-10-16 | 4314, 4323, 4329 |  |
| 4331 |  | Aluminium door-window fixing | 14.94d | 2027-01-15 | 2027-01-30 | 4315, 4327, 4330 |  |
| 4332 |  | Putty primer coat | 5.94d | 2026-10-16 | 2026-10-22 | 4316, 4330 |  |
| 4333 |  | Door shutter fixing | 7.94d | 2026-10-16 | 2026-10-24 | 4317, 4330 |  |
| 4334 |  | Electrical wiring work | 11.94d | 2027-11-29 | 2027-12-11 | 4318, 4333 |  |
| 4335 |  | Painting 1st coat | 11.94d | 2027-12-11 | 2027-12-23 | 4319, 4332, 4333, 4334 |  |
| 4336 |  | False ceiling | 9.94d | 2027-12-23 | 2028-01-02 | 4320, 4335 |  |
| 4337 | 37100.37300.37600.38300.39300.40700.41700.74100 | **26th Floor** | 502.56d | 2026-07-15 | 2028-01-14 |  | start no earlier than 2026-07-15 |
| 4338 |  | Block Work | 7.94d | 2026-09-07 | 2026-09-15 | 3925FS+0.25d, 4322FS+0.25d |  |
| 4339 |  | Door Frame Fixing | 8.94d | 2026-09-15 | 2026-09-24 | 4323, 4338 |  |
| 4340 |  | Internal Plumbing Works | 9.94d | 2026-09-15 | 2026-09-25 | 4324, 4338 |  |

| ID | WBS | Task | Duration | Start | Finish | Predecessors | Constraint |
| --- | --- | --- | --- | --- | --- | --- | --- |
| 4341 |  | Waterproofing | 11.94d | 2026-09-25 | 2026-10-07 | 4325, 4340 |  |
| 4342 |  | Internal Plaster | 8.94d | 2026-07-15 | 2026-07-24 | 4326FS+0.25d |  |
| 4343 |  | IPS flooring work | 8.94d | 2026-10-07 | 2026-10-16 | 4327, 4339, 4341, 4342 |  |
| 4344 |  | Toilet dado work | 7.94d | 2026-10-07 | 2026-10-15 | 4328, 4341, 4342 |  |
| 4345 |  | Toilet flooring work | 6.94d | 2026-10-15 | 2026-10-22 | 4329, 4344 |  |
| 4346 |  | Living dinning flooring | 14.94d | 2026-10-22 | 2026-12-20 | 4330, 4339, 4345 |  |
| 4347 |  | Aluminium door-window fixing | 14.94d | 2027-01-30 | 2027-02-14 | 4331, 4343, 4346 |  |
| 4348 |  | Putty primer coat | 5.94d | 2026-12-21 | 2026-12-26 | 4332, 4346 |  |
| 4349 |  | Door shutter fixing | 7.94d | 2026-12-21 | 2026-12-28 | 4333, 4346 |  |
| 4350 |  | Electrical wiring work | 11.94d | 2027-12-11 | 2027-12-23 | 4334, 4349 |  |
| 4351 |  | Painting 1st coat | 11.94d | 2027-12-23 | 2028-01-04 | 4335, 4348, 4349, 4350 |  |
| 4352 |  | False ceiling | 9.94d | 2028-01-04 | 2028-01-14 | 4336, 4351 |  |
| 4353 | 37100.37300.37600.38300.39300.40700.41700.74200 | **27th Floor** | 446d | 2026-09-22 | 2028-01-26 |  | start no earlier than 2026-09-22 |
| 4354 |  | Block Work | 7.94d | 2026-09-22 | 2026-09-30 | 3926, 4338 |  |
| 4355 |  | Door Frame Fixing | 8.94d | 2026-09-30 | 2026-10-08 | 4339, 4354 |  |
| 4356 |  | Internal Plumbing Works | 9.94d | 2026-09-30 | 2026-10-09 | 4340, 4354 |  |
| 4357 |  | Waterproofing | 11.94d | 2026-10-10 | 2026-10-21 | 4341, 4356 |  |
| 4358 |  | Internal Plaster | 8.94d | 2026-10-21 | 2026-10-30 | 4342, 4355, 4356, 4357 |  |
| 4359 |  | IPS flooring work | 8.94d | 2026-10-30 | 2026-12-23 | 4343, 4355, 4357, 4358 |  |
| 4360 |  | Toilet dado work | 7.94d | 2026-10-30 | 2026-12-22 | 4344, 4357, 4358 |  |
| 4361 |  | Toilet flooring work | 6.94d | 2026-12-22 | 2026-12-29 | 4345, 4360 |  |
| 4362 |  | Living dinning flooring | 14.94d | 2026-12-29 | 2027-01-13 | 4346, 4355, 4361 |  |
| 4363 |  | Aluminium door-window fixing | 14.94d | 2027-02-14 | 2027-03-01 | 4347, 4359, 4362 |  |
| 4364 |  | Putty primer coat | 5.94d | 2027-01-13 | 2027-01-19 | 4348, 4362 |  |
| 4365 |  | Door shutter fixing | 7.94d | 2027-01-13 | 2027-01-21 | 4349, 4362 |  |
| 4366 |  | Electrical wiring work | 11.94d | 2027-12-23 | 2028-01-04 | 4350, 4365 |  |
| 4367 |  | Painting 1st coat | 11.94d | 2028-01-04 | 2028-01-16 | 4351, 4364, 4365, 4366 |  |
| 4368 |  | False ceiling | 9.94d | 2028-01-16 | 2028-01-26 | 4352, 4367 |  |
| 4369 | 37100.37300.37600.38300.39300.40700.41700.74300 | **28th Floor** | 441.94d | 2026-10-08 | 2028-02-07 |  | start no earlier than 2026-10-08 |
| 4370 |  | Block Work | 7.94d | 2026-10-08 | 2026-10-16 | 3927, 4354 |  |
| 4371 |  | Door Frame Fixing | 8.94d | 2026-10-16 | 2026-10-24 | 4355, 4370 |  |
| 4372 |  | Internal Plumbing Works | 9.94d | 2026-10-16 | 2026-10-25 | 4356, 4370 |  |
| 4373 |  | Waterproofing | 11.94d | 2026-10-26 | 2026-12-21 | 4357, 4372 |  |
| 4374 |  | Internal Plaster | 8.94d | 2026-12-21 | 2026-12-30 | 4358, 4371, 4372, 4373 |  |
| 4375 |  | IPS flooring work | 8.94d | 2026-12-30 | 2027-01-08 | 4359, 4371, 4373, 4374 |  |
| 4376 |  | Toilet dado work | 7.94d | 2026-12-30 | 2027-01-07 | 4360, 4373, 4374 |  |
| 4377 |  | Toilet flooring work | 6.94d | 2027-01-07 | 2027-01-14 | 4361, 4376 |  |
| 4378 |  | Living dinning flooring | 14.94d | 2027-01-14 | 2027-01-29 | 4362, 4371, 4377 |  |
| 4379 |  | Aluminium door-window fixing | 14.94d | 2027-03-01 | 2027-03-16 | 4363, 4375, 4378 |  |
| 4380 |  | Putty primer coat | 5.94d | 2027-01-29 | 2027-02-04 | 4364, 4378 |  |
| 4381 |  | Door shutter fixing | 7.94d | 2027-01-29 | 2027-02-06 | 4365, 4378 |  |
| 4382 |  | Electrical wiring work | 11.94d | 2028-01-04 | 2028-01-16 | 4366, 4381 |  |
| 4383 |  | Painting 1st coat | 11.94d | 2028-01-16 | 2028-01-28 | 4367, 4380, 4381, 4382 |  |
| 4384 |  | False ceiling | 9.94d | 2028-01-28 | 2028-02-07 | 4368, 4383 |  |
| 4385 | 37100.37300.37600.38300.39300.40700.41700.74400 | **29th Floor** | 437.88d | 2026-10-24 | 2028-02-18 |  | start no earlier than 2026-10-24 |
| 4386 |  | Block Work | 7.94d | 2026-10-24 | 2026-12-16 | 3928, 4370 |  |
| 4387 |  | Door Frame Fixing | 8.94d | 2026-12-16 | 2026-12-24 | 4371, 4386 |  |
| 4388 |  | Internal Plumbing Works | 9.94d | 2026-12-16 | 2026-12-25 | 4372, 4386 |  |
| 4389 |  | Waterproofing | 11.94d | 2026-12-26 | 2027-01-06 | 4373, 4388 |  |
| 4390 |  | Internal Plaster | 8.94d | 2027-01-06 | 2027-01-15 | 4374, 4387, 4388, 4389 |  |
| 4391 |  | IPS flooring work | 8.94d | 2027-01-15 | 2027-01-24 | 4375, 4387, 4389, 4390 |  |
| 4392 |  | Toilet dado work | 7.94d | 2027-01-15 | 2027-01-23 | 4376, 4389, 4390 |  |
| 4393 |  | Toilet flooring work | 6.94d | 2027-01-23 | 2027-01-30 | 4377, 4392 |  |
| 4394 |  | Living dinning flooring | 14.94d | 2027-01-30 | 2027-02-14 | 4378, 4387, 4393 |  |
| 4395 |  | Aluminium door-window fixing | 14.94d | 2027-03-16 | 2027-03-31 | 4379, 4391, 4394 |  |
| 4396 |  | Putty primer coat | 5.94d | 2027-02-14 | 2027-02-20 | 4380, 4394 |  |
| 4397 |  | Door shutter fixing | 7.94d | 2027-02-14 | 2027-02-22 | 4381, 4394 |  |
| 4398 |  | Electrical wiring work | 11.94d | 2028-01-16 | 2028-01-28 | 4382, 4397 |  |
| 4399 |  | Painting 1st coat | 11.94d | 2028-01-28 | 2028-02-09 | 4383, 4396, 4397, 4398 |  |
| 4400 |  | False ceiling | 9.94d | 2028-02-09 | 2028-02-18 | 4384, 4399 |  |
| 4401 | 37100.37300.37600.38300.39300.40700.41700.74500 | **30th Floor** | 416.94d | 2027-01-16 | 2028-03-07 |  | start no earlier than 2027-01-16 |
| 4402 |  | Block Work | 7.94d | 2027-01-16 | 2027-01-23 | 3929, 4386 |  |
| 4403 |  | Door Frame Fixing | 8.94d | 2027-01-23 | 2027-02-01 | 4387, 4402 |  |
| 4404 |  | Internal Plumbing Works | 9.94d | 2027-01-23 | 2027-02-02 | 4388, 4402 |  |
| 4405 |  | Waterproofing | 11.94d | 2027-02-02 | 2027-02-14 | 4389, 4404 |  |
| 4406 |  | Internal Plaster | 8.94d | 2027-02-14 | 2027-02-23 | 4390, 4403, 4404, 4405 |  |
| 4407 |  | IPS flooring work | 8.94d | 2027-02-23 | 2027-03-04 | 4391, 4403, 4405, 4406 |  |
| 4408 |  | Toilet dado work | 7.94d | 2027-02-23 | 2027-03-03 | 4392, 4405, 4406 |  |
| 4409 |  | Toilet flooring work | 6.94d | 2027-03-03 | 2027-03-10 | 4393, 4408 |  |
| 4410 |  | Living dinning flooring | 14.94d | 2027-03-10 | 2027-03-25 | 4394, 4403, 4409 |  |

| ID | WBS | Task | Duration | Start | Finish | Predecessors | Constraint |
| --- | --- | --- | --- | --- | --- | --- | --- |
| 4411 |  | Aluminium door-window fixing | 14.94d | 2027-03-31 | 2027-04-15 | 4395, 4407, 4410 |  |
| 4412 |  | Putty primer coat | 5.94d | 2027-03-25 | 2027-03-31 | 4396, 4410 |  |
| 4413 |  | Door shutter fixing | 7.94d | 2027-03-25 | 2027-04-02 | 4397, 4410 |  |
| 4414 |  | Electrical wiring work | 14.94d | 2028-01-28 | 2028-02-12 | 4398, 4413 |  |
| 4415 |  | Painting 1st coat | 14.94d | 2028-02-12 | 2028-02-26 | 4399, 4412, 4413, 4414 |  |
| 4416 |  | False ceiling | 9.94d | 2028-02-27 | 2028-03-07 | 4400, 4415 |  |
| 4417 | 37100.37300.37600.38300.39300.40700.41700.74600 | **31st Floor** | 423.94d | 2027-01-23 | 2028-03-22 |  | start no earlier than 2027-01-23 |
| 4418 |  | Block Work | 7.94d | 2027-01-23 | 2027-01-31 | 3930, 4402 |  |
| 4419 |  | Door Frame Fixing | 8.94d | 2027-02-01 | 2027-02-10 | 4403, 4418 |  |
| 4420 |  | Internal Plumbing Works | 9.94d | 2027-02-02 | 2027-02-12 | 4404, 4418 |  |
| 4421 |  | Waterproofing | 11.94d | 2027-02-14 | 2027-02-26 | 4405, 4420 |  |
| 4422 |  | Internal Plaster | 8.94d | 2027-02-26 | 2027-03-07 | 4406, 4419, 4420, 4421 |  |
| 4423 |  | IPS flooring work | 8.94d | 2027-03-07 | 2027-03-16 | 4407, 4419, 4421, 4422 |  |
| 4424 |  | Toilet dado work | 7.94d | 2027-03-07 | 2027-03-15 | 4408, 4421, 4422 |  |
| 4425 |  | Toilet flooring work | 6.94d | 2027-03-15 | 2027-03-22 | 4409, 4424 |  |
| 4426 |  | Living dinning flooring | 14.94d | 2027-03-25 | 2027-04-09 | 4410, 4419, 4425 |  |
| 4427 |  | Aluminium door-window fixing | 11.94d | 2027-04-15 | 2027-04-26 | 4411, 4423, 4426 |  |
| 4428 |  | Putty primer coat | 5.94d | 2027-04-09 | 2027-04-15 | 4412, 4426 |  |
| 4429 |  | Door shutter fixing | 7.94d | 2027-04-09 | 2027-04-17 | 4413, 4426 |  |
| 4430 |  | Electrical wiring work | 14.94d | 2028-02-12 | 2028-02-26 | 4414, 4429 |  |
| 4431 |  | Painting 1st coat | 14.94d | 2028-02-27 | 2028-03-12 | 4415, 4428, 4429, 4430 |  |
| 4432 |  | False ceiling | 9.94d | 2028-03-12 | 2028-03-22 | 4416, 4431 |  |
| 4433 | 37100.37300.37600.38300.39300.40700.41700.74700 | **32nd Floor** | 430.94d | 2027-01-31 | 2028-04-06 |  | start no earlier than 2027-01-31 |
| 4434 |  | Block Work | 7.94d | 2027-01-31 | 2027-02-08 | 3931, 4418 |  |
| 4435 |  | Door Frame Fixing | 8.94d | 2027-02-10 | 2027-02-19 | 4419, 4434 |  |
| 4436 |  | Internal Plumbing Works | 9.94d | 2027-02-12 | 2027-02-22 | 4420, 4434 |  |
| 4437 |  | Waterproofing | 11.94d | 2027-02-26 | 2027-03-10 | 4421, 4436 |  |
| 4438 |  | Internal Plaster | 8.94d | 2027-03-07 | 2027-03-16 | 4422FS+0.25d |  |
| 4439 |  | IPS flooring work | 8.94d | 2027-03-16 | 2027-03-25 | 4423, 4435, 4437, 4438 |  |
| 4440 |  | Toilet dado work | 7.94d | 2027-03-16 | 2027-03-24 | 4424, 4437, 4438 |  |
| 4441 |  | Toilet flooring work | 6.94d | 2027-03-24 | 2027-03-31 | 4425, 4440 |  |
| 4442 |  | Living dinning flooring | 14.94d | 2027-04-09 | 2027-04-24 | 4426, 4435, 4441 |  |
| 4443 |  | Aluminium door-window fixing | 11.94d | 2027-04-27 | 2027-05-08 | 4427, 4439, 4442 |  |
| 4444 |  | Putty primer coat | 5.94d | 2027-04-24 | 2027-04-30 | 4428, 4442 |  |
| 4445 |  | Door shutter fixing | 7.94d | 2027-04-24 | 2027-05-02 | 4429, 4442 |  |
| 4446 |  | Electrical wiring work | 14.94d | 2028-02-27 | 2028-03-12 | 4430, 4445 |  |
| 4447 |  | Painting 1st coat | 14.94d | 2028-03-12 | 2028-03-27 | 4431, 4444, 4445, 4446 |  |
| 4448 |  | False ceiling | 9.94d | 2028-03-27 | 2028-04-06 | 4432, 4447 |  |
| 4449 | 37100.37300.37600.38300.39300.40700.41700.74800 | **33rd Floor** | 434.94d | 2027-02-08 | 2028-04-18 |  | start no earlier than 2027-02-08 |
| 4450 |  | Block Work | 7.94d | 2027-02-08 | 2027-02-16 | 3932, 4434 |  |
| 4451 |  | Door Frame Fixing | 8.94d | 2027-02-19 | 2027-02-28 | 4435, 4450 |  |
| 4452 |  | Internal Plumbing Works | 9.94d | 2027-02-22 | 2027-03-04 | 4436, 4450 |  |
| 4453 |  | Waterproofing | 11.94d | 2027-03-10 | 2027-03-22 | 4437, 4452 |  |
| 4454 |  | Internal Plaster | 4d | 2027-03-22 | 2027-03-26 | 4438, 4451, 4452, 4453 |  |
| 4455 |  | IPS flooring work | 8.94d | 2027-03-26 | 2027-04-04 | 4439, 4451, 4453, 4454 |  |
| 4456 |  | Toilet dado work | 7.94d | 2027-03-26 | 2027-04-03 | 4440, 4453, 4454 |  |
| 4457 |  | Toilet flooring work | 6.94d | 2027-04-03 | 2027-04-10 | 4441, 4456 |  |
| 4458 |  | Living dinning flooring | 8d | 2027-04-24 | 2027-05-02 | 4442, 4451, 4457 |  |
| 4459 |  | Aluminium door-window fixing | 14.94d | 2027-05-08 | 2027-05-23 | 4443, 4455, 4458 |  |
| 4460 |  | Putty primer coat | 5.94d | 2027-05-02 | 2027-05-08 | 4444, 4458 |  |
| 4461 |  | Door shutter fixing | 7.94d | 2027-05-02 | 2027-05-10 | 4445, 4458 |  |
| 4462 |  | Electrical wiring work | 11.94d | 2028-03-12 | 2028-03-24 | 4446, 4461 |  |
| 4463 |  | Painting 1st coat | 11.94d | 2028-03-27 | 2028-04-08 | 4447, 4460, 4461, 4462 |  |
| 4464 |  | False ceiling | 9.94d | 2028-04-08 | 2028-04-18 | 4448, 4463 |  |
| 4465 | 37100.37300.37600.38300.39300.40700.41700.74900 | **34th Floor** | 438.94d | 2027-02-16 | 2028-04-30 |  | start no earlier than 2027-02-16 |
| 4466 |  | Block Work | 7.94d | 2027-02-16 | 2027-02-24 | 3933, 4450 |  |
| 4467 |  | Door Frame Fixing | 8.94d | 2027-02-28 | 2027-03-09 | 4451, 4466 |  |
| 4468 |  | Internal Plumbing Works | 9.94d | 2027-03-04 | 2027-03-14 | 4452, 4466 |  |
| 4469 |  | Waterproofing | 11.94d | 2027-03-22 | 2027-04-03 | 4453, 4468 |  |
| 4470 |  | Internal Plaster | 4d | 2027-03-26 | 2027-03-30 | 4454FS+0.25d |  |
| 4471 |  | IPS flooring work | 8.94d | 2027-04-04 | 2027-04-13 | 4455, 4467, 4469, 4470 |  |
| 4472 |  | Toilet dado work | 7.94d | 2027-04-03 | 2027-04-11 | 4456, 4469, 4470 |  |
| 4473 |  | Toilet flooring work | 6.94d | 2027-04-11 | 2027-04-18 | 4457, 4472 |  |
| 4474 |  | Living dinning flooring | 8d | 2027-05-02 | 2027-05-10 | 4458, 4467, 4473 |  |
| 4475 |  | Aluminium door-window fixing | 14.94d | 2027-05-23 | 2027-06-07 | 4459, 4471, 4474 |  |
| 4476 |  | Putty primer coat | 5.94d | 2027-05-10 | 2027-05-16 | 4460, 4474 |  |
| 4477 |  | Door shutter fixing | 7.94d | 2027-05-10 | 2027-05-18 | 4461, 4474 |  |
| 4478 |  | Electrical wiring work | 11.94d | 2028-03-24 | 2028-04-05 | 4462, 4477 |  |
| 4479 |  | Painting 1st coat | 11.94d | 2028-04-08 | 2028-04-20 | 4463, 4476, 4477, 4478 |  |
| 4480 |  | False ceiling | 9.94d | 2028-04-20 | 2028-04-30 | 4464, 4479 |  |

| ID | WBS | Task | Duration | Start | Finish | Predecessors | Constraint |
| --- | --- | --- | --- | --- | --- | --- | --- |
| 4481 | 37100.37300.37600.38300.39300.40700.41700.75000 | **35th Floor** | 442.94d | 2027-02-24 | 2028-05-12 |  | start no earlier than 2027-02-24 |
| 4482 |  | Block Work | 7.94d | 2027-02-24 | 2027-03-04 | 3934, 4466 |  |
| 4483 |  | Door Frame Fixing | 8.94d | 2027-03-09 | 2027-03-18 | 4467, 4482 |  |
| 4484 |  | Internal Plumbing Works | 9.94d | 2027-03-14 | 2027-03-24 | 4468, 4482 |  |
| 4485 |  | Waterproofing | 11.94d | 2027-04-03 | 2027-04-15 | 4469, 4484 |  |
| 4486 |  | Internal Plaster | 3d | 2027-03-31 | 2027-04-03 | 4470FS+0.25d |  |
| 4487 |  | IPS flooring work | 8.94d | 2027-04-15 | 2027-04-24 | 4471, 4483, 4485, 4486 |  |
| 4488 |  | Toilet dado work | 7.94d | 2027-04-15 | 2027-04-23 | 4472, 4485, 4486 |  |
| 4489 |  | Toilet flooring work | 6.94d | 2027-04-23 | 2027-04-30 | 4473, 4488 |  |
| 4490 |  | Living dinning flooring | 12d | 2027-05-10 | 2027-05-22 | 4474, 4483, 4489 |  |
| 4491 |  | Aluminium door-window fixing | 14.94d | 2027-06-07 | 2027-06-22 | 4475, 4487, 4490 |  |
| 4492 |  | Putty primer coat | 5.94d | 2027-05-22 | 2027-05-28 | 4476, 4490 |  |
| 4493 |  | Door shutter fixing | 7.94d | 2027-05-22 | 2027-05-30 | 4477, 4490 |  |
| 4494 |  | Electrical wiring work | 11.94d | 2028-04-05 | 2028-04-17 | 4478, 4493 |  |
| 4495 |  | Painting 1st coat | 11.94d | 2028-04-20 | 2028-05-02 | 4479, 4492, 4493, 4494 |  |
| 4496 |  | False ceiling | 9.94d | 2028-05-02 | 2028-05-12 | 4480, 4495 |  |
| 4497 | 37100.37300.37600.38300.39300.40700.190700 | **Terrace Finishing** | 79.88d | 2026-10-17 | 2027-02-18 |  | start no earlier than 2026-10-17 |
| 4498 |  | Terrace waterproofing | 39.94d | 2026-10-17 | 2027-01-10 | 3891 |  |
| 4499 |  | Terrace finishing | 39.94d | 2027-01-10 | 2027-02-18 | 4498 |  |
| 4500 | 37100.37300.37600.38300.39300.40700.100600 | **Common Area Finishing** | 993.44d | 2026-01-13 | 2028-11-16 |  | start no earlier than 2026-01-13 |
| 4501 |  | Block Work | 39.94d | 2026-01-13 | 2026-02-22 | 3902FS+0.25d |  |
| 4502 |  | Internal Plaster | 119.94d | 2026-02-18 | 2026-06-18 | 4507SS+17.88d |  |
| 4503 |  | Staircase railing fixing | 149.94d | 2026-05-22 | 2026-10-19 | 4505SS+26.75d, 4504SS+26.75d |  |
| 4504 |  | Main staircase flooring | 149.94d | 2026-04-26 | 2026-09-23 | 4505SS+13.38d |  |
| 4505 |  | Fire staircase flooring | 149.94d | 2026-04-12 | 2026-09-09 | 4502SS+13.38d, 4509SS+26.75d |  |
| 4506 |  | Fire door work | 59.94d | 2026-05-22 | 2026-07-21 | 4504SS+26.75d, 4505SS+26.75d |  |
| 4507 |  | Electrical wiring work | 119.94d | 2026-01-31 | 2026-05-31 | 4501SS+17.88d |  |
| 4508 |  | Lobby flooring | 150d | 2026-02-03 | 2026-07-03 | 4507SS+3.38d |  |
| 4509 |  | Ceiling & wall putty-primer | 109.94d | 2026-03-17 | 2026-07-04 | 4502SS+26.75d |  |
| 4510 |  | Ceiling & wall painting | 99.94d | 2026-04-03 | 2026-07-12 | 4509SS+17.88d |  |
| 4511 |  | Light fixture supply & installation | 44.94d | 2028-10-03 | 2028-11-16 | 4594SS+90d |  |
| 4512 | 37100.37300.37600.38300.39300.40700.46700 | **Balcony Glass Railing** | 67.81d | 2027-08-20 | 2027-10-27 |  | start no earlier than 2027-08-20 |
| 4513 |  | 1st Floor | 1.94d | 2027-08-20 | 2027-08-22 | 4581 |  |
| 4514 |  | 2nd Floor | 1.94d | 2027-08-22 | 2027-08-24 | 4513 |  |
| 4515 |  | 3rd Floor | 1.94d | 2027-08-24 | 2027-08-26 | 4514 |  |
| 4516 |  | 4th Floor | 1.94d | 2027-08-26 | 2027-08-28 | 4515 |  |
| 4517 |  | 5th Floor | 1.94d | 2027-08-28 | 2027-08-30 | 4516 |  |
| 4518 |  | 6th Floor | 1.94d | 2027-08-30 | 2027-09-01 | 4517 |  |
| 4519 |  | 7th Floor | 1.94d | 2027-09-01 | 2027-09-03 | 4518 |  |
| 4520 |  | 8th Floor | 1.94d | 2027-09-03 | 2027-09-05 | 4519 |  |
| 4521 |  | 9th Floor | 1.94d | 2027-09-05 | 2027-09-07 | 4520 |  |
| 4522 |  | 10th Floor | 1.94d | 2027-09-07 | 2027-09-09 | 4521 |  |
| 4523 |  | 11th Floor | 1.94d | 2027-09-09 | 2027-09-11 | 4522 |  |
| 4524 |  | 12th Floor | 1.94d | 2027-09-11 | 2027-09-12 | 4523 |  |
| 4525 |  | 13th Floor | 1.94d | 2027-09-13 | 2027-09-14 | 4524 |  |
| 4526 |  | 14th Floor | 1.94d | 2027-09-14 | 2027-09-16 | 4525 |  |
| 4527 |  | 15th Floor | 1.94d | 2027-09-16 | 2027-09-18 | 4526 |  |
| 4528 |  | 16th Floor | 1.94d | 2027-09-18 | 2027-09-20 | 4527 |  |
| 4529 |  | 17th Floor | 1.94d | 2027-09-20 | 2027-09-22 | 4528 |  |
| 4530 |  | 18th Floor | 1.94d | 2027-09-22 | 2027-09-24 | 4529 |  |
| 4531 |  | 19th Floor | 1.94d | 2027-09-24 | 2027-09-26 | 4530 |  |
| 4532 |  | 20th Floor | 1.94d | 2027-09-26 | 2027-09-28 | 4531 |  |
| 4533 |  | 21st Floor | 1.94d | 2027-09-28 | 2027-09-30 | 4532 |  |
| 4534 |  | 22nd Floor | 1.94d | 2027-09-30 | 2027-10-02 | 4533 |  |
| 4535 |  | 23rd Floor | 1.94d | 2027-10-02 | 2027-10-04 | 4534 |  |
| 4536 |  | 24th Floor | 1.94d | 2027-10-04 | 2027-10-06 | 4535 |  |
| 4537 |  | 25th Floor | 1.94d | 2027-10-06 | 2027-10-08 | 4536 |  |
| 4538 |  | 26th Floor | 1.94d | 2027-10-08 | 2027-10-10 | 4537 |  |
| 4539 |  | 27th Floor | 1.94d | 2027-10-10 | 2027-10-12 | 4538 |  |
| 4540 |  | 28th Floor | 1.94d | 2027-10-12 | 2027-10-13 | 4539 |  |
| 4541 |  | 29th Floor | 1.94d | 2027-10-14 | 2027-10-15 | 4540 |  |
| 4542 |  | 30th Floor | 1.94d | 2027-10-15 | 2027-10-17 | 4541 |  |
| 4543 |  | 31st Floor | 1.94d | 2027-10-17 | 2027-10-19 | 4542 |  |
| 4544 |  | 32nd Floor | 1.94d | 2027-10-19 | 2027-10-21 | 4543 |  |
| 4545 |  | 33rd Floor | 1.94d | 2027-10-21 | 2027-10-23 | 4544 |  |
| 4546 |  | 34th Floor | 1.94d | 2027-10-23 | 2027-10-25 | 4545 |  |
| 4547 |  | 35th Floor | 1.94d | 2027-10-25 | 2027-10-27 | 4546 |  |
| 4548 | 37100.37300.37600.38300.95600 | **MEP work** | 970.25d | 2026-04-12 | 2029-01-21 |  | start no earlier than 2026-04-12 |
| 4549 | 37100.37300.37600.38300.95600.97500 | **Electrical work** | 233.25d | 2027-01-09 | 2027-08-30 |  | start no earlier than 2027-01-09 |
| 4550 |  | Cable Tray | 89.94d | 2027-01-09 | 2027-04-08 | 3896 |  |

| ID | WBS | Task | Duration | Start | Finish | Predecessors | Complete | Constraint |
| --- | --- | --- | --- | --- | --- | --- | --- | --- |
| 4551 |  | Cable, main & sub main | 79.94d | 2027-02-18 | 2027-05-08 | 4550SS+40d |  |  |
| 4552 |  | LT panel & DB | 119.94d | 2027-04-08 | 2027-08-06 | 4550 |  |  |
| 4553 |  | Rising main | 89.94d | 2027-06-01 | 2027-08-30 | 4550FS+53.38d |  |  |
| 4554 |  | EARTHING Works | 59.94d | 2027-04-22 | 2027-06-21 | 4550FS+13.38d |  |  |
| 4555 |  | Advance lightening protection | 59.94d | 2027-02-19 | 2027-04-19 | 4499 |  |  |
| 4556 |  | Inverter | 34.94d | 2027-06-21 | 2027-07-26 | 4554 |  |  |
| 4557 |  | Energy meter | 59.94d | 2027-05-08 | 2027-07-07 | 4551 |  |  |
| 4558 |  | Exhast fan | 59.94d | 2027-04-28 | 2027-06-27 | 4491FF+4.5d |  |  |
| 4559 |  | FTTH | 59.94d | 2027-06-12 | 2027-08-11 | 4554FS-9d |  |  |
| 4560 |  | Security System - FA & PA | 54.94d | 2027-06-17 | 2027-08-11 | 4559FF |  |  |
| 4561 |  | Solar water heater | 59.94d | 2027-02-19 | 2027-04-19 | 4499 |  |  |
| 4562 | 37100.37300.37600.38300.95600.126900 | **Plumbing wrok** | 238.62d | 2027-01-10 | 2027-09-05 |  |  | start no earlier than 2027-01-10 |
| 4563 |  | Terrace looping | 44.94d | 2027-01-10 | 2027-02-23 | 4498 |  |  |
| 4564 |  | Shaft Plumbing | 119.94d | 2027-02-24 | 2027-06-23 | 4563 |  |  |
| 4565 |  | CP sanitary fixture supply | 74.94d | 2027-06-22 | 2027-09-05 | 4486, 4489FS+53.38d |  |  |
| 4566 |  | Cold & flushing water supply | 89.94d | 2027-04-19 | 2027-07-18 | 4502SS+380d |  |  |
| 4567 |  | Misc work | 29.94d | 2027-07-09 | 2027-08-08 | 4566FS-9d |  |  |
| 4568 | 37100.37300.37600.38300.95600.169400 | **Fire fighting work** | 439.88d | 2026-04-12 | 2027-08-10 |  |  | start no earlier than 2026-04-12 |
| 4569 |  | Fire hydrant work | 89.94d | 2026-04-12 | 2026-07-11 | 4502SS+53.38d |  |  |
| 4570 |  | Sprinkler & piping work | 89.94d | 2027-05-12 | 2027-08-10 | 4569FS+260d |  |  |
| 4571 |  | Shaft Downtake works | 89.94d | 2027-01-10 | 2027-04-09 | 4498 |  |  |
| 4572 |  | Connection to pump room | 29.94d | 2027-04-10 | 2027-05-09 | 4571 |  |  |
| 4573 | 37100.37300.37600.38300.95600.187800 | **Lift work** | 304.88d | 2027-01-09 | 2027-11-09 |  |  | start no earlier than 2027-01-09 |
| 4574 |  | Lift Shaft Handover | 39.94d | 2027-01-09 | 2027-02-17 | 3896 |  |  |
| 4575 |  | Lift installation work | 180d | 2027-02-17 | 2027-08-16 | 4574 |  |  |
| 4576 |  | Lift testing and commissioning | 84.94d | 2027-08-16 | 2027-11-09 | 4575 |  |  |
| 4577 | 37100.37300.37600.38300.95600.194500 | **AC work** | 89.94d | 2028-10-23 | 2029-01-21 |  |  | start no earlier than 2028-10-23 |
| 4578 |  | Split AC | 89.94d | 2028-10-23 | 2029-01-21 | 4594FS+110d |  |  |
| 4579 | 37100.37300.37600.38300.131500 | **Tower Completion** | 266.88d | 2027-02-21 | 2027-11-15 |  |  | start no earlier than 2027-02-21 |
| 4580 |  | SURFACE PREPARATION | 79.94d | 2027-02-21 | 2027-05-12 | 3934FS+1.88d |  |  |
| 4581 |  | External Painting | 99.94d | 2027-05-12 | 2027-08-20 | 4580 |  |  |
| 4582 |  | Final coat of painting | 87d | 2027-08-20 | 2027-11-15 | 4581 |  |  |
| 4583 |  | Misc. work | 59.94d | 2027-08-20 | 2027-10-19 | 4581 |  |  |
| 4584 | 37100.37300.37600.38300.192900 | **Entrance lobby** | 60d | 2027-03-05 | 2027-05-04 |  |  | start no earlier than 2027-03-05 |
| 4585 |  | Entrance lobby | 60d | 2027-03-05 | 2027-05-04 | 4508FS+200d |  |  |
| 4586 | 37100.37300.37600.38300.107000 | **Post OC activities** | 359.12d | 2028-04-17 | 2029-04-11 |  |  | start no earlier than 2028-04-17 |
| 4587 |  | Wardrobe installation | 169.94d | 2028-06-09 | 2028-11-26 | 4594FS-26.75d |  |  |
| 4588 |  | CP & SANITARYWARE | 109.94d | 2028-06-09 | 2028-09-27 | 4594FS-26.75d |  |  |
| 4589 |  | Wooden Flooring | 169.94d | 2028-06-09 | 2028-11-26 | 4594FS-26.75d |  |  |
| 4590 |  | Electrical Fixtures And Fittings | 86d | 2028-04-17 | 2028-07-12 | 4494 |  |  |
| 4591 |  | Modular Kitchen | 169.94d | 2028-10-23 | 2029-04-11 | 4594FS+110d |  |  |
| 4592 |  | External Elevation Façade | 89.94d | 2028-11-17 | 2029-02-15 | 4594FS+10d, 4511FS+0.25d |  |  |
| 4593 |  | OC Application/Readiness | 0d | 2028-05-12 | 2028-05-12 | 3896, 4503FS+7.12d, 4565, 4623, 3687, 3708, 3709, 4585, 4582, 4583, 4576, 4572, 4570, 4567, 4564, 4561, 4560, 4558, 4557, 4556, 4555, 4553, 4552, 4547, 4506, 4496 |  |  |
| 4594 |  | OC Receipt | 0.94d | 2028-07-05 | 2028-07-05 | 4593FS+53.38d |  |  |
| 4595 |  | Offer To Possession | 29.94d | 2029-04-11 | 2029-05-11 | 4587, 4588, 4589, 4590, 4591, 4592, 4578 |  |  |
| 4596 | 37100.37300.37600.101900 | **External Infrastructure** | 794.88d | 2026-10-17 | 2029-02-02 |  |  | start no earlier than 2026-10-17 |
| 4597 | 37100.37300.37600.101900.192800 | **External Firefightning Work** | 365d | 2027-02-01 | 2028-02-01 |  |  | start no earlier than 2027-02-01 |
| 4598 |  | Excavation, Pipe Laying, Hydrant errection , Fitting , Testing & Commissioning | 365d | 2027-02-01 | 2028-02-01 | 4605FF+200d |  |  |
| 4599 | 37100.37300.37600.101900.106900 | **External Plumbing** | 436.81d | 2026-10-17 | 2028-02-10 |  |  | start no earlier than 2026-10-17 |
| 4600 | 37100.37300.37600.101900.106900.194300 | **External Plumbing - Sewer** | 209.94d | 2026-10-17 | 2027-06-29 |  |  | start no earlier than 2026-10-17 |
| 4601 |  | Excavation, Pipe Laying, Filling , Testing & Commissioning | 209.94d | 2026-10-17 | 2027-06-29 | 3891 |  |  |
| 4602 | 37100.37300.37600.101900.106900.194200 | **External Plumbing - Watersupply** | 209.94d | 2027-07-16 | 2028-02-10 |  |  | start no earlier than 2027-07-16 |
| 4603 |  | Excavation, Pipe Laying, Filling , Testing & Commissioning | 209.94d | 2027-07-16 | 2028-02-10 | 4598FF+9d |  |  |
| 4604 | 37100.37300.37600.101900.106900.194100 | **External Plumbing - Storm Water** | 209.94d | 2026-12-19 | 2027-07-16 |  |  | start no earlier than 2026-12-19 |
| 4605 |  | Excavation, PCC, BBM , IPS, Cover fixing, Curing | 209.94d | 2026-12-19 | 2027-07-16 | 4601SS+17.88d |  |  |
| 4606 | 37100.37300.37600.101900.106900.194000 | **Rain water Harvesting work** | 209.94d | 2026-12-19 | 2027-07-16 |  |  | start no earlier than 2026-12-19 |
| 4607 |  | Rain water Harvesting work | 209.94d | 2026-12-19 | 2027-07-16 | 4605FF |  |  |
| 4608 | 37100.37300.37600.101900.106800 | **External Electrical Work** | 409.81d | 2027-06-25 | 2028-08-07 |  |  | start no earlier than 2027-06-25 |
| 4609 |  | HV INSTALLATION | 150d | 2027-06-25 | 2027-11-22 | 3891FS+206d |  |  |
| 4610 |  | HT CABLES & LT CONTROL CABLES | 89.94d | 2027-11-22 | 2028-02-20 | 4609 |  |  |
| 4611 |  | Street Light Fixing | 37.44d | 2027-12-01 | 2028-01-07 | 4610SS+9d |  |  |
| 4612 |  | Street Light Fixing | 37.38d | 2028-01-07 | 2028-02-13 | 4611 |  |  |
| 4613 |  | External Road | 89.94d | 2028-05-09 | 2028-08-06 | 4697FF, 12, 934, 1852 |  |  |
| 4614 |  | Completion of External Infrastructure | 0.94d | 2028-08-07 | 2028-08-07 | 4696, 4613, 4603, 4607 |  |  |
| 4615 |  | D.G Set supply and installation | 240d | 2027-10-01 | 2028-05-28 |  |  | start no earlier than 2027-10-01 |
| 4616 |  | STP | 160d | 2028-08-07 | 2029-01-13 | 4613 |  |  |
| 4617 |  | WTP | 160d | 2028-08-07 | 2029-01-13 | 4613 |  |  |
| 4618 |  | Water body plumbing & electrical works | 180d | 2028-08-07 | 2029-02-02 | 4613 |  |  |
| 4619 | 37100.37300.37600.47400 | **NTA works** | 1337.28d | 2024-06-01 | 2028-05-05 |  | 37% | start no earlier than 2024-06-01 |
| 4620 |  | Excavation | 139.94d | 2024-06-01 | 2026-02-23 |  | 50% | start no earlier than 2024-06-01 |

| ID | WBS | Task | Duration | Start | Finish | Predecessors | Complete | Constraint |
| --- | --- | --- | --- | --- | --- | --- | --- | --- |
| 4621 |  | Main Pile Work | 199.94d | 2025-11-30 | 2026-06-27 | 3683SS+30d |  |  |
| 4622 |  | Backfilling | 89.94d | 2025-12-22 | 2026-03-22 | 4635SS+6.25d |  |  |
| 4623 |  | Boundary Wall | 210d | 2026-02-20 | 2026-09-18 | 4622FS-30d |  |  |
| 4624 | 37100.37300.37600.47400.101800 | **RCC Works - Nontower area** | 1053.42d | 2024-07-01 | 2027-08-25 |  | 68% | start no earlier than 2024-07-01 |
| 4625 | 37100.37300.37600.47400.101800.108500 | **NTA Raft/Footing** | 771.51d | 2024-07-01 | 2026-10-02 |  | 96% | start no earlier than 2024-07-01 |
| 4626 |  | Anti Termite | 14.94d | 2025-11-30 | 2025-12-24 | 4620FS-510.56d |  |  |
| 4627 |  | PCC | 589.06d | 2024-07-01 | 2026-09-12 | 4620FS-602.26d | 94% | start no earlier than 2024-07-01 |
| 4628 |  | Reinforcement | 693.06d | 2024-08-06 | 2026-09-30 | 4627SS+25d | 98% | start no earlier than 2024-08-06 |
| 4629 |  | Shuttering | 685.85d | 2024-08-23 | 2026-10-02 | 4628SS+44.6d | 96% | start no earlier than 2024-08-23 |
| 4630 |  | Concreting | 501.88d | 2024-09-17 | 2026-04-04 | 4629SS+25d, 4630FS-511.84d | 96% | start no earlier than 2024-09-17 |
| 4631 | 37100.37300.37600.47400.101800.126000 | **Retaining wall** | 575.06d | 2025-02-01 | 2026-09-20 |  | 51% | start no earlier than 2025-02-01 |
| 4632 |  | Reinforcement | 413.06d | 2025-02-01 | 2026-08-06 | 4627SS+30d | 64% | must start on 2025-07-22 |
| 4633 |  | Shuttering | 363.06d | 2025-03-03 | 2026-06-11 | 4632SS+20d | 66% | must start on 2025-07-14 |
| 4634 |  | Concreting | 321.94d | 2025-03-10 | 2026-04-22 | 4627SS+20d, 4633SS+5d | 60% | start no earlier than 2025-03-10 |
| 4635 |  | Retaining wall waterproofing | 278.94d | 2025-12-16 | 2026-09-20 | 4634SS+9d | 1% | start no earlier than 2025-12-16 |
| 4636 | 37100.37300.37600.47400.101800.166300 | **NTA Basement B2 slab** | 694.55d | 2024-09-30 | 2026-10-16 |  | 91% | start no earlier than 2024-09-30 |
| 4637 |  | Reinforcement | 251.06d | 2025-02-13 | 2026-04-03 |  | 100% | start no earlier than 2025-02-13 |
| 4638 |  | Reinforcement | 77.25d | 2024-10-02 | 2026-06-12 | 4630SS-37.1d, 4634SS-474.38d, 4637 | 70% |  |
| 4639 |  | Shuttering | 391.06d | 2024-09-30 | 2026-07-23 |  | 100% | start no earlier than 2024-09-30 |
| 4640 |  | Shuttering | 55.94d | 2026-07-23 | 2026-09-17 | 4637FF+26.75d, 4639 | 60% |  |
| 4641 |  | Concreting | 101.4d | 2024-10-16 | 2026-09-04 |  | 100% | start no earlier than 2024-10-16 |
| 4642 |  | Concreting | 77.94d | 2025-07-15 | 2026-09-13 | 4641 | 88% |  |
| 4643 |  | Concreting | 41.94d | 2025-12-24 | 2026-10-16 | 4640FF+4.5d, 4642 | 20% |  |
| 4644 | 37100.37300.37600.47400.101800.165400 | **NTA Basement B1 slab** | 485.97d | 2025-07-01 | 2027-01-04 |  | 36% | start no earlier than 2025-07-01 |
| 4645 |  | Reinforcement | 5.2d | 2026-07-06 | 2026-07-11 |  | 100% | start no earlier than 2026-07-06 |
| 4646 |  | Reinforcement | 41.94d | 2025-07-01 | 2026-07-12 | 4643FS-373.25d, 4645 | 97% |  |
| 4647 |  | Reinforcement | 50.64d | 2026-05-13 | 2026-07-27 | 4646 | 70% |  |
| 4648 |  | Reinforcement | 3.16d | 2026-07-27 | 2026-07-31 | 4647 | 10% |  |
| 4649 |  | Reinforcement | 111.3d | 2026-08-01 | 2027-01-04 | 4648 | 17% |  |
| 4650 |  | Shuttering | 210.94d | 2026-01-23 | 2026-12-24 | 4649FF-1.88d | 40% |  |
| 4651 |  | Concreting | 44.14d | 2025-07-01 | 2025-10-15 |  | 100% | must start on 2025-06-30 |
| 4652 |  | Concreting | 35.37d | 2025-10-06 | 2026-01-06 | 4651 | 60% |  |
| 4653 |  | Concreting | 67d | 2026-01-06 | 2026-03-14 | 4652 |  |  |
| 4654 |  | Concreting | 10d | 2026-03-14 | 2026-03-24 | 4653 |  |  |
| 4655 |  | Concreting | 100d | 2026-07-26 | 2026-12-18 | 4650FF+4.5d, 4654 |  |  |
| 4656 | 37100.37300.37600.47400.101800.164400 | **NTA Podium slab** | 731.8d | 2025-06-18 | 2027-08-25 |  | 7% | start no earlier than 2025-06-18 |
| 4657 |  | Reinforcement | 240d | 2025-06-18 | 2027-06-22 | 4655SS-424.18d | 11% |  |
| 4658 |  | Shuttering | 240d | 2026-09-10 | 2027-06-22 | 4657FF+0.62d | 9% |  |
| 4659 |  | Concreting | 310d | 2026-09-04 | 2027-08-25 | 4658FF+5d | 2% |  |
| 4660 | 37100.37300.37600.47400.131600 | **Basement and Podium Block work and Plaster finishing** | 605.03d | 2025-11-30 | 2027-09-20 |  |  | start no earlier than 2025-11-30 |
| 4661 |  | Brick work/plaster | 100d | 2026-01-11 | 2026-04-21 | 4653SS+5.43d |  |  |
| 4662 |  | Finishing work-White Goods | 60d | 2027-07-22 | 2027-09-20 | 4663 |  |  |
| 4663 |  | Painting (1st Coat) | 60d | 2027-05-23 | 2027-07-22 | 4664, 4659 |  |  |
| 4664 |  | Vacuum Dewatered Flooring | 450d | 2025-11-30 | 2027-04-18 | 4659FS+26.75d |  | must start on 2025-07-01 |
| 4665 | 37100.37300.37600.47400.48200 | **Basement and Podium services** | 830d | 2025-12-03 | 2028-05-05 |  |  | start no earlier than 2025-12-03 |
| 4666 |  | Waterproofing | 150d | 2026-01-16 | 2026-06-15 | 4661SS+5d |  |  |
| 4667 |  | Plumbing | 90d | 2026-01-21 | 2026-04-21 | 4661SS+10d |  |  |
| 4668 |  | Fire fighting | 365d | 2026-04-21 | 2027-06-05 | 4661 |  |  |
| 4669 |  | Ventilation | 90d | 2027-09-20 | 2027-12-19 | 4663SS+120d |  |  |
| 4670 |  | Electric conduiting and wiring work | 250d | 2025-12-03 | 2026-08-19 | 4668SS-130d |  |  |
| 4671 |  | Security system FA-PA | 90d | 2026-08-19 | 2027-01-01 | 4670 |  |  |
| 4672 |  | Stack parking (no of car parks) | 240d | 2027-05-31 | 2028-01-26 | 4670FS+240d |  |  |
| 4673 |  | Completion of NTA | 1d | 2028-01-26 | 2028-01-27 | 4662, 4666, 4667, 4669, 4671, 4672 |  |  |
| 4674 |  | Cable, main & sub main | 400d | 2027-04-01 | 2028-05-05 | 4681SS+10d |  |  |
| 4675 |  | Cable tray | 180d | 2026-01-30 | 2026-07-29 | 4667SS+9d |  |  |
| 4676 |  | LT panel & DB | 120d | 2027-10-08 | 2028-02-05 | 4681SS+200d |  |  |
| 4677 |  | Bus duct | 90d | 2026-01-16 | 2026-04-16 | 4666SS |  |  |
| 4678 |  | Earthing work | 150d | 2026-02-15 | 2026-07-15 | 4666SS+30d |  |  |
| 4679 |  | Fire fighting work | 120d | 2026-01-31 | 2026-05-31 | 4667SS+10d |  |  |
| 4680 |  | Fire hydrant system | 180d | 2026-01-30 | 2026-07-29 | 4667SS+9d |  |  |
| 4681 |  | Sprikler & piping | 270d | 2027-03-22 | 2027-12-17 | 4667FS+290d |  |  |
| 4682 |  | Fire pump & acc. | 210d | 2027-04-01 | 2027-10-28 | 4667SS+390d |  |  |
| 4683 |  | Gas flooding system | 210d | 2026-01-25 | 2026-08-23 | 4667SS+9d |  | must finish on 2026-08-23 |
| 4684 |  | Fire fighting work | 210d | 2026-01-30 | 2026-08-28 | 4667SS+9d |  |  |
| 4685 |  | Fire hydrant system | 240d | 2026-01-30 | 2026-09-27 | 4667SS+9d |  |  |
| 4686 |  | Lift work | 280d | 2027-01-26 | 2027-11-02 | 4666FS+180d |  |  |
| 4687 | 37100.37300.37600.189300 | **CLUB HOUSE** | 932.12d | 2025-07-07 | 2028-03-31 |  | 16% | start no earlier than 2025-07-07 |
| 4688 |  | Club house Structure | 79.6d | 2025-07-07 | 2025-10-20 |  | 100% | start no earlier than 2025-07-07 |
| 4689 |  | Club house Structure | 77.57d | 2026-04-05 | 2026-06-21 | 4688 | 50% |  |
| 4690 |  | Club house Structure | 41.77d | 2028-01-10 | 2028-02-20 | 4689 |  |  |

| ID | WBS | Task | Duration | Start | Finish | Predecessors | Complete | Constraint |
| --- | --- | --- | --- | --- | --- | --- | --- | --- |
| 4691 |  | Club Finishing | 225d | 2026-02-01 | 2026-09-14 |  |  | start no earlier than 2026-02-01 |
| 4692 |  | Club Finishing | 225d | 2027-08-20 | 2028-03-31 | 4691 |  |  |
| 4693 |  | Club Mumty and Mchine room | 90d | 2025-12-16 | 2026-03-15 |  |  | start no earlier than 2025-12-16 |
| 4695 |  | Soft Scape Work | 200d | 2027-04-02 | 2027-10-18 |  |  | start no earlier than 2027-04-02 |
| 4696 |  | Soft Scape Work | 200d | 2027-10-19 | 2028-05-05 | 4612FF+26.75d, 4695 |  |  |
| 4697 |  | Hard Scape Work | 590d | 2026-12-26 | 2028-08-06 | 4643FS+26.75d |  | start no earlier than 2026-12-26 |
| 4698 | 37100.37300.107900 | **OC of Whole Project** | 1226.31d | 2025-12-16 | 2029-06-09 |  |  | start no earlier than 2025-12-16 |
| 4699 |  | OC of Plot A all 5 Towers | 1d | 2028-08-07 | 2028-08-08 | 924, 1842, 2759, 3676, 4594, 4673, 4614 |  |  |
| 4700 |  | OC Reciept | 24.56d | 2025-12-16 | 2026-01-09 |  |  | start no earlier than 2025-12-16 |
| 4701 |  | OC Reciept | 1d | 2028-10-01 | 2028-10-02 | 4699FS+53.38d, 4700 |  |  |
| 4702 |  | Possession | 90d | 2029-03-11 | 2029-06-09 | 4701FS+160d |  |  |
| 4703 |  | On Completion of MEP Services for retail Unit (Installation of unit electric points) | 5.44d | 2025-12-16 | 2025-12-21 |  |  | start no earlier than 2025-12-16 |
| 4704 |  | On Application of Occupancy Certificate | 9.94d | 2025-12-16 | 2025-12-25 |  |  | start no earlier than 2025-12-16 |
| 4705 |  | On Notice of Possession | 21.19d | 2025-12-16 | 2026-01-06 |  |  | start no earlier than 2025-12-16 |
| 4706 |  | On completion of Retail structure | 9.94d | 2025-12-16 | 2025-12-25 |  |  | start no earlier than 2025-12-16 |
| 4707 |  | Escalation | 51.94d | 2025-11-30 | 2026-01-30 |  |  | start no earlier than 2025-11-30 |
| 4708 |  | Additional Pile | 99.81d | 2024-09-03 | 2026-01-28 | 4707SS-409.88d | 49% |  |
| 4709 |  | Additional Pile | 4.94d | 2026-02-03 | 2026-02-08 | 4708 |  |  |
| 4710 |  | Soilder Piling | 552.44d | 2024-10-10 | 2027-07-06 | 4708SS+37d | 4% | must start on 2025-07-15 |
| 4711 |  | MS Bucket Work | 90d | 2025-01-01 | 2025-12-31 |  | 70% | start no earlier than 2025-01-01 |
| 4712 |  | Misc. Heads - Labor Retention, Contractor Bonus, IGBC | 730d | 2027-04-01 | 2029-07-30 |  |  | start no earlier than 2027-04-01 |
| 4715 | 37100.40200 | **Milestones** | 1d | 2025-12-01 | 2025-12-01 |  |  | start no earlier than 2025-12-01 |
| 4716 |  | On Completion of Tower Raft for Tower 1 | 1d | 2025-12-01 | 2025-12-01 | 17 |  |  |
| 4717 |  | On Completion of Ground Floor for Tower 1 | 1d | 2025-12-01 | 2025-12-01 |  |  | start no earlier than 2025-12-01 |
| 4718 |  | On Completion of 10th Floor Slab for Tower 1 | 1d | 2025-12-01 | 2025-12-01 |  |  | start no earlier than 2025-12-01 |
| 4719 |  | On Completion of 15th Floor slab for Tower 1 | 1d | 2025-12-01 | 2025-12-01 |  |  | start no earlier than 2025-12-01 |
| 4720 |  | On Completion of 20th Floor slab for Tower 1 | 1d | 2025-12-01 | 2025-12-01 |  |  | start no earlier than 2025-12-01 |
| 4721 |  | On Completion of 25th Floor Slab for Tower 1 | 1d | 2025-12-01 | 2025-12-01 |  |  | start no earlier than 2025-12-01 |
| 4722 |  | On Completion of Terrace Slab for Tower 1 | 1d | 2025-12-01 | 2025-12-01 |  |  | start no earlier than 2025-12-01 |
| 4723 |  | On Completion of Unit Internal plaster for Tower 1 | 1d | 2025-12-01 | 2025-12-01 |  |  | start no earlier than 2025-12-01 |
| 4724 |  | On Completion of unit Flooring for Tower 1 | 1d | 2025-12-01 | 2025-12-01 |  |  | start no earlier than 2025-12-01 |
| 4725 |  | On Application of Occupancy Certificate for Tower 1 | 1d | 2025-12-01 | 2025-12-01 |  |  | start no earlier than 2025-12-01 |
| 4726 |  | On Offer of Possession for Tower 1 | 1d | 2025-12-01 | 2025-12-01 |  |  | start no earlier than 2025-12-01 |
| 4727 |  | On Completion of Tower Raft for Tower 2 | 1d | 2025-12-01 | 2025-12-01 |  |  | start no earlier than 2025-12-01 |
| 4728 |  | On Completion of Ground Floor for Tower 2 | 1d | 2025-12-01 | 2025-12-01 |  |  | start no earlier than 2025-12-01 |
| 4729 |  | On Completion of 10th Floor Slab for Tower 2 | 1d | 2025-12-01 | 2025-12-01 |  |  | start no earlier than 2025-12-01 |
| 4730 |  | On Completion of 15th Floor slab for Tower 2 | 1d | 2025-12-01 | 2025-12-01 |  |  | start no earlier than 2025-12-01 |
| 4731 |  | On Completion of 20th Floor slab for Tower 2 | 1d | 2025-12-01 | 2025-12-01 |  |  | start no earlier than 2025-12-01 |
| 4732 |  | On Completion of 25th Floor Slab for Tower 2 | 1d | 2025-12-01 | 2025-12-01 |  |  | start no earlier than 2025-12-01 |
| 4733 |  | On Completion of Terrace Slab for Tower 2 | 1d | 2025-12-01 | 2025-12-01 |  |  | start no earlier than 2025-12-01 |
| 4734 |  | On Completion of Unit Internal plaster for Tower 2 | 1d | 2025-12-01 | 2025-12-01 |  |  | start no earlier than 2025-12-01 |
| 4735 |  | On Completion of unit Flooring for Tower 2 | 1d | 2025-12-01 | 2025-12-01 |  |  | start no earlier than 2025-12-01 |
| 4736 |  | On Application of Occupancy Certificate for Tower 2 | 1d | 2025-12-01 | 2025-12-01 |  |  | start no earlier than 2025-12-01 |
| 4737 |  | On Offer of Possession for Tower 2 | 1d | 2025-12-01 | 2025-12-01 |  |  | start no earlier than 2025-12-01 |
| 4738 |  | On Completion of Tower Raft for Tower 3 | 1d | 2025-12-01 | 2025-12-01 |  |  | start no earlier than 2025-12-01 |
| 4739 |  | On Completion of Ground Floor for Tower 3 | 1d | 2025-12-01 | 2025-12-01 |  |  | start no earlier than 2025-12-01 |
| 4740 |  | On Completion of 10th Floor Slab for Tower 3 | 1d | 2025-12-01 | 2025-12-01 |  |  | start no earlier than 2025-12-01 |
| 4741 |  | On Completion of 15th Floor slab for Tower 3 | 1d | 2025-12-01 | 2025-12-01 |  |  | start no earlier than 2025-12-01 |
| 4742 |  | On Completion of 20th Floor slab for Tower 3 | 1d | 2025-12-01 | 2025-12-01 |  |  | start no earlier than 2025-12-01 |
| 4743 |  | On Completion of 25th Floor Slab for Tower 3 | 1d | 2025-12-01 | 2025-12-01 |  |  | start no earlier than 2025-12-01 |
| 4744 |  | On Completion of Terrace Slab for Tower 3 | 1d | 2025-12-01 | 2025-12-01 |  |  | start no earlier than 2025-12-01 |
| 4745 |  | On Completion of Unit Internal plaster for Tower 3 | 1d | 2025-12-01 | 2025-12-01 |  |  | start no earlier than 2025-12-01 |
| 4746 |  | On Completion of unit Flooring for Tower 3 | 1d | 2025-12-01 | 2025-12-01 |  |  | start no earlier than 2025-12-01 |
| 4747 |  | On Application of Occupancy Certificate for Tower 3 | 1d | 2025-12-01 | 2025-12-01 |  |  | start no earlier than 2025-12-01 |
| 4748 |  | On Offer of Possession for Tower 3 | 1d | 2025-12-01 | 2025-12-01 |  |  | start no earlier than 2025-12-01 |
| 4749 |  | On Completion of Tower Raft for Tower 4 | 1d | 2025-12-01 | 2025-12-01 |  |  | start no earlier than 2025-12-01 |
| 4750 |  | On Completion of Ground Floor for Tower 4 | 1d | 2025-12-01 | 2025-12-01 |  |  | start no earlier than 2025-12-01 |
| 4751 |  | On Completion of 10th Floor Slab for Tower 4 | 1d | 2025-12-01 | 2025-12-01 |  |  | start no earlier than 2025-12-01 |
| 4752 |  | On Completion of 15th Floor slab for Tower 4 | 1d | 2025-12-01 | 2025-12-01 |  |  | start no earlier than 2025-12-01 |
| 4753 |  | On Completion of 20th Floor slab for Tower 4 | 1d | 2025-12-01 | 2025-12-01 |  |  | start no earlier than 2025-12-01 |
| 4754 |  | On Completion of 25th Floor Slab for Tower 4 | 1d | 2025-12-01 | 2025-12-01 |  |  | start no earlier than 2025-12-01 |
| 4755 |  | On Completion of Terrace Slab for Tower 4 | 1d | 2025-12-01 | 2025-12-01 |  |  | start no earlier than 2025-12-01 |
| 4756 |  | On Completion of Unit Internal plaster for Tower 4 | 1d | 2025-12-01 | 2025-12-01 |  |  | start no earlier than 2025-12-01 |
| 4757 |  | On Completion of unit Flooring for Tower 4 | 1d | 2025-12-01 | 2025-12-01 |  |  | start no earlier than 2025-12-01 |
| 4758 |  | On Application of Occupancy Certificate for Tower 4 | 1d | 2025-12-01 | 2025-12-01 |  |  | start no earlier than 2025-12-01 |
| 4759 |  | On Offer of Possession for Tower 4 | 1d | 2025-12-01 | 2025-12-01 |  |  | start no earlier than 2025-12-01 |
| 4760 |  | On Completion of Tower Raft for Tower 5 | 1d | 2025-12-01 | 2025-12-01 |  |  | start no earlier than 2025-12-01 |
| 4761 |  | On Completion of Ground Floor for Tower 5 | 1d | 2025-12-01 | 2025-12-01 |  |  | start no earlier than 2025-12-01 |
| 4762 |  | On Completion of 10th Floor Slab for Tower 5 | 1d | 2025-12-01 | 2025-12-01 |  |  | start no earlier than 2025-12-01 |
| 4763 |  | On Completion of 15th Floor slab for Tower 5 | 1d | 2025-12-01 | 2025-12-01 |  |  | start no earlier than 2025-12-01 |

| ID | Task | Duration | Start | Finish | Constraint |
| --- | --- | --- | --- | --- | --- |
| 4764 | On Completion of 20th Floor slab for Tower 5 | 1d | 2025-12-01 | 2025-12-01 | start no earlier than 2025-12-01 |
| 4765 | On Completion of 25th Floor Slab for Tower 5 | 1d | 2025-12-01 | 2025-12-01 | start no earlier than 2025-12-01 |
| 4766 | On Completion of Terrace Slab for Tower 5 | 1d | 2025-12-01 | 2025-12-01 | start no earlier than 2025-12-01 |
| 4767 | On Completion of Unit Internal plaster for Tower 5 | 1d | 2025-12-01 | 2025-12-01 | start no earlier than 2025-12-01 |
| 4768 | On Completion of unit Flooring for Tower 5 | 1d | 2025-12-01 | 2025-12-01 | start no earlier than 2025-12-01 |
| 4769 | On Application of Occupancy Certificate for Tower 5 | 1d | 2025-12-01 | 2025-12-01 | start no earlier than 2025-12-01 |
| 4770 | On Offer of Possession for Tower 5 | 1d | 2025-12-01 | 2025-12-01 | start no earlier than 2025-12-01 |

## Version 2 (saved 2025-12-10, file Jardinia.xml)

Note of the change: Initial commit: ETL pipeline for CCO Dashboard

Last finish 2029-08-27 → 2029-10-30 (+64d). Complete tasks 270 → 95.

Added:

| ID | Task | Duration | Start | Finish | Predecessors | Constraint |
| --- | --- | --- | --- | --- | --- | --- |
| 277 | False Ceiling panel fixing | 11.25d | 2027-05-13 | 2027-05-23 | 276 |  |
| 883 | Exhaust fan | 67.5d | 2027-10-17 | 2028-01-30 | 882FF+16.88d |  |
| 887 | **Plumbing work** | 370.38d | 2027-05-30 | 2028-06-08 |  | start no earlier than 2027-05-30 |
| 912 | Balcony Tile Flooring | 135d | 2028-05-01 | 2028-08-29 | 919FS-33.75d |  |
| 917 | External Paint | 101.25d | 2028-05-16 | 2028-08-14 | 919FS-16.88d, 836 |  |
| 1743 | Fire Door | 67.5d | 2027-05-28 | 2027-07-27 | 1138 |  |
| 1744 | Tile Cladding & Lift Lobby Granite Wall | 135d | 2027-07-17 | 2027-12-29 | 1749SS+33.75d |  |
| 1826 | **Basement lobby** | 67.5d | 2028-01-02 | 2028-03-02 |  | start no earlier than 2028-01-02 |
| 1827 | Basement lobby | 67.5d | 2028-01-02 | 2028-03-02 | 1750 |  |
| 1829 | Balcony Flooring & Kitchen Counter | 202.5d | 2028-04-27 | 2028-10-24 | 1836FS-33.75d |  |
| 1830 | Final Coat of Paint | 135d | 2028-06-15 | 2028-10-13 | 1836FS-33.75d, 1807 |  |
| 1832 | Misc. Fixtures And Fittings | 135d | 2028-08-02 | 2028-11-30 | 1736 |  |
| 1834 | Final Coat Paint | 101.25d | 2028-08-27 | 2028-11-25 | 1836FS-16.88d, 1753, 1738 |  |
| 1860 | **Podium /Ground Floor Slab** | 51.75d | 2025-08-12 | 2025-09-26 |  | start no earlier than 2025-08-12 |
| 2743 | **Basement lobby** | 67.5d | 2027-12-20 | 2028-02-18 |  | start no earlier than 2027-12-20 |
| 2744 | Basement lobby | 67.5d | 2027-12-20 | 2028-02-18 | 2667 |  |
| 2746 | Balcony Tile Flooring | 202.5d | 2028-04-30 | 2028-10-27 | 2753FS-33.75d |  |
| 2751 | External Paint | 101.25d | 2028-05-15 | 2028-08-13 | 2753FS-16.88d, 2670 |  |
| 2777 | **Podium /Ground Floor Slab** | 141.75d | 2025-06-09 | 2025-10-12 |  | start no earlier than 2025-06-09 |
| 3578 | Tile Cladding & Lift Lobby Granite Wall | 135d | 2027-07-08 | 2027-12-20 | 3583SS+22.5d |  |
| 3660 | **Basement lobby** | 67.5d | 2028-01-03 | 2028-03-03 |  | start no earlier than 2028-01-03 |
| 3661 | Basement lobby | 67.5d | 2028-01-03 | 2028-03-03 | 3584 |  |
| 3664 | Fixtures SITC | 135d | 2028-06-18 | 2028-10-16 | 3670FS-33.75d, 3641 |  |
| 3665 | Balcony Flooring & Kitchen Counter | 202.5d | 2028-03-09 | 2028-09-05 | 3654FF-33.75d |  |
| 3666 | Misc. Fixtures And Fittings | 135d | 2028-08-01 | 2028-11-29 | 3570 |  |
| 3668 | Final Coat Paint | 101.25d | 2029-01-03 | 2029-04-03 | 3665FS+135d |  |
| 3694 | **Podium /Ground Floor Slab** | 46.12d | 2025-08-20 | 2025-09-29 |  | start no earlier than 2025-08-20 |
| 4446 | Waterproofing | 13.5d | 2027-06-08 | 2027-06-19 | 4430, 4445 |  |
| 4462 | Waterproofing | 13.5d | 2027-06-20 | 2027-07-01 | 4446, 4461 |  |
| 4478 | Waterproofing | 11.25d | 2027-06-09 | 2027-06-18 | 4477 |  |
| 4495 | Tile Cladding & Lift Lobby Granite Wall | 135d | 2027-07-03 | 2027-10-30 | 4500SS+33.75d |  |
| 4537 | 32nd Floor | 2.25d | 2028-02-25 | 2028-02-26 | 4536 |  |
| 4555 | **Plumbing work** | 349.25d | 2027-05-14 | 2028-05-03 |  | start no earlier than 2027-05-14 |
| 4575 | Waterproofing | 880.88d | 2023-11-28 | 2028-03-01 | 4574FS-1526.62d |  |
| 4577 | **Basement lobby** | 67.5d | 2027-10-04 | 2028-01-17 |  | start no earlier than 2027-10-04 |
| 4581 | Fixtures SITC | 135d | 2028-06-28 | 2028-10-26 | 4587FS-33.75d, 4558 |  |
| 4582 | Balcony Flooring & Kitchen Counter | 202.5d | 2028-06-28 | 2028-12-25 | 4587FS-33.75d |  |
| 4583 | Misc. Fixtures And Fittings | 135d | 2029-03-13 | 2029-07-11 | 4487 |  |
| 4585 | Final Coat Paint | 101.25d | 2029-07-21 | 2029-10-19 | 4587FS-16.88d, 4504 |  |
| 4642 | **Basement and Podium Services** | 1249.96d | 2025-02-14 | 2028-07-10 |  | start no earlier than 2025-02-14 |
| 4643 | Waterproofing | 470.25d | 2025-02-14 | 2028-01-23 | 4632FS-893.34d |  |
| 4647 | Electrification | 303.75d | 2027-03-18 | 2028-01-26 | 4645SS+33.75d |  |
| 4648 | Security installations | 101.25d | 2028-01-27 | 2028-04-25 | 4647 |  |
| 4651 | **Club House** | 551.25d | 2027-09-13 | 2029-02-28 |  | start no earlier than 2027-09-13 |
| 4652 | Structure Work | 101.25d | 2027-09-13 | 2028-01-25 | 4632FS+67.5d |  |
| 4653 | Finishing Work | 337.5d | 2028-03-11 | 2029-01-04 | 4652FS+50.62d |  |
| 4654 | Mep Work | 337.5d | 2028-04-25 | 2029-02-18 | 4652FS+101.25d |  |
| 4655 | Furnitures | 1.12d | 2029-02-19 | 2029-02-19 | 4653, 4654 |  |
| 4656 | Gym equipments | 10.12d | 2029-02-20 | 2029-02-28 | 4653, 4655 |  |
| 4657 | **Fire NOC** | 2.25d | 2029-03-01 | 2029-03-02 |  | start no earlier than 2029-03-01 |
| 4658 | Fire NOC | 2.25d | 2029-03-01 | 2029-03-02 | 4596FF, 4656, 4650, 4640, 4641 |  |
| 4660 | OC of Plot B all 5 Towers | 1.12d | 2029-03-03 | 2029-03-04 | 4658FS+0.25d |  |
| 4664 | Solider Piling | 282.31d | 2024-12-05 | 2026-04-06 |  | start no earlier than 2024-12-05 |
| 4665 | Solider Piling | 1d | 2025-11-19 | 2025-11-19 |  | start no earlier than 2025-11-19 |
| 4666 | MS Bucket | 275.44d | 2024-08-29 | 2026-01-23 | 4664SS-110.06d |  |

Removed: 278 False Cieling panel fixing; 914 Entrance lobby; 915 Entrance lobby; 917 Wardrobe installation; 918 Home Automation; 920 Shaft Closer; 922 External Elevation Façade; 948 Podium; 1832 Entrance lobby; 1833 Entrance lobby; 1835 Wardrobe installation; 1836 CP & SANITARYWARE; 1838 Shaft closer; 1840 External Elevation Façade; 1866 Podium; 2747 Final coat of painting; 2752 Wardrobe installation; 2753 CP & SANITARYWARE; 2757 External Elevation Façade; 2783 Podium; 3644 Plumbing wrok; 3664 Final coat of painting; 3666 Entrance lobby; 3667 Entrance lobby; 3669 Wardrobe installation; 3670 CP & SANITARYWARE; 3674 External Elevation Façade; 3929 32nd Flood; 4454 Internal Plaster; 4470 Internal Plaster; 4486 Internal Plaster; 4499 Terrace finishing; 4501 Block Work; 4502 Internal Plaster; 4514 2nd Floor; 4541 29th Floor; 4543 31st Floor; 4558 Exhast fan; 4562 Plumbing wrok; 4582 Final coat of painting; 4584 Entrance lobby; 4585 Entrance lobby; 4587 Wardrobe installation; 4588 CP & SANITARYWARE; 4590 Electrical Fixtures And Fittings; 4592 External Elevation Façade; 4598 Excavation, Pipe Laying, Hydrant errection , Fitting , Testing & Commissioning; 4612 Street Light Fixing; 4615 D.G Set supply and installation; 4616 STP; 4617 WTP; 4618 Water body plumbing & electrical works; 4621 Main Pile Work; 4622 Backfilling; 4643 Concreting; 4646 Reinforcement; 4647 Reinforcement; 4648 Reinforcement; 4649 Reinforcement; 4651 Concreting; 4652 Concreting; 4653 Concreting; 4654 Concreting; 4655 Concreting; 4657 Reinforcement; 4658 Shuttering; 4659 Concreting; 4665 Basement and Podium services; 4671 Security system FA-PA; 4674 Cable, main & sub main; 4675 Cable tray; 4676 LT panel & DB; 4677 Bus duct; 4678 Earthing work; 4679 Fire fighting work; 4680 Fire hydrant system; 4681 Sprikler & piping; 4682 Fire pump & acc.; 4683 Gas flooding system; 4684 Fire fighting work; 4685 Fire hydrant system; 4686 Lift work; 4687 CLUB HOUSE; 4688 Club house Structure; 4689 Club house Structure; 4690 Club house Structure; 4691 Club Finishing; 4693 Club Mumty and Mchine room; 4696 Soft Scape Work; 4699 OC of Plot A all 5 Towers; 4700 OC Reciept; 4701 OC Reciept; 4703 On Completion of MEP Services for retail Unit (Installation of unit electric points); 4704 On Application of Occupancy Certificate; 4705 On Notice of Possession; 4706 On completion of Retail structure; 4709 Additional Pile; 4710 Soilder Piling; 4711 MS Bucket Work; 4712 Misc. Heads - Labor Retention, Contractor Bonus, IGBC

Changed:

| ID | Task | Start | Finish | Duration | Complete | Predecessors | Other |
| --- | --- | --- | --- | --- | --- | --- | --- |
| 1 | **Jardinia** | 2023-09-29 → 2023-05-13 (-139d) | 2029-08-27 → 2029-10-30 (+64d) | 2158.85ed → 2362.29ed | 11% → 14% |  | was named Tropical Isle 146; constraint start no earlier than 2023-09-29 → start no earlier than 2023-05-13 |
| 2 | **Godrej Jardinia 146** | 2023-09-29 → 2023-05-13 (-139d) | 2029-08-27 → 2029-10-30 (+64d) | 2016.19d → 2510.62d | 11% → 14% |  | was named Tropical Isle 146; constraint start no earlier than 2023-09-29 → start no earlier than 2023-05-13 |
| 3 | **Phase-1** | 2023-09-29 → 2023-05-13 (-139d) | 2029-08-27 → 2029-10-30 (+64d) | 2016.19d → 2510.62d | 11% → 13% |  | constraint start no earlier than 2023-09-29 → start no earlier than 2023-05-13 |
| 4 | **Tower 5** | 2023-09-29 → 2023-05-13 (-139d) | 2029-03-11 → 2029-01-02 (-68d) | 1847.06d → 2171.28d | 7% → 14% |  | constraint start no earlier than 2023-09-29 → start no earlier than 2023-05-13 |
| 5 | **Substructure** | 2023-09-29 → 2024-05-14 (+228d) | 2026-06-02 → 2026-05-12 (-21d) | 878.69d → 774d | 57% → 74% |  | constraint start no earlier than 2023-09-29 → start no earlier than 2024-05-14 |
| 6 | **Soil Bed Preparation** | 2023-09-29 → 2024-05-14 (+228d) | 2026-02-07 → 2026-02-24 (+17d) | 763.81d → 687.38d | 78% → 80% |  | constraint start no earlier than 2023-09-29 → start no earlier than 2024-05-14 |
| 7 | Test Piling | 2023-09-29 → 2024-05-14 (+228d) | 2023-10-24 → 2024-08-16 (+297d) | 24.94d → 106.69d |  |  | constraint start no earlier than 2023-09-29 → start no earlier than 2024-05-14 |
| 8 | Excavation | 2024-01-10 → 2024-06-05 (+147d) | 2024-02-08 → 2024-07-04 (+147d) | 29.94d → 33.56d |  | 7SS+15.74d → 7SS+22d | constraint start no earlier than 2024-01-10 → start no earlier than 2024-06-05 |
| 9 | Main Piling Work | 2024-04-12 → 2024-09-25 (+166d) | 2025-01-13 → 2025-03-31 (+77d) | 169.94d → 162.44d |  | 7FS-12.45d → 7FS+35d | constraint start no earlier than 2024-04-12 → start no earlier than 2024-09-25 |
| 10 | Anti-termite | 2025-11-30 → 2025-12-27 (+27d) | 2025-12-04 → 2025-12-31 (+27d) | 4.94d → 5.62d |  | 9FF+1.88d → 9FF+2d |  |
| 11 | PCC | 2024-10-15 → 2025-03-29 (+165d) | 2024-10-28 → 2025-04-06 (+160d) | 13.86d → 4.5d |  | 8FS-14.7d, 10SS+10.93d → 8, 10SS-3.38d | constraint start no earlier than 2024-10-15 → start no earlier than 2025-03-29 |
| 12 | Backfilling | 2025-11-30 → 2025-12-27 (+27d) | 2026-02-07 → 2026-02-24 (+17d) | 59.94d → 67.5d |  | 29FS-4.38d, 17FS-1d, 21FS-2d → 25FS-1.12d, 17, 21 |  |
| 13 | **RCC Structure** | 2024-12-17 → 2025-03-31 (+104d) | 2025-04-09 → 2025-10-19 (+193d) | 113.62d → 228.38d |  |  | constraint start no earlier than 2024-12-17 → start no earlier than 2025-03-31 |
| 14 | **Raft Foundation** | 2024-12-17 → 2025-03-31 (+104d) | 2025-01-16 → 2025-06-15 (+150d) | 31d → 86.62d |  |  | constraint start no earlier than 2024-12-17 → start no earlier than 2025-03-31 |
| 15 | Reinforcement | 2024-12-17 → 2025-03-31 (+104d) | 2025-01-11 → 2025-06-12 (+152d) | 26d → 70.88d |  | 11FS-7.91d → 11FS-7.88d | constraint must finish on 2025-01-13 → start no earlier than 2025-03-31 |
| 16 | Formwork | 2024-12-31 → 2025-06-11 (+162d) | 2025-01-13 → 2025-06-14 (+152d) | 14d → 4.5d |  | 15FF-2d → 15FF+7.88d | constraint start no earlier than 2024-12-31 → start no earlier than 2025-06-11 |
| 17 | Concreting | 2025-01-13 → 2025-06-14 (+152d) | 2025-01-16 → 2025-06-15 (+150d) | 4d → 2.25d |  | 16FS-1d → 16FF+1.12d | constraint start no earlier than 2025-01-13 → start no earlier than 2025-06-14 |
| 18 | **Basement 1 Slab** | 2025-01-16 → 2025-05-08 (+112d) | 2025-02-11 → 2025-08-12 (+182d) | 27d → 109.12d |  |  | constraint start no earlier than 2025-01-16 → start no earlier than 2025-05-08 |
| 19 | Reinforcement | 2025-01-16 → 2025-06-19 (+154d) | 2025-02-06 → 2025-07-12 (+156d) | 22d → 27d |  | 17FS-1d → 17 | constraint start no earlier than 2025-01-16 → start no earlier than 2025-06-19 |
| 20 | Formwork | 2025-01-19 → 2025-05-08 (+109d) | 2025-02-09 → 2025-05-27 (+107d) | 22d → 22.5d |  | 19SS+3d → 19SS+1.12d | constraint start no earlier than 2025-01-19 → start no earlier than 2025-05-08 |
| 21 | Concreting | 2025-02-09 → 2025-05-28 (+108d) | 2025-02-11 → 2025-08-12 (+182d) | 2d → 86.62d |  | 20FS-1d → 20 | constraint start no earlier than 2025-02-09 → start no earlier than 2025-05-28 |
| 22 | **Basement 2 Slab/GF** | 2025-02-10 → 2025-05-30 (+109d) | 2025-03-06 → 2025-09-10 (+188d) | 24.38d → 117d |  |  | constraint start no earlier than 2025-02-10 → start no earlier than 2025-05-30 |
| 23 | Reinforcement | 2025-02-10 → 2025-06-03 (+113d) | 2025-03-01 → 2025-09-10 (+193d) | 18d → 112.5d |  | 21FS-2d → 21FS-109.12d | constraint start no earlier than 2025-02-10 → start no earlier than 2025-06-03 |
| 24 | Formwork | 2025-02-13 → 2025-06-03 (+110d) | 2025-03-01 → 2025-09-09 (+192d) | 13d → 49.5d |  | 23SS+3d → 23SS+27d | constraint start no earlier than 2025-02-13 → start no earlier than 2025-06-03 |
| 25 | Concreting | 2025-02-25 → 2025-05-30 (+94d) | 2025-03-05 → 2025-08-18 (+166d) | 3.5d → 91.12d |  | 24 → 24FS-180d | constraint start no earlier than 2025-02-25 → start no earlier than 2025-05-30 |
| 26 | **Podium /Ground Floor Slab** | 2025-03-10 → 2025-09-11 (+185d) | 2025-04-09 → 2025-10-19 (+193d) | 30.62d → 43.88d |  |  | constraint start no earlier than 2025-03-10 → start no earlier than 2025-09-11 |
| 27 | Reinforcement | 2025-03-10 → 2025-09-11 (+185d) | 2025-04-05 → 2025-10-17 (+195d) | 20d → 25.88d |  | 29FS+2.38d → 25FS-1.12d | constraint start no earlier than 2025-03-10 → start no earlier than 2025-09-11 |
| 28 | Formwork | 2025-03-10 → 2025-09-16 (+190d) | 2025-04-06 → 2025-10-18 (+195d) | 22d → 27d |  | 27FF → 27SS+1.12d | constraint start no earlier than 2025-03-10 → start no earlier than 2025-09-16 |
| 29 | Concreting | 2025-02-27 → 2025-09-19 (+204d) | 2025-03-06 → 2025-10-19 (+227d) | 3.5d → 9d |  | 25 → 28FS-29.25d | constraint none → start no earlier than 2025-09-19 |
| 30 | **Substructure Finishing** | 2025-11-30 → 2026-01-03 (+34d) | 2026-06-02 → 2026-05-12 (-21d) | 174.81d → 146.25d |  |  | constraint start no earlier than 2025-11-30 → start no earlier than 2026-01-03 |
| 31 | Masonary work | 2025-11-30 → 2026-01-03 (+34d) | 2026-03-09 → 2026-02-16 (-21d) | 89.94d → 50.62d |  | 41FS+26.75d → 29FS+33.75d |  |
| 32 | Plaster | 2026-03-09 → 2026-02-17 (-20d) | 2026-04-18 → 2026-03-28 (-21d) | 39.94d → 45d |  |  |  |
| 33 | Structural steel | 2025-11-30 → 2026-01-03 (+34d) | 2026-02-07 → 2026-03-03 (+24d) | 59.94d → 67.5d |  | 41FS+53.38d → 29FS+33.75d |  |
| 34 | White Wash | 2026-04-18 → 2026-03-29 (-20d) | 2026-06-02 → 2026-05-12 (-21d) | 44.94d → 50.62d |  |  |  |
| 35 | **Superstructure** | 2025-04-14 → 2025-10-09 (+178d) | 2027-11-01 → 2028-09-21 (+325d) | 864.88d → 1065.4d | 5% → 0% |  | constraint start no earlier than 2025-04-14 → start no earlier than 2025-10-09 |
| 36 | **RCC structure** | 2025-04-14 → 2025-10-09 (+178d) | 2027-01-14 → 2027-05-30 (+136d) | 573.31d → 576.9d | 38% → 7% |  | constraint start no earlier than 2025-04-14 → start no earlier than 2025-10-09 |
| 37 | **1st floor slab** | 2025-04-14 → 2025-10-09 (+178d) | 2025-05-28 → 2026-01-27 (+244d) | 45d → 78.53d | 100% → 47% |  | constraint start no earlier than 2025-04-14 → start no earlier than 2025-10-09 |
| 38 | Reinforcement | 2025-04-14 → 2025-10-09 (+178d) | 2025-05-07 → 2026-01-23 (+261d) | 20d → 56.25d | 100% → 44% | 41FS+1.88d → 29FS-7.88d | constraint start no earlier than 2025-04-14 → start no earlier than 2025-10-09 |
| 39 | Wall conduiting | 2025-04-16 → 2025-10-17 (+184d) | 2025-04-30 → 2025-12-29 (+243d) | 4d → 5.62d | 100% → 60% | 38SS+1.75d → 38SS+9d | constraint start no earlier than 2025-04-16 → start no earlier than 2025-10-17 |
| 40 | Formwork | 2025-04-15 → 2025-10-17 (+185d) | 2025-05-25 → 2026-01-25 (+245d) | 30d → 67.5d | 100% → 50% | 38SS+3d → 38SS+9d | constraint start no earlier than 2025-04-15 → start no earlier than 2025-10-17 |
| 41 | Concreting | 2025-04-08 → 2025-10-19 (+194d) | 2025-04-09 → 2026-01-27 (+293d) | 1d → 1.12d | 100% → 20% | 28FF+3.62d → 40FS-65.25d | constraint start no earlier than 2025-04-08 → none |
| 42 | **2nd floor slab** | 2025-05-18 → 2025-11-07 (+173d) | 2025-07-07 → 2026-02-26 (+234d) | 51d → 79.65d | 100% → 17% |  | constraint start no earlier than 2025-05-18 → start no earlier than 2025-11-07 |
| 43 | Reinforcement | 2025-05-18 → 2025-11-07 (+173d) | 2025-06-27 → 2026-02-18 (+236d) | 25d → 34.88d | 100% → 35% | 46SS+6d → 41FS-45.9d | constraint start no earlier than 2025-05-18 → start no earlier than 2025-11-07 |
| 44 | Wall conduiting | 2025-05-22 → 2026-01-28 (+251d) | 2025-06-28 → 2026-01-31 (+217d) | 19d → 3.38d | 100% → 0% | 39, 43SS+2.75d → 39FS+0.25d, 43SS+47.02d | constraint start no earlier than 2025-05-22 → none |
| 45 | Formwork | 2025-05-19 → 2026-01-29 (+255d) | 2025-07-01 → 2026-02-25 (+239d) | 30d → 30.38d | 100% → 0% | 43SS+3d → 43SS+48.15d | constraint start no earlier than 2025-05-19 → none |
| 46 | Concreting | 2025-05-16 → 2026-02-25 (+285d) | 2025-05-28 → 2026-02-26 (+274d) | 8d → 1.12d | 100% → 0% | 40SS+26d → 45 | constraint start no earlier than 2025-05-16 → none |
| 47 | **3rd floor slab** | 2025-06-30 → 2026-02-26 (+241d) | 2025-07-28 → 2026-03-08 (+223d) | 29d → 11.25d | 100% → 0% |  | constraint start no earlier than 2025-06-30 → start no earlier than 2026-02-26 |
| 48 | Reinforcement | 2025-06-30 → 2026-02-26 (+241d) | 2025-07-28 → 2026-03-05 (+220d) | 9d → 7.88d | 100% → 0% | 51FS+1d → 46 | constraint start no earlier than 2025-06-30 → none |
| 49 | Wall conduiting | 2025-07-02 → 2026-03-01 (+242d) | 2025-07-28 → 2026-03-03 (+218d) | 10d → 2.25d | 100% → 0% | 44, 48SS+2.75d → 44, 48SS+3.38d | constraint start no earlier than 2025-07-02 → none |
| 50 | Formwork | 2025-07-03 → 2026-02-28 (+240d) | 2025-07-28 → 2026-03-07 (+222d) | 10d → 7.88d | 100% → 0% | 48SS+3d → 48SS+2.25d | constraint start no earlier than 2025-07-03 → none |
| 51 | Concreting | 2025-06-26 → 2026-03-07 (+254d) | 2025-07-07 → 2026-03-08 (+244d) | 9d → 1.12d | 100% → 0% | 45 → 50 | constraint start no earlier than 2025-06-26 → none |
| 52 | **4th floor slab** | 2025-07-28 → 2026-03-08 (+223d) | 2025-08-14 → 2026-03-18 (+216d) | 18d → 11.25d | 100% → 0% |  | constraint start no earlier than 2025-07-28 → start no earlier than 2026-03-08 |
| 53 | Reinforcement | 2025-08-11 → 2026-03-08 (+209d) | 2025-08-27 → 2026-03-15 (+200d) | 8d → 7.88d | 100% → 0% | 61FS-4d → 51 | constraint start no earlier than 2025-08-11 → none |
| 54 | Wall conduiting | 2025-07-29 → 2026-03-09 (+223d) | 2025-08-11 → 2026-03-11 (+212d) | 3d → 2.25d | 100% → 0% | 49, 58SS+1d → 49, 53SS+1.12d | constraint start no earlier than 2025-07-29 → none |
| 55 | Formwork | 2025-07-29 → 2026-03-10 (+224d) | 2025-08-13 → 2026-03-17 (+216d) | 7d → 7.88d | 100% → 0% | 58SS+1d → 53SS+2.25d | constraint start no earlier than 2025-07-29 → none |
| 56 | Concreting | 2025-07-21 → 2026-03-17 (+239d) | 2025-07-28 → 2026-03-18 (+233d) | 2d → 1.12d | 100% → 0% | 50FS-7d → 55 | constraint start no earlier than 2025-07-21 → none |
| 57 | **5th floor slab** | 2025-08-11 → 2026-03-18 (+219d) | 2025-08-30 → 2026-03-28 (+210d) | 20d → 11.25d | 100% → 0% |  | constraint start no earlier than 2025-08-11 → start no earlier than 2026-03-18 |
| 58 | Reinforcement | 2025-07-28 → 2026-03-18 (+233d) | 2025-08-11 → 2026-03-25 (+226d) | 6d → 7.88d | 100% → 0% | 56FS-5d → 56 | constraint start no earlier than 2025-07-28 → none |
| 59 | Wall conduiting | 2025-08-11 → 2026-03-19 (+220d) | 2025-08-30 → 2026-03-21 (+203d) | 8d → 2.25d | 100% → 0% | 54, 53SS+1d → 54, 58SS+1.12d | constraint start no earlier than 2025-08-11 → none |
| 60 | Formwork | 2025-08-12 → 2026-03-20 (+220d) | 2025-08-28 → 2026-03-27 (+211d) | 7d → 7.88d | 100% → 0% | 53SS+1d → 58SS+2.25d | constraint start no earlier than 2025-08-12 → none |
| 61 | Concreting | 2025-08-09 → 2026-03-27 (+230d) | 2025-08-14 → 2026-03-28 (+226d) | 4d → 1.12d | 100% → 0% | 55FS-3d → 60 | constraint start no earlier than 2025-08-09 → none |
| 62 | **6th floor slab** | 2025-08-24 → 2026-03-28 (+216d) | 2025-09-09 → 2026-04-07 (+210d) | 17d → 11.25d | 100% → 0% |  | constraint start no earlier than 2025-08-24 → start no earlier than 2026-03-28 |
| 63 | Reinforcement | 2025-08-24 → 2026-03-28 (+216d) | 2025-09-08 → 2026-04-04 (+208d) | 8d → 7.88d | 100% → 0% | 66FS+1d → 61 | constraint start no earlier than 2025-08-24 → none |
| 64 | Wall conduiting | 2025-08-25 → 2026-03-29 (+216d) | 2025-09-08 → 2026-03-31 (+204d) | 3d → 2.25d | 100% → 0% | 59, 63SS+1d → 59, 63SS+1.12d | constraint start no earlier than 2025-08-25 → none |
| 65 | Formwork | 2025-09-10 → 2026-03-30 (+201d) | 2025-09-22 → 2026-04-06 (+196d) | 7d → 7.88d | 100% → 0% | 68SS+1d → 63SS+2.25d | constraint start no earlier than 2025-09-10 → none |
| 66 | Concreting | 2025-08-24 → 2026-04-06 (+225d) | 2025-08-28 → 2026-04-07 (+222d) | 3d → 1.12d | 100% → 0% | 60FS-3d → 65 | constraint start no earlier than 2025-08-24 → none |
| 67 | **7th floor slab** | 2025-09-09 → 2026-04-07 (+210d) | 2025-09-23 → 2026-04-17 (+206d) | 15d → 11.25d | 100% → 0% |  | constraint start no earlier than 2025-09-09 → start no earlier than 2026-04-07 |
| 68 | Reinforcement | 2025-09-09 → 2026-04-07 (+210d) | 2025-09-22 → 2026-04-14 (+204d) | 8d → 7.88d | 100% → 0% | 71FS+1d → 66 | constraint start no earlier than 2025-09-09 → none |
| 69 | Wall conduiting | 2025-09-10 → 2026-04-08 (+210d) | 2025-09-22 → 2026-04-10 (+200d) | 3d → 2.25d | 100% → 0% | 64, 68SS+1d → 64, 68SS+1.12d | constraint start no earlier than 2025-09-10 → none |
| 70 | Formwork | 2025-09-18 → 2026-04-09 (+203d) | 2025-10-06 → 2026-04-16 (+192d) | 10d → 7.88d | 100% → 0% | 73SS+1d → 68SS+2.25d | constraint start no earlier than 2025-09-18 → none |

| ID | Task | Start | Finish | Duration | Complete | Predecessors | Other |
| --- | --- | --- | --- | --- | --- | --- | --- |
| 71 | Concreting | 2025-09-09 → 2026-04-16 (+219d) | 2025-09-09 → 2026-04-17 (+220d) | 1d → 1.12d | 100% → 0% | 75 → 70 | constraint start no earlier than 2025-09-09 → none |
| 72 | **8th floor slab** | 2025-09-18 → 2026-04-17 (+211d) | 2025-10-10 → 2026-04-28 (+200d) | 23d → 12.38d | 100% → 0% |  | constraint start no earlier than 2025-09-18 → start no earlier than 2026-04-17 |
| 73 | Reinforcement | 2025-09-18 → 2026-04-17 (+211d) | 2025-10-06 → 2026-04-24 (+200d) | 10d → 7.88d | 100% → 0% | 76FS-12d → 71 | constraint start no earlier than 2025-09-18 → none |
| 74 | Wall conduiting | 2025-09-18 → 2026-04-18 (+212d) | 2025-10-01 → 2026-04-20 (+201d) | 3d → 2.25d | 100% → 0% | 69, 73SS+1d → 69, 73SS+1.12d | constraint start no earlier than 2025-09-18 → none |
| 75 | Formwork | 2025-08-25 → 2026-04-19 (+237d) | 2025-09-08 → 2026-04-27 (+231d) | 7d → 9d | 100% → 0% | 63SS+1d → 73SS+2.25d | constraint start no earlier than 2025-08-25 → none |
| 76 | Concreting | 2025-09-15 → 2026-04-27 (+224d) | 2025-09-23 → 2026-04-28 (+217d) | 4d → 1.12d | 100% → 0% | 65FS-7d → 75 | constraint start no earlier than 2025-09-15 → none |
| 77 | **9th floor slab** | 2025-10-04 → 2026-04-28 (+206d) | 2025-10-24 → 2026-05-08 (+196d) | 21d → 11.25d | 100% → 0% |  | constraint start no earlier than 2025-10-04 → start no earlier than 2026-04-28 |
| 78 | Reinforcement | 2025-10-20 → 2026-04-28 (+190d) | 2025-11-05 → 2026-05-05 (+181d) | 8d → 7.88d | 100% → 0% | 86FS+1d → 76 | constraint start no earlier than 2025-10-20 → none |
| 79 | Wall conduiting | 2025-10-05 → 2026-04-29 (+206d) | 2025-10-23 → 2026-05-01 (+190d) | 13d → 2.25d | 100% → 0% | 74, 93SS+1d → 74, 78SS+1.12d | constraint start no earlier than 2025-10-05 → none |
| 80 | Formwork | 2025-10-05 → 2026-04-30 (+207d) | 2025-10-23 → 2026-05-07 (+196d) | 17d → 7.88d | 100% → 0% | 93SS+1d → 78SS+2.25d | constraint start no earlier than 2025-10-05 → none |
| 81 | Concreting | 2025-10-01 → 2026-05-07 (+218d) | 2025-10-10 → 2026-05-08 (+210d) | 7d → 1.12d | 100% → 0% | 70 → 80 | constraint start no earlier than 2025-10-01 → none |
| 82 | **10th floor slab** | 2025-10-20 → 2026-05-08 (+200d) | 2025-11-06 → 2026-05-18 (+193d) | 19.12d → 11.25d | 100% → 0% |  | constraint start no earlier than 2025-10-20 → start no earlier than 2026-05-08 |
| 83 | Reinforcement | 2025-11-04 → 2026-05-08 (+185d) | 2025-11-26 → 2026-05-15 (+170d) | 5d → 7.88d | 100% → 0% | 91FS+1d → 81 | constraint start no earlier than 2025-11-04 → none |
| 84 | Wall conduiting | 2025-10-21 → 2026-05-09 (+200d) | 2025-10-31 → 2026-05-11 (+192d) | 3d → 2.25d | 100% → 0% | 79, 78SS+1d → 79, 83SS+1.12d | constraint start no earlier than 2025-10-21 → none |
| 85 | Formwork | 2025-10-23 → 2026-05-10 (+199d) | 2025-11-06 → 2026-05-17 (+192d) | 5.62d → 7.88d | 100% → 0% | 78SS+1d → 83SS+2.25d | constraint start no earlier than 2025-10-23 → none |
| 86 | Concreting | 2025-10-16 → 2026-05-17 (+213d) | 2025-10-24 → 2026-05-18 (+206d) | 6d → 1.12d | 100% → 0% | 80FS-6d → 85 | constraint start no earlier than 2025-10-16 → none |
| 87 | **11th floor slab** | 2025-11-04 → 2026-05-18 (+195d) | 2025-11-27 → 2026-05-28 (+182d) | 10.31d → 11.25d | 100% → 0% |  | constraint start no earlier than 2025-11-04 → start no earlier than 2026-05-18 |
| 88 | Reinforcement | 2025-11-27 → 2026-05-18 (+172d) | 2025-12-04 → 2026-05-25 (+172d) | 8d → 7.88d | 37% → 0% | 96FS+1d → 86 | constraint start no earlier than 2025-11-27 → none |
| 89 | Wall conduiting | 2025-11-04 → 2026-05-19 (+196d) | 2025-11-26 → 2026-05-21 (+176d) | 5d → 2.25d | 100% → 0% | 84, 83SS+1d → 84, 88SS+1.12d | constraint start no earlier than 2025-11-04 → none |
| 90 | Formwork | 2025-11-27 → 2026-05-20 (+174d) | 2025-12-04 → 2026-05-27 (+174d) | 7d → 7.88d | 28% → 0% | 88SS+1d → 88SS+2.25d | constraint start no earlier than 2025-11-27 → none |
| 91 | Concreting | 2025-10-31 → 2026-05-27 (+208d) | 2025-11-06 → 2026-05-28 (+203d) | 2d → 1.12d | 100% → 0% | 85FS-7.12d → 90 | constraint start no earlier than 2025-10-31 → none |
| 92 | **12th floor slab** | 2025-11-27 → 2026-05-28 (+182d) | 2025-12-05 → 2026-06-07 (+184d) | 8.75d → 11.25d | 31% → 0% |  | constraint start no earlier than 2025-11-27 → start no earlier than 2026-05-28 |
| 93 | Reinforcement | 2025-10-04 → 2026-05-28 (+236d) | 2025-10-23 → 2026-06-04 (+224d) | 12d → 7.88d | 100% → 0% | 81FS+1d → 91 | constraint start no earlier than 2025-10-04 → none |
| 94 | Wall conduiting | 2025-11-27 → 2026-05-29 (+183d) | 2025-12-01 → 2026-05-31 (+181d) | 3d → 2.25d | 33% → 0% | 89, 88SS+1d → 89, 93SS+1.12d | constraint start no earlier than 2025-11-27 → none |
| 95 | Formwork | 2025-12-23 → 2026-05-30 (+158d) | 2025-12-30 → 2026-06-06 (+158d) | 7d → 7.88d |  | 98SS+1d → 93SS+2.25d |  |
| 96 | Concreting | 2025-11-26 → 2026-06-06 (+192d) | 2025-11-27 → 2026-06-07 (+192d) | 1d → 1.12d | 100% → 0% | 110 → 95 | constraint start no earlier than 2025-11-26 → none |
| 97 | **13th floor slab** | 2025-12-22 → 2026-06-07 (+167d) | 2026-01-01 → 2026-06-17 (+167d) | 10d → 11.25d |  |  | constraint start no earlier than 2025-12-22 → start no earlier than 2026-06-07 |
| 98 | Reinforcement | 2025-12-22 → 2026-06-07 (+167d) | 2025-12-30 → 2026-06-14 (+166d) | 8d → 7.88d |  | 101FS+1d → 96 |  |
| 99 | Wall conduiting | 2025-12-23 → 2026-06-08 (+167d) | 2025-12-26 → 2026-06-10 (+166d) | 3d → 2.25d |  | 94, 98SS+1d → 94, 98SS+1.12d |  |
| 100 | Formwork | 2026-01-03 → 2026-06-09 (+157d) | 2026-01-10 → 2026-06-16 (+157d) | 7d → 7.88d |  | 103SS+1d → 98SS+2.25d |  |
| 101 | Concreting | 2025-12-04 → 2026-06-16 (+194d) | 2025-12-05 → 2026-06-17 (+194d) | 1d → 1.12d |  | 90 → 100 |  |
| 102 | **14th floor slab** | 2026-01-02 → 2026-06-17 (+166d) | 2026-01-12 → 2026-06-27 (+166d) | 10d → 11.25d |  |  | constraint start no earlier than 2026-01-02 → start no earlier than 2026-06-17 |
| 103 | Reinforcement | 2026-01-02 → 2026-06-17 (+166d) | 2026-01-10 → 2026-06-24 (+165d) | 8d → 7.88d |  | 106FS+1d → 101 |  |
| 104 | Wall conduiting | 2026-01-03 → 2026-06-18 (+166d) | 2026-01-06 → 2026-06-20 (+165d) | 3d → 2.25d |  | 99, 103SS+1d → 99, 103SS+1.12d |  |
| 105 | Formwork | 2026-01-14 → 2026-06-19 (+156d) | 2026-01-21 → 2026-06-26 (+156d) | 7d → 7.88d |  | 108SS+1d → 103SS+2.25d |  |
| 106 | Concreting | 2025-12-30 → 2026-06-26 (+178d) | 2026-01-01 → 2026-06-27 (+177d) | 2d → 1.12d |  | 95 → 105 |  |
| 107 | **15th floor slab** | 2026-01-13 → 2026-06-27 (+165d) | 2026-01-23 → 2026-07-07 (+165d) | 10d → 11.25d |  |  | constraint start no earlier than 2026-01-13 → start no earlier than 2026-06-27 |
| 108 | Reinforcement | 2026-01-13 → 2026-06-27 (+165d) | 2026-01-21 → 2026-07-04 (+164d) | 8d → 7.88d |  | 111FS+1d → 106 |  |
| 109 | Wall conduiting | 2026-01-14 → 2026-06-28 (+165d) | 2026-01-17 → 2026-06-30 (+164d) | 3d → 2.25d |  | 104, 108SS+1d → 104, 108SS+1.12d |  |
| 110 | Formwork | 2025-11-04 → 2026-06-29 (+237d) | 2025-11-26 → 2026-07-06 (+222d) | 4d → 7.88d | 100% → 0% | 83SS+1d → 108SS+2.25d | constraint start no earlier than 2025-11-04 → none |
| 111 | Concreting | 2026-01-10 → 2026-07-06 (+177d) | 2026-01-12 → 2026-07-07 (+176d) | 2d → 1.12d |  | 100 → 110 |  |
| 112 | **16th floor slab** | 2026-01-23 → 2026-07-07 (+165d) | 2026-01-31 → 2026-07-18 (+168d) | 8d → 12.38d |  |  | constraint start no earlier than 2026-01-23 → start no earlier than 2026-07-07 |
| 113 | Reinforcement | 2026-01-23 → 2026-07-07 (+165d) | 2026-01-30 → 2026-07-16 (+167d) | 7d → 10.12d |  | 116 → 111 |  |
| 114 | Wall conduiting | 2026-01-24 → 2026-07-08 (+165d) | 2026-01-29 → 2026-07-10 (+162d) | 5d → 2.25d |  | 109, 113SS+1d → 109, 113SS+1.12d |  |
| 115 | Formwork | 2026-01-24 → 2026-07-08 (+165d) | 2026-01-30 → 2026-07-17 (+168d) | 6d → 10.12d |  | 113SS+1d → 113SS+1.12d |  |
| 116 | Concreting | 2026-01-21 → 2026-07-17 (+177d) | 2026-01-23 → 2026-07-18 (+176d) | 2d → 1.12d |  | 105 → 115 |  |
| 117 | **17th floor slab** | 2026-01-31 → 2026-07-18 (+168d) | 2026-02-08 → 2026-07-28 (+170d) | 8d → 11.25d |  |  | constraint start no earlier than 2026-01-31 → start no earlier than 2026-07-18 |
| 118 | Reinforcement | 2026-01-31 → 2026-07-18 (+168d) | 2026-02-07 → 2026-07-26 (+169d) | 7d → 9d |  | 121 → 116 |  |
| 119 | Wall conduiting | 2026-02-01 → 2026-07-19 (+168d) | 2026-02-06 → 2026-07-21 (+165d) | 5d → 2.25d |  | 114, 118SS+1d → 114, 118SS+1.12d |  |
| 120 | Formwork | 2026-02-01 → 2026-07-20 (+169d) | 2026-02-07 → 2026-07-27 (+170d) | 6d → 7.88d |  | 118SS+1d → 118SS+2.25d |  |
| 121 | Concreting | 2026-01-30 → 2026-07-27 (+178d) | 2026-01-31 → 2026-07-28 (+178d) | 1d → 1.12d |  | 115 → 120 |  |
| 122 | **18th floor slab** | 2026-02-08 → 2026-07-28 (+170d) | 2026-02-16 → 2026-08-07 (+172d) | 8d → 11.25d |  |  | constraint start no earlier than 2026-02-08 → start no earlier than 2026-07-28 |
| 123 | Reinforcement | 2026-02-08 → 2026-07-28 (+170d) | 2026-02-15 → 2026-08-05 (+171d) | 7d → 9d |  | 126 → 121 |  |
| 124 | Wall conduiting | 2026-02-09 → 2026-07-29 (+170d) | 2026-02-14 → 2026-07-31 (+167d) | 5d → 2.25d |  | 119, 123SS+1d → 119, 123SS+1.12d |  |
| 125 | Formwork | 2026-02-09 → 2026-07-30 (+171d) | 2026-02-15 → 2026-08-06 (+172d) | 6d → 7.88d |  | 123SS+1d → 123SS+2.25d |  |
| 126 | Concreting | 2026-02-07 → 2026-08-06 (+180d) | 2026-02-08 → 2026-08-07 (+180d) | 1d → 1.12d |  | 120 → 125 |  |
| 127 | **19th floor slab** | 2026-02-16 → 2026-08-07 (+172d) | 2026-02-24 → 2026-08-17 (+174d) | 8d → 11.25d |  |  | constraint start no earlier than 2026-02-16 → start no earlier than 2026-08-07 |
| 128 | Reinforcement | 2026-02-16 → 2026-08-07 (+172d) | 2026-02-23 → 2026-08-15 (+173d) | 7d → 9d |  | 131 → 126 |  |
| 129 | Wall conduiting | 2026-02-17 → 2026-08-08 (+172d) | 2026-02-20 → 2026-08-10 (+171d) | 3d → 2.25d |  | 124, 128SS+1d → 124, 128SS+1.12d |  |
| 130 | Formwork | 2026-02-17 → 2026-08-09 (+173d) | 2026-02-23 → 2026-08-16 (+174d) | 6d → 7.88d |  | 128SS+1d → 128SS+2.25d |  |
| 131 | Concreting | 2026-02-15 → 2026-08-16 (+182d) | 2026-02-16 → 2026-08-17 (+182d) | 1d → 1.12d |  | 125 → 130 |  |
| 132 | **20th floor slab** | 2026-02-24 → 2026-08-17 (+174d) | 2026-03-04 → 2026-08-27 (+176d) | 8d → 11.25d |  |  | constraint start no earlier than 2026-02-24 → start no earlier than 2026-08-17 |
| 133 | Reinforcement | 2026-02-24 → 2026-08-17 (+174d) | 2026-03-03 → 2026-08-25 (+175d) | 7d → 9d |  | 136 → 131 |  |
| 134 | Wall conduiting | 2026-02-25 → 2026-08-18 (+174d) | 2026-02-28 → 2026-08-20 (+173d) | 3d → 2.25d |  | 129, 133SS+1d → 129, 133SS+1.12d |  |
| 135 | Formwork | 2026-02-25 → 2026-08-19 (+175d) | 2026-03-03 → 2026-08-26 (+176d) | 6d → 7.88d |  | 133SS+1d → 133SS+2.25d |  |
| 136 | Concreting | 2026-02-23 → 2026-08-26 (+184d) | 2026-02-24 → 2026-08-27 (+184d) | 1d → 1.12d |  | 130 → 135 |  |
| 137 | **21st floor slab** | 2026-03-05 → 2026-08-27 (+175d) | 2026-03-15 → 2026-09-06 (+175d) | 10d → 11.25d |  |  | constraint start no earlier than 2026-03-05 → start no earlier than 2026-08-27 |
| 138 | Reinforcement | 2026-03-05 → 2026-08-27 (+175d) | 2026-03-13 → 2026-09-04 (+175d) | 8d → 9d |  | 141FS+1d → 136 |  |
| 139 | Wall conduiting | 2026-03-06 → 2026-08-28 (+175d) | 2026-03-09 → 2026-08-30 (+174d) | 3d → 2.25d |  | 134, 138SS+1d → 134, 138SS+1.12d |  |
| 140 | Formwork | 2026-03-06 → 2026-08-29 (+176d) | 2026-03-13 → 2026-09-05 (+176d) | 7d → 7.88d |  | 138SS+1d → 138SS+2.25d |  |

| ID | Task | Start | Finish | Duration | Predecessors | Other |
| --- | --- | --- | --- | --- | --- | --- |
| 141 | Concreting | 2026-03-03 → 2026-09-05 (+186d) | 2026-03-04 → 2026-09-06 (+186d) | 1d → 1.12d | 135 → 140 |  |
| 142 | **22nd floor slab** | 2026-03-21 → 2026-09-06 (+169d) | 2026-03-31 → 2026-09-16 (+169d) | 10d → 11.25d |  | constraint start no earlier than 2026-03-21 → start no earlier than 2026-09-06 |
| 143 | Reinforcement | 2026-03-21 → 2026-09-06 (+169d) | 2026-03-29 → 2026-09-14 (+169d) | 8d → 9d | 146FS+6d → 141 |  |
| 144 | Wall conduiting | 2026-03-22 → 2026-09-07 (+169d) | 2026-03-25 → 2026-09-09 (+168d) | 3d → 2.25d | 139, 143SS+1d → 139, 143SS+1.12d |  |
| 145 | Formwork | 2026-03-22 → 2026-09-08 (+170d) | 2026-03-29 → 2026-09-15 (+170d) | 7d → 7.88d | 143SS+1d → 143SS+2.25d |  |
| 146 | Concreting | 2026-03-13 → 2026-09-15 (+186d) | 2026-03-15 → 2026-09-16 (+185d) | 2d → 1.12d | 140 → 145 |  |
| 147 | **23rd floor slab** | 2026-04-04 → 2026-09-16 (+165d) | 2026-04-14 → 2026-09-26 (+165d) | 10d → 11.25d |  | constraint start no earlier than 2026-04-04 → start no earlier than 2026-09-16 |
| 148 | Reinforcement | 2026-04-04 → 2026-09-16 (+165d) | 2026-04-12 → 2026-09-24 (+165d) | 8d → 9d | 151FS+4d → 146 |  |
| 149 | Wall conduiting | 2026-04-05 → 2026-09-17 (+165d) | 2026-04-08 → 2026-09-19 (+164d) | 3d → 2.25d | 144, 148SS+1d → 144, 148SS+1.12d |  |
| 150 | Formwork | 2026-04-05 → 2026-09-18 (+166d) | 2026-04-12 → 2026-09-25 (+166d) | 7d → 7.88d | 148SS+1d → 148SS+2.25d |  |
| 151 | Concreting | 2026-03-29 → 2026-09-25 (+180d) | 2026-03-31 → 2026-09-26 (+179d) | 2d → 1.12d | 145 → 150 |  |
| 152 | **24th floor slab** | 2026-04-18 → 2026-09-26 (+161d) | 2026-04-30 → 2026-10-10 (+163d) | 12d → 15.75d |  | constraint start no earlier than 2026-04-18 → start no earlier than 2026-09-26 |
| 153 | Reinforcement | 2026-04-18 → 2026-09-26 (+161d) | 2026-04-28 → 2026-10-07 (+162d) | 10d → 12.38d | 156FS+4d → 151 |  |
| 154 | Wall conduiting | 2026-04-19 → 2026-09-27 (+161d) | 2026-04-22 → 2026-09-29 (+160d) | 3d → 2.25d | 149, 153SS+1d → 149, 153SS+1.12d |  |
| 155 | Formwork | 2026-04-19 → 2026-09-28 (+162d) | 2026-04-29 → 2026-10-09 (+163d) | 10d → 12.38d | 153SS+1d → 153SS+2.25d |  |
| 156 | Concreting | 2026-04-12 → 2026-10-09 (+180d) | 2026-04-14 → 2026-10-10 (+179d) | 2d → 1.12d | 150 → 155 |  |
| 157 | **25th floor slab** | 2026-05-01 → 2026-10-10 (+162d) | 2026-05-13 → 2026-10-25 (+165d) | 12d → 16.88d |  | constraint start no earlier than 2026-05-01 → start no earlier than 2026-10-10 |
| 158 | Reinforcement | 2026-05-01 → 2026-10-10 (+162d) | 2026-05-11 → 2026-10-21 (+163d) | 10d → 12.38d | 161FS+1d → 156 |  |
| 159 | Wall conduiting | 2026-05-02 → 2026-10-11 (+162d) | 2026-05-05 → 2026-10-13 (+161d) | 3d → 2.25d | 154, 158SS+1d → 154, 158SS+1.12d |  |
| 160 | Formwork | 2026-05-02 → 2026-10-13 (+164d) | 2026-05-12 → 2026-10-24 (+165d) | 10d → 12.38d | 158SS+1d → 158SS+3.38d |  |
| 161 | Concreting | 2026-04-29 → 2026-10-24 (+178d) | 2026-04-30 → 2026-10-25 (+178d) | 1d → 1.12d | 155 → 160 |  |
| 162 | **26th floor slab** | 2026-05-14 → 2026-10-25 (+164d) | 2026-05-24 → 2026-12-19 (+209d) | 10d → 11.25d |  | constraint start no earlier than 2026-05-14 → start no earlier than 2026-10-25 |
| 163 | Reinforcement | 2026-05-14 → 2026-10-25 (+164d) | 2026-05-22 → 2026-12-17 (+209d) | 8d → 9d | 166FS+1d → 161 |  |
| 164 | Wall conduiting | 2026-05-15 → 2026-10-26 (+164d) | 2026-05-18 → 2026-10-28 (+163d) | 3d → 2.25d | 159, 163SS+1d → 159, 163SS+1.12d |  |
| 165 | Formwork | 2026-05-15 → 2026-10-27 (+165d) | 2026-05-22 → 2026-12-18 (+210d) | 7d → 7.88d | 163SS+1d → 163SS+2.25d |  |
| 166 | Concreting | 2026-05-12 → 2026-12-18 (+220d) | 2026-05-13 → 2026-12-19 (+220d) | 1d → 1.12d | 160 → 165 |  |
| 167 | **27th floor slab** | 2026-05-25 → 2026-12-19 (+208d) | 2026-06-04 → 2026-12-29 (+208d) | 10d → 11.25d |  | constraint start no earlier than 2026-05-25 → start no earlier than 2026-12-19 |
| 168 | Reinforcement | 2026-05-25 → 2026-12-19 (+208d) | 2026-06-02 → 2026-12-27 (+208d) | 8d → 9d | 171FS+1d → 166 |  |
| 169 | Wall conduiting | 2026-05-26 → 2026-12-20 (+208d) | 2026-05-29 → 2026-12-22 (+207d) | 3d → 2.25d | 164, 168SS+1d → 164, 168SS+1.12d |  |
| 170 | Formwork | 2026-05-26 → 2026-12-21 (+209d) | 2026-06-02 → 2026-12-28 (+209d) | 7d → 7.88d | 168SS+1d → 168SS+2.25d |  |
| 171 | Concreting | 2026-05-22 → 2026-12-28 (+220d) | 2026-05-24 → 2026-12-29 (+219d) | 2d → 1.12d | 165 → 170 |  |
| 172 | **28th floor slab** | 2026-06-09 → 2026-12-29 (+203d) | 2026-06-19 → 2027-01-08 (+203d) | 10d → 11.25d |  | constraint start no earlier than 2026-06-09 → start no earlier than 2026-12-29 |
| 173 | Reinforcement | 2026-06-09 → 2026-12-29 (+203d) | 2026-06-17 → 2027-01-06 (+203d) | 8d → 9d | 176FS+5d → 171 |  |
| 174 | Wall conduiting | 2026-06-10 → 2026-12-30 (+203d) | 2026-06-13 → 2027-01-01 (+202d) | 3d → 2.25d | 169, 173SS+1d → 169, 173SS+1.12d |  |
| 175 | Formwork | 2026-06-10 → 2026-12-31 (+204d) | 2026-06-17 → 2027-01-07 (+204d) | 7d → 7.88d | 173SS+1d → 173SS+2.25d |  |
| 176 | Concreting | 2026-06-02 → 2027-01-07 (+219d) | 2026-06-04 → 2027-01-08 (+218d) | 2d → 1.12d | 170 → 175 |  |
| 177 | **29th floor slab** | 2026-06-24 → 2027-01-08 (+198d) | 2026-07-02 → 2027-01-18 (+200d) | 8d → 11.25d |  | constraint start no earlier than 2026-06-24 → start no earlier than 2027-01-08 |
| 178 | Reinforcement | 2026-06-24 → 2027-01-08 (+198d) | 2026-07-01 → 2027-01-16 (+199d) | 7d → 9d | 181FS+5d → 176 |  |
| 179 | Wall conduiting | 2026-06-25 → 2027-01-09 (+198d) | 2026-06-28 → 2027-01-11 (+197d) | 3d → 2.25d | 174, 178SS+1d → 174, 178SS+1.12d |  |
| 180 | Formwork | 2026-06-25 → 2027-01-10 (+199d) | 2026-07-01 → 2027-01-17 (+200d) | 6d → 7.88d | 178SS+1d → 178SS+2.25d |  |
| 181 | Concreting | 2026-06-17 → 2027-01-17 (+214d) | 2026-06-19 → 2027-01-18 (+213d) | 2d → 1.12d | 175 → 180 |  |
| 182 | **30th floor slab** | 2026-07-07 → 2027-01-18 (+195d) | 2026-07-17 → 2027-01-28 (+195d) | 10d → 11.25d |  | constraint start no earlier than 2026-07-07 → start no earlier than 2027-01-18 |
| 183 | Reinforcement | 2026-07-07 → 2027-01-18 (+195d) | 2026-07-14 → 2027-01-26 (+196d) | 7d → 9d | 186FS+5d → 181 |  |
| 184 | Wall conduiting | 2026-07-08 → 2027-01-19 (+195d) | 2026-07-11 → 2027-01-21 (+194d) | 3d → 2.25d | 179, 183SS+1d → 179, 183SS+1.12d |  |
| 185 | Formwork | 2026-07-08 → 2027-01-20 (+196d) | 2026-07-16 → 2027-01-27 (+195d) | 8d → 7.88d | 183SS+1d → 183SS+2.25d |  |
| 186 | Concreting | 2026-07-01 → 2027-01-27 (+210d) | 2026-07-02 → 2027-01-28 (+210d) | 1d → 1.12d | 180 → 185 |  |
| 187 | **31st floor slab** | 2026-07-17 → 2027-01-28 (+195d) | 2026-07-27 → 2027-02-07 (+195d) | 10d → 11.25d |  | constraint start no earlier than 2026-07-17 → start no earlier than 2027-01-28 |
| 188 | Reinforcement | 2026-07-17 → 2027-01-28 (+195d) | 2026-07-24 → 2027-02-04 (+195d) | 7d → 7.88d | 191 → 186 |  |
| 189 | Wall conduiting | 2026-07-18 → 2027-01-29 (+195d) | 2026-07-21 → 2027-01-31 (+194d) | 3d → 2.25d | 184, 188SS+1d → 184, 188SS+1.12d |  |
| 190 | Formwork | 2026-07-18 → 2027-01-30 (+196d) | 2026-07-26 → 2027-02-06 (+195d) | 8d → 7.88d | 188SS+1d → 188SS+2.25d |  |
| 191 | Concreting | 2026-07-16 → 2027-02-06 (+205d) | 2026-07-17 → 2027-02-07 (+205d) | 1d → 1.12d | 185 → 190 |  |
| 192 | **32nd floor slab** | 2026-08-01 → 2027-02-07 (+190d) | 2026-08-19 → 2027-02-21 (+186d) | 17.88d → 15.75d |  | constraint start no earlier than 2026-08-01 → start no earlier than 2027-02-07 |
| 193 | Reinforcement | 2026-08-01 → 2027-02-07 (+190d) | 2026-08-15 → 2027-02-17 (+186d) | 14d → 11.25d | 196FS+5d → 191 |  |
| 194 | Wall conduiting | 2026-08-02 → 2027-02-08 (+190d) | 2026-08-08 → 2027-02-10 (+186d) | 6d → 2.25d | 189, 193SS+1d → 189, 193SS+1.12d |  |
| 195 | Formwork | 2026-08-03 → 2027-02-09 (+190d) | 2026-08-17 → 2027-02-20 (+187d) | 14d → 12.38d | 193SS+1.88d → 193SS+2.25d |  |
| 196 | Concreting | 2026-07-26 → 2027-02-20 (+209d) | 2026-07-27 → 2027-02-21 (+209d) | 1d → 1.12d | 190 → 195 |  |
| 197 | **33rd floor slab** | 2026-08-24 → 2027-02-21 (+181d) | 2026-09-04 → 2027-03-03 (+180d) | 11.75d → 11.25d |  | constraint start no earlier than 2026-08-24 → start no earlier than 2027-02-21 |
| 198 | Reinforcement | 2026-08-24 → 2027-02-21 (+181d) | 2026-09-02 → 2027-02-28 (+179d) | 8.94d → 7.88d | 201FS+5d → 196 |  |
| 199 | Wall conduiting | 2026-08-25 → 2027-02-22 (+181d) | 2026-08-27 → 2027-02-24 (+181d) | 1.94d → 2.25d | 194, 198SS+1d → 194, 198SS+1.12d |  |
| 200 | Formwork | 2026-08-26 → 2027-02-23 (+181d) | 2026-09-03 → 2027-03-02 (+180d) | 8.94d → 7.88d | 198SS+1.88d → 198SS+2.25d |  |
| 201 | Concreting | 2026-08-17 → 2027-03-02 (+197d) | 2026-08-19 → 2027-03-03 (+196d) | 2d → 1.12d | 195 → 200 |  |
| 202 | **34th floor slab** | 2026-09-04 → 2027-03-03 (+180d) | 2026-09-19 → 2027-03-18 (+180d) | 14.88d → 16.88d |  | constraint start no earlier than 2026-09-04 → start no earlier than 2027-03-03 |
| 203 | Reinforcement | 2026-09-04 → 2027-03-03 (+180d) | 2026-09-15 → 2027-03-15 (+181d) | 11d → 13.5d | 206 → 201 |  |
| 204 | Wall conduiting | 2026-09-05 → 2027-03-04 (+180d) | 2026-09-11 → 2027-03-06 (+176d) | 6d → 2.25d | 199, 203SS+1d → 199, 203SS+1.12d |  |
| 205 | Formwork | 2026-09-06 → 2027-03-05 (+180d) | 2026-09-17 → 2027-03-17 (+181d) | 11d → 13.5d | 203SS+1.88d → 203SS+2.25d |  |
| 206 | Concreting | 2026-09-03 → 2027-03-17 (+195d) | 2026-09-04 → 2027-03-18 (+195d) | 0.94d → 1.12d | 200 → 205 |  |
| 207 | **35th floor slab** | 2026-09-19 → 2027-03-18 (+180d) | 2026-10-01 → 2027-03-30 (+180d) | 11.75d → 13.5d |  | constraint start no earlier than 2026-09-19 → start no earlier than 2027-03-18 |
| 208 | Reinforcement | 2026-09-19 → 2027-03-18 (+180d) | 2026-09-28 → 2027-03-26 (+179d) | 8.94d → 9d | 211 → 206 |  |
| 209 | Wall conduiting | 2026-09-20 → 2027-03-19 (+180d) | 2026-09-22 → 2027-03-21 (+180d) | 1.94d → 2.25d | 204, 208SS+1d → 204, 208SS+1.12d |  |
| 210 | Formwork | 2026-09-22 → 2027-03-21 (+180d) | 2026-09-30 → 2027-03-29 (+180d) | 7.94d → 9d | 209SS+1.88d → 209SS+2.25d |  |

| ID | Task | Start | Finish | Duration | Predecessors | Other |
| --- | --- | --- | --- | --- | --- | --- |
| 211 | Concreting | 2026-09-17 → 2027-03-29 (+193d) | 2026-09-19 → 2027-03-30 (+192d) | 2d → 1.12d | 205 → 210 |  |
| 212 | **Terrace floor slab** | 2026-10-01 → 2027-03-30 (+180d) | 2026-10-19 → 2027-04-20 (+183d) | 17.88d → 23.62d |  | constraint start no earlier than 2026-10-01 → start no earlier than 2027-03-30 |
| 213 | Reinforcement | 2026-10-01 → 2027-03-30 (+180d) | 2026-10-17 → 2027-04-16 (+181d) | 16d → 19.12d | 216 → 211 |  |
| 214 | Wall conduiting | 2026-10-02 → 2027-03-31 (+180d) | 2026-10-11 → 2027-04-02 (+173d) | 9d → 2.25d | 209, 213SS+1d → 209, 213SS+1.12d |  |
| 215 | Formwork | 2026-10-03 → 2027-04-02 (+181d) | 2026-10-16 → 2027-04-19 (+185d) | 13d → 19.12d | 213SS+1.88d → 213SS+3.38d |  |
| 216 | Concreting | 2026-09-30 → 2027-04-19 (+201d) | 2026-10-01 → 2027-04-20 (+201d) | 0.94d → 1.12d | 210 → 215 |  |
| 217 | **OHT & Mumty** | 2026-10-19 → 2027-04-20 (+183d) | 2027-01-14 → 2027-05-30 (+136d) | 41.81d → 45d |  | constraint start no earlier than 2026-10-19 → start no earlier than 2027-04-20 |
| 218 | Reinforcement | 2026-10-19 → 2027-04-20 (+183d) | 2027-01-02 → 2027-05-19 (+137d) | 29.94d → 32.62d | 221 → 216 |  |
| 219 | Wall conduiting | 2026-10-20 → 2027-04-21 (+183d) | 2026-10-25 → 2027-04-26 (+183d) | 4.94d → 5.62d | 214, 218SS+1d → 214, 218SS+1.12d |  |
| 220 | Formwork | 2026-10-25 → 2027-04-26 (+183d) | 2027-01-11 → 2027-05-27 (+136d) | 32.94d → 34.88d | 218SS+3.62d, 219 → 218SS+4.5d, 219 |  |
| 221 | Concreting | 2026-10-16 → 2027-05-27 (+223d) | 2026-10-19 → 2027-05-30 (+223d) | 3d → 3.38d | 215 → 220 |  |
| 222 | **Post Pour Activities** | 2025-11-30 → 2026-03-19 (+109d) | 2027-02-25 → 2027-07-08 (+133d) | 397.94d → 484.88d |  | constraint start no earlier than 2025-11-30 → start no earlier than 2026-03-19 |
| 223 | 1st Floor | 2025-11-30 → 2026-03-19 (+109d) | 2025-12-16 → 2026-03-30 (+104d) | 7d → 12.38d |  |  |
| 224 | 2nd Floor | 2025-12-16 → 2026-03-30 (+104d) | 2025-12-23 → 2026-04-10 (+108d) | 7d → 12.38d | 223FS+0.25d, 61FS+0.25d → 223, 61 |  |
| 225 | 3rd Floor | 2025-12-23 → 2026-04-10 (+108d) | 2025-12-30 → 2026-04-21 (+112d) | 7d → 12.38d | 224FS+0.25d, 66FS+0.25d → 224, 66 |  |
| 226 | 4th Floor | 2025-12-31 → 2026-04-21 (+111d) | 2026-01-06 → 2026-05-02 (+116d) | 7d → 12.38d | 225FS+0.25d, 71FS+0.25d → 225, 71 |  |
| 227 | 5th Floor | 2026-01-07 → 2026-05-02 (+115d) | 2026-01-14 → 2026-05-13 (+119d) | 7d → 12.38d | 226FS+0.25d, 76FS+0.25d → 226, 76 |  |
| 228 | 6th Floor | 2026-01-14 → 2026-05-13 (+119d) | 2026-01-21 → 2026-05-24 (+123d) | 7d → 12.38d | 227FS+0.25d, 81FS+0.25d → 227, 81 |  |
| 229 | 7th Floor | 2026-01-21 → 2026-05-24 (+123d) | 2026-01-28 → 2026-06-04 (+127d) | 7d → 12.38d | 228FS+0.25d, 86FS+0.25d → 228, 86 |  |
| 230 | 8th Floor | 2026-01-29 → 2026-06-04 (+126d) | 2026-02-04 → 2026-06-15 (+131d) | 7d → 12.38d | 229FS+0.25d, 91FS+0.25d → 229, 91 |  |
| 231 | 9th Floor | 2026-02-05 → 2026-06-15 (+130d) | 2026-02-12 → 2026-06-26 (+134d) | 7d → 12.38d | 230FS+0.25d, 96FS+0.25d → 230, 96 |  |
| 232 | 10th Floor | 2026-02-12 → 2026-06-26 (+134d) | 2026-02-19 → 2026-07-07 (+138d) | 7d → 12.38d | 231FS+0.25d, 101FS+0.25d → 231, 101 |  |
| 233 | 11th Floor | 2026-02-19 → 2026-07-07 (+138d) | 2026-02-26 → 2026-07-18 (+142d) | 7d → 12.38d | 232FS+0.25d, 106FS+0.25d → 232, 106 |  |
| 234 | 12th Floor | 2026-02-27 → 2026-07-18 (+141d) | 2026-03-05 → 2026-07-29 (+146d) | 7d → 12.38d | 233FS+0.25d, 111FS+0.25d → 233, 111 |  |
| 235 | 13th Floor | 2026-03-06 → 2026-07-29 (+145d) | 2026-03-13 → 2026-08-09 (+149d) | 7d → 12.38d | 234FS+0.25d, 116FS+0.25d → 234, 116 |  |
| 236 | 14th Floor | 2026-03-13 → 2026-08-09 (+149d) | 2026-03-20 → 2026-08-21 (+154d) | 7d → 13.5d | 235, 136 → 235, 121 |  |
| 237 | 15th Floor | 2026-03-20 → 2026-08-21 (+154d) | 2026-03-27 → 2026-09-02 (+159d) | 7d → 13.5d | 236, 141 → 236, 126 |  |
| 238 | 16th Floor | 2026-03-27 → 2026-09-02 (+159d) | 2026-04-03 → 2026-09-14 (+164d) | 7d → 13.5d | 237, 146 → 237, 131 |  |
| 239 | 17th Floor | 2026-04-03 → 2026-09-14 (+164d) | 2026-04-10 → 2026-09-26 (+169d) | 7d → 13.5d | 238, 151 → 238, 136 |  |
| 240 | 18th Floor | 2026-04-14 → 2026-09-26 (+165d) | 2026-04-21 → 2026-10-08 (+170d) | 7d → 13.5d | 239, 156 → 239, 141 |  |
| 241 | 19th Floor | 2026-04-30 → 2026-10-08 (+161d) | 2026-05-07 → 2026-10-20 (+166d) | 7d → 13.5d | 240, 161 → 240, 146 |  |
| 242 | 20th Floor | 2026-05-13 → 2026-10-20 (+160d) | 2026-05-20 → 2026-12-16 (+210d) | 7d → 13.5d | 241, 166 → 241, 151 |  |
| 243 | 21st Floor | 2026-05-24 → 2026-12-16 (+206d) | 2026-05-31 → 2026-12-28 (+211d) | 7d → 13.5d | 242, 171 → 242, 156 |  |
| 244 | 22nd Floor | 2026-06-04 → 2026-12-28 (+207d) | 2026-06-11 → 2027-01-09 (+212d) | 7d → 13.5d | 243, 176 → 243, 161 |  |
| 245 | 23rd Floor | 2026-06-19 → 2027-01-09 (+204d) | 2026-06-26 → 2027-01-21 (+209d) | 7d → 13.5d | 244, 181 → 244, 166 |  |
| 246 | 24th Floor | 2026-07-02 → 2027-01-21 (+203d) | 2026-07-09 → 2027-02-02 (+208d) | 7d → 13.5d | 245, 186 → 245, 171 |  |
| 247 | 25th Floor | 2026-07-17 → 2027-02-02 (+200d) | 2026-07-24 → 2027-02-14 (+205d) | 7d → 13.5d | 246, 191 → 246, 176 |  |
| 248 | 26th Floor | 2026-07-27 → 2027-02-14 (+202d) | 2026-08-03 → 2027-02-26 (+207d) | 7d → 13.5d | 247, 196 → 247, 181 |  |
| 249 | 27th Floor | 2026-08-19 → 2027-02-26 (+191d) | 2026-08-26 → 2027-03-10 (+196d) | 7d → 13.5d | 248, 201 → 248, 186 |  |
| 250 | 28th Floor | 2026-09-04 → 2027-03-10 (+187d) | 2026-09-11 → 2027-03-22 (+192d) | 7d → 13.5d | 249, 206 → 249, 191 |  |
| 251 | 29th Floor | 2026-09-19 → 2027-03-22 (+184d) | 2026-09-26 → 2027-04-03 (+189d) | 7d → 13.5d | 250, 211 → 250, 201 |  |
| 252 | 30th Floor | 2026-10-01 → 2027-04-03 (+184d) | 2026-10-08 → 2027-04-15 (+189d) | 7d → 13.5d | 251, 216 → 251, 206 |  |
| 253 | 31st Floor | 2026-10-19 → 2027-04-15 (+178d) | 2026-10-26 → 2027-04-27 (+183d) | 7d → 13.5d | 252, 221 → 252, 211 |  |
| 254 | 32nd Floor | 2027-10-25 → 2027-04-27 (-181d) | 2027-10-26 → 2027-05-09 (-170d) | 1.94d → 13.5d | 1170 → 253, 216 |  |
| 255 | 33rd Floor | 2027-01-21 → 2027-05-09 (+108d) | 2027-01-28 → 2027-05-21 (+113d) | 7d → 13.5d | 1171 → 254 |  |
| 256 | 34th Floor | 2027-01-28 → 2027-05-21 (+113d) | 2027-02-04 → 2027-06-02 (+118d) | 7d → 13.5d |  |  |
| 257 | 35th Floor | 2027-02-04 → 2027-06-02 (+118d) | 2027-02-11 → 2027-06-14 (+123d) | 7d → 13.5d |  |  |
| 258 | Terrace | 2027-02-11 → 2027-06-14 (+123d) | 2027-02-18 → 2027-06-26 (+128d) | 7d → 13.5d |  |  |
| 259 | Mumty & Machine Room | 2027-02-18 → 2027-06-26 (+128d) | 2027-02-25 → 2027-07-08 (+133d) | 7d → 13.5d |  |  |
| 260 | **Finishing work** | 2025-12-01 → 2026-03-30 (+119d) | 2027-11-01 → 2028-09-21 (+325d) | 646.38d → 918d |  | constraint start no earlier than 2025-12-01 → start no earlier than 2026-03-30 |
| 261 | **Flat finishing** | 2025-12-16 → 2026-03-30 (+104d) | 2027-10-16 → 2028-09-21 (+341d) | 624.56d → 918d |  | constraint start no earlier than 2025-12-16 → start no earlier than 2026-03-30 |
| 262 | **1st Floor** | 2025-12-16 → 2026-03-30 (+104d) | 2026-03-24 → 2027-05-23 (+425d) | 98d → 420.75d |  | constraint start no earlier than 2025-12-16 → start no earlier than 2026-03-30 |
| 263 | Block Work | 2025-12-16 → 2026-03-30 (+104d) | 2025-12-21 → 2026-04-08 (+108d) | 5d → 10.12d |  |  |
| 264 | Door Frame Fixing | 2025-12-21 → 2026-04-08 (+108d) | 2025-12-30 → 2026-04-14 (+105d) | 9d → 6.75d |  |  |
| 265 | Internal Plumbing Works | 2025-12-21 → 2026-04-08 (+108d) | 2025-12-29 → 2026-04-15 (+107d) | 8d → 7.88d |  |  |
| 266 | Waterproofing | 2025-12-29 → 2026-04-15 (+107d) | 2026-01-08 → 2026-04-24 (+106d) | 10d → 10.12d |  |  |
| 267 | Internal Plaster | 2025-12-16 → 2026-04-24 (+129d) | 2025-12-21 → 2026-04-29 (+129d) | 5d → 5.62d | 263SS+0.25d → 264, 265, 266 |  |
| 268 | IPS flooring work | 2026-01-08 → 2026-04-24 (+106d) | 2026-01-18 → 2026-05-01 (+103d) | 10d → 7.88d |  |  |
| 269 | Toilet dado work | 2026-01-18 → 2027-03-10 (+416d) | 2026-01-26 → 2027-03-17 (+415d) | 8d → 7.88d | 285, 282, 283 → 266FS+303.75d, 267FS+303.75d |  |
| 270 | Toilet flooring work | 2026-01-16 → 2027-03-17 (+425d) | 2026-01-24 → 2027-03-23 (+423d) | 8d → 6.75d | 285FS+0.25d → 269 |  |
| 271 | Living dinning flooring | 2026-02-13 → 2027-03-23 (+403d) | 2026-02-20 → 2027-04-01 (+405d) | 7d → 10.12d | 264FS+45d → 264, 270 |  |
| 272 | Aluminium door-window fixing | 2026-03-04 → 2027-04-11 (+403d) | 2026-03-11 → 2027-04-24 (+409d) | 7d → 14.62d | 268FS+45d → 268FS+11.25d, 271FS+11.25d |  |
| 273 | Putty primer coat | 2026-02-20 → 2027-04-01 (+405d) | 2026-02-26 → 2027-04-07 (+405d) | 6d → 6.75d |  |  |
| 274 | Door shutter fixing | 2026-02-20 → 2027-04-01 (+405d) | 2026-02-28 → 2027-04-09 (+405d) | 8d → 9d |  |  |
| 275 | Electrical wiring work | 2026-02-28 → 2027-04-19 (+415d) | 2026-03-08 → 2027-05-01 (+419d) | 8d → 13.5d | 274 → 274FS+11.25d |  |
| 276 | Painting 1st coat | 2026-03-08 → 2027-05-01 (+419d) | 2026-03-16 → 2027-05-13 (+423d) | 8d → 13.5d |  |  |
| 278 | **2nd Floor** | 2025-12-22 → 2026-04-08 (+107d) | 2026-12-21 → 2027-06-04 (+165d) | 319.31d → 423.88d |  | constraint start no earlier than 2025-12-22 → start no earlier than 2026-04-08 |
| 279 | Block Work | 2025-12-23 → 2026-04-08 (+106d) | 2025-12-28 → 2026-04-17 (+110d) | 5d → 10.12d | 224, 263 → 263FS+0.25d |  |
| 280 | Door Frame Fixing | 2025-12-30 → 2026-04-17 (+108d) | 2026-01-08 → 2026-04-23 (+105d) | 9d → 6.75d |  |  |
| 281 | Internal Plumbing Works | 2025-12-29 → 2026-04-17 (+109d) | 2026-01-06 → 2026-04-24 (+108d) | 8d → 7.88d |  |  |

| ID | Task | Start | Finish | Duration | Predecessors | Other |
| --- | --- | --- | --- | --- | --- | --- |
| 282 | Waterproofing | 2026-01-08 → 2026-04-24 (+106d) | 2026-01-18 → 2026-05-03 (+105d) | 10d → 10.12d |  |  |
| 283 | Internal Plaster | 2025-12-22 → 2026-04-29 (+128d) | 2025-12-27 → 2026-05-04 (+128d) | 5d → 5.62d | 267FS+1d → 267FS+0.25d, 280FS+0.25d |  |
| 284 | IPS flooring work | 2026-01-18 → 2026-05-03 (+105d) | 2026-01-28 → 2026-05-10 (+102d) | 10d → 7.88d |  |  |
| 285 | Toilet dado work | 2026-01-08 → 2027-03-17 (+433d) | 2026-01-16 → 2027-03-24 (+432d) | 8d → 7.88d | 266, 267 → 269, 282, 283 |  |
| 286 | Toilet flooring work | 2026-01-26 → 2027-03-24 (+422d) | 2026-02-03 → 2027-03-30 (+420d) | 8d → 6.75d | 270, 269 → 270, 285 |  |
| 287 | Living dinning flooring | 2026-02-20 → 2027-04-01 (+405d) | 2026-02-27 → 2027-04-10 (+407d) | 7d → 10.12d | 271, 280, 286 → 271FS+0.25d, 280FS+0.25d |  |
| 288 | Aluminium door-window fixing | 2026-03-11 → 2027-04-24 (+409d) | 2026-03-26 → 2027-05-07 (+407d) | 15d → 14.62d | 272, 284, 287 → 272FS+0.25d, 287FS+0.25d |  |
| 289 | Putty primer coat | 2026-02-27 → 2027-04-10 (+407d) | 2026-03-05 → 2027-04-16 (+407d) | 6d → 6.75d |  |  |
| 290 | Door shutter fixing | 2026-02-28 → 2027-04-10 (+406d) | 2026-03-08 → 2027-04-18 (+406d) | 8d → 9d |  |  |
| 291 | Electrical wiring work | 2026-10-06 → 2027-05-01 (+207d) | 2026-10-21 → 2027-05-13 (+204d) | 15d → 13.5d | 608FS+0.25d → 275, 290 |  |
| 292 | Painting 1st coat | 2026-10-21 → 2027-05-13 (+204d) | 2026-10-29 → 2027-05-25 (+208d) | 8d → 13.5d |  |  |
| 293 | False ceiling | 2026-10-29 → 2027-05-25 (+208d) | 2026-12-21 → 2027-06-04 (+165d) | 8d → 11.25d | False Cieling panel fixing, 292 → 277, 292 |  |
| 294 | **3rd Floor** | 2025-12-27 → 2026-04-17 (+111d) | 2026-12-29 → 2027-06-16 (+169d) | 322.06d → 427d |  | constraint start no earlier than 2025-12-27 → start no earlier than 2026-04-17 |
| 295 | Block Work | 2025-12-28 → 2026-04-17 (+110d) | 2026-01-02 → 2026-04-26 (+114d) | 5d → 10.12d |  |  |
| 296 | Door Frame Fixing | 2026-01-08 → 2026-04-26 (+108d) | 2026-01-17 → 2026-05-02 (+105d) | 9d → 6.75d |  |  |
| 297 | Internal Plumbing Works | 2026-01-06 → 2026-04-26 (+110d) | 2026-01-14 → 2026-05-03 (+109d) | 8d → 7.88d |  |  |
| 298 | Waterproofing | 2026-01-18 → 2026-05-03 (+105d) | 2026-01-28 → 2026-05-12 (+104d) | 10d → 10.12d |  |  |
| 299 | Internal Plaster | 2025-12-27 → 2026-05-04 (+128d) | 2026-01-01 → 2026-05-09 (+128d) | 5d → 5.62d | 283FS+0.25d → 283FS+0.25d, 296FS+0.25d |  |
| 300 | IPS flooring work | 2026-01-28 → 2026-05-12 (+104d) | 2026-02-07 → 2026-05-19 (+101d) | 10d → 7.88d |  |  |
| 301 | Toilet dado work | 2026-01-26 → 2027-03-24 (+422d) | 2026-02-03 → 2027-03-31 (+421d) | 8d → 7.88d | 269FS+0.25d → 285, 298, 299 |  |
| 302 | Toilet flooring work | 2026-02-03 → 2027-03-31 (+421d) | 2026-02-11 → 2027-04-06 (+419d) | 8d → 6.75d |  |  |
| 303 | Living dinning flooring | 2026-02-27 → 2027-04-10 (+407d) | 2026-03-14 → 2027-04-19 (+401d) | 15d → 10.12d | 287, 296, 302 → 287FS+0.25d, 296FS+0.25d |  |
| 304 | Aluminium door-window fixing | 2026-03-26 → 2027-05-07 (+407d) | 2026-04-10 → 2027-05-20 (+405d) | 15d → 14.62d | 288, 300, 303 → 288FS+0.25d, 303FS+0.25d |  |
| 305 | Putty primer coat | 2026-03-14 → 2027-04-19 (+401d) | 2026-03-20 → 2027-04-25 (+401d) | 6d → 6.75d |  |  |
| 306 | Door shutter fixing | 2026-03-14 → 2027-04-19 (+401d) | 2026-03-22 → 2027-04-27 (+401d) | 8d → 9d |  |  |
| 307 | Electrical wiring work | 2026-10-21 → 2027-05-13 (+204d) | 2026-10-29 → 2027-05-25 (+208d) | 8d → 13.5d |  |  |
| 308 | Painting 1st coat | 2026-10-29 → 2027-05-25 (+208d) | 2026-12-21 → 2027-06-06 (+167d) | 8d → 13.5d |  |  |
| 309 | False ceiling | 2026-12-21 → 2027-06-06 (+167d) | 2026-12-29 → 2027-06-16 (+169d) | 8d → 11.25d |  |  |
| 310 | **4th Floor** | 2026-01-07 → 2026-04-26 (+109d) | 2027-01-06 → 2027-06-28 (+173d) | 319.81d → 430.12d |  | constraint start no earlier than 2026-01-07 → start no earlier than 2026-04-26 |
| 311 | Block Work | 2026-01-07 → 2026-04-26 (+109d) | 2026-01-11 → 2026-05-05 (+114d) | 5d → 10.12d | 226, 295 → 295FS+0.25d |  |
| 312 | Door Frame Fixing | 2026-01-17 → 2026-05-05 (+108d) | 2026-01-26 → 2026-05-11 (+105d) | 9d → 6.75d |  |  |
| 313 | Internal Plumbing Works | 2026-01-14 → 2026-05-05 (+111d) | 2026-01-22 → 2026-05-12 (+110d) | 8d → 7.88d |  |  |
| 314 | Waterproofing | 2026-01-28 → 2026-05-12 (+104d) | 2026-02-07 → 2026-05-21 (+103d) | 10d → 10.12d |  |  |
| 315 | Internal Plaster | 2026-02-07 → 2026-05-11 (+93d) | 2026-02-12 → 2026-05-16 (+93d) | 5d → 5.62d | 299, 312, 313, 314 → 299FS+0.25d, 312FS+0.25d |  |
| 316 | IPS flooring work | 2026-02-12 → 2026-05-21 (+98d) | 2026-02-22 → 2026-05-28 (+95d) | 10d → 7.88d |  |  |
| 317 | Toilet dado work | 2026-02-12 → 2027-03-31 (+412d) | 2026-02-20 → 2027-04-07 (+411d) | 8d → 7.88d |  |  |
| 318 | Toilet flooring work | 2026-02-20 → 2027-04-07 (+411d) | 2026-02-28 → 2027-04-13 (+409d) | 8d → 6.75d |  |  |
| 319 | Living dinning flooring | 2026-03-14 → 2027-04-19 (+401d) | 2026-03-21 → 2027-04-25 (+400d) | 7d → 6.75d | 303FS+0.25d → 303FS+0.25d, 312FS+0.25d |  |
| 320 | Aluminium door-window fixing | 2026-04-10 → 2027-05-20 (+405d) | 2026-04-17 → 2027-06-02 (+411d) | 7d → 14.62d | 304, 316, 319 → 304FS+0.25d, 319FS+0.25d |  |
| 321 | Putty primer coat | 2026-03-21 → 2027-04-25 (+400d) | 2026-03-27 → 2027-05-01 (+400d) | 6d → 6.75d |  |  |
| 322 | Door shutter fixing | 2026-03-22 → 2027-04-27 (+401d) | 2026-03-30 → 2027-05-05 (+401d) | 8d → 9d |  |  |
| 323 | Electrical wiring work | 2026-10-29 → 2027-05-25 (+208d) | 2026-12-21 → 2027-06-06 (+167d) | 8d → 13.5d |  |  |
| 324 | Painting 1st coat | 2026-12-21 → 2027-06-06 (+167d) | 2026-12-29 → 2027-06-18 (+171d) | 8d → 13.5d |  |  |
| 325 | False ceiling | 2026-12-29 → 2027-06-18 (+171d) | 2027-01-06 → 2027-06-28 (+173d) | 8d → 11.25d |  |  |
| 326 | **5th Floor** | 2026-01-14 → 2026-05-05 (+111d) | 2027-01-14 → 2027-07-10 (+177d) | 320.56d → 433.25d |  | constraint start no earlier than 2026-01-14 → start no earlier than 2026-05-05 |
| 327 | Block Work | 2026-01-14 → 2026-05-05 (+111d) | 2026-01-19 → 2026-05-14 (+115d) | 5d → 10.12d | 227, 311 → 311FS+0.25d |  |
| 328 | Door Frame Fixing | 2026-01-26 → 2026-05-14 (+108d) | 2026-02-04 → 2026-05-20 (+105d) | 9d → 6.75d |  |  |
| 329 | Internal Plumbing Works | 2026-01-22 → 2026-05-14 (+112d) | 2026-01-30 → 2026-05-21 (+111d) | 8d → 7.88d |  |  |
| 330 | Waterproofing | 2026-02-07 → 2026-05-21 (+103d) | 2026-02-17 → 2026-05-30 (+102d) | 10d → 10.12d |  |  |
| 331 | Internal Plaster | 2026-02-17 → 2026-05-21 (+93d) | 2026-02-22 → 2026-05-26 (+93d) | 5d → 5.62d | 315, 328, 329, 330 → 315FS+0.25d, 328FS+0.25d |  |
| 332 | IPS flooring work | 2026-02-22 → 2026-05-30 (+97d) | 2026-03-04 → 2026-06-06 (+94d) | 10d → 7.88d |  |  |
| 333 | Toilet dado work | 2026-02-22 → 2027-04-07 (+409d) | 2026-03-02 → 2027-04-14 (+408d) | 8d → 7.88d |  |  |
| 334 | Toilet flooring work | 2026-03-02 → 2027-04-14 (+408d) | 2026-03-10 → 2027-04-20 (+406d) | 8d → 6.75d |  |  |
| 335 | Living dinning flooring | 2026-03-21 → 2027-04-25 (+400d) | 2026-03-28 → 2027-05-01 (+399d) | 7d → 6.75d | 319, 328, 334 → 319FS+0.25d, 328FS+0.25d |  |
| 336 | Aluminium door-window fixing | 2026-04-17 → 2027-06-02 (+411d) | 2026-04-24 → 2027-06-15 (+417d) | 7d → 14.62d | 320, 332, 335 → 320FS+0.25d, 335FS+0.25d |  |
| 337 | Putty primer coat | 2026-03-28 → 2027-05-01 (+399d) | 2026-04-03 → 2027-05-07 (+399d) | 6d → 6.75d |  |  |
| 338 | Door shutter fixing | 2026-03-30 → 2027-05-05 (+401d) | 2026-04-07 → 2027-05-13 (+401d) | 8d → 9d |  |  |
| 339 | Electrical wiring work | 2026-12-21 → 2027-06-06 (+167d) | 2026-12-29 → 2027-06-18 (+171d) | 8d → 13.5d |  |  |
| 340 | Painting 1st coat | 2026-12-29 → 2027-06-18 (+171d) | 2027-01-06 → 2027-06-30 (+175d) | 8d → 13.5d |  |  |
| 341 | False ceiling | 2027-01-06 → 2027-06-30 (+175d) | 2027-01-14 → 2027-07-10 (+177d) | 8d → 11.25d |  |  |
| 342 | **6th Floor** | 2026-01-21 → 2026-05-15 (+114d) | 2027-01-22 → 2027-07-22 (+181d) | 321.31d → 436.38d |  | constraint start no earlier than 2026-01-21 → start no earlier than 2026-05-15 |
| 343 | Block Work | 2026-01-21 → 2026-05-15 (+114d) | 2026-01-26 → 2026-05-24 (+118d) | 5d → 10.12d | 228, 327 → 327FS+0.25d |  |
| 344 | Door Frame Fixing | 2026-02-13 → 2026-05-20 (+96d) | 2026-02-22 → 2026-05-26 (+93d) | 9d → 6.75d | 360, 359 → 76, 328 |  |
| 345 | Internal Plumbing Works | 2026-02-07 → 2026-05-24 (+106d) | 2026-02-15 → 2026-05-31 (+105d) | 8d → 7.88d | 361, 359 → 329, 343 |  |
| 346 | Waterproofing | 2026-02-27 → 2026-05-31 (+93d) | 2026-03-09 → 2026-06-09 (+92d) | 10d → 10.12d | 362, 345 → 330, 345 |  |
| 347 | Internal Plaster | 2026-03-09 → 2026-05-27 (+79d) | 2026-03-14 → 2026-06-01 (+79d) | 5d → 5.62d | 363, 344, 345, 346 → 331FS+0.25d, 344FS+0.25d |  |
| 348 | IPS flooring work | 2026-03-04 → 2026-06-09 (+97d) | 2026-03-14 → 2026-06-16 (+94d) | 10d → 7.88d | 332, 360, 362, 363 → 332, 344, 346, 347 |  |
| 349 | Toilet dado work | 2026-03-04 → 2027-04-14 (+406d) | 2026-03-12 → 2027-04-21 (+405d) | 8d → 7.88d | 333, 362, 363 → 333, 346, 347 |  |
| 350 | Toilet flooring work | 2026-03-12 → 2027-04-21 (+405d) | 2026-03-20 → 2027-04-27 (+403d) | 8d → 6.75d |  |  |
| 351 | Living dinning flooring | 2026-03-28 → 2027-05-02 (+400d) | 2026-04-04 → 2027-05-08 (+399d) | 7d → 6.75d | 335, 360, 350 → 335FS+0.25d, 344FS+0.25d |  |

| ID | Task | Start | Finish | Duration | Predecessors | Other |
| --- | --- | --- | --- | --- | --- | --- |
| 352 | Aluminium door-window fixing | 2026-04-24 → 2027-06-16 (+418d) | 2026-05-01 → 2027-07-01 (+426d) | 7d → 16.88d | 336, 348, 351 → 336FS+0.25d, 351FS+0.25d |  |
| 353 | Putty primer coat | 2026-04-04 → 2027-05-08 (+399d) | 2026-04-10 → 2027-05-14 (+399d) | 6d → 6.75d |  |  |
| 354 | Door shutter fixing | 2026-04-07 → 2027-05-13 (+401d) | 2026-04-15 → 2027-05-21 (+401d) | 8d → 9d |  |  |
| 355 | Electrical wiring work | 2026-12-29 → 2027-06-18 (+171d) | 2027-01-06 → 2027-06-30 (+175d) | 8d → 13.5d |  |  |
| 356 | Painting 1st coat | 2027-01-06 → 2027-06-30 (+175d) | 2027-01-14 → 2027-07-12 (+179d) | 8d → 13.5d |  |  |
| 357 | False ceiling | 2027-01-14 → 2027-07-12 (+179d) | 2027-01-22 → 2027-07-22 (+181d) | 8d → 11.25d |  |  |
| 358 | **7th Floor** | 2026-01-28 → 2026-05-24 (+116d) | 2027-02-06 → 2027-08-03 (+178d) | 329.06d → 439.5d |  | constraint start no earlier than 2026-01-28 → start no earlier than 2026-05-24 |
| 359 | Block Work | 2026-01-28 → 2026-05-24 (+116d) | 2026-02-02 → 2026-06-02 (+120d) | 5d → 10.12d | 229, 343 → 343FS+0.25d |  |
| 360 | Door Frame Fixing | 2026-02-04 → 2026-06-02 (+118d) | 2026-02-13 → 2026-06-08 (+115d) | 9d → 6.75d | 81, 328 → 344, 359 |  |
| 361 | Internal Plumbing Works | 2026-01-30 → 2026-06-02 (+123d) | 2026-02-07 → 2026-06-09 (+122d) | 8d → 7.88d | 329, 343 → 345, 359 |  |
| 362 | Waterproofing | 2026-02-17 → 2026-06-09 (+112d) | 2026-02-27 → 2026-06-18 (+111d) | 10d → 10.12d | 330, 361 → 346, 361 |  |
| 363 | Internal Plaster | 2026-02-27 → 2026-06-08 (+101d) | 2026-03-04 → 2026-06-13 (+101d) | 5d → 5.62d | 331, 360, 361, 362 → 347FS+0.25d, 360FS+0.25d |  |
| 364 | IPS flooring work | 2026-03-14 → 2026-06-18 (+96d) | 2026-03-24 → 2026-06-25 (+93d) | 10d → 7.88d | 348, 344, 346, 347 → 348, 360, 362, 363 |  |
| 365 | Toilet dado work | 2026-03-14 → 2027-04-21 (+403d) | 2026-03-22 → 2027-04-28 (+402d) | 8d → 7.88d | 349, 346, 347 → 349, 362, 363 |  |
| 366 | Toilet flooring work | 2026-03-22 → 2027-04-28 (+402d) | 2026-03-30 → 2027-05-04 (+400d) | 8d → 6.75d |  |  |
| 367 | Living dinning flooring | 2026-04-04 → 2027-05-08 (+399d) | 2026-04-11 → 2027-05-14 (+398d) | 7d → 6.75d | 351, 344, 366 → 351FS+0.25d, 360FS+0.25d |  |
| 368 | Aluminium door-window fixing | 2026-05-01 → 2027-07-01 (+426d) | 2026-05-08 → 2027-07-16 (+434d) | 7d → 16.88d | 352, 364, 367 → 352FS+0.25d, 367FS+0.25d |  |
| 369 | Putty primer coat | 2026-04-11 → 2027-05-14 (+398d) | 2026-04-17 → 2027-05-20 (+398d) | 6d → 6.75d |  |  |
| 370 | Door shutter fixing | 2026-04-15 → 2027-05-21 (+401d) | 2026-04-23 → 2027-05-29 (+401d) | 8d → 9d |  |  |
| 371 | Electrical wiring work | 2027-01-06 → 2027-06-30 (+175d) | 2027-01-21 → 2027-07-12 (+172d) | 15d → 13.5d |  |  |
| 372 | Painting 1st coat | 2027-01-21 → 2027-07-12 (+172d) | 2027-01-29 → 2027-07-24 (+176d) | 8d → 13.5d |  |  |
| 373 | False ceiling | 2027-01-29 → 2027-07-24 (+176d) | 2027-02-06 → 2027-08-03 (+178d) | 8d → 11.25d |  |  |
| 374 | **8th Floor** | 2026-02-05 → 2026-06-02 (+117d) | 2027-02-21 → 2027-08-15 (+175d) | 336.81d → 442.62d |  | constraint start no earlier than 2026-02-05 → start no earlier than 2026-06-02 |
| 375 | Block Work | 2026-02-05 → 2026-06-02 (+117d) | 2026-02-12 → 2026-06-11 (+119d) | 8d → 10.12d | 230, 359 → 359FS+0.25d |  |
| 376 | Door Frame Fixing | 2026-02-22 → 2026-06-11 (+109d) | 2026-03-03 → 2026-06-17 (+106d) | 9d → 6.75d | 344, 375 → 360, 375 |  |
| 377 | Internal Plumbing Works | 2026-02-15 → 2026-06-11 (+116d) | 2026-02-23 → 2026-06-18 (+115d) | 8d → 7.88d | 345, 375 → 361, 375 |  |
| 378 | Waterproofing | 2026-03-09 → 2026-06-18 (+101d) | 2026-03-19 → 2026-06-27 (+100d) | 10d → 10.12d | 346, 377 → 362, 377 |  |
| 379 | Internal Plaster | 2026-03-19 → 2026-06-17 (+90d) | 2026-03-24 → 2026-06-22 (+90d) | 5d → 5.62d | 347, 376, 377, 378 → 363FS+0.25d, 376FS+0.25d |  |
| 380 | IPS flooring work | 2026-03-24 → 2026-06-27 (+95d) | 2026-04-03 → 2026-07-04 (+92d) | 10d → 7.88d |  |  |
| 381 | Toilet dado work | 2026-03-24 → 2027-04-28 (+400d) | 2026-04-01 → 2027-05-05 (+399d) | 8d → 7.88d |  |  |
| 382 | Toilet flooring work | 2026-04-01 → 2027-05-05 (+399d) | 2026-04-09 → 2027-05-11 (+397d) | 8d → 6.75d |  |  |
| 383 | Living dinning flooring | 2026-04-11 → 2027-05-14 (+398d) | 2026-04-18 → 2027-05-20 (+397d) | 7d → 6.75d | 367, 376, 382 → 367FS+0.25d, 376FS+0.25d |  |
| 384 | Aluminium door-window fixing | 2026-05-08 → 2027-07-16 (+434d) | 2026-05-18 → 2027-07-31 (+439d) | 10d → 16.88d | 368, 380, 383 → 368FS+0.25d, 383FS+0.25d |  |
| 385 | Putty primer coat | 2026-04-18 → 2027-05-20 (+397d) | 2026-04-24 → 2027-05-26 (+397d) | 6d → 6.75d |  |  |
| 386 | Door shutter fixing | 2026-04-23 → 2027-05-29 (+401d) | 2026-05-01 → 2027-06-06 (+401d) | 8d → 9d |  |  |
| 387 | Electrical wiring work | 2027-01-21 → 2027-07-12 (+172d) | 2027-02-05 → 2027-07-24 (+169d) | 15d → 13.5d |  |  |
| 388 | Painting 1st coat | 2027-02-05 → 2027-07-24 (+169d) | 2027-02-13 → 2027-08-05 (+173d) | 8d → 13.5d |  |  |
| 389 | False ceiling | 2027-02-13 → 2027-08-05 (+173d) | 2027-02-21 → 2027-08-15 (+175d) | 8d → 11.25d |  |  |
| 390 | **9th Floor** | 2026-02-13 → 2026-06-11 (+118d) | 2027-03-08 → 2027-08-27 (+172d) | 343.81d → 445.75d |  | constraint start no earlier than 2026-02-13 → start no earlier than 2026-06-11 |
| 391 | Block Work | 2026-02-13 → 2026-06-11 (+118d) | 2026-02-20 → 2026-06-20 (+120d) | 8d → 10.12d | 231, 375 → 375FS+0.25d |  |
| 392 | Door Frame Fixing | 2026-03-03 → 2026-06-20 (+109d) | 2026-03-12 → 2026-06-26 (+106d) | 9d → 6.75d |  |  |
| 393 | Internal Plumbing Works | 2026-02-23 → 2026-06-20 (+117d) | 2026-03-03 → 2026-06-27 (+116d) | 8d → 7.88d |  |  |
| 394 | Waterproofing | 2026-03-19 → 2026-06-27 (+100d) | 2026-03-29 → 2026-07-06 (+99d) | 10d → 10.12d |  |  |
| 395 | Internal Plaster | 2026-03-29 → 2026-06-27 (+90d) | 2026-04-03 → 2026-07-02 (+90d) | 5d → 5.62d | 379, 392, 393, 394 → 379FS+0.25d, 392FS+0.25d |  |
| 396 | IPS flooring work | 2026-04-03 → 2026-07-06 (+94d) | 2026-04-13 → 2026-07-13 (+91d) | 10d → 7.88d |  |  |
| 397 | Toilet dado work | 2026-04-03 → 2027-05-05 (+397d) | 2026-04-11 → 2027-05-12 (+396d) | 8d → 7.88d |  |  |
| 398 | Toilet flooring work | 2026-04-11 → 2027-05-12 (+396d) | 2026-04-19 → 2027-05-18 (+394d) | 8d → 6.75d |  |  |
| 399 | Living dinning flooring | 2026-04-19 → 2027-05-20 (+396d) | 2026-04-26 → 2027-05-29 (+398d) | 7d → 10.12d | 383, 392, 398 → 383FS+0.25d, 392FS+0.25d |  |
| 400 | Aluminium door-window fixing | 2026-05-18 → 2027-07-31 (+439d) | 2026-05-28 → 2027-08-15 (+444d) | 10d → 16.88d | 384, 396, 399 → 384FS+0.25d, 399FS+0.25d |  |
| 401 | Putty primer coat | 2026-04-26 → 2027-05-29 (+398d) | 2026-05-02 → 2027-06-04 (+398d) | 6d → 6.75d |  |  |
| 402 | Door shutter fixing | 2026-05-01 → 2027-06-06 (+401d) | 2026-05-09 → 2027-06-14 (+401d) | 8d → 9d |  |  |
| 403 | Electrical wiring work | 2027-02-05 → 2027-07-24 (+169d) | 2027-02-20 → 2027-08-05 (+166d) | 15d → 13.5d |  |  |
| 404 | Painting 1st coat | 2027-02-20 → 2027-08-05 (+166d) | 2027-02-28 → 2027-08-17 (+170d) | 8d → 13.5d |  |  |
| 405 | False ceiling | 2027-02-28 → 2027-08-17 (+170d) | 2027-03-08 → 2027-08-27 (+172d) | 8d → 11.25d |  |  |
| 406 | **10th Floor** | 2026-02-21 → 2026-06-21 (+120d) | 2027-03-16 → 2027-09-08 (+176d) | 343.81d → 448.88d |  | constraint start no earlier than 2026-02-21 → start no earlier than 2026-06-21 |
| 407 | Block Work | 2026-02-21 → 2026-06-21 (+120d) | 2026-02-28 → 2026-06-30 (+122d) | 8d → 10.12d | 232, 391 → 391FS+0.25d |  |
| 408 | Door Frame Fixing | 2026-03-12 → 2026-06-30 (+110d) | 2026-03-21 → 2026-07-06 (+107d) | 9d → 6.75d |  |  |
| 409 | Internal Plumbing Works | 2026-03-03 → 2026-06-30 (+119d) | 2026-03-11 → 2026-07-07 (+118d) | 8d → 7.88d |  |  |
| 410 | Waterproofing | 2026-03-29 → 2026-07-07 (+100d) | 2026-04-08 → 2026-07-16 (+99d) | 10d → 10.12d |  |  |
| 411 | Internal Plaster | 2026-04-08 → 2026-07-06 (+89d) | 2026-04-13 → 2026-07-11 (+89d) | 5d → 5.62d | 395, 408, 409, 410 → 395FS+0.25d, 408FS+0.25d |  |
| 412 | IPS flooring work | 2026-04-13 → 2026-07-16 (+94d) | 2026-04-23 → 2026-07-23 (+91d) | 10d → 7.88d |  |  |
| 413 | Toilet dado work | 2026-04-13 → 2027-05-12 (+394d) | 2026-04-21 → 2027-05-19 (+393d) | 8d → 7.88d |  |  |
| 414 | Toilet flooring work | 2026-04-21 → 2027-05-19 (+393d) | 2026-04-29 → 2027-05-25 (+391d) | 8d → 6.75d |  |  |
| 415 | Living dinning flooring | 2026-04-29 → 2027-05-30 (+396d) | 2026-05-06 → 2027-06-08 (+398d) | 7d → 10.12d | 399, 408, 414 → 399FS+0.25d, 408FS+0.25d |  |
| 416 | Aluminium door-window fixing | 2026-05-28 → 2027-08-16 (+445d) | 2026-06-07 → 2027-08-31 (+450d) | 10d → 16.88d | 400, 412, 415 → 400FS+0.25d, 415FS+0.25d |  |
| 417 | Putty primer coat | 2026-05-06 → 2027-06-08 (+398d) | 2026-05-12 → 2027-06-14 (+398d) | 6d → 6.75d |  |  |
| 418 | Door shutter fixing | 2026-05-09 → 2027-06-14 (+401d) | 2026-05-17 → 2027-06-22 (+401d) | 8d → 9d |  |  |
| 419 | Electrical wiring work | 2027-02-20 → 2027-08-05 (+166d) | 2027-02-28 → 2027-08-17 (+170d) | 8d → 13.5d |  |  |
| 420 | Painting 1st coat | 2027-02-28 → 2027-08-17 (+170d) | 2027-03-08 → 2027-08-29 (+174d) | 8d → 13.5d |  |  |
| 421 | False ceiling | 2027-03-08 → 2027-08-29 (+174d) | 2027-03-16 → 2027-09-08 (+176d) | 8d → 11.25d |  |  |

| ID | Task | Start | Finish | Duration | Predecessors | Other |
| --- | --- | --- | --- | --- | --- | --- |
| 422 | **11th Floor** | 2026-03-01 → 2026-06-30 (+121d) | 2027-03-24 → 2027-09-20 (+180d) | 343.81d → 452d |  | constraint start no earlier than 2026-03-01 → start no earlier than 2026-06-30 |
| 423 | Block Work | 2026-03-01 → 2026-06-30 (+121d) | 2026-03-08 → 2026-07-09 (+123d) | 8d → 10.12d | 233, 407 → 407FS+0.25d |  |
| 424 | Door Frame Fixing | 2026-03-21 → 2026-07-09 (+110d) | 2026-03-30 → 2026-07-13 (+105d) | 9d → 4.5d |  |  |
| 425 | Internal Plumbing Works | 2026-03-11 → 2026-07-09 (+120d) | 2026-03-19 → 2026-07-16 (+119d) | 8d → 7.88d |  |  |
| 426 | Waterproofing | 2026-04-08 → 2026-07-16 (+99d) | 2026-04-18 → 2026-07-25 (+98d) | 10d → 10.12d |  |  |
| 427 | Internal Plaster | 2026-04-18 → 2026-07-13 (+86d) | 2026-04-23 → 2026-07-18 (+86d) | 5d → 5.62d | 411, 424, 425, 426 → 411FS+0.25d, 424FS+0.25d |  |
| 428 | IPS flooring work | 2026-04-23 → 2026-07-25 (+93d) | 2026-05-03 → 2026-08-01 (+90d) | 10d → 7.88d |  |  |
| 429 | Toilet dado work | 2026-04-23 → 2027-05-19 (+391d) | 2026-05-01 → 2027-05-26 (+390d) | 8d → 7.88d |  |  |
| 430 | Toilet flooring work | 2026-05-01 → 2027-05-26 (+390d) | 2026-05-09 → 2027-06-01 (+388d) | 8d → 6.75d |  |  |
| 431 | Living dinning flooring | 2026-05-09 → 2027-06-08 (+395d) | 2026-05-16 → 2027-06-17 (+397d) | 7d → 10.12d |  |  |
| 432 | Aluminium door-window fixing | 2026-06-07 → 2027-08-31 (+450d) | 2026-06-17 → 2027-09-15 (+455d) | 10d → 16.88d |  |  |
| 433 | Putty primer coat | 2026-05-16 → 2027-06-17 (+397d) | 2026-05-22 → 2027-06-23 (+397d) | 6d → 6.75d |  |  |
| 434 | Door shutter fixing | 2026-05-17 → 2027-06-22 (+401d) | 2026-05-25 → 2027-06-30 (+401d) | 8d → 9d |  |  |
| 435 | Electrical wiring work | 2027-02-28 → 2027-08-17 (+170d) | 2027-03-08 → 2027-08-29 (+174d) | 8d → 13.5d |  |  |
| 436 | Painting 1st coat | 2027-03-08 → 2027-08-29 (+174d) | 2027-03-16 → 2027-09-10 (+178d) | 8d → 13.5d |  |  |
| 437 | False ceiling | 2027-03-16 → 2027-09-10 (+178d) | 2027-03-24 → 2027-09-20 (+180d) | 8d → 11.25d |  |  |
| 438 | **12th Floor** | 2026-03-09 → 2026-07-09 (+122d) | 2027-04-01 → 2027-10-02 (+184d) | 343.81d → 455.12d |  | constraint start no earlier than 2026-03-09 → start no earlier than 2026-07-09 |
| 439 | Block Work | 2026-03-09 → 2026-07-09 (+122d) | 2026-03-16 → 2026-07-18 (+124d) | 8d → 10.12d | 234, 423 → 423FS+0.25d |  |
| 440 | Door Frame Fixing | 2026-03-30 → 2026-07-18 (+110d) | 2026-04-08 → 2026-07-24 (+107d) | 9d → 6.75d |  |  |
| 441 | Internal Plumbing Works | 2026-03-19 → 2026-07-18 (+121d) | 2026-03-27 → 2026-07-26 (+121d) | 8d → 9d |  |  |
| 442 | Waterproofing | 2026-04-18 → 2026-07-26 (+99d) | 2026-04-28 → 2026-08-05 (+99d) | 10d → 11.25d |  |  |
| 443 | Internal Plaster | 2026-04-28 → 2026-08-05 (+99d) | 2026-05-03 → 2026-08-13 (+102d) | 5d → 9d |  |  |
| 444 | IPS flooring work | 2026-05-03 → 2026-08-05 (+94d) | 2026-05-13 → 2026-08-13 (+92d) | 10d → 9d |  |  |
| 445 | Toilet dado work | 2026-05-03 → 2027-05-26 (+388d) | 2026-05-11 → 2027-06-03 (+388d) | 8d → 9d |  |  |
| 446 | Toilet flooring work | 2026-05-11 → 2027-06-03 (+388d) | 2026-05-19 → 2027-06-10 (+387d) | 8d → 7.88d |  |  |
| 447 | Living dinning flooring | 2026-05-19 → 2027-06-17 (+394d) | 2026-05-26 → 2027-06-27 (+397d) | 7d → 11.25d |  |  |
| 448 | Aluminium door-window fixing | 2026-06-17 → 2027-09-15 (+455d) | 2026-06-27 → 2027-09-27 (+457d) | 10d → 13.5d |  |  |
| 449 | Putty primer coat | 2026-05-26 → 2027-06-27 (+397d) | 2026-06-01 → 2027-07-03 (+397d) | 6d → 6.75d |  |  |
| 450 | Door shutter fixing | 2026-05-26 → 2027-06-30 (+400d) | 2026-06-03 → 2027-07-08 (+400d) | 8d → 9d |  |  |
| 451 | Electrical wiring work | 2027-03-08 → 2027-08-29 (+174d) | 2027-03-16 → 2027-09-10 (+178d) | 8d → 13.5d |  |  |
| 452 | Painting 1st coat | 2027-03-16 → 2027-09-10 (+178d) | 2027-03-24 → 2027-09-22 (+182d) | 8d → 13.5d |  |  |
| 453 | False ceiling | 2027-03-24 → 2027-09-22 (+182d) | 2027-04-01 → 2027-10-02 (+184d) | 8d → 11.25d |  |  |
| 454 | **13th Floor** | 2026-03-17 → 2026-08-09 (+145d) | 2027-04-23 → 2027-10-14 (+174d) | 357.81d → 434.25d |  | constraint start no earlier than 2026-03-17 → start no earlier than 2026-08-09 |
| 455 | Block Work | 2026-03-17 → 2026-08-09 (+145d) | 2026-03-24 → 2026-08-13 (+142d) | 8d → 4.5d |  |  |
| 456 | Door Frame Fixing | 2026-04-08 → 2026-08-13 (+127d) | 2026-04-17 → 2026-08-22 (+127d) | 9d → 10.12d |  |  |
| 457 | Internal Plumbing Works | 2026-03-27 → 2026-08-13 (+139d) | 2026-04-04 → 2026-08-23 (+141d) | 8d → 11.25d |  |  |
| 458 | Waterproofing | 2026-04-28 → 2026-08-23 (+117d) | 2026-05-08 → 2026-09-04 (+119d) | 10d → 13.5d |  |  |
| 459 | Internal Plaster | 2026-05-08 → 2026-09-04 (+119d) | 2026-05-13 → 2026-09-13 (+123d) | 5d → 10.12d |  |  |
| 460 | IPS flooring work | 2026-05-13 → 2026-09-13 (+123d) | 2026-05-23 → 2026-09-22 (+122d) | 10d → 10.12d |  |  |
| 461 | Toilet dado work | 2026-05-13 → 2027-06-03 (+386d) | 2026-05-21 → 2027-06-11 (+386d) | 8d → 9d |  |  |
| 462 | Toilet flooring work | 2026-05-21 → 2027-06-11 (+386d) | 2026-05-29 → 2027-06-18 (+385d) | 8d → 7.88d |  |  |
| 463 | Living dinning flooring | 2026-05-29 → 2027-06-27 (+394d) | 2026-06-05 → 2027-07-12 (+402d) | 7d → 16.88d |  |  |
| 464 | Aluminium door-window fixing | 2026-06-27 → 2027-09-27 (+457d) | 2026-07-09 → 2027-10-12 (+460d) | 12d → 16.88d |  |  |
| 465 | Putty primer coat | 2026-06-05 → 2027-07-12 (+402d) | 2026-06-11 → 2027-07-18 (+402d) | 6d → 6.75d |  |  |
| 466 | Door shutter fixing | 2026-06-05 → 2027-07-12 (+402d) | 2026-06-13 → 2027-07-20 (+402d) | 8d → 9d |  |  |
| 467 | Electrical wiring work | 2027-03-16 → 2027-09-10 (+178d) | 2027-03-31 → 2027-09-22 (+175d) | 15d → 13.5d |  |  |
| 468 | Painting 1st coat | 2027-03-31 → 2027-09-22 (+175d) | 2027-04-15 → 2027-10-04 (+172d) | 15d → 13.5d |  |  |
| 469 | False ceiling | 2027-04-15 → 2027-10-04 (+172d) | 2027-04-23 → 2027-10-14 (+174d) | 8d → 11.25d |  |  |
| 470 | **14th Floor** | 2026-03-25 → 2026-08-21 (+149d) | 2027-05-01 → 2027-10-27 (+179d) | 357.56d → 435.38d |  | constraint start no earlier than 2026-03-25 → start no earlier than 2026-08-21 |
| 471 | Block Work | 2026-03-25 → 2026-08-21 (+149d) | 2026-03-30 → 2026-08-25 (+148d) | 5d → 4.5d | 455FS+0.25d → 236, 455 |  |
| 472 | Door Frame Fixing | 2026-04-17 → 2026-08-25 (+130d) | 2026-04-26 → 2026-09-03 (+130d) | 9d → 10.12d |  |  |
| 473 | Internal Plumbing Works | 2026-04-04 → 2026-08-25 (+143d) | 2026-04-12 → 2026-09-04 (+145d) | 8d → 11.25d |  |  |
| 474 | Waterproofing | 2026-05-08 → 2026-09-04 (+119d) | 2026-05-18 → 2026-09-16 (+121d) | 10d → 13.5d |  |  |
| 475 | Internal Plaster | 2026-05-13 → 2026-09-16 (+126d) | 2026-05-18 → 2026-09-25 (+130d) | 5d → 10.12d | 459FS+0.25d → 459, 472, 473, 474 |  |
| 476 | IPS flooring work | 2026-05-23 → 2026-09-22 (+122d) | 2026-06-02 → 2026-10-01 (+121d) | 10d → 10.12d | 460FS+0.25d → 460, 472, 473, 474 |  |
| 477 | Toilet dado work | 2026-05-21 → 2027-06-11 (+386d) | 2026-05-29 → 2027-06-19 (+386d) | 8d → 9d |  |  |
| 478 | Toilet flooring work | 2026-05-29 → 2027-06-19 (+386d) | 2026-06-06 → 2027-06-26 (+385d) | 8d → 7.88d |  |  |
| 479 | Living dinning flooring | 2026-06-05 → 2027-07-12 (+402d) | 2026-06-12 → 2027-07-27 (+410d) | 7d → 16.88d | 463FS+0.25d → 463, 472, 478 |  |
| 480 | Aluminium door-window fixing | 2026-07-09 → 2027-10-12 (+460d) | 2026-07-19 → 2027-10-27 (+465d) | 10d → 16.88d | 464FS+0.25d → 464, 476, 479 |  |
| 481 | Putty primer coat | 2026-06-12 → 2027-07-27 (+410d) | 2026-06-18 → 2027-08-02 (+410d) | 6d → 6.75d |  |  |
| 482 | Door shutter fixing | 2026-06-13 → 2027-07-27 (+409d) | 2026-06-21 → 2027-08-04 (+409d) | 8d → 9d |  |  |
| 483 | Electrical wiring work | 2027-03-31 → 2027-09-22 (+175d) | 2027-04-08 → 2027-10-04 (+179d) | 8d → 13.5d |  |  |
| 484 | Painting 1st coat | 2027-04-15 → 2027-10-04 (+172d) | 2027-04-23 → 2027-10-16 (+176d) | 8d → 13.5d |  |  |
| 485 | False ceiling | 2027-04-23 → 2027-10-16 (+176d) | 2027-05-01 → 2027-10-26 (+178d) | 8d → 11.25d |  |  |
| 486 | **15th Floor** | 2026-03-30 → 2026-09-02 (+156d) | 2027-05-09 → 2027-12-23 (+228d) | 360.31d → 435.38d |  | constraint start no earlier than 2026-03-30 → start no earlier than 2026-09-02 |
| 487 | Block Work | 2026-03-30 → 2026-09-02 (+156d) | 2026-04-07 → 2026-09-10 (+156d) | 8d → 9d | 471FS+0.25d → 237, 471 |  |
| 488 | Door Frame Fixing | 2026-04-26 → 2026-09-10 (+137d) | 2026-05-05 → 2026-09-19 (+137d) | 9d → 10.12d |  |  |
| 489 | Internal Plumbing Works | 2026-04-12 → 2026-09-10 (+151d) | 2026-04-20 → 2026-09-20 (+153d) | 8d → 11.25d |  |  |
| 490 | Waterproofing | 2026-05-18 → 2026-09-20 (+125d) | 2026-05-28 → 2026-10-02 (+127d) | 10d → 13.5d |  |  |
| 491 | Internal Plaster | 2026-05-18 → 2026-10-02 (+137d) | 2026-07-11 → 2026-10-11 (+92d) | 53.81d → 10.12d | 475FS+0.25d → 475, 488, 489, 490 |  |

| ID | Task | Start | Finish | Duration | Predecessors | Other |
| --- | --- | --- | --- | --- | --- | --- |
| 492 | IPS flooring work | 2026-06-02 → 2026-10-02 (+122d) | 2026-06-12 → 2026-10-11 (+121d) | 10d → 10.12d |  |  |
| 493 | Toilet dado work | 2026-07-11 → 2027-06-19 (+343d) | 2026-07-19 → 2027-06-27 (+343d) | 8d → 9d |  |  |
| 494 | Toilet flooring work | 2026-07-19 → 2027-06-27 (+343d) | 2026-07-27 → 2027-07-04 (+342d) | 8d → 7.88d |  |  |
| 495 | Living dinning flooring | 2026-06-12 → 2027-07-27 (+410d) | 2026-06-19 → 2027-08-08 (+415d) | 7d → 13.5d | 479FS+0.25d → 479, 488, 494 |  |
| 496 | Aluminium door-window fixing | 2026-07-19 → 2027-10-27 (+465d) | 2026-07-29 → 2027-12-23 (+512d) | 10d → 13.5d | 480FS+0.25d → 480, 492, 495 |  |
| 497 | Putty primer coat | 2026-06-19 → 2027-08-08 (+415d) | 2026-06-25 → 2027-08-14 (+415d) | 6d → 6.75d |  |  |
| 498 | Door shutter fixing | 2026-06-21 → 2027-08-08 (+413d) | 2026-06-29 → 2027-08-16 (+413d) | 8d → 9d |  |  |
| 499 | Electrical wiring work | 2027-04-08 → 2027-10-04 (+179d) | 2027-04-16 → 2027-10-16 (+183d) | 8d → 13.5d |  |  |
| 500 | Painting 1st coat | 2027-04-23 → 2027-10-16 (+176d) | 2027-05-01 → 2027-10-28 (+180d) | 8d → 13.5d |  |  |
| 501 | False ceiling | 2027-05-01 → 2027-10-28 (+180d) | 2027-05-09 → 2027-12-22 (+227d) | 8d → 11.25d |  |  |
| 502 | **16th Floor** | 2026-04-07 → 2026-09-14 (+160d) | 2027-05-17 → 2028-01-04 (+232d) | 360.06d → 435.38d |  | constraint start no earlier than 2026-04-07 → start no earlier than 2026-09-14 |
| 503 | Block Work | 2026-04-07 → 2026-09-14 (+160d) | 2026-04-15 → 2026-09-22 (+160d) | 8d → 9d | 487FS+0.25d → 238, 487 |  |
| 504 | Door Frame Fixing | 2026-05-05 → 2026-09-22 (+140d) | 2026-05-14 → 2026-10-01 (+140d) | 9d → 10.12d |  |  |
| 505 | Internal Plumbing Works | 2026-04-20 → 2026-09-22 (+155d) | 2026-04-28 → 2026-10-02 (+157d) | 8d → 11.25d |  |  |
| 506 | Waterproofing | 2026-05-28 → 2026-10-02 (+127d) | 2026-06-07 → 2026-10-14 (+129d) | 10d → 13.5d |  |  |
| 507 | Internal Plaster | 2026-07-11 → 2026-10-14 (+95d) | 2026-07-16 → 2026-10-23 (+99d) | 5d → 10.12d | 491FS+0.25d → 491, 504, 505, 506 |  |
| 508 | IPS flooring work | 2026-06-22 → 2026-10-14 (+114d) | 2026-07-02 → 2026-10-23 (+113d) | 10d → 10.12d | 524, 520, 521, 522 → 492, 504, 505, 506 |  |
| 509 | Toilet dado work | 2026-07-27 → 2027-06-27 (+335d) | 2026-08-04 → 2027-07-05 (+335d) | 8d → 9d | 525, 522, 523 → 493, 506, 507 |  |
| 510 | Toilet flooring work | 2026-08-04 → 2027-07-05 (+335d) | 2026-08-12 → 2027-07-12 (+334d) | 8d → 7.88d | 526, 509 → 494, 509 |  |
| 511 | Living dinning flooring | 2026-06-27 → 2027-08-08 (+407d) | 2026-07-04 → 2027-08-20 (+412d) | 7d → 13.5d | 527FS+0.25d → 495, 504, 510 |  |
| 512 | Aluminium door-window fixing | 2026-07-30 → 2027-12-23 (+511d) | 2026-08-08 → 2028-01-04 (+514d) | 10d → 13.5d | 496FS+0.25d → 496, 508, 511 |  |
| 513 | Putty primer coat | 2026-06-27 → 2027-08-20 (+419d) | 2026-07-02 → 2027-08-26 (+420d) | 6d → 6.75d | 497, 527 → 497, 511 |  |
| 514 | Door shutter fixing | 2026-06-29 → 2027-08-20 (+417d) | 2026-07-07 → 2027-08-28 (+417d) | 8d → 9d | 498, 527 → 498, 511 |  |
| 515 | Electrical wiring work | 2027-04-16 → 2027-10-16 (+183d) | 2027-04-24 → 2027-10-28 (+187d) | 8d → 13.5d |  |  |
| 516 | Painting 1st coat | 2027-05-01 → 2027-10-28 (+180d) | 2027-05-09 → 2027-12-24 (+229d) | 8d → 13.5d |  |  |
| 517 | False ceiling | 2027-05-09 → 2027-12-24 (+229d) | 2027-05-17 → 2028-01-03 (+231d) | 8d → 11.25d |  |  |
| 518 | **17th Floor** | 2026-04-16 → 2026-09-26 (+163d) | 2027-05-25 → 2028-01-16 (+236d) | 359.81d → 435.38d |  | constraint start no earlier than 2026-04-16 → start no earlier than 2026-09-26 |
| 519 | Block Work | 2026-04-16 → 2026-09-26 (+163d) | 2026-04-23 → 2026-10-04 (+164d) | 8d → 9d | 503FS+0.25d → 239, 503 |  |
| 520 | Door Frame Fixing | 2026-05-14 → 2026-10-04 (+143d) | 2026-05-23 → 2026-10-13 (+143d) | 9d → 10.12d |  |  |
| 521 | Internal Plumbing Works | 2026-04-28 → 2026-10-04 (+159d) | 2026-05-06 → 2026-10-14 (+161d) | 8d → 11.25d |  |  |
| 522 | Waterproofing | 2026-06-07 → 2026-10-14 (+129d) | 2026-06-17 → 2026-10-26 (+131d) | 10d → 13.5d |  |  |
| 523 | Internal Plaster | 2026-07-17 → 2026-10-26 (+101d) | 2026-07-22 → 2026-12-19 (+150d) | 5d → 10.12d | 507FS+0.25d → 507, 520, 521, 522 |  |
| 524 | IPS flooring work | 2026-06-12 → 2026-10-26 (+136d) | 2026-06-22 → 2026-12-19 (+180d) | 10d → 10.12d | 492, 504, 505, 506 → 508, 520, 521, 522 |  |
| 525 | Toilet dado work | 2026-07-19 → 2027-07-05 (+351d) | 2026-07-27 → 2027-07-13 (+351d) | 8d → 9d | 493, 506, 507 → 509, 522, 523 |  |
| 526 | Toilet flooring work | 2026-07-27 → 2027-07-13 (+351d) | 2026-08-04 → 2027-07-20 (+350d) | 8d → 7.88d | 494, 525 → 510, 525 |  |
| 527 | Living dinning flooring | 2026-06-20 → 2027-08-20 (+426d) | 2026-06-26 → 2027-09-01 (+432d) | 7d → 13.5d | 495FS+0.25d → 511, 520, 526 |  |
| 528 | Aluminium door-window fixing | 2026-08-09 → 2028-01-04 (+513d) | 2026-08-19 → 2028-01-16 (+515d) | 10d → 13.5d | 512FS+0.25d → 512, 524, 527 |  |
| 529 | Putty primer coat | 2026-07-04 → 2027-09-01 (+424d) | 2026-07-10 → 2027-09-07 (+424d) | 6d → 6.75d | 513, 511 → 513, 527 |  |
| 530 | Door shutter fixing | 2026-07-07 → 2027-09-01 (+421d) | 2026-07-15 → 2027-09-09 (+421d) | 8d → 9d | 514, 511 → 514, 527 |  |
| 531 | Electrical wiring work | 2027-04-24 → 2027-10-28 (+187d) | 2027-05-02 → 2027-12-24 (+236d) | 8d → 13.5d |  |  |
| 532 | Painting 1st coat | 2027-05-09 → 2027-12-24 (+229d) | 2027-05-17 → 2028-01-05 (+233d) | 8d → 13.5d |  |  |
| 533 | False ceiling | 2027-05-17 → 2028-01-05 (+233d) | 2027-05-25 → 2028-01-15 (+235d) | 8d → 11.25d |  |  |
| 534 | **18th Floor** | 2026-04-24 → 2026-10-08 (+167d) | 2027-06-02 → 2028-01-28 (+240d) | 359.56d → 435.38d |  | constraint start no earlier than 2026-04-24 → start no earlier than 2026-10-08 |
| 535 | Block Work | 2026-04-24 → 2026-10-08 (+167d) | 2026-05-02 → 2026-10-16 (+167d) | 8d → 9d | 519FS+0.25d → 240, 519 |  |
| 536 | Door Frame Fixing | 2026-05-23 → 2026-10-16 (+146d) | 2026-06-01 → 2026-10-25 (+146d) | 9d → 10.12d |  |  |
| 537 | Internal Plumbing Works | 2026-05-06 → 2026-10-16 (+163d) | 2026-05-14 → 2026-10-26 (+165d) | 8d → 11.25d |  |  |
| 538 | Waterproofing | 2026-06-17 → 2026-10-26 (+131d) | 2026-06-27 → 2026-12-22 (+178d) | 10d → 13.5d |  |  |
| 539 | Internal Plaster | 2026-07-22 → 2026-12-22 (+153d) | 2026-07-27 → 2026-12-31 (+157d) | 5d → 10.12d | 523FS+0.25d → 523, 536, 537, 538 |  |
| 540 | IPS flooring work | 2026-07-02 → 2026-12-22 (+173d) | 2026-07-12 → 2026-12-31 (+172d) | 10d → 10.12d | 508, 536, 537, 538 → 524, 536, 537, 538 |  |
| 541 | Toilet dado work | 2026-08-04 → 2027-07-13 (+343d) | 2026-08-12 → 2027-07-21 (+343d) | 8d → 9d | 509, 538, 539 → 525, 538, 539 |  |
| 542 | Toilet flooring work | 2026-08-12 → 2027-07-21 (+343d) | 2026-08-20 → 2027-07-28 (+342d) | 8d → 7.88d | 510, 541 → 526, 541 |  |
| 543 | Living dinning flooring | 2026-07-04 → 2027-09-01 (+424d) | 2026-07-11 → 2027-09-13 (+429d) | 7d → 13.5d | 511FS+0.25d → 527, 536, 542 |  |
| 544 | Aluminium door-window fixing | 2026-08-19 → 2028-01-16 (+515d) | 2026-08-26 → 2028-01-28 (+520d) | 7d → 13.5d |  |  |
| 545 | Putty primer coat | 2026-07-11 → 2027-09-13 (+429d) | 2026-07-17 → 2027-09-19 (+429d) | 6d → 6.75d |  |  |
| 546 | Door shutter fixing | 2026-07-15 → 2027-09-13 (+425d) | 2026-07-23 → 2027-09-21 (+425d) | 8d → 9d |  |  |
| 547 | Electrical wiring work | 2027-05-02 → 2027-12-24 (+236d) | 2027-05-10 → 2028-01-05 (+240d) | 8d → 13.5d |  |  |
| 548 | Painting 1st coat | 2027-05-17 → 2028-01-05 (+233d) | 2027-05-25 → 2028-01-17 (+237d) | 8d → 13.5d |  |  |
| 549 | False ceiling | 2027-05-25 → 2028-01-17 (+237d) | 2027-06-02 → 2028-01-27 (+239d) | 8d → 11.25d |  |  |
| 550 | **19th Floor** | 2026-05-02 → 2026-10-20 (+171d) | 2027-06-10 → 2028-02-09 (+244d) | 359.31d → 435.38d |  | constraint start no earlier than 2026-05-02 → start no earlier than 2026-10-20 |
| 551 | Block Work | 2026-05-02 → 2026-10-20 (+171d) | 2026-05-10 → 2026-10-28 (+171d) | 8d → 9d | 535FS+0.25d → 241, 535 |  |
| 552 | Door Frame Fixing | 2026-06-01 → 2026-10-28 (+149d) | 2026-06-10 → 2026-12-21 (+194d) | 9d → 10.12d |  |  |
| 553 | Internal Plumbing Works | 2026-05-14 → 2026-10-28 (+167d) | 2026-05-22 → 2026-12-22 (+214d) | 8d → 11.25d |  |  |
| 554 | Waterproofing | 2026-06-27 → 2026-12-22 (+178d) | 2026-07-07 → 2027-01-03 (+180d) | 10d → 13.5d |  |  |
| 555 | Internal Plaster | 2026-07-27 → 2027-01-03 (+160d) | 2026-08-04 → 2027-01-12 (+161d) | 8d → 10.12d | 539FS+0.25d → 539, 552, 553, 554 |  |
| 556 | IPS flooring work | 2026-08-13 → 2027-01-12 (+152d) | 2026-08-23 → 2027-01-21 (+151d) | 10d → 10.12d | 540, 552, 554, 571 → 540, 552, 554, 555 |  |
| 557 | Toilet dado work | 2026-08-13 → 2027-07-21 (+342d) | 2026-08-21 → 2027-07-29 (+342d) | 8d → 9d | 541, 554, 571 → 541, 554, 555 |  |
| 558 | Toilet flooring work | 2026-08-21 → 2027-07-29 (+342d) | 2026-08-29 → 2027-08-05 (+341d) | 8d → 7.88d |  |  |
| 559 | Living dinning flooring | 2026-07-11 → 2027-09-13 (+429d) | 2026-07-18 → 2027-09-25 (+434d) | 7d → 13.5d | 543FS+0.25d → 543, 552, 558 |  |
| 560 | Aluminium door-window fixing | 2026-08-26 → 2028-01-28 (+520d) | 2026-09-05 → 2028-02-09 (+522d) | 10d → 13.5d |  |  |
| 561 | Putty primer coat | 2026-07-18 → 2027-09-25 (+434d) | 2026-07-24 → 2027-10-01 (+434d) | 6d → 6.75d |  |  |

| ID | Task | Start | Finish | Duration | Predecessors | Other |
| --- | --- | --- | --- | --- | --- | --- |
| 562 | Door shutter fixing | 2026-07-23 → 2027-09-25 (+429d) | 2026-07-31 → 2027-10-03 (+429d) | 8d → 9d |  |  |
| 563 | Electrical wiring work | 2027-05-10 → 2028-01-05 (+240d) | 2027-05-18 → 2028-01-17 (+244d) | 8d → 13.5d |  |  |
| 564 | Painting 1st coat | 2027-05-25 → 2028-01-17 (+237d) | 2027-06-02 → 2028-01-29 (+241d) | 8d → 13.5d |  |  |
| 565 | False ceiling | 2027-06-02 → 2028-01-29 (+241d) | 2027-06-10 → 2028-02-08 (+243d) | 8d → 11.25d |  |  |
| 566 | **20th Floor** | 2026-05-10 → 2026-12-16 (+220d) | 2027-06-18 → 2028-02-21 (+248d) | 359.06d → 435.38d |  | constraint start no earlier than 2026-05-10 → start no earlier than 2026-12-16 |
| 567 | Block Work | 2026-05-10 → 2026-12-16 (+220d) | 2026-05-18 → 2026-12-24 (+220d) | 8d → 9d | 551FS+0.25d → 242, 551 |  |
| 568 | Door Frame Fixing | 2026-06-10 → 2026-12-24 (+197d) | 2026-06-19 → 2027-01-02 (+197d) | 9d → 10.12d |  |  |
| 569 | Internal Plumbing Works | 2026-05-22 → 2026-12-24 (+216d) | 2026-05-30 → 2027-01-03 (+218d) | 8d → 11.25d |  |  |
| 570 | Waterproofing | 2026-07-07 → 2027-01-03 (+180d) | 2026-07-17 → 2027-01-15 (+182d) | 10d → 13.5d |  |  |
| 571 | Internal Plaster | 2026-08-04 → 2027-01-15 (+164d) | 2026-08-13 → 2027-01-24 (+164d) | 9d → 10.12d | 539, 552, 553, 554, 555 → 555, 568, 569, 570 |  |
| 572 | IPS flooring work | 2026-08-23 → 2027-01-24 (+154d) | 2026-09-02 → 2027-02-02 (+153d) | 10d → 10.12d | 556, 568, 570, 587 → 556, 568, 570, 571 |  |
| 573 | Toilet dado work | 2026-08-21 → 2027-07-29 (+342d) | 2026-08-29 → 2027-08-06 (+342d) | 8d → 9d | 557, 570, 587 → 557, 570, 571 |  |
| 574 | Toilet flooring work | 2026-08-29 → 2027-08-06 (+342d) | 2026-09-06 → 2027-08-13 (+341d) | 8d → 7.88d |  |  |
| 575 | Living dinning flooring | 2026-07-19 → 2027-09-25 (+433d) | 2026-07-25 → 2027-10-07 (+439d) | 7d → 13.5d | 559FS+0.25d → 559, 568, 574 |  |
| 576 | Aluminium door-window fixing | 2026-09-05 → 2028-02-09 (+522d) | 2026-09-12 → 2028-02-21 (+527d) | 7d → 13.5d |  |  |
| 577 | Putty primer coat | 2026-07-26 → 2027-10-07 (+438d) | 2026-07-31 → 2027-10-13 (+439d) | 6d → 6.75d |  |  |
| 578 | Door shutter fixing | 2026-07-31 → 2027-10-07 (+433d) | 2026-08-08 → 2027-10-15 (+433d) | 8d → 9d |  |  |
| 579 | Electrical wiring work | 2027-05-18 → 2028-01-17 (+244d) | 2027-05-26 → 2028-01-29 (+248d) | 8d → 13.5d |  |  |
| 580 | Painting 1st coat | 2027-06-02 → 2028-01-29 (+241d) | 2027-06-10 → 2028-02-10 (+245d) | 8d → 13.5d |  |  |
| 581 | False ceiling | 2027-06-10 → 2028-02-10 (+245d) | 2027-06-18 → 2028-02-20 (+247d) | 8d → 11.25d |  |  |
| 582 | **21st Floor** | 2026-05-19 → 2026-12-28 (+223d) | 2027-06-26 → 2028-03-04 (+252d) | 358.81d → 435.38d |  | constraint start no earlier than 2026-05-19 → start no earlier than 2026-12-28 |
| 583 | Block Work | 2026-05-19 → 2026-12-28 (+223d) | 2026-05-26 → 2027-01-05 (+224d) | 8d → 9d | 567FS+0.25d → 243, 567 |  |
| 584 | Door Frame Fixing | 2026-06-19 → 2027-01-05 (+200d) | 2026-06-28 → 2027-01-14 (+200d) | 9d → 10.12d |  |  |
| 585 | Internal Plumbing Works | 2026-05-30 → 2027-01-05 (+220d) | 2026-06-07 → 2027-01-15 (+222d) | 8d → 11.25d | 569FS+0.25d → 569, 583 |  |
| 586 | Waterproofing | 2026-07-17 → 2027-01-15 (+182d) | 2026-07-27 → 2027-01-27 (+184d) | 10d → 13.5d |  |  |
| 587 | Internal Plaster | 2026-08-13 → 2027-01-27 (+167d) | 2026-08-18 → 2027-02-05 (+171d) | 5d → 10.12d | 571FS+0.25d → 571, 584, 585, 586 |  |
| 588 | IPS flooring work | 2026-09-02 → 2027-02-05 (+156d) | 2026-09-12 → 2027-02-14 (+155d) | 10d → 10.12d | 572FS+0.25d → 572, 584, 586, 587 |  |
| 589 | Toilet dado work | 2026-08-29 → 2027-08-06 (+342d) | 2026-09-06 → 2027-08-14 (+342d) | 8d → 9d | 573, 586, 603 → 573, 586, 587 |  |
| 590 | Toilet flooring work | 2026-09-06 → 2027-08-14 (+342d) | 2026-09-14 → 2027-08-21 (+341d) | 8d → 7.88d |  |  |
| 591 | Living dinning flooring | 2026-07-26 → 2027-10-07 (+438d) | 2026-08-07 → 2027-10-19 (+438d) | 12d → 13.5d | 575FS+0.25d → 575, 584, 590 |  |
| 592 | Aluminium door-window fixing | 2026-09-12 → 2028-02-21 (+527d) | 2026-09-24 → 2028-03-04 (+527d) | 12d → 13.5d |  |  |
| 593 | Putty primer coat | 2026-08-07 → 2027-10-19 (+438d) | 2026-08-13 → 2027-10-25 (+438d) | 6d → 6.75d |  |  |
| 594 | Door shutter fixing | 2026-08-08 → 2027-10-19 (+437d) | 2026-08-16 → 2027-10-27 (+437d) | 8d → 9d |  |  |
| 595 | Electrical wiring work | 2027-05-26 → 2028-01-29 (+248d) | 2027-06-03 → 2028-02-10 (+252d) | 8d → 13.5d |  |  |
| 596 | Painting 1st coat | 2027-06-10 → 2028-02-10 (+245d) | 2027-06-18 → 2028-02-22 (+249d) | 8d → 13.5d |  |  |
| 597 | False ceiling | 2027-06-18 → 2028-02-22 (+249d) | 2027-06-26 → 2028-03-03 (+251d) | 8d → 11.25d |  |  |
| 598 | **22nd Floor** | 2026-05-27 → 2027-01-09 (+227d) | 2027-07-04 → 2028-03-16 (+256d) | 358.56d → 435.38d |  | constraint start no earlier than 2026-05-27 → start no earlier than 2027-01-09 |
| 599 | Block Work | 2026-05-27 → 2027-01-09 (+227d) | 2026-06-04 → 2027-01-17 (+227d) | 8d → 9d | 583FS+0.25d → 244, 583 |  |
| 600 | Door Frame Fixing | 2026-06-28 → 2027-01-17 (+203d) | 2026-07-07 → 2027-01-26 (+203d) | 9d → 10.12d |  |  |
| 601 | Internal Plumbing Works | 2026-06-07 → 2027-01-17 (+224d) | 2026-06-15 → 2027-01-27 (+226d) | 8d → 11.25d |  |  |
| 602 | Waterproofing | 2026-07-27 → 2027-01-27 (+184d) | 2026-08-06 → 2027-02-08 (+186d) | 10d → 13.5d |  |  |
| 603 | Internal Plaster | 2026-05-27 → 2027-02-08 (+257d) | 2026-06-04 → 2027-02-17 (+258d) | 8d → 10.12d | 583FS+0.25d → 587, 600, 601, 602 |  |
| 604 | IPS flooring work | 2026-09-12 → 2027-02-17 (+158d) | 2026-09-22 → 2027-02-26 (+157d) | 10d → 10.12d | 588, 600, 602, 619 → 588, 600, 602, 603 |  |
| 605 | Toilet dado work | 2026-09-06 → 2027-08-14 (+342d) | 2026-09-14 → 2027-08-22 (+342d) | 8d → 9d | 589, 602, 619 → 589, 602, 603 |  |
| 606 | Toilet flooring work | 2026-09-14 → 2027-08-22 (+342d) | 2026-09-22 → 2027-08-29 (+341d) | 8d → 7.88d |  |  |
| 607 | Living dinning flooring | 2026-09-22 → 2027-10-19 (+392d) | 2026-09-29 → 2027-10-31 (+397d) | 7d → 13.5d |  |  |
| 608 | Aluminium door-window fixing | 2026-09-29 → 2028-03-04 (+522d) | 2026-10-06 → 2028-03-16 (+527d) | 7d → 13.5d |  |  |
| 609 | Putty primer coat | 2026-09-29 → 2027-10-31 (+397d) | 2026-10-05 → 2027-12-21 (+442d) | 6d → 6.75d |  |  |
| 610 | Door shutter fixing | 2026-09-29 → 2027-10-31 (+397d) | 2026-10-07 → 2027-12-23 (+442d) | 8d → 9d |  |  |
| 611 | Electrical wiring work | 2027-06-03 → 2028-02-10 (+252d) | 2027-06-11 → 2028-02-22 (+256d) | 8d → 13.5d |  |  |
| 612 | Painting 1st coat | 2027-06-18 → 2028-02-22 (+249d) | 2027-06-26 → 2028-03-05 (+253d) | 8d → 13.5d |  |  |
| 613 | False ceiling | 2027-06-26 → 2028-03-05 (+253d) | 2027-07-04 → 2028-03-15 (+255d) | 8d → 11.25d |  |  |
| 614 | **23rd Floor** | 2026-06-04 → 2027-01-21 (+231d) | 2027-07-12 → 2028-03-31 (+263d) | 358.31d → 438.75d |  | constraint start no earlier than 2026-06-04 → start no earlier than 2027-01-21 |
| 615 | Block Work | 2026-06-04 → 2027-01-21 (+231d) | 2026-06-12 → 2027-01-29 (+231d) | 8d → 9d | 599FS+0.25d → 245, 599 |  |
| 616 | Door Frame Fixing | 2026-07-07 → 2027-01-29 (+206d) | 2026-07-16 → 2027-02-07 (+206d) | 9d → 10.12d |  |  |
| 617 | Internal Plumbing Works | 2026-06-15 → 2027-01-29 (+228d) | 2026-06-23 → 2027-02-08 (+230d) | 8d → 11.25d |  |  |
| 618 | Waterproofing | 2026-08-06 → 2027-02-08 (+186d) | 2026-08-16 → 2027-02-20 (+188d) | 10d → 13.5d |  |  |
| 619 | Internal Plaster | 2026-06-04 → 2027-02-20 (+261d) | 2026-06-09 → 2027-03-01 (+265d) | 5d → 10.12d | 603FS+0.25d → 603, 616, 617, 618 |  |
| 620 | IPS flooring work | 2026-09-22 → 2027-03-01 (+160d) | 2026-10-02 → 2027-03-10 (+159d) | 10d → 10.12d | 604, 616, 618, 635 → 604, 616, 618, 619 |  |
| 621 | Toilet dado work | 2026-09-14 → 2027-08-22 (+342d) | 2026-09-22 → 2027-08-30 (+342d) | 8d → 9d | 605, 618, 635 → 605, 618, 619 |  |
| 622 | Toilet flooring work | 2026-09-22 → 2027-08-30 (+342d) | 2026-09-30 → 2027-09-06 (+341d) | 8d → 7.88d |  |  |
| 623 | Living dinning flooring | 2026-09-30 → 2027-10-31 (+396d) | 2026-10-07 → 2027-12-30 (+449d) | 7d → 16.88d |  |  |
| 624 | Aluminium door-window fixing | 2026-10-07 → 2028-03-16 (+526d) | 2026-10-14 → 2028-03-31 (+534d) | 7d → 16.88d |  |  |
| 625 | Putty primer coat | 2026-10-07 → 2027-12-30 (+449d) | 2026-10-13 → 2028-01-05 (+449d) | 6d → 6.75d |  |  |
| 626 | Door shutter fixing | 2026-10-07 → 2027-12-30 (+449d) | 2026-10-15 → 2028-01-07 (+449d) | 8d → 9d |  |  |
| 627 | Electrical wiring work | 2027-06-11 → 2028-02-22 (+256d) | 2027-06-19 → 2028-03-05 (+260d) | 8d → 13.5d |  |  |
| 628 | Painting 1st coat | 2027-06-26 → 2028-03-05 (+253d) | 2027-07-04 → 2028-03-17 (+257d) | 8d → 13.5d |  |  |
| 629 | False ceiling | 2027-07-04 → 2028-03-17 (+257d) | 2027-07-12 → 2028-03-27 (+259d) | 8d → 11.25d |  |  |
| 630 | **24th Floor** | 2026-06-12 → 2027-02-02 (+235d) | 2027-07-20 → 2028-04-15 (+270d) | 358.06d → 442.12d |  | constraint start no earlier than 2026-06-12 → start no earlier than 2027-02-02 |
| 631 | Block Work | 2026-06-12 → 2027-02-02 (+235d) | 2026-06-20 → 2027-02-10 (+235d) | 8d → 9d | 615FS+0.25d → 246, 615 |  |

| ID | Task | Start | Finish | Duration | Predecessors | Other |
| --- | --- | --- | --- | --- | --- | --- |
| 632 | Door Frame Fixing | 2026-07-16 → 2027-02-10 (+209d) | 2026-07-25 → 2027-02-19 (+209d) | 9d → 10.12d |  |  |
| 633 | Internal Plumbing Works | 2026-06-23 → 2027-02-10 (+232d) | 2026-07-01 → 2027-02-20 (+234d) | 8d → 11.25d |  |  |
| 634 | Waterproofing | 2026-08-16 → 2027-02-20 (+188d) | 2026-08-26 → 2027-03-04 (+190d) | 10d → 13.5d |  |  |
| 635 | Internal Plaster | 2026-06-09 → 2027-03-04 (+268d) | 2026-06-14 → 2027-03-13 (+272d) | 5d → 10.12d | 619FS+0.25d → 619, 632, 633, 634 |  |
| 636 | IPS flooring work | 2026-10-02 → 2027-03-13 (+162d) | 2026-10-12 → 2027-03-22 (+161d) | 10d → 10.12d | 620, 632, 634, 651 → 620, 632, 634, 635 |  |
| 637 | Toilet dado work | 2026-09-22 → 2027-08-30 (+342d) | 2026-09-30 → 2027-09-07 (+342d) | 8d → 9d | 621, 634, 651 → 621, 634, 635 |  |
| 638 | Toilet flooring work | 2026-09-30 → 2027-09-07 (+342d) | 2026-10-08 → 2027-09-14 (+341d) | 8d → 7.88d |  |  |
| 639 | Living dinning flooring | 2026-10-08 → 2027-12-30 (+448d) | 2026-10-20 → 2028-01-14 (+451d) | 12d → 16.88d |  |  |
| 640 | Aluminium door-window fixing | 2026-10-20 → 2028-03-31 (+528d) | 2026-12-16 → 2028-04-15 (+486d) | 12d → 16.88d |  |  |
| 641 | Putty primer coat | 2026-10-20 → 2028-01-14 (+451d) | 2026-10-26 → 2028-01-20 (+451d) | 6d → 6.75d |  |  |
| 642 | Door shutter fixing | 2026-10-20 → 2028-01-14 (+451d) | 2026-10-28 → 2028-01-22 (+451d) | 8d → 9d |  |  |
| 643 | Electrical wiring work | 2027-06-19 → 2028-03-05 (+260d) | 2027-06-27 → 2028-03-17 (+264d) | 8d → 13.5d |  |  |
| 644 | Painting 1st coat | 2027-07-04 → 2028-03-17 (+257d) | 2027-07-12 → 2028-03-29 (+261d) | 8d → 13.5d |  |  |
| 645 | False ceiling | 2027-07-12 → 2028-03-29 (+261d) | 2027-07-20 → 2028-04-08 (+263d) | 8d → 11.25d |  |  |
| 646 | **25th Floor** | 2026-07-24 → 2027-02-14 (+205d) | 2027-07-28 → 2028-04-30 (+277d) | 324.56d → 445.5d |  | constraint start no earlier than 2026-07-24 → start no earlier than 2027-02-14 |
| 647 | Block Work | 2026-07-24 → 2027-02-14 (+205d) | 2026-08-01 → 2027-02-22 (+205d) | 8d → 9d |  |  |
| 648 | Door Frame Fixing | 2026-08-01 → 2027-02-22 (+205d) | 2026-08-10 → 2027-03-03 (+205d) | 9d → 10.12d |  |  |
| 649 | Internal Plumbing Works | 2026-08-01 → 2027-02-22 (+205d) | 2026-08-09 → 2027-03-04 (+207d) | 8d → 11.25d |  |  |
| 650 | Waterproofing | 2026-08-26 → 2027-03-04 (+190d) | 2026-09-05 → 2027-03-16 (+192d) | 10d → 13.5d |  |  |
| 651 | Internal Plaster | 2026-08-26 → 2027-03-16 (+202d) | 2026-09-03 → 2027-03-25 (+203d) | 8d → 10.12d | 635, 632, 633, 634 → 635, 648, 649, 650 |  |
| 652 | IPS flooring work | 2026-10-12 → 2027-03-25 (+164d) | 2026-10-22 → 2027-04-03 (+163d) | 10d → 10.12d | 636, 648, 650, 667 → 636, 648, 650, 651 |  |
| 653 | Toilet dado work | 2026-09-30 → 2027-09-07 (+342d) | 2026-10-08 → 2027-09-15 (+342d) | 8d → 9d | 637, 650, 667 → 637, 650, 651 |  |
| 654 | Toilet flooring work | 2026-10-08 → 2027-09-15 (+342d) | 2026-10-16 → 2027-09-22 (+341d) | 8d → 7.88d |  |  |
| 655 | Living dinning flooring | 2026-10-20 → 2028-01-14 (+451d) | 2026-12-16 → 2028-01-29 (+409d) | 12d → 16.88d |  |  |
| 656 | Aluminium door-window fixing | 2026-12-16 → 2028-04-15 (+486d) | 2026-12-28 → 2028-04-30 (+489d) | 12d → 16.88d |  |  |
| 657 | Putty primer coat | 2026-12-16 → 2028-01-29 (+409d) | 2026-12-22 → 2028-02-04 (+409d) | 6d → 6.75d |  |  |
| 658 | Door shutter fixing | 2026-12-16 → 2028-01-29 (+409d) | 2026-12-24 → 2028-02-06 (+409d) | 8d → 9d |  |  |
| 659 | Electrical wiring work | 2027-06-27 → 2028-03-17 (+264d) | 2027-07-05 → 2028-03-29 (+268d) | 8d → 13.5d |  |  |
| 660 | Painting 1st coat | 2027-07-12 → 2028-03-29 (+261d) | 2027-07-20 → 2028-04-10 (+265d) | 8d → 13.5d |  |  |
| 661 | False ceiling | 2027-07-20 → 2028-04-10 (+265d) | 2027-07-28 → 2028-04-20 (+267d) | 8d → 11.25d |  |  |
| 662 | **26th Floor** | 2026-08-03 → 2027-02-26 (+207d) | 2027-08-05 → 2028-05-15 (+284d) | 322.56d → 448.88d |  | constraint start no earlier than 2026-08-03 → start no earlier than 2027-02-26 |
| 663 | Block Work | 2026-08-03 → 2027-02-26 (+207d) | 2026-08-11 → 2027-03-06 (+207d) | 8d → 9d |  |  |
| 664 | Door Frame Fixing | 2026-08-11 → 2027-03-06 (+207d) | 2026-08-20 → 2027-03-15 (+207d) | 9d → 10.12d |  |  |
| 665 | Internal Plumbing Works | 2026-08-11 → 2027-03-06 (+207d) | 2026-08-19 → 2027-03-16 (+209d) | 8d → 11.25d |  |  |
| 666 | Waterproofing | 2026-09-05 → 2027-03-16 (+192d) | 2026-09-15 → 2027-03-28 (+194d) | 10d → 13.5d |  |  |
| 667 | Internal Plaster | 2026-09-05 → 2027-03-28 (+204d) | 2026-09-13 → 2027-04-06 (+205d) | 8d → 10.12d | 651, 648, 649, 650 → 651, 664, 665, 666 |  |
| 668 | IPS flooring work | 2026-10-22 → 2027-04-06 (+166d) | 2026-12-16 → 2027-04-15 (+120d) | 10d → 10.12d | 652, 664, 666, 683 → 652, 664, 666, 667 |  |
| 669 | Toilet dado work | 2026-10-08 → 2027-09-15 (+342d) | 2026-10-16 → 2027-09-23 (+342d) | 8d → 9d | 653, 666, 683 → 653, 666, 667 |  |
| 670 | Toilet flooring work | 2026-10-16 → 2027-09-23 (+342d) | 2026-10-24 → 2027-09-30 (+341d) | 8d → 7.88d |  |  |
| 671 | Living dinning flooring | 2026-12-16 → 2028-01-29 (+409d) | 2027-01-05 → 2028-02-13 (+404d) | 20d → 16.88d |  |  |
| 672 | Aluminium door-window fixing | 2027-01-05 → 2028-04-30 (+481d) | 2027-01-17 → 2028-05-15 (+484d) | 12d → 16.88d |  |  |
| 673 | Putty primer coat | 2027-01-05 → 2028-02-13 (+404d) | 2027-01-11 → 2028-02-19 (+404d) | 6d → 6.75d |  |  |
| 674 | Door shutter fixing | 2027-01-05 → 2028-02-13 (+404d) | 2027-01-13 → 2028-02-21 (+404d) | 8d → 9d |  |  |
| 675 | Electrical wiring work | 2027-07-05 → 2028-03-29 (+268d) | 2027-07-13 → 2028-04-10 (+272d) | 8d → 13.5d |  |  |
| 676 | Painting 1st coat | 2027-07-20 → 2028-04-10 (+265d) | 2027-07-28 → 2028-04-22 (+269d) | 8d → 13.5d |  |  |
| 677 | False ceiling | 2027-07-28 → 2028-04-22 (+269d) | 2027-08-05 → 2028-05-02 (+271d) | 8d → 11.25d |  |  |
| 678 | **27th Floor** | 2026-08-26 → 2027-03-10 (+196d) | 2027-08-13 → 2028-05-30 (+291d) | 307.69d → 452.25d |  | constraint start no earlier than 2026-08-26 → start no earlier than 2027-03-10 |
| 679 | Block Work | 2026-08-26 → 2027-03-10 (+196d) | 2026-09-03 → 2027-03-18 (+196d) | 8d → 9d |  |  |
| 680 | Door Frame Fixing | 2026-09-03 → 2027-03-18 (+196d) | 2026-09-12 → 2027-03-27 (+196d) | 9d → 10.12d |  |  |
| 681 | Internal Plumbing Works | 2026-09-03 → 2027-03-18 (+196d) | 2026-09-11 → 2027-03-28 (+198d) | 8d → 11.25d |  |  |
| 682 | Waterproofing | 2026-09-15 → 2027-03-28 (+194d) | 2026-09-25 → 2027-04-09 (+196d) | 10d → 13.5d |  |  |
| 683 | Internal Plaster | 2026-09-15 → 2027-04-09 (+206d) | 2026-09-23 → 2027-04-18 (+207d) | 8d → 10.12d | 667, 664, 665, 666 → 667, 680, 681, 682 |  |
| 684 | IPS flooring work | 2026-12-16 → 2027-04-18 (+123d) | 2026-12-26 → 2027-04-27 (+122d) | 10d → 10.12d | 668, 680, 682, 699 → 668, 680, 682, 683 |  |
| 685 | Toilet dado work | 2026-10-16 → 2027-09-23 (+342d) | 2026-10-24 → 2027-10-01 (+342d) | 8d → 9d | 669, 682, 699 → 669, 682, 683 |  |
| 686 | Toilet flooring work | 2026-10-24 → 2027-10-01 (+342d) | 2026-12-16 → 2027-10-08 (+296d) | 8d → 7.88d |  |  |
| 687 | Living dinning flooring | 2027-01-05 → 2028-02-13 (+404d) | 2027-01-17 → 2028-02-28 (+407d) | 12d → 16.88d |  |  |
| 688 | Aluminium door-window fixing | 2027-01-17 → 2028-05-15 (+484d) | 2027-02-06 → 2028-05-30 (+479d) | 20d → 16.88d |  |  |
| 689 | Putty primer coat | 2027-01-17 → 2028-02-28 (+407d) | 2027-01-23 → 2028-03-05 (+407d) | 6d → 6.75d |  |  |
| 690 | Door shutter fixing | 2027-01-17 → 2028-02-28 (+407d) | 2027-01-25 → 2028-03-07 (+407d) | 8d → 9d |  |  |
| 691 | Electrical wiring work | 2027-07-13 → 2028-04-10 (+272d) | 2027-07-21 → 2028-04-22 (+276d) | 8d → 13.5d |  |  |
| 692 | Painting 1st coat | 2027-07-28 → 2028-04-22 (+269d) | 2027-08-05 → 2028-05-04 (+273d) | 8d → 13.5d |  |  |
| 693 | False ceiling | 2027-08-05 → 2028-05-04 (+273d) | 2027-08-13 → 2028-05-14 (+275d) | 8d → 11.25d |  |  |
| 694 | **28th Floor** | 2026-09-11 → 2027-03-22 (+192d) | 2027-08-21 → 2028-06-14 (+298d) | 298.94d → 455.62d |  | constraint start no earlier than 2026-09-11 → start no earlier than 2027-03-22 |
| 695 | Block Work | 2026-09-11 → 2027-03-22 (+192d) | 2026-09-19 → 2027-03-30 (+192d) | 8d → 9d |  |  |
| 696 | Door Frame Fixing | 2026-09-19 → 2027-03-30 (+192d) | 2026-09-28 → 2027-04-08 (+192d) | 9d → 10.12d |  |  |
| 697 | Internal Plumbing Works | 2026-09-19 → 2027-03-30 (+192d) | 2026-09-27 → 2027-04-09 (+194d) | 8d → 11.25d |  |  |
| 698 | Waterproofing | 2026-09-27 → 2027-04-09 (+194d) | 2026-10-07 → 2027-04-21 (+196d) | 10d → 13.5d |  |  |
| 699 | Internal Plaster | 2026-09-25 → 2027-04-21 (+208d) | 2026-10-03 → 2027-04-30 (+209d) | 8d → 10.12d | 683, 680, 681, 682 → 683, 696, 697, 698 |  |
| 700 | IPS flooring work | 2026-12-26 → 2027-04-30 (+125d) | 2027-01-05 → 2027-05-09 (+124d) | 10d → 10.12d | 684, 696, 698, 715 → 684, 696, 698, 699 |  |
| 701 | Toilet dado work | 2026-10-24 → 2027-10-01 (+342d) | 2026-12-16 → 2027-10-09 (+297d) | 8d → 9d | 685, 698, 715 → 685, 698, 699 |  |

| ID | Task | Start | Finish | Duration | Predecessors | Other |
| --- | --- | --- | --- | --- | --- | --- |
| 702 | Toilet flooring work | 2026-12-16 → 2027-10-09 (+297d) | 2026-12-24 → 2027-10-16 (+296d) | 8d → 7.88d |  |  |
| 703 | Living dinning flooring | 2027-01-17 → 2028-02-28 (+407d) | 2027-01-29 → 2028-03-14 (+410d) | 12d → 16.88d |  |  |
| 704 | Aluminium door-window fixing | 2027-02-06 → 2028-05-30 (+479d) | 2027-02-18 → 2028-06-14 (+482d) | 12d → 16.88d |  |  |
| 705 | Putty primer coat | 2027-01-29 → 2028-03-14 (+410d) | 2027-02-04 → 2028-03-20 (+410d) | 6d → 6.75d |  |  |
| 706 | Door shutter fixing | 2027-01-29 → 2028-03-14 (+410d) | 2027-02-06 → 2028-03-22 (+410d) | 8d → 9d |  |  |
| 707 | Electrical wiring work | 2027-07-21 → 2028-04-22 (+276d) | 2027-07-29 → 2028-05-04 (+280d) | 8d → 13.5d |  |  |
| 708 | Painting 1st coat | 2027-08-05 → 2028-05-04 (+273d) | 2027-08-13 → 2028-05-16 (+277d) | 8d → 13.5d |  |  |
| 709 | False ceiling | 2027-08-13 → 2028-05-16 (+277d) | 2027-08-21 → 2028-05-26 (+279d) | 8d → 11.25d |  |  |
| 710 | **29th Floor** | 2026-09-26 → 2027-04-03 (+189d) | 2027-08-29 → 2028-06-29 (+305d) | 292.06d → 459d |  | constraint start no earlier than 2026-09-26 → start no earlier than 2027-04-03 |
| 711 | Block Work | 2026-09-26 → 2027-04-03 (+189d) | 2026-10-04 → 2027-04-11 (+189d) | 8d → 9d |  |  |
| 712 | Door Frame Fixing | 2026-10-04 → 2027-04-11 (+189d) | 2026-10-13 → 2027-04-20 (+189d) | 9d → 10.12d |  |  |
| 713 | Internal Plumbing Works | 2026-10-04 → 2027-04-11 (+189d) | 2026-10-12 → 2027-04-21 (+191d) | 8d → 11.25d |  |  |
| 714 | Waterproofing | 2026-10-12 → 2027-04-21 (+191d) | 2026-10-22 → 2027-05-03 (+193d) | 10d → 13.5d |  |  |
| 715 | Internal Plaster | 2026-10-07 → 2027-05-03 (+208d) | 2026-10-15 → 2027-05-12 (+209d) | 8d → 10.12d | 699, 696, 697, 698 → 699, 712, 713, 714 |  |
| 716 | IPS flooring work | 2027-01-05 → 2027-05-12 (+127d) | 2027-01-15 → 2027-05-21 (+126d) | 10d → 10.12d | 700, 712, 714, 731 → 700, 712, 714, 715 |  |
| 717 | Toilet dado work | 2026-12-16 → 2027-10-09 (+297d) | 2026-12-24 → 2027-10-17 (+297d) | 8d → 9d | 701, 714, 731 → 701, 714, 715 |  |
| 718 | Toilet flooring work | 2026-12-24 → 2027-10-17 (+297d) | 2027-01-01 → 2027-10-24 (+296d) | 8d → 7.88d |  |  |
| 719 | Living dinning flooring | 2027-01-29 → 2028-03-14 (+410d) | 2027-02-10 → 2028-03-29 (+413d) | 12d → 16.88d |  |  |
| 720 | Aluminium door-window fixing | 2027-02-18 → 2028-06-14 (+482d) | 2027-03-02 → 2028-06-29 (+485d) | 12d → 16.88d |  |  |
| 721 | Putty primer coat | 2027-02-10 → 2028-03-29 (+413d) | 2027-02-16 → 2028-04-04 (+413d) | 6d → 6.75d |  |  |
| 722 | Door shutter fixing | 2027-02-10 → 2028-03-29 (+413d) | 2027-02-18 → 2028-04-06 (+413d) | 8d → 9d |  |  |
| 723 | Electrical wiring work | 2027-07-29 → 2028-05-04 (+280d) | 2027-08-06 → 2028-05-16 (+284d) | 8d → 13.5d |  |  |
| 724 | Painting 1st coat | 2027-08-13 → 2028-05-16 (+277d) | 2027-08-21 → 2028-05-28 (+281d) | 8d → 13.5d |  |  |
| 725 | False ceiling | 2027-08-21 → 2028-05-28 (+281d) | 2027-08-29 → 2028-06-07 (+283d) | 8d → 11.25d |  |  |
| 726 | **30th Floor** | 2026-10-08 → 2027-04-15 (+189d) | 2027-09-06 → 2028-07-14 (+312d) | 288.31d → 462.38d |  | constraint start no earlier than 2026-10-08 → start no earlier than 2027-04-15 |
| 727 | Block Work | 2026-10-08 → 2027-04-15 (+189d) | 2026-10-16 → 2027-04-23 (+189d) | 8d → 9d |  |  |
| 728 | Door Frame Fixing | 2026-10-16 → 2027-04-23 (+189d) | 2026-10-25 → 2027-05-02 (+189d) | 9d → 10.12d |  |  |
| 729 | Internal Plumbing Works | 2026-10-16 → 2027-04-23 (+189d) | 2026-10-24 → 2027-05-03 (+191d) | 8d → 11.25d |  |  |
| 730 | Waterproofing | 2026-10-24 → 2027-05-03 (+191d) | 2026-12-18 → 2027-05-15 (+148d) | 10d → 13.5d |  |  |
| 731 | Internal Plaster | 2026-10-22 → 2027-05-15 (+205d) | 2026-10-30 → 2027-05-24 (+206d) | 8d → 10.12d | 715, 712, 713, 714 → 715, 728, 729, 730 |  |
| 732 | IPS flooring work | 2027-01-15 → 2027-05-24 (+129d) | 2027-01-25 → 2027-06-02 (+128d) | 10d → 10.12d | 716, 728, 730, 747 → 716, 728, 730, 731 |  |
| 733 | Toilet dado work | 2026-12-26 → 2027-10-17 (+295d) | 2027-01-03 → 2027-10-25 (+295d) | 8d → 9d | 717, 730, 747 → 717, 730, 731 |  |
| 734 | Toilet flooring work | 2027-01-03 → 2027-10-25 (+295d) | 2027-01-11 → 2027-12-16 (+339d) | 8d → 7.88d |  |  |
| 735 | Living dinning flooring | 2027-02-10 → 2028-03-29 (+413d) | 2027-02-22 → 2028-04-13 (+416d) | 12d → 16.88d |  |  |
| 736 | Aluminium door-window fixing | 2027-03-02 → 2028-06-29 (+485d) | 2027-03-14 → 2028-07-14 (+488d) | 12d → 16.88d |  |  |
| 737 | Putty primer coat | 2027-02-22 → 2028-04-13 (+416d) | 2027-02-28 → 2028-04-19 (+416d) | 6d → 6.75d |  |  |
| 738 | Door shutter fixing | 2027-02-22 → 2028-04-13 (+416d) | 2027-03-02 → 2028-04-21 (+416d) | 8d → 9d |  |  |
| 739 | Electrical wiring work | 2027-08-06 → 2028-05-16 (+284d) | 2027-08-14 → 2028-05-31 (+291d) | 8d → 16.88d |  |  |
| 740 | Painting 1st coat | 2027-08-21 → 2028-05-31 (+284d) | 2027-08-29 → 2028-06-15 (+291d) | 8d → 16.88d |  |  |
| 741 | False ceiling | 2027-08-29 → 2028-06-15 (+291d) | 2027-09-06 → 2028-06-25 (+293d) | 8d → 11.25d |  |  |
| 742 | **31st Floor** | 2026-10-26 → 2027-04-27 (+183d) | 2027-09-14 → 2028-07-26 (+316d) | 278.44d → 462.38d |  | constraint start no earlier than 2026-10-26 → start no earlier than 2027-04-27 |
| 743 | Block Work | 2026-10-26 → 2027-04-27 (+183d) | 2026-12-18 → 2027-05-05 (+138d) | 8d → 9d |  |  |
| 744 | Door Frame Fixing | 2026-12-18 → 2027-05-05 (+138d) | 2026-12-27 → 2027-05-14 (+138d) | 9d → 10.12d |  |  |
| 745 | Internal Plumbing Works | 2026-12-18 → 2027-05-05 (+138d) | 2026-12-26 → 2027-05-15 (+140d) | 8d → 11.25d |  |  |
| 746 | Waterproofing | 2026-12-26 → 2027-05-15 (+140d) | 2027-01-05 → 2027-05-27 (+142d) | 10d → 13.5d |  |  |
| 747 | Internal Plaster | 2026-12-18 → 2027-05-27 (+160d) | 2026-12-26 → 2027-06-05 (+161d) | 8d → 10.12d | 731, 728, 729, 730 → 731, 744, 745, 746 |  |
| 748 | IPS flooring work | 2027-01-25 → 2027-06-05 (+131d) | 2027-02-04 → 2027-06-14 (+130d) | 10d → 10.12d | 732, 744, 746, 763 → 732, 744, 746, 747 |  |
| 749 | Toilet dado work | 2027-01-13 → 2027-10-25 (+285d) | 2027-01-21 → 2027-12-17 (+330d) | 8d → 9d | 733, 746, 763 → 733, 746, 747 |  |
| 750 | Toilet flooring work | 2027-01-21 → 2027-12-17 (+330d) | 2027-01-29 → 2027-12-24 (+329d) | 8d → 7.88d |  |  |
| 751 | Living dinning flooring | 2027-02-22 → 2028-04-13 (+416d) | 2027-03-13 → 2028-04-28 (+412d) | 19d → 16.88d |  |  |
| 752 | Aluminium door-window fixing | 2027-03-14 → 2028-07-14 (+488d) | 2027-03-26 → 2028-07-26 (+488d) | 12d → 13.5d |  |  |
| 753 | Putty primer coat | 2027-03-13 → 2028-04-28 (+412d) | 2027-03-19 → 2028-05-04 (+412d) | 6d → 6.75d |  |  |
| 754 | Door shutter fixing | 2027-03-13 → 2028-04-28 (+412d) | 2027-03-21 → 2028-05-06 (+412d) | 8d → 9d |  |  |
| 755 | Electrical wiring work | 2027-08-14 → 2028-05-31 (+291d) | 2027-08-22 → 2028-06-15 (+298d) | 8d → 16.88d |  |  |
| 756 | Painting 1st coat | 2027-08-29 → 2028-06-15 (+291d) | 2027-09-06 → 2028-06-30 (+298d) | 8d → 16.88d |  |  |
| 757 | False ceiling | 2027-09-06 → 2028-06-30 (+298d) | 2027-09-14 → 2028-07-10 (+300d) | 8d → 11.25d |  |  |
| 758 | **32nd Floor** | 2027-01-21 → 2027-05-09 (+108d) | 2027-09-22 → 2028-08-07 (+320d) | 244.62d → 462.38d |  | constraint start no earlier than 2027-01-21 → start no earlier than 2027-05-09 |
| 759 | Block Work | 2027-01-21 → 2027-05-09 (+108d) | 2027-01-29 → 2027-05-17 (+108d) | 8d → 9d | 1171, 743 → 254, 743 |  |
| 760 | Door Frame Fixing | 2027-01-29 → 2027-05-17 (+108d) | 2027-02-07 → 2027-05-26 (+108d) | 9d → 10.12d |  |  |
| 761 | Internal Plumbing Works | 2027-01-29 → 2027-05-17 (+108d) | 2027-02-06 → 2027-05-27 (+110d) | 8d → 11.25d |  |  |
| 762 | Waterproofing | 2027-02-06 → 2027-05-27 (+110d) | 2027-02-16 → 2027-06-08 (+112d) | 10d → 13.5d |  |  |
| 763 | Internal Plaster | 2027-01-05 → 2027-06-08 (+154d) | 2027-01-13 → 2027-06-17 (+155d) | 8d → 10.12d | 747, 744, 745, 746 → 747, 760, 761, 762 |  |
| 764 | IPS flooring work | 2027-02-24 → 2027-06-17 (+113d) | 2027-03-06 → 2027-06-26 (+112d) | 10d → 10.12d | 748, 760, 762, 779 → 748, 760, 762, 763 |  |
| 765 | Toilet dado work | 2027-02-24 → 2027-12-17 (+296d) | 2027-03-04 → 2027-12-25 (+296d) | 8d → 9d | 749, 762, 779 → 749, 762, 763 |  |
| 766 | Toilet flooring work | 2027-03-04 → 2027-12-25 (+296d) | 2027-03-12 → 2028-01-01 (+295d) | 8d → 7.88d |  |  |
| 767 | Living dinning flooring | 2027-03-13 → 2028-04-28 (+412d) | 2027-03-25 → 2028-05-13 (+415d) | 12d → 16.88d |  |  |
| 768 | Aluminium door-window fixing | 2027-03-26 → 2028-07-26 (+488d) | 2027-04-07 → 2028-08-07 (+488d) | 12d → 13.5d |  |  |
| 769 | Putty primer coat | 2027-03-25 → 2028-05-13 (+415d) | 2027-03-31 → 2028-05-19 (+415d) | 6d → 6.75d |  |  |
| 770 | Door shutter fixing | 2027-03-25 → 2028-05-13 (+415d) | 2027-04-02 → 2028-05-21 (+415d) | 8d → 9d |  |  |
| 771 | Electrical wiring work | 2027-08-22 → 2028-06-15 (+298d) | 2027-08-30 → 2028-06-30 (+305d) | 8d → 16.88d |  |  |

| ID | Task | Start | Finish | Duration | Predecessors | Other |
| --- | --- | --- | --- | --- | --- | --- |
| 772 | Painting 1st coat | 2027-09-06 → 2028-06-30 (+298d) | 2027-09-14 → 2028-07-15 (+305d) | 8d → 16.88d |  |  |
| 773 | False ceiling | 2027-09-14 → 2028-07-15 (+305d) | 2027-09-22 → 2028-07-25 (+307d) | 8d → 11.25d |  |  |
| 774 | **33rd Floor** | 2027-01-29 → 2027-05-21 (+112d) | 2027-09-30 → 2028-08-22 (+327d) | 244.62d → 465.75d |  | constraint start no earlier than 2027-01-29 → start no earlier than 2027-05-21 |
| 775 | Block Work | 2027-01-29 → 2027-05-21 (+112d) | 2027-02-06 → 2027-05-29 (+112d) | 8d → 9d |  |  |
| 776 | Door Frame Fixing | 2027-02-07 → 2027-05-29 (+111d) | 2027-02-16 → 2027-06-07 (+111d) | 9d → 10.12d |  |  |
| 777 | Internal Plumbing Works | 2027-02-06 → 2027-05-29 (+112d) | 2027-02-14 → 2027-06-08 (+114d) | 8d → 11.25d |  |  |
| 778 | Waterproofing | 2027-02-16 → 2027-06-08 (+112d) | 2027-02-26 → 2027-06-20 (+114d) | 10d → 13.5d |  |  |
| 779 | Internal Plaster | 2027-02-16 → 2027-06-20 (+124d) | 2027-02-24 → 2027-06-29 (+125d) | 8d → 10.12d | 763, 760, 761, 762 → 763, 776, 777, 778 |  |
| 780 | IPS flooring work | 2027-03-06 → 2027-06-29 (+115d) | 2027-03-16 → 2027-07-08 (+114d) | 10d → 10.12d | 764, 776, 778, 795 → 764, 776, 778, 779 |  |
| 781 | Toilet dado work | 2027-03-06 → 2027-12-25 (+294d) | 2027-03-14 → 2028-01-02 (+294d) | 8d → 9d | 765, 778, 795 → 765, 778, 779 |  |
| 782 | Toilet flooring work | 2027-03-14 → 2028-01-02 (+294d) | 2027-03-22 → 2028-01-09 (+293d) | 8d → 7.88d |  |  |
| 783 | Living dinning flooring | 2027-03-25 → 2028-05-13 (+415d) | 2027-04-06 → 2028-05-28 (+418d) | 12d → 16.88d |  |  |
| 784 | Aluminium door-window fixing | 2027-04-07 → 2028-08-07 (+488d) | 2027-04-19 → 2028-08-22 (+491d) | 12d → 16.88d |  |  |
| 785 | Putty primer coat | 2027-04-06 → 2028-05-28 (+418d) | 2027-04-12 → 2028-06-03 (+418d) | 6d → 6.75d |  |  |
| 786 | Door shutter fixing | 2027-04-06 → 2028-05-28 (+418d) | 2027-04-14 → 2028-06-05 (+418d) | 8d → 9d |  |  |
| 787 | Electrical wiring work | 2027-08-30 → 2028-06-30 (+305d) | 2027-09-07 → 2028-07-12 (+309d) | 8d → 13.5d |  |  |
| 788 | Painting 1st coat | 2027-09-14 → 2028-07-15 (+305d) | 2027-09-22 → 2028-07-27 (+309d) | 8d → 13.5d |  |  |
| 789 | False ceiling | 2027-09-22 → 2028-07-27 (+309d) | 2027-09-30 → 2028-08-06 (+311d) | 8d → 11.25d |  |  |
| 790 | **34th Floor** | 2027-02-06 → 2027-06-02 (+116d) | 2027-10-08 → 2028-09-06 (+334d) | 244.62d → 469.12d |  | constraint start no earlier than 2027-02-06 → start no earlier than 2027-06-02 |
| 791 | Block Work | 2027-02-06 → 2027-06-02 (+116d) | 2027-02-14 → 2027-06-10 (+116d) | 8d → 9d |  |  |
| 792 | Door Frame Fixing | 2027-02-16 → 2027-06-10 (+114d) | 2027-02-25 → 2027-06-19 (+114d) | 9d → 10.12d |  |  |
| 793 | Internal Plumbing Works | 2027-02-14 → 2027-06-10 (+116d) | 2027-02-22 → 2027-06-20 (+118d) | 8d → 11.25d |  |  |
| 794 | Waterproofing | 2027-02-26 → 2027-06-20 (+114d) | 2027-03-08 → 2027-07-02 (+116d) | 10d → 13.5d |  |  |
| 795 | Internal Plaster | 2027-02-26 → 2027-07-02 (+126d) | 2027-03-06 → 2027-07-11 (+127d) | 8d → 10.12d | 779, 776, 777, 778 → 779, 792, 793, 794 |  |
| 796 | IPS flooring work | 2027-03-16 → 2027-07-11 (+117d) | 2027-03-26 → 2027-07-20 (+116d) | 10d → 10.12d | 780, 792, 794, 811 → 780, 792, 794, 795 |  |
| 797 | Toilet dado work | 2027-03-16 → 2028-01-02 (+292d) | 2027-03-24 → 2028-01-10 (+292d) | 8d → 9d | 781, 794, 811 → 781, 794, 795 |  |
| 798 | Toilet flooring work | 2027-03-24 → 2028-01-10 (+292d) | 2027-04-01 → 2028-01-17 (+291d) | 8d → 7.88d |  |  |
| 799 | Living dinning flooring | 2027-04-06 → 2028-05-28 (+418d) | 2027-04-26 → 2028-06-12 (+413d) | 20d → 16.88d |  |  |
| 800 | Aluminium door-window fixing | 2027-04-26 → 2028-08-22 (+484d) | 2027-05-08 → 2028-09-06 (+487d) | 12d → 16.88d |  |  |
| 801 | Putty primer coat | 2027-04-26 → 2028-06-12 (+413d) | 2027-05-02 → 2028-06-18 (+413d) | 6d → 6.75d |  |  |
| 802 | Door shutter fixing | 2027-04-26 → 2028-06-12 (+413d) | 2027-05-04 → 2028-06-20 (+413d) | 8d → 9d |  |  |
| 803 | Electrical wiring work | 2027-09-07 → 2028-07-12 (+309d) | 2027-09-15 → 2028-07-24 (+313d) | 8d → 13.5d |  |  |
| 804 | Painting 1st coat | 2027-09-22 → 2028-07-27 (+309d) | 2027-09-30 → 2028-08-08 (+313d) | 8d → 13.5d |  |  |
| 805 | False ceiling | 2027-09-30 → 2028-08-08 (+313d) | 2027-10-08 → 2028-08-18 (+315d) | 8d → 11.25d |  |  |
| 806 | **35th Floor** | 2027-02-14 → 2027-06-14 (+120d) | 2027-10-16 → 2028-09-21 (+341d) | 244.62d → 472.5d |  | constraint start no earlier than 2027-02-14 → start no earlier than 2027-06-14 |
| 807 | Block Work | 2027-02-14 → 2027-06-14 (+120d) | 2027-02-22 → 2027-06-22 (+120d) | 8d → 9d |  |  |
| 808 | Door Frame Fixing | 2027-02-25 → 2027-06-22 (+117d) | 2027-03-06 → 2027-07-01 (+117d) | 9d → 10.12d |  |  |
| 809 | Internal Plumbing Works | 2027-02-22 → 2027-06-22 (+120d) | 2027-03-02 → 2027-07-02 (+122d) | 8d → 11.25d |  |  |
| 810 | Waterproofing | 2027-03-08 → 2027-07-02 (+116d) | 2027-03-18 → 2027-07-14 (+118d) | 10d → 13.5d |  |  |
| 811 | Internal Plaster | 2027-03-08 → 2027-08-09 (+154d) | 2027-03-16 → 2027-08-18 (+155d) | 8d → 10.12d | 795, 792, 793, 794 → 216FF+135d, 795FS+0.25d, 808FS+0.25d, 809FS+0.25d, 810FS+0.25d |  |
| 812 | IPS flooring work | 2027-04-02 → 2027-08-18 (+138d) | 2027-04-12 → 2027-08-27 (+137d) | 10d → 10.12d | 796, 808, 810, 827 → 796, 808, 810, 811 |  |
| 813 | Toilet dado work | 2027-04-02 → 2028-01-10 (+283d) | 2027-04-10 → 2028-01-18 (+283d) | 8d → 9d | 797, 810, 827 → 797, 810, 811 |  |
| 814 | Toilet flooring work | 2027-04-10 → 2028-01-18 (+283d) | 2027-04-18 → 2028-01-25 (+282d) | 8d → 7.88d |  |  |
| 815 | Living dinning flooring | 2027-04-26 → 2028-06-12 (+413d) | 2027-05-16 → 2028-06-27 (+408d) | 20d → 16.88d | 799, 808, 814 → 216FF+191.25d, 799FS+0.25d, 808FS+0.25d |  |
| 816 | Aluminium door-window fixing | 2027-05-16 → 2028-09-06 (+479d) | 2027-05-28 → 2028-09-21 (+482d) | 12d → 16.88d |  |  |
| 817 | Putty primer coat | 2027-05-16 → 2028-06-27 (+408d) | 2027-05-22 → 2028-07-03 (+408d) | 6d → 6.75d |  |  |
| 818 | Door shutter fixing | 2027-05-16 → 2028-06-27 (+408d) | 2027-05-24 → 2028-07-05 (+408d) | 8d → 9d |  |  |
| 819 | Electrical wiring work | 2027-09-15 → 2028-07-24 (+313d) | 2027-09-23 → 2028-08-05 (+317d) | 8d → 13.5d |  |  |
| 820 | Painting 1st coat | 2027-09-30 → 2028-08-08 (+313d) | 2027-10-08 → 2028-08-20 (+317d) | 8d → 13.5d |  |  |
| 821 | False ceiling | 2027-10-08 → 2028-08-20 (+317d) | 2027-10-16 → 2028-08-30 (+319d) | 8d → 11.25d |  |  |
| 822 | **Terrace Finishing** | 2026-10-19 → 2027-04-20 (+183d) | 2027-02-21 → 2027-07-09 (+138d) | 79.88d → 90d |  | constraint start no earlier than 2026-10-19 → start no earlier than 2027-04-20 |
| 823 | Terrace waterproofing | 2026-10-19 → 2027-04-20 (+183d) | 2027-01-12 → 2027-05-30 (+138d) | 39.94d → 45d | 221 → 216 |  |
| 824 | Terrace finishing | 2027-01-12 → 2027-05-30 (+138d) | 2027-02-21 → 2027-07-09 (+138d) | 39.94d → 45d |  |  |
| 825 | **Common Area Finishing** | 2026-01-14 → 2027-05-30 (+501d) | 2027-10-21 → 2028-04-09 (+171d) | 600.38d → 303.75d |  | constraint start no earlier than 2026-01-14 → start no earlier than 2027-05-30 |
| 826 | Block Work | 2026-01-14 → 2027-05-30 (+501d) | 2026-02-23 → 2027-07-29 (+521d) | 39.94d → 67.5d | 227FS+0.25d → 221 |  |
| 827 | Internal Plaster | 2027-03-18 → 2027-07-29 (+133d) | 2027-04-02 → 2028-01-10 (+283d) | 15d → 135d | 811, 808, 809, 810 → 832SS+45d |  |
| 828 | Staircase railing fixing | 2026-05-23 → 2027-10-22 (+517d) | 2026-10-20 → 2028-03-05 (+502d) | 149.94d → 101.25d | 830SS+26.75d, 829SS+26.75d → 830SS+11.25d, 829SS+11.25d |  |
| 829 | Main staircase flooring | 2026-04-27 → 2027-10-12 (+533d) | 2026-09-24 → 2028-02-24 (+518d) | 149.94d → 101.25d | 830SS+13.38d → 830SS+16.88d |  |
| 830 | Fire staircase flooring | 2026-04-13 → 2027-09-27 (+532d) | 2026-09-10 → 2028-04-09 (+577d) | 149.94d → 168.75d | 1184SS+13.38d, 834SS+26.75d → 827SS+16.88d, 834SS+33.75d |  |
| 831 | Fire door work | 2026-05-23 → 2027-12-26 (+582d) | 2026-07-22 → 2028-02-24 (+582d) | 59.94d → 67.5d | 829SS+26.75d, 830SS+26.75d → 829SS+33.75d, 830SS+33.75d |  |
| 832 | Electrical wiring work | 2026-02-01 → 2027-06-19 (+503d) | 2026-06-01 → 2027-10-17 (+503d) | 119.94d → 135d | 826SS+17.88d → 826SS+22.5d |  |
| 833 | Lobby flooring | 2026-07-25 → 2027-06-23 (+333d) | 2027-06-05 → 2028-01-04 (+213d) | 270d → 168.75d | 815FF+20d → 832SS+4.12d |  |
| 834 | Ceiling & wall putty-primer | 2026-03-18 → 2027-08-28 (+528d) | 2026-07-05 → 2028-01-30 (+574d) | 109.94d → 123.75d | 1184SS+26.75d → 827SS+33.75d |  |
| 835 | Ceiling & wall painting | 2026-04-04 → 2027-09-17 (+531d) | 2026-07-13 → 2028-02-09 (+576d) | 99.94d → 112.5d | 834SS+17.88d → 834SS+22.5d |  |
| 836 | Light fixture supply & installation | 2027-03-25 → 2027-12-31 (+281d) | 2027-10-21 → 2028-02-14 (+116d) | 210d → 50.62d | 835SS+310d → 835SS+67.5d |  |
| 837 | **Balcony Glass Railing** | 2025-12-01 → 2027-12-22 (+751d) | 2027-11-01 → 2028-03-01 (+121d) | 646.38d → 78.75d |  | constraint start no earlier than 2025-12-01 → start no earlier than 2027-12-22 |
| 838 | 1st Floor | 2027-08-25 → 2027-12-22 (+119d) | 2027-08-27 → 2027-12-24 (+119d) | 1.94d → 2.25d |  |  |
| 839 | 2nd Floor | 2027-08-27 → 2027-12-24 (+119d) | 2027-08-29 → 2027-12-26 (+119d) | 1.94d → 2.25d |  |  |
| 840 | 3rd Floor | 2027-08-29 → 2027-12-26 (+119d) | 2027-08-31 → 2027-12-28 (+119d) | 1.94d → 2.25d |  |  |
| 841 | 4th Floor | 2027-08-31 → 2027-12-28 (+119d) | 2027-09-02 → 2027-12-30 (+119d) | 1.94d → 2.25d |  |  |

| ID | Task | Start | Finish | Duration | Complete | Predecessors | Other |
| --- | --- | --- | --- | --- | --- | --- | --- |
| 842 | 5th Floor | 2027-09-02 → 2027-12-30 (+119d) | 2027-09-04 → 2028-01-01 (+119d) | 1.94d → 2.25d |  |  |  |
| 843 | 6th Floor | 2027-09-04 → 2028-01-01 (+119d) | 2027-09-06 → 2028-01-03 (+119d) | 1.94d → 2.25d |  |  |  |
| 844 | 7th Floor | 2027-09-06 → 2028-01-03 (+119d) | 2027-09-08 → 2028-01-05 (+119d) | 1.94d → 2.25d |  |  |  |
| 845 | 8th Floor | 2027-09-08 → 2028-01-05 (+119d) | 2027-09-10 → 2028-01-07 (+119d) | 1.94d → 2.25d |  |  |  |
| 846 | 9th Floor | 2027-09-10 → 2028-01-07 (+119d) | 2027-09-12 → 2028-01-09 (+119d) | 1.94d → 2.25d |  |  |  |
| 847 | 10th Floor | 2027-09-12 → 2028-01-09 (+119d) | 2027-09-14 → 2028-01-11 (+119d) | 1.94d → 2.25d |  |  |  |
| 848 | 11th Floor | 2027-09-14 → 2028-01-11 (+119d) | 2027-09-16 → 2028-01-13 (+119d) | 1.94d → 2.25d |  |  |  |
| 849 | 12th Floor | 2027-09-16 → 2028-01-13 (+119d) | 2027-09-18 → 2028-01-15 (+119d) | 1.94d → 2.25d |  |  |  |
| 850 | 13th Floor | 2027-09-18 → 2028-01-15 (+119d) | 2027-09-20 → 2028-01-17 (+119d) | 1.94d → 2.25d |  |  |  |
| 851 | 14th Floor | 2027-09-20 → 2028-01-17 (+119d) | 2027-09-22 → 2028-01-19 (+119d) | 1.94d → 2.25d |  |  |  |
| 852 | 15th Floor | 2027-09-22 → 2028-01-19 (+119d) | 2027-09-23 → 2028-01-21 (+120d) | 1.94d → 2.25d |  |  |  |
| 853 | 16th Floor | 2027-09-24 → 2028-01-21 (+119d) | 2027-09-25 → 2028-01-23 (+120d) | 1.94d → 2.25d |  |  |  |
| 854 | 17th Floor | 2027-09-25 → 2028-01-23 (+120d) | 2027-09-27 → 2028-01-25 (+120d) | 1.94d → 2.25d |  |  |  |
| 855 | 18th Floor | 2027-09-27 → 2028-01-25 (+120d) | 2027-09-29 → 2028-01-27 (+120d) | 1.94d → 2.25d |  |  |  |
| 856 | 19th Floor | 2027-09-29 → 2028-01-27 (+120d) | 2027-10-01 → 2028-01-29 (+120d) | 1.94d → 2.25d |  |  |  |
| 857 | 20th Floor | 2027-10-01 → 2028-01-29 (+120d) | 2027-10-03 → 2028-01-31 (+120d) | 1.94d → 2.25d |  |  |  |
| 858 | 21st Floor | 2027-10-03 → 2028-01-31 (+120d) | 2027-10-05 → 2028-02-02 (+120d) | 1.94d → 2.25d |  |  |  |
| 859 | 22nd Floor | 2027-10-05 → 2028-02-02 (+120d) | 2027-10-07 → 2028-02-04 (+120d) | 1.94d → 2.25d |  |  |  |
| 860 | 23rd Floor | 2027-10-07 → 2028-02-04 (+120d) | 2027-10-09 → 2028-02-06 (+120d) | 1.94d → 2.25d |  |  |  |
| 861 | 24th Floor | 2027-10-09 → 2028-02-06 (+120d) | 2027-10-11 → 2028-02-08 (+120d) | 1.94d → 2.25d |  |  |  |
| 862 | 25th Floor | 2027-10-11 → 2028-02-08 (+120d) | 2027-10-13 → 2028-02-10 (+120d) | 1.94d → 2.25d |  |  |  |
| 863 | 26th Floor | 2027-10-13 → 2028-02-10 (+120d) | 2027-10-15 → 2028-02-12 (+120d) | 1.94d → 2.25d |  |  |  |
| 864 | 27th Floor | 2027-10-15 → 2028-02-12 (+120d) | 2027-10-17 → 2028-02-14 (+120d) | 1.94d → 2.25d |  |  |  |
| 865 | 28th Floor | 2027-10-17 → 2028-02-14 (+120d) | 2027-10-19 → 2028-02-16 (+120d) | 1.94d → 2.25d |  |  |  |
| 866 | 29th Floor | 2025-12-01 → 2028-02-16 (+807d) | 2025-12-05 → 2028-02-18 (+805d) | 5d → 2.25d |  | none → 865 | constraint start no earlier than 2025-12-01 → none |
| 867 | 30th Floor | 2027-10-21 → 2028-02-18 (+120d) | 2027-10-23 → 2028-02-20 (+120d) | 1.94d → 2.25d |  | 1168 → 866 |  |
| 868 | 31st Floor | 2026-03-16 → 2028-02-20 (+706d) | 2026-03-20 → 2028-02-22 (+704d) | 5d → 2.25d |  | none → 867 | constraint start no earlier than 2026-03-16 → none |
| 869 | 32nd Floor | 2028-02-03 → 2028-02-22 (+19d) | 2028-02-05 → 2028-02-24 (+19d) | 1.94d → 2.25d |  | 2087 → 868 |  |
| 870 | 33rd Floor | 2027-10-26 → 2028-02-24 (+121d) | 2027-10-28 → 2028-02-26 (+121d) | 1.94d → 2.25d |  | 254 → 869 |  |
| 871 | 34th Floor | 2027-10-28 → 2028-02-26 (+121d) | 2027-10-30 → 2028-02-28 (+121d) | 1.94d → 2.25d |  |  |  |
| 872 | 35th Floor | 2027-10-30 → 2028-02-28 (+121d) | 2027-11-01 → 2028-03-01 (+121d) | 1.94d → 2.25d |  |  |  |
| 873 | **MEP work** | 2025-11-30 → 2027-05-30 (+546d) | 2028-11-21 → 2028-06-08 (-166d) | 1033.25d → 370.38d |  |  | constraint start no earlier than 2025-11-30 → start no earlier than 2027-05-30 |
| 874 | **Electrical work** | 2027-01-14 → 2027-05-30 (+136d) | 2027-10-09 → 2028-03-16 (+159d) | 268.19d → 275.88d |  |  | constraint start no earlier than 2027-01-14 → start no earlier than 2027-05-30 |
| 875 | Cable Tray | 2027-01-14 → 2027-05-30 (+136d) | 2027-04-14 → 2027-09-27 (+166d) | 89.94d → 135d |  | 934 → 221 |  |
| 876 | Cable, main & sub main | 2027-02-23 → 2027-07-14 (+141d) | 2027-05-14 → 2027-10-02 (+141d) | 79.94d → 90d |  | 875SS+40d → 875SS+50.62d |  |
| 877 | LT panel & DB | 2027-04-14 → 2027-09-27 (+166d) | 2027-08-12 → 2028-03-10 (+211d) | 119.94d → 135d |  |  |  |
| 878 | Rising main | 2027-06-06 → 2027-07-29 (+53d) | 2027-09-04 → 2028-01-10 (+128d) | 89.94d → 135d |  | 875FS+53.38d → 875FF+67.5d |  |
| 879 | EARTHING Works | 2027-04-27 → 2027-10-12 (+168d) | 2027-06-26 → 2028-01-25 (+213d) | 59.94d → 67.5d |  | 875FS+13.38d → 875FS+16.88d |  |
| 880 | Advance lightening protection | 2027-02-21 → 2027-07-09 (+138d) | 2027-04-22 → 2027-09-07 (+138d) | 59.94d → 67.5d |  |  |  |
| 881 | Inverter | 2027-09-04 → 2028-01-25 (+143d) | 2027-10-09 → 2028-02-29 (+143d) | 34.94d → 39.38d |  |  |  |
| 882 | Energy meter | 2027-05-14 → 2027-10-02 (+141d) | 2027-07-13 → 2028-01-15 (+186d) | 59.94d → 67.5d |  |  |  |
| 884 | FTTH | 2027-06-17 → 2028-01-15 (+212d) | 2027-08-16 → 2028-03-15 (+212d) | 59.94d → 67.5d |  | 879FS-9d → 879FS-11.25d |  |
| 885 | Security System - FA & PA | 2027-08-12 → 2028-01-21 (+162d) | 2027-10-05 → 2028-03-16 (+163d) | 54.94d → 61.88d |  | 877, 884FF → 877FF, 884FF+0.25d |  |
| 886 | Solar water heater | 2027-02-21 → 2027-07-09 (+138d) | 2027-04-22 → 2027-09-07 (+138d) | 59.94d → 67.5d |  |  |  |
| 888 | Terrace looping | 2027-01-12 → 2027-05-30 (+138d) | 2027-02-26 → 2027-07-14 (+138d) | 44.94d → 50.62d |  |  |  |
| 889 | Shaft Plumbing | 2027-02-26 → 2027-07-14 (+138d) | 2027-06-26 → 2027-12-26 (+183d) | 119.94d → 135d |  |  |  |
| 890 | CP sanitary fixture supply | 2027-06-10 → 2028-03-25 (+289d) | 2027-08-24 → 2028-06-08 (+289d) | 75d → 84.38d |  | 827, 814FS+53.38d → 811, 814FS+67.5d |  |
| 891 | Cold & flushing water supply | 2025-11-30 → 2027-10-27 (+696d) | 2026-03-09 → 2028-03-10 (+732d) | 89.94d → 101.25d |  | 1184SS-80d → 827SS+101.25d |  |
| 892 | Misc work | 2026-02-28 → 2028-02-28 (+730d) | 2026-03-30 → 2028-03-29 (+730d) | 29.94d → 33.75d |  | 891FS-9d → 891FS-12.38d |  |
| 893 | **Fire fighting work** | 2026-02-19 → 2027-05-30 (+465d) | 2027-11-16 → 2027-12-21 (+35d) | 589.94d → 180d |  |  | constraint start no earlier than 2026-02-19 → start no earlier than 2027-05-30 |
| 894 | Fire hydrant work | 2026-02-19 → 2027-08-08 (+535d) | 2026-05-20 → 2027-09-17 (+485d) | 89.94d → 45d |  | 1184SS+0.38d → 827SS+11.25d |  |
| 895 | Sprinkler & piping work | 2027-03-21 → 2027-09-27 (+190d) | 2027-11-16 → 2027-12-21 (+35d) | 240d → 45d |  | 894FS+260d → 894FS+11.25d |  |
| 896 | Shaft Downtake works | 2027-01-12 → 2027-05-30 (+138d) | 2027-04-12 → 2027-08-28 (+138d) | 89.94d → 101.25d |  |  |  |
| 897 | Connection to pump room | 2027-04-12 → 2027-08-28 (+138d) | 2027-05-12 → 2027-09-27 (+138d) | 29.94d → 33.75d |  |  |  |
| 898 | **Lift work** | 2027-01-14 → 2027-05-30 (+136d) | 2027-11-15 → 2027-12-31 (+46d) | 304.88d → 191.25d |  |  | constraint start no earlier than 2027-01-14 → start no earlier than 2027-05-30 |
| 899 | Lift Shaft Handover | 2027-01-14 → 2027-05-30 (+136d) | 2027-02-23 → 2027-07-09 (+136d) | 39.94d → 45d |  | 934 → 221 |  |
| 900 | Lift installation work | 2027-02-23 → 2027-07-09 (+136d) | 2027-08-22 → 2027-08-23 (+1d) | 180d → 50.62d |  |  |  |
| 901 | Lift testing and commissioning | 2027-08-22 → 2027-08-23 (+1d) | 2027-11-15 → 2027-12-31 (+46d) | 84.94d → 95.62d |  |  |  |
| 902 | **AC work** | 2028-09-19 → 2028-04-01 (-171d) | 2028-11-21 → 2028-05-31 (-174d) | 62.94d → 67.5d |  |  | constraint start no earlier than 2028-09-19 → start no earlier than 2028-04-01 |
| 903 | Split AC | 2028-09-19 → 2028-04-01 (-171d) | 2028-11-21 → 2028-05-31 (-174d) | 62.94d → 67.5d |  | 919FS+132d → 919FS-67.5d |  |
| 904 | **Tower Completion** | 2027-02-27 → 2027-07-10 (+133d) | 2027-11-19 → 2028-02-20 (+93d) | 265.88d → 202.5d |  |  | constraint start no earlier than 2027-02-27 → start no earlier than 2027-07-10 |
| 905 | SURFACE PREPARATION | 2027-02-27 → 2027-07-10 (+133d) | 2027-05-17 → 2027-08-09 (+84d) | 79.94d → 33.75d |  | 259FS+1.88d → 259FS+2.25d |  |
| 906 | External Painting | 2027-05-18 → 2027-08-09 (+83d) | 2027-08-25 → 2027-12-22 (+119d) | 99.94d → 101.25d |  |  |  |
| 907 | Final coat of painting | 2027-08-25 → 2027-12-22 (+119d) | 2027-11-19 → 2028-02-20 (+93d) | 86d → 67.5d |  |  |  |
| 908 | Misc. work | 2027-08-25 → 2027-12-22 (+119d) | 2027-10-24 → 2028-02-20 (+119d) | 59.94d → 67.5d |  |  |  |
| 909 | **Basement lobby** | 2026-07-03 → 2028-01-04 (+550d) | 2026-09-01 → 2028-05-03 (+610d) | 60d → 135d |  |  | constraint start no earlier than 2026-07-03 → start no earlier than 2028-01-04 |
| 910 | Basement lobby | 2026-07-03 → 2028-01-04 (+550d) | 2026-09-01 → 2028-05-03 (+610d) | 60d → 135d |  | 2667 → 833 |  |
| 911 | **Post OC activities** | 2028-04-13 → 2023-05-13 (-1797d) | 2029-02-09 → 2028-12-03 (-68d) | 301.69d → 2137.53d | 0% → 58% |  | constraint start no earlier than 2028-04-13 → start no earlier than 2023-05-13 |
| 913 | Waterproofing | 2025-12-22 → 2023-05-13 (-954d) | 2025-12-30 → 2028-09-06 (+981d) | 8d → 1129.5d | 0% → 91% | 1182 → 919FS-1971.03d, 890FS-1937.28d |  |
| 914 | Wooden Flooring | 2028-09-19 → 2028-05-01 (-141d) | 2029-02-09 → 2028-08-29 (-164d) | 142.94d → 135d |  | 919FS+132d → 919FS-33.75d |  |

| ID | Task | Start | Finish | Duration | Complete | Predecessors | Other |
| --- | --- | --- | --- | --- | --- | --- | --- |
| 915 | Electrical Fixtures And Fittings | 2028-03-27 → 2028-08-05 (+131d) | 2028-06-10 → 2028-12-03 (+176d) | 74.94d → 135d |  | 2653 → 819 |  |
| 916 | Modular Kitchen | 2028-09-19 → 2028-05-01 (-141d) | 2029-02-09 → 2028-08-29 (-164d) | 142.94d → 135d |  | 919FS+132d → 912SS |  |
| 918 | OC Application/Readiness | 2027-11-16 → 2028-03-30 (+135d) | 2027-11-17 → 2028-03-31 (+135d) | 0.94d → 1.12d |  | 934, 828FS+7.12d, 901, 821, 1800, 885, 886, 881, 880, 872FS-44.5d, 33, 831, 889, 892, 895, 897, 908 → 221FS+0.25d, 828FS+9d, 901FS+0.25d, 33FS+0.25d, 831FS+0.25d, 872FS+0.25d, 880FS+0.25d, 881FS+0.25d, 883FS+0.25d, 885FS+0.25d, 886FS+0.25d, 889FS+0.25d, 892FS+0.25d, 895FS+0.25d, 897FS+0.25d, 908FS+0.25d |  |
| 919 | OC Receipt | 2028-05-10 → 2028-05-30 (+20d) | 2028-05-10 → 2028-05-31 (+21d) | 0d → 1.12d |  | 918FS+53.38d, 907, Entrance lobby → 918FS+67.5d, 907, 910 |  |
| 920 | Offer To Possession | 2029-02-09 → 2028-12-03 (-68d) | 2029-03-11 → 2029-01-02 (-68d) | 29.94d → 33.75d |  | Wardrobe installation, Home Automation, 914, Shaft Closer, 916, External Elevation Façade, 903 → 912, 913, 914, 915, 916, 917, 903 |  |
| 921 | **Tower 4** | 2023-09-30 → 2023-12-06 (+67d) | 2029-08-27 → 2028-12-30 (-240d) | 2016.19d → 1935.14d | 6% → 12% |  | constraint start no earlier than 2023-09-30 → start no earlier than 2023-12-06 |
| 922 | **Substructure** | 2023-09-30 → 2024-05-14 (+227d) | 2026-04-18 → 2026-05-08 (+20d) | 833.69d → 769.5d | 60% → 74% |  | constraint start no earlier than 2023-09-30 → start no earlier than 2024-05-14 |
| 923 | **Soil Bed Preparation** | 2023-09-30 → 2024-05-14 (+227d) | 2026-02-07 → 2026-02-24 (+17d) | 763.81d → 687.38d | 77% → 81% |  | constraint start no earlier than 2023-09-30 → start no earlier than 2024-05-14 |
| 924 | Test Piling | 2023-09-30 → 2024-05-14 (+227d) | 2023-10-24 → 2024-08-16 (+297d) | 24.94d → 106.69d |  | none → 7SS | constraint start no earlier than 2023-09-30 → start no earlier than 2024-05-14 |
| 925 | Excavation | 2024-01-10 → 2024-06-26 (+168d) | 2024-02-08 → 2024-07-25 (+168d) | 29.94d → 33.56d |  | 7SS+36.74d → 924SS+43d | constraint start no earlier than 2024-01-10 → start no earlier than 2024-06-26 |
| 926 | Main Piling Work | 2024-04-12 → 2024-09-01 (+142d) | 2024-12-23 → 2025-03-06 (+73d) | 168.94d → 169.88d |  | 7FS-7.45d → 924FS+15d | constraint start no earlier than 2024-04-12 → start no earlier than 2024-09-01 |
| 927 | Anti-termite | 2025-11-30 → 2025-12-27 (+27d) | 2025-12-04 → 2025-12-31 (+27d) | 5d → 5.62d |  | 926FS+13.38d → 926FF+2d |  |
| 928 | PCC | 2024-10-25 → 2025-03-23 (+149d) | 2024-10-28 → 2025-03-31 (+154d) | 3.01d → 9d |  | 925FS-14.7d, 927SS+2.98d → 925FS+0.25d | constraint start no earlier than 2024-10-25 → start no earlier than 2025-03-23 |
| 929 | Backfilling | 2025-11-30 → 2025-12-27 (+27d) | 2026-02-07 → 2026-02-24 (+17d) | 59.94d → 67.5d |  | 946FS-0.94d → 942 |  |
| 930 | **RCC Structure** | 2024-12-21 → 2025-03-15 (+84d) | 2025-04-24 → 2025-10-15 (+174d) | 124.5d → 241.88d |  |  | constraint start no earlier than 2024-12-21 → start no earlier than 2025-03-15 |
| 931 | **Raft Foundation** | 2024-12-21 → 2025-03-15 (+84d) | 2025-01-26 → 2025-05-24 (+118d) | 36.5d → 79.88d |  |  | constraint start no earlier than 2024-12-21 → start no earlier than 2025-03-15 |
| 932 | Reinforcement | 2024-12-21 → 2025-03-15 (+84d) | 2025-01-22 → 2025-03-31 (+68d) | 23d → 19.12d |  | 928FS-31.15d → 928FS-2.25d | constraint start no earlier than 2024-12-21 → start no earlier than 2025-03-15 |
| 933 | Formwork | 2024-12-31 → 2025-04-21 (+111d) | 2025-01-23 → 2025-05-22 (+119d) | 24d → 36d |  | 932FF+2d → 932FF+11.25d | constraint start no earlier than 2024-12-31 → start no earlier than 2025-04-21 |
| 934 | Concreting | 2027-01-11 → 2025-05-22 (-599d) | 2027-01-14 → 2025-05-24 (-600d) | 2.94d → 3.38d | 0% → 100% | 220 → 933FS-3.38d | constraint none → start no earlier than 2025-05-22 |
| 935 | **Basement 1 Slab** | 2025-01-25 → 2025-04-16 (+81d) | 2025-02-19 → 2025-06-12 (+113d) | 26d → 65.25d |  |  | constraint start no earlier than 2025-01-25 → start no earlier than 2025-04-16 |
| 936 | Reinforcement | 2025-01-25 → 2025-05-24 (+119d) | 2025-02-15 → 2025-06-12 (+117d) | 22d → 22.5d |  | 938 → 934 | constraint start no earlier than 2025-01-25 → start no earlier than 2025-05-24 |
| 937 | Formwork | 2025-01-31 → 2025-04-16 (+75d) | 2025-02-18 → 2025-05-05 (+76d) | 19d → 22.5d |  | 936SS+3d → 936SS+1.12d | constraint start no earlier than 2025-01-31 → start no earlier than 2025-04-16 |
| 938 | Concreting | 2025-01-23 → 2025-05-06 (+103d) | 2025-01-26 → 2025-05-09 (+103d) | 4d → 4.5d |  | 933FS-1d → 937 | constraint start no earlier than 2025-01-23 → start no earlier than 2025-05-06 |
| 939 | **Basement 2 Slab/GF** | 2025-02-17 → 2025-05-10 (+82d) | 2025-03-10 → 2025-09-04 (+178d) | 21.94d → 132.75d |  |  | constraint start no earlier than 2025-02-17 → start no earlier than 2025-05-10 |
| 940 | Reinforcement | 2025-02-17 → 2025-05-10 (+82d) | 2025-03-09 → 2025-09-03 (+178d) | 19d → 131.62d |  | 942FS-1d → 938 | constraint start no earlier than 2025-02-17 → start no earlier than 2025-05-10 |
| 941 | Formwork | 2025-02-20 → 2025-05-11 (+80d) | 2025-03-09 → 2025-09-03 (+178d) | 18d → 130.5d |  | 940SS+3d → 940SS+1.12d | constraint start no earlier than 2025-02-20 → start no earlier than 2025-05-11 |
| 942 | Concreting | 2025-02-16 → 2025-05-31 (+104d) | 2025-02-19 → 2025-09-04 (+197d) | 4d → 109.12d |  | 937FS+6.4d → 941 | constraint start no earlier than 2025-02-16 → start no earlier than 2025-05-31 |
| 943 | **Podium /Ground Floor Slab** | 2025-02-20 → 2025-06-26 (+126d) | 2025-03-29 → 2025-10-15 (+200d) | 38d → 126d |  |  | constraint start no earlier than 2025-02-20 → start no earlier than 2025-06-26 |
| 944 | Reinforcement | 2025-03-11 → 2025-09-01 (+174d) | 2025-04-21 → 2025-10-14 (+176d) | 15d → 21.38d |  | 946FS+0.06d → 942 | constraint start no earlier than 2025-03-11 → start no earlier than 2025-09-01 |
| 945 | Formwork | 2025-03-17 → 2025-09-03 (+170d) | 2025-04-21 → 2025-10-14 (+176d) | 15d → 21.38d |  | 944SS+1d → 944SS+1.12d | constraint start no earlier than 2025-03-17 → start no earlier than 2025-09-03 |
| 946 | Concreting | 2025-03-09 → 2025-06-26 (+109d) | 2025-03-10 → 2025-10-15 (+219d) | 1.94d → 4.5d |  | 941FS-1d → 945FS-124.88d | constraint start no earlier than 2025-03-09 → start no earlier than 2025-06-26 |
| 947 | **Substructure Finishing** | 2025-11-30 → 2025-12-30 (+30d) | 2026-04-18 → 2026-05-08 (+20d) | 129.81d → 146.25d |  |  | constraint start no earlier than 2025-11-30 → start no earlier than 2025-12-30 |
| 948 | Masonary work | 2025-11-30 → 2025-12-30 (+30d) | 2026-01-23 → 2026-02-12 (+20d) | 44.94d → 50.62d |  | 958FS+26.75d → 946FS+33.75d |  |
| 949 | Plaster | 2026-01-23 → 2026-02-13 (+21d) | 2026-03-04 → 2026-03-24 (+20d) | 39.94d → 45d |  |  |  |
| 950 | Structural steel | 2025-11-30 → 2026-01-29 (+60d) | 2026-02-07 → 2026-03-29 (+50d) | 59.94d → 67.5d |  | 958FS+53.38d → 946FS+67.5d |  |
| 951 | White Wash | 2026-03-04 → 2026-03-25 (+21d) | 2026-04-18 → 2026-05-08 (+20d) | 44.94d → 50.62d |  |  |  |
| 952 | **Superstructure** | 2025-04-25 → 2025-10-10 (+168d) | 2029-05-06 → 2028-08-27 (-252d) | 1405.06d → 1036.26d | 3% → 0% |  | constraint start no earlier than 2025-04-25 → start no earlier than 2025-10-10 |
| 953 | **RCC structure** | 2025-04-25 → 2025-10-10 (+168d) | 2027-01-17 → 2027-05-28 (+131d) | 564.75d → 573.64d | 29% → 5% |  | constraint start no earlier than 2025-04-25 → start no earlier than 2025-10-10 |
| 954 | **1st floor slab** | 2025-04-25 → 2025-10-10 (+168d) | 2025-07-03 → 2026-01-25 (+206d) | 69.25d → 75.26d | 100% → 30% |  | constraint start no earlier than 2025-04-25 → start no earlier than 2025-10-10 |
| 955 | Reinforcement | 2025-04-25 → 2025-10-10 (+168d) | 2025-06-01 → 2026-01-23 (+236d) | 20d → 52.88d | 100% → 40% | 958FS+2.75d → 946FS-6.75d | constraint start no earlier than 2025-04-25 → start no earlier than 2025-10-10 |
| 956 | Wall conduiting | 2025-04-28 → 2025-10-13 (+168d) | 2025-05-02 → 2026-01-23 (+266d) | 4d → 33.75d | 100% → 6% | 955SS+2.75d → 955SS+3.38d | constraint start no earlier than 2025-04-28 → start no earlier than 2025-10-13 |
| 957 | Formwork | 2025-04-28 → 2025-10-13 (+168d) | 2025-07-03 → 2026-01-24 (+205d) | 35d → 51.75d | 100% → 36% | 955SS+3d → 955SS+3.38d | constraint start no earlier than 2025-04-28 → start no earlier than 2025-10-13 |
| 958 | Concreting | 2025-04-24 → 2025-10-14 (+173d) | 2025-04-24 → 2026-01-25 (+276d) | 1d → 1.12d | 100% → 10% | 945 → 957FS-69.75d | constraint start no earlier than 2025-04-24 → none |
| 959 | **2nd floor slab** | 2025-07-07 → 2025-11-06 (+122d) | 2025-08-22 → 2026-02-24 (+186d) | 47d → 78.64d | 100% → 19% |  | constraint start no earlier than 2025-07-07 → start no earlier than 2025-11-06 |
| 960 | Reinforcement | 2025-07-07 → 2025-11-06 (+122d) | 2025-08-18 → 2026-02-15 (+181d) | 20d → 34.88d | 100% → 38% | 963FS+1d → 958FS-44.89d | constraint start no earlier than 2025-07-07 → start no earlier than 2025-11-06 |
| 961 | Wall conduiting | 2025-07-14 → 2026-01-26 (+196d) | 2025-08-18 → 2026-01-29 (+164d) | 14d → 3.38d | 100% → 0% | 956, 960SS+2.75d → 956FS+0.25d, 960SS+46.01d | constraint start no earlier than 2025-07-14 → none |
| 962 | Formwork | 2025-07-14 → 2026-01-27 (+197d) | 2025-08-18 → 2026-02-23 (+189d) | 17d → 30.38d | 100% → 0% | 960SS+3d → 960SS+47.14d | constraint start no earlier than 2025-07-14 → none |
| 963 | Concreting | 2025-05-16 → 2026-02-23 (+283d) | 2025-07-03 → 2026-02-24 (+236d) | 10d → 1.12d | 100% → 0% | 957FS-45d → 962 | constraint start no earlier than 2025-05-16 → none |
| 964 | **3rd floor slab** | 2025-08-24 → 2026-02-24 (+184d) | 2025-09-09 → 2026-03-06 (+178d) | 17d → 11.25d | 100% → 0% |  | constraint start no earlier than 2025-08-24 → start no earlier than 2026-02-24 |
| 965 | Reinforcement | 2025-08-24 → 2026-02-24 (+184d) | 2025-09-08 → 2026-03-03 (+176d) | 11d → 7.88d | 100% → 0% | 968FS+1d → 963 | constraint start no earlier than 2025-08-24 → none |
| 966 | Wall conduiting | 2025-08-28 → 2026-02-27 (+183d) | 2025-09-08 → 2026-03-01 (+174d) | 8d → 2.25d | 100% → 0% | 961, 965SS+2.75d → 961, 965SS+3.38d | constraint start no earlier than 2025-08-28 → none |
| 967 | Formwork | 2025-09-08 → 2026-02-26 (+171d) | 2025-09-22 → 2026-03-05 (+164d) | 7d → 7.88d | 100% → 0% | 970SS+1d → 965SS+2.25d | constraint start no earlier than 2025-09-08 → none |
| 968 | Concreting | 2025-08-15 → 2026-03-05 (+202d) | 2025-08-22 → 2026-03-06 (+196d) | 4d → 1.12d | 100% → 0% | 962FS-6d → 967 | constraint start no earlier than 2025-08-15 → none |
| 969 | **4th floor slab** | 2025-09-05 → 2026-03-06 (+182d) | 2025-09-23 → 2026-03-16 (+174d) | 19d → 11.25d | 100% → 0% |  | constraint start no earlier than 2025-09-05 → start no earlier than 2026-03-06 |
| 970 | Reinforcement | 2025-09-07 → 2026-03-06 (+180d) | 2025-09-22 → 2026-03-13 (+172d) | 8d → 7.88d | 100% → 0% | 973FS-7d → 968 | constraint start no earlier than 2025-09-07 → none |
| 971 | Wall conduiting | 2025-09-05 → 2026-03-07 (+183d) | 2025-09-22 → 2026-03-09 (+168d) | 7d → 2.25d | 100% → 0% | 966, 970SS+1d → 966, 970SS+1.12d | constraint start no earlier than 2025-09-05 → none |
| 972 | Formwork | 2025-09-18 → 2026-03-08 (+171d) | 2025-10-02 → 2026-03-15 (+164d) | 6d → 7.88d | 100% → 0% | 975SS+1d → 970SS+2.25d | constraint start no earlier than 2025-09-18 → none |
| 973 | Concreting | 2025-09-06 → 2026-03-15 (+190d) | 2025-09-09 → 2026-03-16 (+188d) | 4d → 1.12d | 100% → 0% | 977 → 972 | constraint start no earlier than 2025-09-06 → none |
| 974 | **5th floor slab** | 2025-09-18 → 2026-03-16 (+179d) | 2025-10-03 → 2026-03-26 (+174d) | 16d → 11.25d | 100% → 0% |  | constraint start no earlier than 2025-09-18 → start no earlier than 2026-03-16 |
| 975 | Reinforcement | 2025-09-18 → 2026-03-16 (+179d) | 2025-10-03 → 2026-03-23 (+171d) | 7d → 7.88d | 100% → 0% | 978FS-10d → 973 | constraint start no earlier than 2025-09-18 → none |
| 976 | Wall conduiting | 2025-09-18 → 2026-03-17 (+180d) | 2025-09-30 → 2026-03-19 (+170d) | 3d → 2.25d | 100% → 0% | 971, 975SS+1d → 971, 975SS+1.12d | constraint start no earlier than 2025-09-18 → none |
| 977 | Formwork | 2025-08-26 → 2026-03-18 (+204d) | 2025-09-08 → 2026-03-25 (+198d) | 11d → 7.88d | 100% → 0% | 965SS+3d → 975SS+2.25d | constraint start no earlier than 2025-08-26 → none |
| 978 | Concreting | 2025-09-15 → 2026-03-25 (+191d) | 2025-09-23 → 2026-03-26 (+184d) | 5d → 1.12d | 100% → 0% | 967FS-5d → 977 | constraint start no earlier than 2025-09-15 → none |
| 979 | **6th floor slab** | 2025-10-01 → 2026-03-26 (+176d) | 2025-10-13 → 2026-04-05 (+174d) | 13d → 11.25d | 100% → 0% |  | constraint start no earlier than 2025-10-01 → start no earlier than 2026-03-26 |
| 980 | Reinforcement | 2025-10-19 → 2026-03-26 (+158d) | 2025-10-30 → 2026-04-02 (+154d) | 8d → 7.88d | 100% → 0% | 988FS+1d → 978 | constraint start no earlier than 2025-10-19 → none |
| 981 | Wall conduiting | 2025-10-01 → 2026-03-27 (+177d) | 2025-10-12 → 2026-03-29 (+168d) | 3d → 2.25d | 100% → 0% | 976, 995SS+1d → 976, 980SS+1.12d | constraint start no earlier than 2025-10-01 → none |
| 982 | Formwork | 2025-10-01 → 2026-03-28 (+178d) | 2025-10-12 → 2026-04-04 (+174d) | 7d → 7.88d | 100% → 0% | 995SS+1d → 980SS+2.25d | constraint start no earlier than 2025-10-01 → none |
| 983 | Concreting | 2025-09-30 → 2026-04-04 (+186d) | 2025-10-01 → 2026-04-05 (+186d) | 2d → 1.12d | 100% → 0% | 972FS-1d → 982 | constraint start no earlier than 2025-09-30 → none |
| 984 | **7th floor slab** | 2025-10-19 → 2026-04-05 (+168d) | 2025-10-31 → 2026-04-15 (+166d) | 13d → 11.25d | 100% → 0% |  | constraint start no earlier than 2025-10-19 → start no earlier than 2026-04-05 |
| 985 | Reinforcement | 2025-10-28 → 2026-04-05 (+159d) | 2025-11-27 → 2026-04-12 (+136d) | 8.88d → 7.88d | 100% → 0% | 993FS+1d → 983 | constraint start no earlier than 2025-10-28 → none |

| ID | Task | Start | Finish | Duration | Complete | Predecessors | Other |
| --- | --- | --- | --- | --- | --- | --- | --- |
| 986 | Wall conduiting | 2025-10-19 → 2026-04-06 (+169d) | 2025-10-30 → 2026-04-08 (+160d) | 3d → 2.25d | 100% → 0% | 981, 980SS+1d → 981, 985SS+1.12d | constraint start no earlier than 2025-10-19 → none |
| 987 | Formwork | 2025-10-19 → 2026-04-07 (+170d) | 2025-10-30 → 2026-04-14 (+166d) | 7d → 7.88d | 100% → 0% | 980SS+1d → 985SS+2.25d | constraint start no earlier than 2025-10-19 → none |
| 988 | Concreting | 2025-10-11 → 2026-04-14 (+185d) | 2025-10-13 → 2026-04-15 (+184d) | 3d → 1.12d | 100% → 0% | 982 → 987 | constraint start no earlier than 2025-10-11 → none |
| 989 | **8th floor slab** | 2025-10-27 → 2026-04-15 (+170d) | 2025-11-28 → 2026-04-26 (+149d) | 19.62d → 12.38d | 100% → 0% |  | constraint start no earlier than 2025-10-27 → start no earlier than 2026-04-15 |
| 990 | Reinforcement | 2025-12-17 → 2026-04-15 (+119d) | 2025-12-24 → 2026-04-22 (+119d) | 7d → 7.88d |  | 998 → 988 |  |
| 991 | Wall conduiting | 2025-10-27 → 2026-04-16 (+171d) | 2025-11-27 → 2026-04-18 (+142d) | 7d → 2.25d | 100% → 0% | 986, 985SS+1d → 986, 990SS+1.12d | constraint start no earlier than 2025-10-27 → none |
| 992 | Formwork | 2025-12-18 → 2026-04-17 (+120d) | 2025-12-24 → 2026-04-25 (+122d) | 6d → 9d |  | 990SS+1d → 990SS+2.25d |  |
| 993 | Concreting | 2025-10-27 → 2026-04-25 (+180d) | 2025-10-31 → 2026-04-26 (+177d) | 5d → 1.12d | 100% → 0% | 987FS-3d → 992 | constraint start no earlier than 2025-10-27 → none |
| 994 | **9th floor slab** | 2025-12-17 → 2026-04-26 (+130d) | 2025-12-25 → 2026-05-06 (+132d) | 8d → 11.25d |  |  | constraint start no earlier than 2025-12-17 → start no earlier than 2026-04-26 |
| 995 | Reinforcement | 2025-10-01 → 2026-04-26 (+207d) | 2025-10-12 → 2026-05-03 (+203d) | 12d → 7.88d | 100% → 0% | 983FS+1d → 993 | constraint start no earlier than 2025-10-01 → none |
| 996 | Wall conduiting | 2025-12-18 → 2026-04-27 (+130d) | 2025-12-21 → 2026-04-29 (+129d) | 3d → 2.25d |  | 990SS+1d, 991 → 991, 995SS+1.12d |  |
| 997 | Formwork | 2025-12-23 → 2026-04-28 (+126d) | 2025-12-30 → 2026-05-05 (+126d) | 7d → 7.88d |  | 1000SS+1d → 995SS+2.25d |  |
| 998 | Concreting | 2025-11-27 → 2026-05-05 (+159d) | 2025-11-28 → 2026-05-06 (+159d) | 1d → 1.12d | 100% → 0% | 1012 → 997 | constraint start no earlier than 2025-11-27 → none |
| 999 | **10th floor slab** | 2025-12-22 → 2026-05-06 (+135d) | 2025-12-31 → 2026-05-16 (+136d) | 9d → 11.25d |  |  | constraint start no earlier than 2025-12-22 → start no earlier than 2026-05-06 |
| 1000 | Reinforcement | 2025-12-22 → 2026-05-06 (+135d) | 2025-12-30 → 2026-05-13 (+134d) | 8d → 7.88d |  | 990SS+5d → 998 |  |
| 1001 | Wall conduiting | 2025-12-23 → 2026-05-07 (+135d) | 2025-12-26 → 2026-05-09 (+134d) | 3d → 2.25d |  | 996, 1000SS+1d → 996, 1000SS+1.12d |  |
| 1002 | Formwork | 2026-01-01 → 2026-05-08 (+127d) | 2026-01-07 → 2026-05-15 (+128d) | 6d → 7.88d |  | 1005SS+1d → 1000SS+2.25d |  |
| 1003 | Concreting | 2025-12-24 → 2026-05-15 (+142d) | 2025-12-25 → 2026-05-16 (+142d) | 1d → 1.12d |  | 992 → 1002 |  |
| 1004 | **11th floor slab** | 2025-12-31 → 2026-05-16 (+136d) | 2026-01-08 → 2026-05-26 (+138d) | 8d → 11.25d |  |  | constraint start no earlier than 2025-12-31 → start no earlier than 2026-05-16 |
| 1005 | Reinforcement | 2025-12-31 → 2026-05-16 (+136d) | 2026-01-07 → 2026-05-23 (+136d) | 7d → 7.88d |  | 1008 → 1003 |  |
| 1006 | Wall conduiting | 2026-01-01 → 2026-05-17 (+136d) | 2026-01-04 → 2026-05-19 (+135d) | 3d → 2.25d |  | 1001, 1005SS+1d → 1001, 1005SS+1.12d |  |
| 1007 | Formwork | 2026-01-09 → 2026-05-18 (+129d) | 2026-01-15 → 2026-05-25 (+130d) | 6d → 7.88d |  | 1010SS+1d → 1005SS+2.25d |  |
| 1008 | Concreting | 2025-12-30 → 2026-05-25 (+146d) | 2025-12-31 → 2026-05-26 (+146d) | 1d → 1.12d |  | 997 → 1007 |  |
| 1009 | **12th floor slab** | 2026-01-08 → 2026-05-26 (+138d) | 2026-01-16 → 2026-06-05 (+140d) | 8d → 11.25d |  |  | constraint start no earlier than 2026-01-08 → start no earlier than 2026-05-26 |
| 1010 | Reinforcement | 2026-01-08 → 2026-05-26 (+138d) | 2026-01-15 → 2026-06-02 (+138d) | 7d → 7.88d |  | 1013 → 1008 |  |
| 1011 | Wall conduiting | 2026-01-09 → 2026-05-27 (+138d) | 2026-01-12 → 2026-05-29 (+137d) | 3d → 2.25d |  | 1006, 1010SS+1d → 1006, 1010SS+1.12d |  |
| 1012 | Formwork | 2025-10-28 → 2026-05-28 (+212d) | 2025-11-27 → 2026-06-04 (+189d) | 10d → 7.88d | 100% → 0% | 985SS+1d → 1010SS+2.25d | constraint start no earlier than 2025-10-28 → none |
| 1013 | Concreting | 2026-01-07 → 2026-06-04 (+148d) | 2026-01-08 → 2026-06-05 (+148d) | 1d → 1.12d |  | 1002 → 1012 |  |
| 1014 | **13th floor slab** | 2026-01-16 → 2026-06-05 (+140d) | 2026-01-24 → 2026-06-15 (+142d) | 8d → 11.25d |  |  | constraint start no earlier than 2026-01-16 → start no earlier than 2026-06-05 |
| 1015 | Reinforcement | 2026-01-16 → 2026-06-05 (+140d) | 2026-01-23 → 2026-06-12 (+140d) | 7d → 7.88d |  | 1018 → 1013 |  |
| 1016 | Wall conduiting | 2026-01-17 → 2026-06-06 (+140d) | 2026-01-20 → 2026-06-08 (+139d) | 3d → 2.25d |  | 1011, 1015SS+1d → 1011, 1015SS+1.12d |  |
| 1017 | Formwork | 2026-01-17 → 2026-06-07 (+141d) | 2026-01-23 → 2026-06-14 (+142d) | 6d → 7.88d |  | 1015SS+1d → 1015SS+2.25d |  |
| 1018 | Concreting | 2026-01-15 → 2026-06-14 (+150d) | 2026-01-16 → 2026-06-15 (+150d) | 1d → 1.12d |  | 1007 → 1017 |  |
| 1019 | **14th floor slab** | 2026-01-24 → 2026-06-15 (+142d) | 2026-02-01 → 2026-06-25 (+144d) | 8d → 11.25d |  |  | constraint start no earlier than 2026-01-24 → start no earlier than 2026-06-15 |
| 1020 | Reinforcement | 2026-01-24 → 2026-06-15 (+142d) | 2026-01-31 → 2026-06-22 (+142d) | 7d → 7.88d |  | 1023 → 1018 |  |
| 1021 | Wall conduiting | 2026-01-25 → 2026-06-16 (+142d) | 2026-01-28 → 2026-06-18 (+141d) | 3d → 2.25d |  | 1016, 1020SS+1d → 1016, 1020SS+1.12d |  |
| 1022 | Formwork | 2026-01-25 → 2026-06-17 (+143d) | 2026-01-31 → 2026-06-24 (+144d) | 6d → 7.88d |  | 1020SS+1d → 1020SS+2.25d |  |
| 1023 | Concreting | 2026-01-23 → 2026-06-24 (+152d) | 2026-01-24 → 2026-06-25 (+152d) | 1d → 1.12d |  | 1017 → 1022 |  |
| 1024 | **15th floor slab** | 2026-02-02 → 2026-06-25 (+143d) | 2026-02-11 → 2026-07-05 (+144d) | 9d → 11.25d |  |  | constraint start no earlier than 2026-02-02 → start no earlier than 2026-06-25 |
| 1025 | Reinforcement | 2026-02-02 → 2026-06-25 (+143d) | 2026-02-10 → 2026-07-02 (+142d) | 8d → 7.88d |  | 1028FS+1d → 1023 |  |
| 1026 | Wall conduiting | 2026-02-03 → 2026-06-26 (+143d) | 2026-02-06 → 2026-06-28 (+142d) | 3d → 2.25d |  | 1021, 1025SS+1d → 1021, 1025SS+1.12d |  |
| 1027 | Formwork | 2026-02-03 → 2026-06-27 (+144d) | 2026-02-10 → 2026-07-04 (+144d) | 7d → 7.88d |  | 1025SS+1d → 1025SS+2.25d |  |
| 1028 | Concreting | 2026-01-31 → 2026-07-04 (+154d) | 2026-02-01 → 2026-07-05 (+154d) | 1d → 1.12d |  | 1022 → 1027 |  |
| 1029 | **16th floor slab** | 2026-02-11 → 2026-07-05 (+144d) | 2026-02-19 → 2026-07-16 (+147d) | 8d → 12.38d |  |  | constraint start no earlier than 2026-02-11 → start no earlier than 2026-07-05 |
| 1030 | Reinforcement | 2026-02-11 → 2026-07-05 (+144d) | 2026-02-18 → 2026-07-13 (+145d) | 7d → 9d |  | 1033 → 1028 |  |
| 1031 | Wall conduiting | 2026-02-12 → 2026-07-06 (+144d) | 2026-02-15 → 2026-07-08 (+143d) | 3d → 2.25d |  | 1026, 1030SS+1d → 1026, 1030SS+1.12d |  |
| 1032 | Formwork | 2026-02-12 → 2026-07-07 (+145d) | 2026-02-18 → 2026-07-15 (+147d) | 6d → 9d |  | 1030SS+1d → 1030SS+2.25d |  |
| 1033 | Concreting | 2026-02-10 → 2026-07-15 (+155d) | 2026-02-11 → 2026-07-16 (+155d) | 1d → 1.12d |  | 1027 → 1032 |  |
| 1034 | **17th floor slab** | 2026-02-18 → 2026-07-16 (+148d) | 2026-02-26 → 2026-07-26 (+150d) | 8d → 11.25d |  |  | constraint start no earlier than 2026-02-18 → start no earlier than 2026-07-16 |
| 1035 | Reinforcement | 2026-02-18 → 2026-07-16 (+148d) | 2026-02-25 → 2026-07-24 (+149d) | 7d → 9d |  | 1038FS-1d → 1033 |  |
| 1036 | Wall conduiting | 2026-02-19 → 2026-07-17 (+148d) | 2026-02-22 → 2026-07-19 (+147d) | 3d → 2.25d |  | 1031, 1035SS+1d → 1031, 1035SS+1.12d |  |
| 1037 | Formwork | 2026-02-19 → 2026-07-18 (+149d) | 2026-02-25 → 2026-07-25 (+150d) | 6d → 7.88d |  | 1035SS+1d → 1035SS+2.25d |  |
| 1038 | Concreting | 2026-02-18 → 2026-07-25 (+157d) | 2026-02-19 → 2026-07-26 (+157d) | 1d → 1.12d |  | 1032 → 1037 |  |
| 1039 | **18th floor slab** | 2026-02-25 → 2026-07-26 (+151d) | 2026-03-05 → 2026-08-05 (+153d) | 8d → 11.25d |  |  | constraint start no earlier than 2026-02-25 → start no earlier than 2026-07-26 |
| 1040 | Reinforcement | 2026-02-25 → 2026-07-26 (+151d) | 2026-03-04 → 2026-08-03 (+152d) | 7d → 9d |  | 1043FS-1d → 1038 |  |
| 1041 | Wall conduiting | 2026-02-26 → 2026-07-27 (+151d) | 2026-03-01 → 2026-07-29 (+150d) | 3d → 2.25d |  | 1036, 1040SS+1d → 1036, 1040SS+1.12d |  |
| 1042 | Formwork | 2026-02-26 → 2026-07-28 (+152d) | 2026-03-04 → 2026-08-04 (+153d) | 6d → 7.88d |  | 1040SS+1d → 1040SS+2.25d |  |
| 1043 | Concreting | 2026-02-25 → 2026-08-04 (+160d) | 2026-02-26 → 2026-08-05 (+160d) | 1d → 1.12d |  | 1037 → 1042 |  |
| 1044 | **19th floor slab** | 2026-03-05 → 2026-08-05 (+153d) | 2026-03-13 → 2026-08-15 (+155d) | 8d → 11.25d |  |  | constraint start no earlier than 2026-03-05 → start no earlier than 2026-08-05 |
| 1045 | Reinforcement | 2026-03-05 → 2026-08-05 (+153d) | 2026-03-12 → 2026-08-13 (+154d) | 7d → 9d |  | 1048 → 1043 |  |
| 1046 | Wall conduiting | 2026-03-06 → 2026-08-06 (+153d) | 2026-03-09 → 2026-08-08 (+152d) | 3d → 2.25d |  | 1041, 1045SS+1d → 1041, 1045SS+1.12d |  |
| 1047 | Formwork | 2026-03-06 → 2026-08-06 (+153d) | 2026-03-12 → 2026-08-14 (+155d) | 6d → 9d |  | 1045SS+1d → 1045SS+1.12d |  |
| 1048 | Concreting | 2026-03-04 → 2026-08-14 (+163d) | 2026-03-05 → 2026-08-15 (+163d) | 1d → 1.12d |  | 1042 → 1047 |  |
| 1049 | **20th floor slab** | 2026-03-14 → 2026-08-15 (+154d) | 2026-03-23 → 2026-08-25 (+155d) | 9d → 11.25d |  |  | constraint start no earlier than 2026-03-14 → start no earlier than 2026-08-15 |
| 1050 | Reinforcement | 2026-03-14 → 2026-08-15 (+154d) | 2026-03-21 → 2026-08-23 (+155d) | 7d → 9d |  | 1053FS+1d → 1048 |  |
| 1051 | Wall conduiting | 2026-03-15 → 2026-08-16 (+154d) | 2026-03-18 → 2026-08-18 (+153d) | 3d → 2.25d |  | 1046, 1050SS+1d → 1046, 1050SS+1.12d |  |
| 1052 | Formwork | 2026-03-15 → 2026-08-16 (+154d) | 2026-03-21 → 2026-08-24 (+156d) | 6d → 9d |  | 1050SS+1d → 1050SS+1.12d |  |
| 1053 | Concreting | 2026-03-12 → 2026-08-24 (+165d) | 2026-03-13 → 2026-08-25 (+165d) | 1d → 1.12d |  | 1047 → 1052 |  |
| 1054 | **21st floor slab** | 2026-03-24 → 2026-08-25 (+154d) | 2026-04-02 → 2026-09-04 (+155d) | 9d → 11.25d |  |  | constraint start no earlier than 2026-03-24 → start no earlier than 2026-08-25 |
| 1055 | Reinforcement | 2026-03-24 → 2026-08-25 (+154d) | 2026-04-02 → 2026-09-02 (+153d) |  |  | 1058FS+1d → 1053 |  |

| ID | Task | Start | Finish | Duration | Predecessors | Other |
| --- | --- | --- | --- | --- | --- | --- |
| 1056 | Wall conduiting | 2026-03-25 → 2026-08-26 (+154d) | 2026-03-28 → 2026-08-28 (+153d) | 3d → 2.25d | 1051, 1055SS+1d → 1051, 1055SS+1.12d |  |
| 1057 | Formwork | 2026-03-25 → 2026-08-27 (+155d) | 2026-04-01 → 2026-09-03 (+155d) | 7d → 7.88d | 1055SS+1d → 1055SS+2.25d |  |
| 1058 | Concreting | 2026-03-21 → 2026-09-03 (+166d) | 2026-03-23 → 2026-09-04 (+165d) | 2d → 1.12d | 1052 → 1057 |  |
| 1059 | **22nd floor slab** | 2026-04-09 → 2026-09-04 (+148d) | 2026-04-19 → 2026-09-14 (+148d) | 10d → 11.25d |  | constraint start no earlier than 2026-04-09 → start no earlier than 2026-09-04 |
| 1060 | Reinforcement | 2026-04-09 → 2026-09-04 (+148d) | 2026-04-18 → 2026-09-12 (+147d) |  | 1063FS+7d → 1058 |  |
| 1061 | Wall conduiting | 2026-04-10 → 2026-09-05 (+148d) | 2026-04-13 → 2026-09-07 (+147d) | 3d → 2.25d | 1056, 1060SS+1d → 1056, 1060SS+1.12d |  |
| 1062 | Formwork | 2026-04-10 → 2026-09-06 (+149d) | 2026-04-18 → 2026-09-13 (+148d) | 8d → 7.88d | 1060SS+1d → 1060SS+2.25d |  |
| 1063 | Concreting | 2026-04-01 → 2026-09-13 (+165d) | 2026-04-02 → 2026-09-14 (+165d) | 1d → 1.12d | 1057 → 1062 |  |
| 1064 | **23rd floor slab** | 2026-04-20 → 2026-09-14 (+147d) | 2026-04-30 → 2026-09-24 (+147d) | 10d → 11.25d |  | constraint start no earlier than 2026-04-20 → start no earlier than 2026-09-14 |
| 1065 | Reinforcement | 2026-04-20 → 2026-09-14 (+147d) | 2026-04-29 → 2026-09-22 (+146d) |  | 1068FS+1d → 1063 |  |
| 1066 | Wall conduiting | 2026-04-21 → 2026-09-15 (+147d) | 2026-04-24 → 2026-09-17 (+146d) | 3d → 2.25d | 1061, 1065SS+1d → 1061, 1065SS+1.12d |  |
| 1067 | Formwork | 2026-04-21 → 2026-09-16 (+148d) | 2026-04-29 → 2026-09-23 (+147d) | 8d → 7.88d | 1065SS+1d → 1065SS+2.25d |  |
| 1068 | Concreting | 2026-04-18 → 2026-09-23 (+158d) | 2026-04-19 → 2026-09-24 (+158d) | 1d → 1.12d | 1062 → 1067 |  |
| 1069 | **24th floor slab** | 2026-05-01 → 2026-09-24 (+146d) | 2026-05-15 → 2026-10-08 (+146d) | 14d → 15.75d |  | constraint start no earlier than 2026-05-01 → start no earlier than 2026-09-24 |
| 1070 | Reinforcement | 2026-05-01 → 2026-09-24 (+146d) | 2026-05-11 → 2026-10-05 (+147d) | 10d → 12.38d | 1073FS+1d → 1068 |  |
| 1071 | Wall conduiting | 2026-05-02 → 2026-09-25 (+146d) | 2026-05-05 → 2026-09-27 (+145d) | 3d → 2.25d | 1066, 1070SS+1d → 1066, 1070SS+1.12d |  |
| 1072 | Formwork | 2026-05-02 → 2026-09-26 (+147d) | 2026-05-14 → 2026-10-07 (+146d) | 12d → 12.38d | 1070SS+1d → 1070SS+2.25d |  |
| 1073 | Concreting | 2026-04-29 → 2026-10-07 (+161d) | 2026-04-30 → 2026-10-08 (+161d) | 1d → 1.12d | 1067 → 1072 |  |
| 1074 | **25th floor slab** | 2026-05-16 → 2026-10-08 (+145d) | 2026-05-31 → 2026-10-23 (+145d) | 15d → 16.88d |  | constraint start no earlier than 2026-05-16 → start no earlier than 2026-10-08 |
| 1075 | Reinforcement | 2026-05-16 → 2026-10-08 (+145d) | 2026-05-26 → 2026-10-20 (+147d) | 10d → 13.5d | 1078FS+1d → 1073 |  |
| 1076 | Wall conduiting | 2026-05-17 → 2026-10-09 (+145d) | 2026-05-20 → 2026-10-11 (+144d) | 3d → 2.25d | 1071, 1075SS+1d → 1071, 1075SS+1.12d |  |
| 1077 | Formwork | 2026-05-17 → 2026-10-10 (+146d) | 2026-05-30 → 2026-10-22 (+145d) | 13d → 13.5d | 1075SS+1d → 1075SS+2.25d |  |
| 1078 | Concreting | 2026-05-14 → 2026-10-22 (+161d) | 2026-05-15 → 2026-10-23 (+161d) | 1d → 1.12d | 1072 → 1077 |  |
| 1079 | **26th floor slab** | 2026-06-01 → 2026-10-23 (+144d) | 2026-06-11 → 2026-12-17 (+189d) | 10d → 11.25d |  | constraint start no earlier than 2026-06-01 → start no earlier than 2026-10-23 |
| 1080 | Reinforcement | 2026-06-01 → 2026-10-23 (+144d) | 2026-06-10 → 2026-10-31 (+143d) |  | 1083FS+1d → 1078 |  |
| 1081 | Wall conduiting | 2026-06-02 → 2026-10-24 (+144d) | 2026-06-05 → 2026-10-26 (+143d) | 3d → 2.25d | 1076, 1080SS+1d → 1076, 1080SS+1.12d |  |
| 1082 | Formwork | 2026-06-02 → 2026-10-25 (+145d) | 2026-06-10 → 2026-12-16 (+189d) | 8d → 7.88d | 1080SS+1d → 1080SS+2.25d |  |
| 1083 | Concreting | 2026-05-30 → 2026-12-16 (+200d) | 2026-05-31 → 2026-12-17 (+200d) | 1d → 1.12d | 1077 → 1082 |  |
| 1084 | **27th floor slab** | 2026-06-12 → 2026-12-17 (+188d) | 2026-06-22 → 2026-12-27 (+188d) | 10d → 11.25d |  | constraint start no earlier than 2026-06-12 → start no earlier than 2026-12-17 |
| 1085 | Reinforcement | 2026-06-12 → 2026-12-17 (+188d) | 2026-06-21 → 2026-12-25 (+187d) |  | 1088FS+1d → 1083 |  |
| 1086 | Wall conduiting | 2026-06-13 → 2026-12-18 (+188d) | 2026-06-16 → 2026-12-20 (+187d) | 3d → 2.25d | 1081, 1085SS+1d → 1081, 1085SS+1.12d |  |
| 1087 | Formwork | 2026-06-13 → 2026-12-19 (+189d) | 2026-06-21 → 2026-12-26 (+188d) | 8d → 7.88d | 1085SS+1d → 1085SS+2.25d |  |
| 1088 | Concreting | 2026-06-10 → 2026-12-26 (+199d) | 2026-06-11 → 2026-12-27 (+199d) | 1d → 1.12d | 1082 → 1087 |  |
| 1089 | **28th floor slab** | 2026-06-23 → 2026-12-27 (+187d) | 2026-07-03 → 2027-01-06 (+187d) | 10d → 11.25d |  | constraint start no earlier than 2026-06-23 → start no earlier than 2026-12-27 |
| 1090 | Reinforcement | 2026-06-23 → 2026-12-27 (+187d) | 2026-07-02 → 2027-01-04 (+186d) |  | 1093FS+1d → 1088 |  |
| 1091 | Wall conduiting | 2026-06-24 → 2026-12-28 (+187d) | 2026-06-27 → 2026-12-30 (+186d) | 3d → 2.25d | 1086, 1090SS+1d → 1086, 1090SS+1.12d |  |
| 1092 | Formwork | 2026-06-24 → 2026-12-29 (+188d) | 2026-07-02 → 2027-01-05 (+187d) | 8d → 7.88d | 1090SS+1d → 1090SS+2.25d |  |
| 1093 | Concreting | 2026-06-21 → 2027-01-05 (+198d) | 2026-06-22 → 2027-01-06 (+198d) | 1d → 1.12d | 1087 → 1092 |  |
| 1094 | **29th floor slab** | 2026-07-07 → 2027-01-06 (+183d) | 2026-07-17 → 2027-01-16 (+183d) | 10d → 11.25d |  | constraint start no earlier than 2026-07-07 → start no earlier than 2027-01-06 |
| 1095 | Reinforcement | 2026-07-07 → 2027-01-06 (+183d) | 2026-07-16 → 2027-01-14 (+182d) |  | 1098FS+4d → 1093 |  |
| 1096 | Wall conduiting | 2026-07-08 → 2027-01-07 (+183d) | 2026-07-11 → 2027-01-09 (+182d) | 3d → 2.25d | 1091, 1095SS+1d → 1091, 1095SS+1.12d |  |
| 1097 | Formwork | 2026-07-08 → 2027-01-08 (+184d) | 2026-07-16 → 2027-01-15 (+183d) | 8d → 7.88d | 1095SS+1d → 1095SS+2.25d |  |
| 1098 | Concreting | 2026-07-02 → 2027-01-15 (+197d) | 2026-07-03 → 2027-01-16 (+197d) | 1d → 1.12d | 1092 → 1097 |  |
| 1099 | **30th floor slab** | 2026-07-17 → 2027-01-16 (+183d) | 2026-07-27 → 2027-01-26 (+183d) | 10d → 11.25d |  | constraint start no earlier than 2026-07-17 → start no earlier than 2027-01-16 |
| 1100 | Reinforcement | 2026-07-17 → 2027-01-16 (+183d) | 2026-07-26 → 2027-01-24 (+182d) |  | 1103 → 1098 |  |
| 1101 | Wall conduiting | 2026-07-18 → 2027-01-17 (+183d) | 2026-07-21 → 2027-01-19 (+182d) | 3d → 2.25d | 1096, 1100SS+1d → 1096, 1100SS+1.12d |  |
| 1102 | Formwork | 2026-07-18 → 2027-01-18 (+184d) | 2026-07-26 → 2027-01-25 (+183d) | 8d → 7.88d | 1100SS+1d → 1100SS+2.25d |  |
| 1103 | Concreting | 2026-07-16 → 2027-01-25 (+193d) | 2026-07-17 → 2027-01-26 (+193d) | 1d → 1.12d | 1097 → 1102 |  |
| 1104 | **31st floor slab** | 2026-07-27 → 2027-01-26 (+183d) | 2026-08-07 → 2027-02-05 (+182d) | 11.75d → 11.25d |  | constraint start no earlier than 2026-07-27 → start no earlier than 2027-01-26 |
| 1105 | Reinforcement | 2026-07-27 → 2027-01-26 (+183d) | 2026-08-05 → 2027-02-02 (+181d) | 8.94d → 7.88d | 1108 → 1103 |  |
| 1106 | Wall conduiting | 2026-07-28 → 2027-01-27 (+183d) | 2026-07-30 → 2027-01-29 (+183d) | 1.94d → 2.25d | 1101, 1105SS+1d → 1101, 1105SS+1.12d |  |
| 1107 | Formwork | 2026-07-29 → 2027-01-28 (+183d) | 2026-08-07 → 2027-02-04 (+181d) | 8.94d → 7.88d | 1105SS+1.88d → 1105SS+2.25d |  |
| 1108 | Concreting | 2026-07-26 → 2027-02-04 (+193d) | 2026-07-27 → 2027-02-05 (+193d) | 1d → 1.12d | 1102 → 1107 |  |
| 1109 | **32nd floor slab** | 2026-08-12 → 2027-02-05 (+177d) | 2026-08-24 → 2027-02-19 (+179d) | 12.75d → 15.75d |  | constraint start no earlier than 2026-08-12 → start no earlier than 2027-02-05 |
| 1110 | Reinforcement | 2026-08-12 → 2027-02-05 (+177d) | 2026-08-21 → 2027-02-15 (+178d) | 9.94d → 11.25d | 1113FS+4d → 1108 |  |
| 1111 | Wall conduiting | 2026-08-13 → 2027-02-06 (+177d) | 2026-08-14 → 2027-02-08 (+178d) | 1.94d → 2.25d | 1106, 1110SS+1d → 1106, 1110SS+1.12d |  |
| 1112 | Formwork | 2026-08-13 → 2027-02-07 (+178d) | 2026-08-23 → 2027-02-18 (+179d) | 9.94d → 12.38d | 1110SS+1.88d → 1110SS+2.25d |  |
| 1113 | Concreting | 2026-08-07 → 2027-02-18 (+195d) | 2026-08-07 → 2027-02-19 (+196d) | 0.94d → 1.12d | 1107 → 1112 |  |
| 1114 | **33rd floor slab** | 2026-08-26 → 2027-02-19 (+177d) | 2026-09-07 → 2027-03-01 (+175d) | 11.75d → 11.25d |  | constraint start no earlier than 2026-08-26 → start no earlier than 2027-02-19 |
| 1115 | Reinforcement | 2026-08-26 → 2027-02-19 (+177d) | 2026-09-04 → 2027-02-26 (+175d) | 8.94d → 7.88d | 1118FS+2d → 1113 |  |
| 1116 | Wall conduiting | 2026-08-27 → 2027-02-20 (+177d) | 2026-08-29 → 2027-02-22 (+177d) | 1.94d → 2.25d | 1111, 1115SS+1d → 1111, 1115SS+1.12d |  |
| 1117 | Formwork | 2026-08-28 → 2027-02-21 (+177d) | 2026-09-06 → 2027-02-28 (+175d) | 8.94d → 7.88d | 1115SS+1.88d → 1115SS+2.25d |  |
| 1118 | Concreting | 2026-08-23 → 2027-02-28 (+189d) | 2026-08-24 → 2027-03-01 (+189d) | 0.94d → 1.12d | 1112 → 1117 |  |
| 1119 | **34th floor slab** | 2026-09-07 → 2027-03-01 (+175d) | 2026-09-20 → 2027-03-16 (+177d) | 12.75d → 16.88d |  | constraint start no earlier than 2026-09-07 → start no earlier than 2027-03-01 |
| 1120 | Reinforcement | 2026-09-07 → 2027-03-01 (+175d) | 2026-09-17 → 2027-03-13 (+177d) | 9.94d → 13.5d | 1123 → 1118 |  |
| 1121 | Wall conduiting | 2026-09-08 → 2027-03-02 (+175d) | 2026-09-10 → 2027-03-04 (+175d) | 1.94d → 2.25d | 1116, 1120SS+1d → 1116, 1120SS+1.12d |  |
| 1122 | Formwork | 2026-09-09 → 2027-03-03 (+175d) | 2026-09-19 → 2027-03-15 (+177d) | 9.94d → 13.5d | 1120SS+1.88d → 1120SS+2.25d |  |
| 1123 | Concreting | 2026-09-06 → 2027-03-15 (+190d) | 2026-09-07 → 2027-03-16 (+190d) | 0.94d → 1.12d | 1117 → 1122 |  |
| 1124 | **35th floor slab** | 2026-09-26 → 2027-03-16 (+171d) | 2026-10-07 → 2027-03-28 (+172d) | 11.75d → 13.5d |  | constraint start no earlier than 2026-09-26 → start no earlier than 2027-03-16 |
| 1125 | Reinforcement | 2026-09-26 → 2027-03-16 (+171d) | 2026-10-05 → 2027-03-24 (+170d) | 8.94d → 9d | 1128FS+6d → 1123 |  |

| ID | Task | Start | Finish | Duration | Predecessors | Other |
| --- | --- | --- | --- | --- | --- | --- |
| 1126 | Wall conduiting | 2026-09-27 → 2027-03-17 (+171d) | 2026-09-29 → 2027-03-19 (+171d) | 1.94d → 2.25d | 1121, 1125SS+1d → 1121, 1125SS+1.12d |  |
| 1127 | Formwork | 2026-09-29 → 2027-03-19 (+171d) | 2026-10-07 → 2027-03-27 (+171d) | 7.94d → 9d | 1126SS+1.88d → 1126SS+2.25d |  |
| 1128 | Concreting | 2026-09-19 → 2027-03-27 (+189d) | 2026-09-20 → 2027-03-28 (+189d) | 0.94d → 1.12d | 1122 → 1127 |  |
| 1129 | **Terrace floor slab** | 2026-10-08 → 2027-03-28 (+171d) | 2026-10-28 → 2027-04-18 (+172d) | 21d → 23.62d |  | constraint start no earlier than 2026-10-08 → start no earlier than 2027-03-28 |
| 1130 | Reinforcement | 2026-10-08 → 2027-03-28 (+171d) | 2026-10-28 → 2027-04-15 (+169d) | 21d → 20.25d | 1133 → 1128 |  |
| 1131 | Wall conduiting | 2026-10-09 → 2027-03-29 (+171d) | 2026-10-16 → 2027-03-31 (+166d) | 8d → 2.25d | 1126, 1130SS+1d → 1126, 1130SS+1.12d |  |
| 1132 | Formwork | 2026-10-09 → 2027-03-30 (+172d) | 2026-10-23 → 2027-04-17 (+176d) | 14d → 20.25d | 1130SS+1.88d → 1130SS+2.25d |  |
| 1133 | Concreting | 2026-10-07 → 2027-04-17 (+192d) | 2026-10-07 → 2027-04-18 (+193d) | 0.94d → 1.12d | 1127 → 1132 |  |
| 1134 | **OHT & Mumty** | 2026-10-24 → 2027-04-18 (+176d) | 2027-01-17 → 2027-05-28 (+131d) | 39.5d → 45d |  | constraint start no earlier than 2026-10-24 → start no earlier than 2027-04-18 |
| 1135 | Reinforcement | 2026-10-24 → 2027-04-18 (+176d) | 2027-01-07 → 2027-05-21 (+134d) | 29.94d → 37.12d | 1138 → 1133 |  |
| 1136 | Wall conduiting | 2026-10-25 → 2027-04-19 (+176d) | 2026-10-30 → 2027-04-24 (+176d) | 4.94d → 5.62d | 1131, 1135SS+1d → 1131, 1135SS+1.12d |  |
| 1137 | Formwork | 2026-10-28 → 2027-04-22 (+176d) | 2027-01-14 → 2027-05-25 (+131d) | 32.94d → 37.12d | 1135SS+3.62d → 1135SS+4.5d |  |
| 1138 | Concreting | 2026-10-23 → 2027-05-25 (+214d) | 2026-10-24 → 2027-05-28 (+216d) | 1d → 3.38d | 1132 → 1137 |  |
| 1139 | **Post Pour Activities** | 2025-11-30 → 2026-03-16 (+106d) | 2027-02-28 → 2027-06-02 (+94d) | 401.12d → 447.75d |  | constraint start no earlier than 2025-11-30 → start no earlier than 2026-03-16 |
| 1140 | 1st Floor | 2025-11-30 → 2026-03-16 (+106d) | 2025-12-16 → 2026-03-27 (+101d) | 7d → 12.38d | 973FS+0.25d → 973 |  |
| 1141 | 2nd Floor | 2027-09-17 → 2026-03-27 (-539d) | 2027-09-18 → 2026-04-07 (-529d) | 1.94d → 12.38d | 842 → 1140, 978 |  |
| 1142 | 3rd Floor | 2025-12-23 → 2026-04-07 (+105d) | 2025-12-30 → 2026-04-18 (+109d) | 7d → 12.38d | 1756FS+0.25d, 993FS+0.25d → 1141, 983 |  |
| 1143 | 4th Floor | 2025-12-31 → 2026-04-18 (+108d) | 2026-01-06 → 2026-04-29 (+113d) | 7d → 12.38d | 1142FS+0.25d, 998FS+0.25d → 1142, 988 |  |
| 1144 | 5th Floor | 2026-01-07 → 2026-04-29 (+112d) | 2026-01-14 → 2026-05-10 (+116d) | 7d → 12.38d | 1143FS+0.25d, 1003FS+0.25d → 1143, 993 |  |
| 1145 | 6th Floor | 2026-01-14 → 2026-05-10 (+116d) | 2026-01-21 → 2026-05-21 (+120d) | 7d → 12.38d | 1144FS+0.25d, 1008FS+0.25d → 1144, 998 |  |
| 1146 | 7th Floor | 2026-01-21 → 2026-05-21 (+120d) | 2026-01-28 → 2026-06-01 (+124d) | 7d → 12.38d | 1145FS+0.25d, 1013FS+0.25d → 1145, 1003 |  |
| 1147 | 8th Floor | 2026-01-29 → 2026-06-01 (+123d) | 2026-02-04 → 2026-06-12 (+128d) | 7d → 12.38d | 1146FS+0.25d, 1018FS+0.25d → 1146, 1008 |  |
| 1148 | 9th Floor | 2026-02-05 → 2026-06-12 (+127d) | 2026-02-12 → 2026-06-23 (+131d) | 7d → 12.38d | 1147FS+0.25d, 1023FS+0.25d → 1147, 1013 |  |
| 1149 | 10th Floor | 2026-02-12 → 2026-06-23 (+131d) | 2026-02-19 → 2026-07-04 (+135d) | 7d → 12.38d | 1148FS+0.25d, 1028FS+0.25d → 1148, 1018 |  |
| 1150 | 11th Floor | 2026-02-19 → 2026-07-04 (+135d) | 2026-02-26 → 2026-07-15 (+139d) | 7d → 12.38d | 1149, 1038 → 1149, 1023 |  |
| 1151 | 12th Floor | 2026-02-26 → 2026-07-15 (+139d) | 2026-03-05 → 2026-07-26 (+143d) | 7d → 12.38d | 1150, 1043 → 1150, 1028 |  |
| 1152 | 13th Floor | 2026-03-05 → 2026-07-26 (+143d) | 2026-03-12 → 2026-08-06 (+147d) | 7d → 12.38d | 1151, 1048 → 1151, 1033 |  |
| 1153 | 14th Floor | 2026-03-13 → 2026-08-06 (+146d) | 2026-03-20 → 2026-08-17 (+150d) | 7d → 12.38d | 1152, 1053 → 1152, 1038 |  |
| 1154 | 15th Floor | 2026-03-23 → 2026-08-17 (+147d) | 2026-03-30 → 2026-08-28 (+151d) | 7d → 12.38d | 1153, 1058 → 1153, 1043 |  |
| 1155 | 16th Floor | 2026-04-02 → 2026-08-28 (+148d) | 2026-04-09 → 2026-09-08 (+152d) | 7d → 12.38d | 1154, 1063 → 1154, 1048 |  |
| 1156 | 17th Floor | 2026-04-19 → 2026-09-08 (+142d) | 2026-04-26 → 2026-09-19 (+146d) | 7d → 12.38d | 1155, 1068 → 1155, 1053 |  |
| 1157 | 18th Floor | 2026-04-30 → 2026-09-19 (+142d) | 2026-05-07 → 2026-09-30 (+146d) | 7d → 12.38d | 1156, 1073 → 1156, 1058 |  |
| 1158 | 19th Floor | 2026-05-15 → 2026-09-30 (+138d) | 2026-05-22 → 2026-10-11 (+142d) | 7d → 12.38d | 1157, 1078 → 1157, 1063 |  |
| 1159 | 20th Floor | 2026-05-31 → 2026-10-11 (+133d) | 2026-06-07 → 2026-10-22 (+137d) | 7d → 12.38d | 1158, 1083 → 1158, 1068 |  |
| 1160 | 21st Floor | 2026-06-11 → 2026-10-22 (+133d) | 2026-06-18 → 2026-12-17 (+182d) | 7d → 12.38d | 1159, 1088 → 1159, 1073 |  |
| 1161 | 22nd Floor | 2026-06-22 → 2026-12-17 (+178d) | 2026-06-29 → 2026-12-28 (+182d) | 7d → 12.38d | 1160, 1093 → 1160, 1078 |  |
| 1162 | 23rd Floor | 2026-07-03 → 2026-12-28 (+178d) | 2026-07-10 → 2027-01-08 (+182d) | 7d → 12.38d | 1161, 1098 → 1161, 1083 |  |
| 1163 | 24th Floor | 2026-07-17 → 2027-01-08 (+175d) | 2026-07-24 → 2027-01-19 (+179d) | 7d → 12.38d | 1162, 1103 → 1162, 1088 |  |
| 1164 | 25th Floor | 2026-07-27 → 2027-01-19 (+176d) | 2026-08-03 → 2027-01-30 (+180d) | 7d → 12.38d | 1163, 1108 → 1163, 1093 |  |
| 1165 | 26th Floor | 2026-08-08 → 2027-01-30 (+175d) | 2026-08-14 → 2027-02-10 (+180d) | 7d → 12.38d | 1164, 1113 → 1164, 1098 |  |
| 1166 | 27th Floor | 2026-08-24 → 2027-02-10 (+170d) | 2026-08-31 → 2027-02-21 (+174d) | 7d → 12.38d | 1165, 1118 → 1165, 1103 |  |
| 1167 | 28th Floor | 2026-09-07 → 2027-02-21 (+167d) | 2026-09-14 → 2027-03-04 (+171d) | 7d → 12.38d | 1166, 1123 → 1166, 1108 |  |
| 1168 | 29th Floor | 2027-10-19 → 2027-03-04 (-229d) | 2027-10-21 → 2027-03-15 (-220d) | 1.94d → 12.38d | 865, 866 → 1167, 1113 |  |
| 1169 | 30th Floor | 2026-10-08 → 2027-03-15 (+158d) | 2026-10-14 → 2027-03-26 (+163d) | 7d → 12.38d | 1783, 1133 → 1168, 1118 |  |
| 1170 | 31st Floor | 2027-10-23 → 2027-03-26 (-211d) | 2027-10-24 → 2027-04-06 (-201d) | 1.94d → 12.38d | 867, 868 → 1169, 1123 |  |
| 1171 | 32nd Flood | 2027-01-14 → 2027-04-06 (+82d) | 2027-01-21 → 2027-04-17 (+86d) | 7d → 12.38d | 253, 934 → 1170, 1128 |  |
| 1172 | 33rd Floor | 2027-01-24 → 2027-04-17 (+83d) | 2027-01-31 → 2027-04-28 (+87d) | 7d → 12.38d | 2088 → 1171 |  |
| 1173 | 34th Floor | 2027-01-31 → 2027-04-28 (+87d) | 2027-02-07 → 2027-05-06 (+88d) | 7d → 9d |  |  |
| 1174 | 35th Floor | 2027-02-07 → 2027-05-06 (+88d) | 2027-02-14 → 2027-05-14 (+89d) | 7d → 9d |  |  |
| 1175 | Terrace | 2027-02-14 → 2027-05-14 (+89d) | 2027-02-21 → 2027-05-22 (+90d) | 7d → 9d |  |  |
| 1176 | Mumty & Machine Room | 2027-02-21 → 2027-05-22 (+90d) | 2027-02-28 → 2027-06-02 (+94d) | 7d → 12.38d |  |  |
| 1177 | **Finishing work** | 2025-12-16 → 2026-03-28 (+102d) | 2029-05-06 → 2028-08-27 (-252d) | 1192.19d → 892.12d |  | constraint start no earlier than 2025-12-16 → start no earlier than 2026-03-28 |
| 1178 | **Flat finishing** | 2025-12-16 → 2026-03-28 (+102d) | 2029-05-06 → 2028-08-27 (-252d) | 1192.19d → 892.12d |  | constraint start no earlier than 2025-12-16 → start no earlier than 2026-03-28 |
| 1179 | **1st Floor** | 2025-12-16 → 2026-03-28 (+102d) | 2028-03-25 → 2027-05-20 (-310d) | 785.19d → 419.62d |  | constraint start no earlier than 2025-12-16 → start no earlier than 2026-03-28 |
| 1180 | Block Work | 2025-12-16 → 2026-03-28 (+102d) | 2025-12-21 → 2026-04-07 (+107d) | 5d → 11.25d |  |  |
| 1181 | Door Frame Fixing | 2025-12-21 → 2026-04-07 (+107d) | 2025-12-26 → 2026-04-15 (+110d) | 5d → 9d |  |  |
| 1182 | Internal Plumbing Works | 2025-12-17 → 2026-04-07 (+111d) | 2025-12-22 → 2026-04-17 (+116d) | 5d → 11.25d | 1180SS+1d → 1180 |  |
| 1183 | Waterproofing | 2026-01-06 → 2026-04-17 (+101d) | 2026-01-16 → 2026-04-25 (+99d) | 10d → 9d | 913, 1198 → 1182 |  |
| 1184 | Internal Plaster | 2026-02-19 → 2026-04-15 (+55d) | 2026-06-19 → 2026-04-21 (-59d) | 119.94d → 6.75d | 832SS+17.88d → 1181FS+0.25d |  |
| 1185 | IPS flooring work | 2026-01-16 → 2026-04-25 (+99d) | 2026-01-26 → 2026-05-04 (+98d) | 10d → 10.12d | 1201, 1197, 1198, 1183 → 1181, 1182, 1183 |  |
| 1186 | Toilet dado work | 2025-12-30 → 2027-03-06 (+431d) | 2026-01-06 → 2027-03-14 (+432d) | 7d → 9d | 913, 1200 → 1183FS+303.75d, 1184FS+303.75d |  |
| 1187 | Toilet flooring work | 2026-01-06 → 2027-03-14 (+432d) | 2026-01-13 → 2027-03-21 (+432d) | 7d → 7.88d |  |  |
| 1188 | Living dinning flooring | 2026-02-09 → 2027-03-21 (+405d) | 2026-02-17 → 2027-03-29 (+405d) | 8d → 9d | 1181FS+45d → 1181, 1187 |  |
| 1189 | Aluminium door-window fixing | 2026-02-20 → 2027-04-08 (+412d) | 2026-02-27 → 2027-04-20 (+417d) | 7d → 13.5d | 1201FS+45d → 1185FS+11.25d, 1188FS+11.25d |  |
| 1190 | Putty primer coat | 2026-02-17 → 2027-03-29 (+405d) | 2026-02-23 → 2027-04-04 (+405d) | 6d → 6.75d |  |  |
| 1191 | Door shutter fixing | 2026-02-17 → 2027-03-29 (+405d) | 2026-02-25 → 2027-04-06 (+405d) | 8d → 9d |  |  |
| 1192 | Electrical wiring work | 2028-03-01 → 2027-04-16 (-320d) | 2028-03-09 → 2027-04-28 (-316d) | 8d → 13.5d | 1836FS-90d → 1191FS+11.25d |  |
| 1193 | Painting 1st coat | 2028-03-09 → 2027-04-28 (-316d) | 2028-03-17 → 2027-05-10 (-312d) | 8d → 13.5d |  |  |
| 1194 | False ceiling | 2028-03-17 → 2027-05-10 (-312d) | 2028-03-25 → 2027-05-20 (-310d) | 8d → 11.25d |  |  |
| 1195 | **2nd Floor** | 2025-12-21 → 2026-04-07 (+107d) | 2028-04-02 → 2027-06-01 (-306d) | 787.94d → 421.62d |  | constraint start no earlier than 2025-12-21 → start no earlier than 2026-04-07 |

| ID | Task | Start | Finish | Duration | Predecessors | Other |
| --- | --- | --- | --- | --- | --- | --- |
| 1196 | Block Work | 2025-12-21 → 2026-04-07 (+107d) | 2025-12-29 → 2026-04-17 (+109d) | 8d → 11.25d |  |  |
| 1197 | Door Frame Fixing | 2025-12-29 → 2026-04-17 (+109d) | 2026-01-07 → 2026-04-25 (+108d) |  |  |  |
| 1198 | Internal Plumbing Works | 2025-12-29 → 2026-04-17 (+109d) | 2026-01-06 → 2026-04-27 (+111d) | 8d → 11.25d |  |  |
| 1199 | Waterproofing | 2026-01-16 → 2026-04-27 (+101d) | 2026-01-26 → 2026-05-05 (+99d) | 10d → 9d | 1183, 1214 → 1183, 1198 |  |
| 1200 | Internal Plaster | 2025-12-22 → 2026-04-25 (+124d) | 2025-12-29 → 2026-05-01 (+123d) | 7d → 6.75d | 1180FS+1d → 1184FS+0.25d, 1197FS+0.25d |  |
| 1201 | IPS flooring work | 2025-12-30 → 2026-05-05 (+126d) | 2026-01-06 → 2026-05-14 (+128d) | 7d → 10.12d | 1181, 1182, 913 → 1185, 1197, 1198, 1199 |  |
| 1202 | Toilet dado work | 2026-01-16 → 2027-03-14 (+422d) | 2026-01-24 → 2027-03-22 (+422d) | 8d → 9d | 1186, 1183, 1216 → 1186, 1199, 1200 |  |
| 1203 | Toilet flooring work | 2026-01-24 → 2027-03-22 (+422d) | 2026-02-01 → 2027-03-29 (+421d) | 8d → 7.88d |  |  |
| 1204 | Living dinning flooring | 2026-02-17 → 2027-03-29 (+405d) | 2026-03-01 → 2027-04-06 (+401d) | 12d → 9d | 1188FS+0.25d → 1188FS+0.25d, 1197FS+0.25d |  |
| 1205 | Aluminium door-window fixing | 2026-02-27 → 2027-04-20 (+417d) | 2026-03-11 → 2027-05-02 (+417d) | 12d → 13.5d | 1189FS+0.25d → 1189FS+0.25d, 1204FS+0.25d |  |
| 1206 | Putty primer coat | 2026-03-01 → 2027-04-06 (+401d) | 2026-03-07 → 2027-04-12 (+401d) | 6d → 6.75d |  |  |
| 1207 | Door shutter fixing | 2026-03-01 → 2027-04-06 (+401d) | 2026-03-09 → 2027-04-14 (+401d) | 8d → 9d |  |  |
| 1208 | Electrical wiring work | 2028-03-09 → 2027-04-28 (-316d) | 2028-03-17 → 2027-05-10 (-312d) | 8d → 13.5d |  |  |
| 1209 | Painting 1st coat | 2028-03-17 → 2027-05-10 (-312d) | 2028-03-25 → 2027-05-22 (-308d) | 8d → 13.5d |  |  |
| 1210 | False ceiling | 2028-03-25 → 2027-05-22 (-308d) | 2028-04-02 → 2027-06-01 (-306d) | 8d → 11.25d |  |  |
| 1211 | **3rd Floor** | 2025-12-30 → 2026-04-17 (+108d) | 2028-04-10 → 2027-06-13 (-302d) | 787.69d → 423.62d |  | constraint start no earlier than 2025-12-30 → start no earlier than 2026-04-17 |
| 1212 | Block Work | 2025-12-30 → 2026-04-17 (+108d) | 2026-01-06 → 2026-04-27 (+111d) | 8d → 11.25d |  |  |
| 1213 | Door Frame Fixing | 2026-01-07 → 2026-04-27 (+110d) | 2026-01-16 → 2026-05-05 (+109d) |  |  |  |
| 1214 | Internal Plumbing Works | 2026-01-07 → 2026-04-27 (+110d) | 2026-01-14 → 2026-05-07 (+113d) | 8d → 11.25d |  |  |
| 1215 | Waterproofing | 2026-02-06 → 2026-05-07 (+90d) | 2026-02-16 → 2026-05-15 (+88d) | 10d → 9d | 1199, 1230 → 1199, 1214 |  |
| 1216 | Internal Plaster | 2025-12-29 → 2026-05-05 (+127d) | 2026-01-06 → 2026-05-11 (+125d) | 8d → 6.75d | 1200FS+0.25d → 1200FS+0.25d, 1213FS+0.25d |  |
| 1217 | IPS flooring work | 2026-01-26 → 2026-05-15 (+109d) | 2026-02-05 → 2026-05-24 (+108d) | 10d → 10.12d | 1185, 1213, 1199, 1232 → 1201, 1213, 1215, 1216 |  |
| 1218 | Toilet dado work | 2026-01-26 → 2027-03-22 (+420d) | 2026-02-03 → 2027-03-30 (+420d) | 8d → 9d | 1202, 1199, 1232 → 1202, 1215, 1216 |  |
| 1219 | Toilet flooring work | 2026-02-02 → 2027-03-30 (+421d) | 2026-02-09 → 2027-04-06 (+421d) | 8d → 7.88d | 1203FS+0.25d → 1203, 1218 |  |
| 1220 | Living dinning flooring | 2026-03-02 → 2027-04-06 (+400d) | 2026-03-13 → 2027-04-14 (+397d) | 12d → 9d | 1204FS+0.25d → 1204FS+0.25d, 1213FS+0.25d |  |
| 1221 | Aluminium door-window fixing | 2026-03-12 → 2027-05-02 (+416d) | 2026-03-23 → 2027-05-14 (+417d) | 12d → 13.5d | 1205FS+0.25d → 1205FS+0.25d, 1220FS+0.25d |  |
| 1222 | Putty primer coat | 2026-03-14 → 2027-04-14 (+396d) | 2026-03-19 → 2027-04-20 (+397d) | 6d → 6.75d |  |  |
| 1223 | Door shutter fixing | 2026-03-14 → 2027-04-14 (+396d) | 2026-03-21 → 2027-04-22 (+397d) | 8d → 9d |  |  |
| 1224 | Electrical wiring work | 2028-03-17 → 2027-05-10 (-312d) | 2028-03-25 → 2027-05-22 (-308d) | 8d → 13.5d |  |  |
| 1225 | Painting 1st coat | 2028-03-25 → 2027-05-22 (-308d) | 2028-04-02 → 2027-06-03 (-304d) | 8d → 13.5d |  |  |
| 1226 | False ceiling | 2028-04-02 → 2027-06-03 (-304d) | 2028-04-10 → 2027-06-13 (-302d) | 8d → 11.25d |  |  |
| 1227 | **4th Floor** | 2026-01-21 → 2026-04-27 (+96d) | 2028-04-18 → 2027-06-25 (-298d) | 773.19d → 425.62d |  | constraint start no earlier than 2026-01-21 → start no earlier than 2026-04-27 |
| 1228 | Block Work | 2026-01-21 → 2026-04-27 (+96d) | 2026-01-29 → 2026-05-05 (+96d) | 8d → 9d | 1145, 1212 → 1212FS+0.25d |  |
| 1229 | Door Frame Fixing | 2026-01-29 → 2026-05-05 (+96d) | 2026-02-07 → 2026-05-13 (+95d) |  |  |  |
| 1230 | Internal Plumbing Works | 2026-01-29 → 2026-05-07 (+98d) | 2026-02-06 → 2026-05-17 (+100d) | 8d → 11.25d |  |  |
| 1231 | Waterproofing | 2026-02-16 → 2026-05-17 (+90d) | 2026-02-26 → 2026-05-25 (+88d) | 10d → 9d | 1215, 1246 → 1215, 1230 |  |
| 1232 | Internal Plaster | 2026-01-07 → 2026-05-14 (+127d) | 2026-01-14 → 2026-05-20 (+126d) | 8d → 6.75d | 1216FS+0.25d → 1216FS+0.25d, 1229FS+0.25d |  |
| 1233 | IPS flooring work | 2026-02-24 → 2026-05-25 (+90d) | 2026-03-06 → 2026-06-03 (+89d) | 10d → 10.12d | 1217, 1229, 1215, 1248 → 1217, 1229, 1231, 1232 |  |
| 1234 | Toilet dado work | 2026-02-24 → 2027-03-30 (+399d) | 2026-03-04 → 2027-04-07 (+399d) | 8d → 9d | 1218, 1215, 1248 → 1218, 1231, 1232 |  |
| 1235 | Toilet flooring work | 2026-03-04 → 2027-04-07 (+399d) | 2026-03-12 → 2027-04-14 (+398d) | 8d → 7.88d |  |  |
| 1236 | Living dinning flooring | 2026-03-14 → 2027-04-14 (+396d) | 2026-03-26 → 2027-04-22 (+392d) | 12d → 9d | 1220FS+0.25d → 1220FS+0.25d, 1229FS+0.25d |  |
| 1237 | Aluminium door-window fixing | 2026-03-24 → 2027-05-14 (+416d) | 2026-04-05 → 2027-05-26 (+416d) | 12d → 13.5d | 1221FS+0.25d → 1221FS+0.25d, 1236FS+0.25d |  |
| 1238 | Putty primer coat | 2026-03-26 → 2027-04-22 (+392d) | 2026-04-01 → 2027-04-28 (+392d) | 6d → 6.75d |  |  |
| 1239 | Door shutter fixing | 2026-03-26 → 2027-04-22 (+392d) | 2026-04-03 → 2027-04-30 (+392d) | 8d → 9d |  |  |
| 1240 | Electrical wiring work | 2028-03-25 → 2027-05-22 (-308d) | 2028-04-02 → 2027-06-03 (-304d) | 8d → 13.5d |  |  |
| 1241 | Painting 1st coat | 2028-04-02 → 2027-06-03 (-304d) | 2028-04-10 → 2027-06-15 (-300d) | 8d → 13.5d |  |  |
| 1242 | False ceiling | 2028-04-10 → 2027-06-15 (-300d) | 2028-04-18 → 2027-06-25 (-298d) | 8d → 11.25d |  |  |
| 1243 | **5th Floor** | 2026-01-29 → 2026-05-06 (+97d) | 2028-05-05 → 2027-07-10 (-300d) | 781.94d → 433.25d |  | constraint start no earlier than 2026-01-29 → start no earlier than 2026-05-06 |
| 1244 | Block Work | 2026-01-29 → 2026-05-06 (+97d) | 2026-02-06 → 2026-05-14 (+97d) | 8d → 9d |  |  |
| 1245 | Door Frame Fixing | 2026-02-07 → 2026-05-14 (+96d) | 2026-02-16 → 2026-05-22 (+95d) |  |  |  |
| 1246 | Internal Plumbing Works | 2026-02-06 → 2026-05-17 (+100d) | 2026-02-14 → 2026-05-27 (+102d) | 8d → 11.25d |  |  |
| 1247 | Waterproofing | 2026-02-26 → 2026-05-27 (+90d) | 2026-03-06 → 2026-06-04 (+90d) | 8d → 9d | 1231, 1262 → 1231, 1246 |  |
| 1248 | Internal Plaster | 2026-02-16 → 2026-05-22 (+95d) | 2026-02-24 → 2026-05-28 (+93d) | 8d → 6.75d | 1232, 1229, 1230, 1215 → 1232FS+0.25d, 1245FS+0.25d |  |
| 1249 | IPS flooring work | 2026-03-07 → 2026-06-04 (+89d) | 2026-03-17 → 2026-06-13 (+88d) | 10d → 10.12d | 1233, 1245, 1231, 1264 → 1233, 1245, 1247, 1248 |  |
| 1250 | Toilet dado work | 2026-03-07 → 2027-04-07 (+396d) | 2026-03-15 → 2027-04-15 (+396d) | 8d → 9d | 1234, 1231, 1264 → 1234, 1247, 1248 |  |
| 1251 | Toilet flooring work | 2026-03-15 → 2027-04-15 (+396d) | 2026-03-23 → 2027-04-22 (+395d) | 8d → 7.88d |  |  |
| 1252 | Living dinning flooring | 2026-03-26 → 2027-04-23 (+393d) | 2026-04-07 → 2027-05-01 (+389d) | 12d → 9d | 1236FS+0.25d → 1236FS+0.25d, 1245FS+0.25d |  |
| 1253 | Aluminium door-window fixing | 2026-04-05 → 2027-05-27 (+417d) | 2026-04-17 → 2027-06-08 (+417d) | 12d → 13.5d | 1237FS+0.25d → 1237FS+0.25d, 1252FS+0.25d |  |
| 1254 | Putty primer coat | 2026-04-07 → 2027-05-01 (+389d) | 2026-04-13 → 2027-05-07 (+389d) | 6d → 6.75d |  |  |
| 1255 | Door shutter fixing | 2026-04-07 → 2027-05-01 (+389d) | 2026-04-15 → 2027-05-09 (+389d) | 8d → 9d |  |  |
| 1256 | Electrical wiring work | 2028-04-02 → 2027-06-03 (-304d) | 2028-04-19 → 2027-06-15 (-309d) | 17d → 13.5d |  |  |
| 1257 | Painting 1st coat | 2028-04-19 → 2027-06-15 (-309d) | 2028-04-27 → 2027-06-30 (-302d) | 8d → 16.88d |  |  |
| 1258 | False ceiling | 2028-04-27 → 2027-06-30 (-302d) | 2028-05-05 → 2027-07-10 (-300d) | 8d → 11.25d |  |  |
| 1259 | **6th Floor** | 2026-02-07 → 2026-05-14 (+96d) | 2028-05-13 → 2027-07-22 (-296d) | 781.69d → 437.5d |  | constraint start no earlier than 2026-02-07 → start no earlier than 2026-05-14 |
| 1260 | Block Work | 2026-02-07 → 2026-05-14 (+96d) | 2026-02-11 → 2026-05-22 (+100d) | 5d → 9d |  |  |
| 1261 | Door Frame Fixing | 2026-02-16 → 2026-05-22 (+95d) | 2026-02-21 → 2026-05-30 (+98d) | 5d → 9d | 998, 1245 → 993, 1245 |  |
| 1262 | Internal Plumbing Works | 2026-02-14 → 2026-05-27 (+102d) | 2026-02-19 → 2026-06-06 (+107d) | 5d → 11.25d |  |  |
| 1263 | Waterproofing | 2026-03-06 → 2026-06-06 (+92d) | 2026-03-14 → 2026-06-14 (+92d) | 8d → 9d | 1247, 1278 → 1247, 1262 |  |
| 1264 | Internal Plaster | 2026-02-27 → 2026-06-14 (+107d) | 2026-03-07 → 2026-06-20 (+105d) | 8d → 6.75d | 1248FS+2.75d → 1248FS+0.25d, 1261FS+0.25d, 1262FS+0.25d, 1263FS+0.25d |  |
| 1265 | IPS flooring work | 2026-03-17 → 2026-06-20 (+95d) | 2026-03-24 → 2026-06-29 (+97d) | 7d → 10.12d | 1249, 1261, 1247, 1280 → 1249, 1261, 1263, 1264 |  |

| ID | Task | Start | Finish | Duration | Predecessors | Other |
| --- | --- | --- | --- | --- | --- | --- |
| 1266 | Toilet dado work | 2026-03-15 → 2027-04-15 (+396d) | 2026-03-22 → 2027-04-23 (+397d) | 7d → 9d | 1250, 1247, 1280 → 1250, 1263, 1264 |  |
| 1267 | Toilet flooring work | 2026-03-23 → 2027-04-23 (+396d) | 2026-03-30 → 2027-04-30 (+396d) | 7d → 7.88d |  |  |
| 1268 | Living dinning flooring | 2026-04-07 → 2027-05-01 (+389d) | 2026-04-15 → 2027-05-09 (+389d) | 8d → 9d | 1252FS+0.25d → 1252FS+0.25d, 1261FS+0.25d |  |
| 1269 | Aluminium door-window fixing | 2026-04-17 → 2027-06-08 (+417d) | 2026-04-24 → 2027-06-20 (+422d) | 7d → 13.5d | 1253FS+0.25d → 1253FS+0.25d, 1268FS+0.25d |  |
| 1270 | Putty primer coat | 2026-04-15 → 2027-05-09 (+389d) | 2026-04-21 → 2027-05-15 (+389d) | 6d → 6.75d |  |  |
| 1271 | Door shutter fixing | 2026-04-15 → 2027-05-09 (+389d) | 2026-04-23 → 2027-05-17 (+389d) | 8d → 9d |  |  |
| 1272 | Electrical wiring work | 2028-04-19 → 2027-06-15 (-309d) | 2028-04-27 → 2027-06-27 (-305d) | 8d → 13.5d |  |  |
| 1273 | Painting 1st coat | 2028-04-27 → 2027-06-30 (-302d) | 2028-05-05 → 2027-07-12 (-298d) | 8d → 13.5d |  |  |
| 1274 | False ceiling | 2028-05-05 → 2027-07-12 (-298d) | 2028-05-13 → 2027-07-22 (-296d) | 8d → 11.25d |  |  |
| 1275 | **7th Floor** | 2026-02-12 → 2026-05-22 (+99d) | 2028-05-21 → 2027-08-03 (-292d) | 784.44d → 441.75d |  | constraint start no earlier than 2026-02-12 → start no earlier than 2026-05-22 |
| 1276 | Block Work | 2026-02-12 → 2026-05-22 (+99d) | 2026-02-17 → 2026-05-30 (+102d) | 5d → 9d |  |  |
| 1277 | Door Frame Fixing | 2026-02-21 → 2026-05-30 (+98d) | 2026-02-26 → 2026-06-07 (+101d) | 5d → 9d |  |  |
| 1278 | Internal Plumbing Works | 2026-02-19 → 2026-06-06 (+107d) | 2026-02-24 → 2026-06-16 (+112d) | 5d → 11.25d |  |  |
| 1279 | Waterproofing | 2026-03-14 → 2026-06-16 (+94d) | 2026-03-22 → 2026-06-24 (+94d) | 8d → 9d | 1263, 1294 → 1263, 1278 |  |
| 1280 | Internal Plaster | 2026-03-07 → 2026-06-24 (+109d) | 2026-03-14 → 2026-06-30 (+108d) | 7d → 6.75d | 1264FS+0.25d → 1264FS+0.25d, 1277FS+0.25d, 1278FS+0.25d, 1279FS+0.25d |  |
| 1281 | IPS flooring work | 2026-03-24 → 2026-06-30 (+98d) | 2026-03-31 → 2026-07-09 (+100d) | 7d → 10.12d | 1265, 1277, 1263, 1296 → 1265, 1277, 1279, 1280 |  |
| 1282 | Toilet dado work | 2026-03-22 → 2027-04-23 (+397d) | 2026-03-29 → 2027-05-01 (+398d) | 7d → 9d | 1266, 1263, 1296 → 1266, 1279, 1280 |  |
| 1283 | Toilet flooring work | 2026-03-30 → 2027-05-01 (+397d) | 2026-04-06 → 2027-05-08 (+397d) | 7d → 7.88d |  |  |
| 1284 | Living dinning flooring | 2026-04-16 → 2027-05-09 (+388d) | 2026-04-23 → 2027-05-17 (+389d) | 8d → 9d | 1268FS+0.25d → 1268FS+0.25d, 1277FS+0.25d |  |
| 1285 | Aluminium door-window fixing | 2026-04-25 → 2027-06-20 (+421d) | 2026-05-01 → 2027-06-28 (+423d) | 7d → 9d | 1269FS+0.25d → 1269FS+0.25d, 1284FS+0.25d |  |
| 1286 | Putty primer coat | 2026-04-24 → 2027-05-17 (+388d) | 2026-04-29 → 2027-05-23 (+389d) | 6d → 6.75d |  |  |
| 1287 | Door shutter fixing | 2026-04-24 → 2027-05-17 (+388d) | 2026-05-01 → 2027-05-25 (+389d) | 8d → 9d |  |  |
| 1288 | Electrical wiring work | 2028-04-27 → 2027-06-27 (-305d) | 2028-05-05 → 2027-07-09 (-301d) | 8d → 13.5d |  |  |
| 1289 | Painting 1st coat | 2028-05-05 → 2027-07-12 (-298d) | 2028-05-13 → 2027-07-24 (-294d) | 8d → 13.5d |  |  |
| 1290 | False ceiling | 2028-05-13 → 2027-07-24 (-294d) | 2028-05-21 → 2027-08-03 (-292d) | 8d → 11.25d |  |  |
| 1291 | **8th Floor** | 2026-02-17 → 2026-05-30 (+102d) | 2028-05-29 → 2027-08-15 (-288d) | 787.19d → 446d |  | constraint start no earlier than 2026-02-17 → start no earlier than 2026-05-30 |
| 1292 | Block Work | 2026-02-17 → 2026-05-30 (+102d) | 2026-02-22 → 2026-06-07 (+105d) | 5d → 9d |  |  |
| 1293 | Door Frame Fixing | 2026-02-26 → 2026-06-07 (+101d) | 2026-03-03 → 2026-06-15 (+104d) | 5d → 9d |  |  |
| 1294 | Internal Plumbing Works | 2026-02-24 → 2026-06-16 (+112d) | 2026-03-01 → 2026-06-26 (+117d) | 5d → 11.25d |  |  |
| 1295 | Waterproofing | 2026-03-22 → 2026-06-26 (+96d) | 2026-03-30 → 2026-07-04 (+96d) | 8d → 9d | 1279, 1310 → 1279, 1294 |  |
| 1296 | Internal Plaster | 2026-03-14 → 2026-07-01 (+109d) | 2026-03-21 → 2026-07-07 (+108d) | 7d → 6.75d | 1280FS+0.25d → 1280FS+0.25d, 1293FS+0.25d |  |
| 1297 | IPS flooring work | 2026-03-31 → 2026-07-09 (+100d) | 2026-04-07 → 2026-07-18 (+102d) | 7d → 10.12d | 1281, 1293, 1279, 1312 → 1281, 1293, 1295, 1296 |  |
| 1298 | Toilet dado work | 2026-03-29 → 2027-05-01 (+398d) | 2026-04-05 → 2027-05-09 (+399d) | 7d → 9d | 1282, 1279, 1312 → 1282, 1295, 1296 |  |
| 1299 | Toilet flooring work | 2026-04-06 → 2027-05-09 (+398d) | 2026-04-13 → 2027-05-16 (+398d) | 7d → 7.88d |  |  |
| 1300 | Living dinning flooring | 2026-04-24 → 2027-05-17 (+388d) | 2026-05-02 → 2027-05-25 (+388d) | 8d → 9d | 1284FS+0.25d → 1284FS+0.25d, 1293FS+0.25d |  |
| 1301 | Aluminium door-window fixing | 2026-05-02 → 2027-06-28 (+422d) | 2026-05-09 → 2027-07-10 (+427d) | 7d → 13.5d | 1285FS+0.25d → 1285FS+0.25d, 1300FS+0.25d |  |
| 1302 | Putty primer coat | 2026-05-02 → 2027-05-25 (+388d) | 2026-05-08 → 2027-05-31 (+388d) | 6d → 6.75d |  |  |
| 1303 | Door shutter fixing | 2026-05-02 → 2027-05-25 (+388d) | 2026-05-10 → 2027-06-02 (+388d) | 8d → 9d |  |  |
| 1304 | Electrical wiring work | 2028-05-05 → 2027-07-09 (-301d) | 2028-05-13 → 2027-07-21 (-297d) | 8d → 13.5d |  |  |
| 1305 | Painting 1st coat | 2028-05-13 → 2027-07-24 (-294d) | 2028-05-21 → 2027-08-05 (-290d) | 8d → 13.5d |  |  |
| 1306 | False ceiling | 2028-05-21 → 2027-08-05 (-290d) | 2028-05-29 → 2027-08-15 (-288d) | 8d → 11.25d |  |  |
| 1307 | **9th Floor** | 2026-02-26 → 2026-06-07 (+101d) | 2028-06-16 → 2027-08-27 (-294d) | 796.19d → 450.25d |  | constraint start no earlier than 2026-02-26 → start no earlier than 2026-06-07 |
| 1308 | Block Work | 2026-02-26 → 2026-06-07 (+101d) | 2026-03-03 → 2026-06-15 (+104d) | 5d → 9d | 1150, 1292 → 1292FS+0.25d |  |
| 1309 | Door Frame Fixing | 2026-03-03 → 2026-06-15 (+104d) | 2026-03-08 → 2026-06-23 (+107d) | 5d → 9d |  |  |
| 1310 | Internal Plumbing Works | 2026-03-03 → 2026-06-26 (+115d) | 2026-03-08 → 2026-07-06 (+120d) | 5d → 11.25d |  |  |
| 1311 | Waterproofing | 2026-03-30 → 2026-07-06 (+98d) | 2026-04-07 → 2026-07-14 (+98d) | 8d → 9d | 1295, 1326 → 1295, 1310 |  |
| 1312 | Internal Plaster | 2026-03-22 → 2026-07-07 (+107d) | 2026-03-28 → 2026-07-13 (+107d) | 7d → 6.75d | 1296FS+0.25d → 1296FS+0.25d, 1309FS+0.25d |  |
| 1313 | IPS flooring work | 2026-04-07 → 2026-07-18 (+102d) | 2026-04-14 → 2026-07-27 (+104d) | 7d → 10.12d | 1297, 1309, 1295, 1328 → 1297, 1309, 1311, 1312 |  |
| 1314 | Toilet dado work | 2026-04-05 → 2027-05-09 (+399d) | 2026-04-12 → 2027-05-17 (+400d) | 7d → 9d | 1298, 1295, 1328 → 1298, 1311, 1312 |  |
| 1315 | Toilet flooring work | 2026-04-13 → 2027-05-17 (+399d) | 2026-04-20 → 2027-05-24 (+399d) | 7d → 7.88d |  |  |
| 1316 | Living dinning flooring | 2026-05-02 → 2027-05-25 (+388d) | 2026-05-10 → 2027-06-02 (+388d) | 8d → 9d | 1300FS+0.25d → 1300FS+0.25d, 1309FS+0.25d |  |
| 1317 | Aluminium door-window fixing | 2026-05-09 → 2027-07-10 (+427d) | 2026-05-16 → 2027-07-22 (+432d) | 7d → 13.5d | 1301FS+0.25d → 1301FS+0.25d, 1316FS+0.25d |  |
| 1318 | Putty primer coat | 2026-05-10 → 2027-06-02 (+388d) | 2026-05-16 → 2027-06-08 (+388d) | 6d → 6.75d |  |  |
| 1319 | Door shutter fixing | 2026-05-10 → 2027-06-02 (+388d) | 2026-05-18 → 2027-06-10 (+388d) | 8d → 9d |  |  |
| 1320 | Electrical wiring work | 2028-05-13 → 2027-07-21 (-297d) | 2028-05-25 → 2027-08-02 (-297d) | 12d → 13.5d |  |  |
| 1321 | Painting 1st coat | 2028-05-25 → 2027-08-05 (-294d) | 2028-06-06 → 2027-08-17 (-294d) | 12d → 13.5d |  |  |
| 1322 | False ceiling | 2028-06-06 → 2027-08-17 (-294d) | 2028-06-16 → 2027-08-27 (-294d) | 10d → 11.25d |  |  |
| 1323 | **10th Floor** | 2026-03-03 → 2026-06-16 (+105d) | 2028-06-28 → 2027-09-08 (-294d) | 802.94d → 454.5d |  | constraint start no earlier than 2026-03-03 → start no earlier than 2026-06-16 |
| 1324 | Block Work | 2026-03-03 → 2026-06-16 (+105d) | 2026-03-08 → 2026-06-24 (+108d) | 5d → 9d |  |  |
| 1325 | Door Frame Fixing | 2026-03-08 → 2026-06-24 (+108d) | 2026-03-13 → 2026-07-02 (+111d) | 5d → 9d |  |  |
| 1326 | Internal Plumbing Works | 2026-03-08 → 2026-07-06 (+120d) | 2026-03-13 → 2026-07-16 (+125d) | 5d → 11.25d |  |  |
| 1327 | Waterproofing | 2026-04-07 → 2026-07-16 (+100d) | 2026-04-15 → 2026-07-24 (+100d) | 8d → 9d | 1311, 1342 → 1311, 1326 |  |
| 1328 | Internal Plaster | 2026-03-29 → 2026-07-13 (+106d) | 2026-04-05 → 2026-07-19 (+105d) | 7d → 6.75d | 1312FS+0.25d → 1312FS+0.25d, 1325FS+0.25d |  |
| 1329 | IPS flooring work | 2026-04-14 → 2026-07-27 (+104d) | 2026-04-21 → 2026-08-05 (+106d) | 7d → 10.12d | 1313, 1325, 1311, 1344 → 1313, 1325, 1327, 1328 |  |
| 1330 | Toilet dado work | 2026-04-12 → 2027-05-17 (+400d) | 2026-04-19 → 2027-05-25 (+401d) | 7d → 9d | 1314, 1311, 1344 → 1314, 1327, 1328 |  |
| 1331 | Toilet flooring work | 2026-04-20 → 2027-05-25 (+400d) | 2026-04-27 → 2027-06-01 (+400d) | 7d → 7.88d |  |  |
| 1332 | Living dinning flooring | 2026-05-10 → 2027-06-03 (+389d) | 2026-05-18 → 2027-06-11 (+389d) | 8d → 9d | 1316FS+0.25d → 1316FS+0.25d, 1325FS+0.25d |  |
| 1333 | Aluminium door-window fixing | 2026-05-16 → 2027-07-23 (+433d) | 2026-05-23 → 2027-08-04 (+438d) | 7d → 13.5d | 1317FS+0.25d → 1317FS+0.25d, 1332FS+0.25d |  |
| 1334 | Putty primer coat | 2026-05-18 → 2027-06-11 (+389d) | 2026-05-24 → 2027-06-17 (+389d) | 6d → 6.75d |  |  |
| 1335 | Door shutter fixing | 2026-05-18 → 2027-06-11 (+389d) | 2026-05-26 → 2027-06-19 (+389d) | 8d → 9d |  |  |

| ID | Task | Start | Finish | Duration | Predecessors | Other |
| --- | --- | --- | --- | --- | --- | --- |
| 1336 | Electrical wiring work | 2028-05-25 → 2027-08-02 (-297d) | 2028-06-06 → 2027-08-14 (-297d) | 12d → 13.5d |  |  |
| 1337 | Painting 1st coat | 2028-06-06 → 2027-08-17 (-294d) | 2028-06-18 → 2027-08-29 (-294d) | 12d → 13.5d |  |  |
| 1338 | False ceiling | 2028-06-18 → 2027-08-29 (-294d) | 2028-06-28 → 2027-09-08 (-294d) | 10d → 11.25d |  |  |
| 1339 | **11th Floor** | 2026-03-09 → 2026-06-24 (+107d) | 2028-07-10 → 2027-09-20 (-294d) | 809.69d → 458.75d |  | constraint start no earlier than 2026-03-09 → start no earlier than 2026-06-24 |
| 1340 | Block Work | 2026-03-09 → 2026-06-24 (+107d) | 2026-03-13 → 2026-07-02 (+111d) | 5d → 9d |  |  |
| 1341 | Door Frame Fixing | 2026-03-14 → 2026-07-02 (+110d) | 2026-03-18 → 2026-07-10 (+114d) | 5d → 9d |  |  |
| 1342 | Internal Plumbing Works | 2026-03-14 → 2026-07-16 (+124d) | 2026-03-18 → 2026-07-26 (+130d) | 5d → 11.25d |  |  |
| 1343 | Waterproofing | 2026-04-15 → 2026-07-26 (+102d) | 2026-04-30 → 2026-08-03 (+95d) | 15d → 9d | 1327, 1358 → 1327, 1342 |  |
| 1344 | Internal Plaster | 2026-04-05 → 2026-07-19 (+105d) | 2026-04-12 → 2026-07-25 (+104d) | 7d → 6.75d | 1328FS+0.25d → 1328FS+0.25d, 1341FS+0.25d |  |
| 1345 | IPS flooring work | 2026-04-21 → 2026-08-05 (+106d) | 2026-04-28 → 2026-08-14 (+108d) | 7d → 10.12d | 1329, 1341, 1342, 1327 → 1329, 1341, 1342, 1343 |  |
| 1346 | Toilet dado work | 2026-04-19 → 2027-05-25 (+401d) | 2026-04-26 → 2027-06-02 (+402d) | 7d → 9d | 1330, 1327, 1360 → 1330, 1343, 1344 |  |
| 1347 | Toilet flooring work | 2026-04-27 → 2027-06-02 (+401d) | 2026-05-04 → 2027-06-09 (+401d) | 7d → 7.88d |  |  |
| 1348 | Living dinning flooring | 2026-05-19 → 2027-06-11 (+388d) | 2026-05-26 → 2027-06-19 (+389d) | 8d → 9d | 1332FS+0.25d → 1332FS+0.25d, 1341FS+0.25d |  |
| 1349 | Aluminium door-window fixing | 2026-05-24 → 2027-08-04 (+437d) | 2026-05-30 → 2027-08-16 (+443d) | 7d → 13.5d | 1333FS+0.25d → 1333FS+0.25d, 1348FS+0.25d |  |
| 1350 | Putty primer coat | 2026-05-27 → 2027-06-19 (+388d) | 2026-06-01 → 2027-06-25 (+389d) | 6d → 6.75d |  |  |
| 1351 | Door shutter fixing | 2026-05-27 → 2027-06-19 (+388d) | 2026-06-03 → 2027-06-27 (+389d) | 8d → 9d |  |  |
| 1352 | Electrical wiring work | 2028-06-06 → 2027-08-14 (-297d) | 2028-06-18 → 2027-08-26 (-297d) | 12d → 13.5d |  |  |
| 1353 | Painting 1st coat | 2028-06-18 → 2027-08-29 (-294d) | 2028-06-30 → 2027-09-10 (-294d) | 12d → 13.5d |  |  |
| 1354 | False ceiling | 2028-06-30 → 2027-09-10 (-294d) | 2028-07-10 → 2027-09-20 (-294d) | 10d → 11.25d |  |  |
| 1355 | **12th Floor** | 2026-03-14 → 2026-07-02 (+110d) | 2028-07-22 → 2027-10-02 (-294d) | 816.44d → 463d |  | constraint start no earlier than 2026-03-14 → start no earlier than 2026-07-02 |
| 1356 | Block Work | 2026-03-14 → 2026-07-02 (+110d) | 2026-03-19 → 2026-07-10 (+113d) | 5d → 9d |  |  |
| 1357 | Door Frame Fixing | 2026-03-19 → 2026-07-10 (+113d) | 2026-03-28 → 2026-07-18 (+112d) |  |  |  |
| 1358 | Internal Plumbing Works | 2026-03-19 → 2026-07-26 (+129d) | 2026-04-03 → 2026-08-05 (+124d) | 15d → 11.25d |  |  |
| 1359 | Waterproofing | 2026-04-30 → 2026-08-05 (+97d) | 2026-05-08 → 2026-08-13 (+97d) | 8d → 9d | 1343, 1374 → 1343, 1358 |  |
| 1360 | Internal Plaster | 2026-04-12 → 2026-07-25 (+104d) | 2026-04-19 → 2026-07-29 (+101d) | 7d → 4.5d | 1344FS+0.25d → 1344FS+0.25d, 1357FS+0.25d |  |
| 1361 | IPS flooring work | 2026-04-30 → 2026-08-14 (+106d) | 2026-05-12 → 2026-08-23 (+103d) | 12d → 10.12d | 1345, 1357, 1358, 1343 → 1345, 1357, 1358, 1359 |  |
| 1362 | Toilet dado work | 2026-04-30 → 2027-06-02 (+398d) | 2026-05-12 → 2027-06-10 (+394d) | 12d → 9d | 1346, 1343, 1376 → 1346, 1359, 1360 |  |
| 1363 | Toilet flooring work | 2026-05-12 → 2027-06-10 (+394d) | 2026-05-24 → 2027-06-17 (+389d) | 12d → 7.88d |  |  |
| 1364 | Living dinning flooring | 2026-05-27 → 2027-06-19 (+388d) | 2026-06-03 → 2027-06-27 (+389d) | 7d → 9d | 1348FS+0.25d → 1348FS+0.25d, 1357FS+0.25d |  |
| 1365 | Aluminium door-window fixing | 2026-05-31 → 2027-08-16 (+442d) | 2026-06-08 → 2027-08-28 (+446d) | 8d → 13.5d | 1349FS+0.25d → 1349, 1361, 1364 |  |
| 1366 | Putty primer coat | 2026-06-03 → 2027-06-27 (+389d) | 2026-06-09 → 2027-07-03 (+389d) | 6d → 6.75d |  |  |
| 1367 | Door shutter fixing | 2026-06-04 → 2027-06-27 (+388d) | 2026-06-11 → 2027-07-05 (+389d) | 8d → 9d |  |  |
| 1368 | Electrical wiring work | 2028-06-18 → 2027-08-26 (-297d) | 2028-06-30 → 2027-09-07 (-297d) | 12d → 13.5d |  |  |
| 1369 | Painting 1st coat | 2028-06-30 → 2027-09-10 (-294d) | 2028-07-12 → 2027-09-22 (-294d) | 12d → 13.5d |  |  |
| 1370 | False ceiling | 2028-07-12 → 2027-09-22 (-294d) | 2028-07-22 → 2027-10-02 (-294d) | 10d → 11.25d |  |  |
| 1371 | **13th Floor** | 2026-03-19 → 2026-07-10 (+113d) | 2028-08-03 → 2027-10-14 (-294d) | 823.19d → 467.25d |  | constraint start no earlier than 2026-03-19 → start no earlier than 2026-07-10 |
| 1372 | Block Work | 2026-03-19 → 2026-07-10 (+113d) | 2026-03-24 → 2026-07-18 (+116d) | 5d → 9d |  |  |
| 1373 | Door Frame Fixing | 2026-03-28 → 2026-07-18 (+112d) | 2026-04-02 → 2026-07-26 (+115d) | 5d → 9d |  |  |
| 1374 | Internal Plumbing Works | 2026-04-03 → 2026-08-05 (+124d) | 2026-04-08 → 2026-08-15 (+129d) | 5d → 11.25d |  |  |
| 1375 | Waterproofing | 2026-05-08 → 2026-08-15 (+99d) | 2026-05-23 → 2026-08-23 (+92d) | 15d → 9d | 1359, 1390 → 1359, 1374 |  |
| 1376 | Internal Plaster | 2026-04-20 → 2026-07-30 (+101d) | 2026-04-27 → 2026-08-03 (+98d) | 8d → 4.5d | 1360FS+0.25d → 1360FS+0.25d, 1373FS+0.25d |  |
| 1377 | IPS flooring work | 2026-05-12 → 2026-08-23 (+103d) | 2026-05-19 → 2026-09-01 (+105d) | 7d → 10.12d | 1361, 1373, 1359, 1392 → 1361, 1373, 1375, 1376 |  |
| 1378 | Toilet dado work | 2026-05-12 → 2027-06-10 (+394d) | 2026-05-19 → 2027-06-18 (+395d) | 7d → 9d | 1362, 1359, 1392 → 1362, 1375, 1376 |  |
| 1379 | Toilet flooring work | 2026-05-24 → 2027-06-18 (+390d) | 2026-05-31 → 2027-06-25 (+390d) | 7d → 7.88d |  |  |
| 1380 | Living dinning flooring | 2026-06-03 → 2027-06-27 (+389d) | 2026-06-11 → 2027-07-05 (+389d) | 8d → 9d | 1364FS+0.25d → 1364, 1373, 1379 |  |
| 1381 | Aluminium door-window fixing | 2026-06-08 → 2027-08-28 (+446d) | 2026-06-15 → 2027-09-09 (+451d) | 7d → 13.5d | 1365FS+0.25d → 1365, 1377, 1380 |  |
| 1382 | Putty primer coat | 2026-06-11 → 2027-07-05 (+389d) | 2026-06-17 → 2027-07-11 (+389d) | 6d → 6.75d |  |  |
| 1383 | Door shutter fixing | 2026-06-12 → 2027-07-05 (+388d) | 2026-06-19 → 2027-07-13 (+389d) | 8d → 9d |  |  |
| 1384 | Electrical wiring work | 2028-06-30 → 2027-09-07 (-297d) | 2028-07-12 → 2027-09-19 (-297d) | 12d → 13.5d |  |  |
| 1385 | Painting 1st coat | 2028-07-12 → 2027-09-22 (-294d) | 2028-07-24 → 2027-10-04 (-294d) | 12d → 13.5d |  |  |
| 1386 | False ceiling | 2028-07-24 → 2027-10-04 (-294d) | 2028-08-03 → 2027-10-14 (-294d) | 10d → 11.25d |  |  |
| 1387 | **14th Floor** | 2026-03-24 → 2026-07-19 (+117d) | 2028-08-15 → 2027-10-26 (-294d) | 829.94d → 471.5d |  | constraint start no earlier than 2026-03-24 → start no earlier than 2026-07-19 |
| 1388 | Block Work | 2026-03-24 → 2026-07-19 (+117d) | 2026-03-29 → 2026-07-27 (+120d) | 5d → 9d |  |  |
| 1389 | Door Frame Fixing | 2026-04-02 → 2026-07-27 (+116d) | 2026-04-11 → 2026-08-04 (+115d) |  |  |  |
| 1390 | Internal Plumbing Works | 2026-04-08 → 2026-08-15 (+129d) | 2026-04-23 → 2026-08-25 (+124d) | 15d → 11.25d |  |  |
| 1391 | Waterproofing | 2026-05-23 → 2026-08-25 (+94d) | 2026-06-04 → 2026-09-02 (+90d) | 12d → 9d | 1375, 1406 → 1375, 1390 |  |
| 1392 | Internal Plaster | 2026-04-30 → 2026-08-04 (+96d) | 2026-05-07 → 2026-08-08 (+93d) | 7d → 4.5d | 1376FS+2.75d → 1376FS+0.25d, 1389FS+0.25d |  |
| 1393 | IPS flooring work | 2026-05-23 → 2026-09-02 (+102d) | 2026-06-04 → 2026-09-11 (+99d) | 12d → 10.12d | 1377, 1389, 1390, 1375 → 1377, 1389, 1390, 1391 |  |
| 1394 | Toilet dado work | 2026-05-23 → 2027-06-18 (+391d) | 2026-06-04 → 2027-06-26 (+387d) | 12d → 9d | 1378, 1375, 1408 → 1378, 1391, 1392 |  |
| 1395 | Toilet flooring work | 2026-06-04 → 2027-06-26 (+387d) | 2026-06-16 → 2027-07-03 (+382d) | 12d → 7.88d |  |  |
| 1396 | Living dinning flooring | 2026-06-11 → 2027-07-05 (+389d) | 2026-06-18 → 2027-07-13 (+390d) | 7d → 9d | 1380FS+0.25d → 1380, 1389, 1395 |  |
| 1397 | Aluminium door-window fixing | 2026-06-15 → 2027-09-09 (+451d) | 2026-06-23 → 2027-09-21 (+455d) | 8d → 13.5d | 1381FS+0.25d → 1381, 1393, 1396 |  |
| 1398 | Putty primer coat | 2026-06-18 → 2027-07-13 (+390d) | 2026-06-24 → 2027-07-19 (+390d) | 6d → 6.75d |  |  |
| 1399 | Door shutter fixing | 2026-06-20 → 2027-07-13 (+388d) | 2026-06-27 → 2027-07-21 (+389d) | 8d → 9d |  |  |
| 1400 | Electrical wiring work | 2028-07-12 → 2027-09-19 (-297d) | 2028-07-24 → 2027-10-01 (-297d) | 12d → 13.5d |  |  |
| 1401 | Painting 1st coat | 2028-07-24 → 2027-10-04 (-294d) | 2028-08-05 → 2027-10-16 (-294d) | 12d → 13.5d |  |  |
| 1402 | False ceiling | 2028-08-05 → 2027-10-16 (-294d) | 2028-08-15 → 2027-10-26 (-294d) | 10d → 11.25d |  |  |
| 1403 | **15th Floor** | 2026-03-30 → 2026-07-27 (+119d) | 2028-08-27 → 2027-12-22 (-249d) | 836.69d → 475.75d |  | constraint start no earlier than 2026-03-30 → start no earlier than 2026-07-27 |
| 1404 | Block Work | 2026-03-30 → 2026-07-27 (+119d) | 2026-04-06 → 2026-08-04 (+120d) | 8d → 9d |  |  |
| 1405 | Door Frame Fixing | 2026-04-11 → 2026-08-04 (+115d) | 2026-04-20 → 2026-08-09 (+111d) | 9d → 5.62d |  |  |

| ID | Task | Start | Finish | Duration | Predecessors | Other |
| --- | --- | --- | --- | --- | --- | --- |
| 1406 | Internal Plumbing Works | 2026-04-23 → 2026-08-25 (+124d) | 2026-05-03 → 2026-09-04 (+124d) | 10d → 11.25d |  |  |
| 1407 | Waterproofing | 2026-06-04 → 2026-09-04 (+92d) | 2026-06-16 → 2026-09-12 (+88d) | 12d → 9d | 1391, 1422 → 1391, 1406 |  |
| 1408 | Internal Plaster | 2026-05-08 → 2026-08-09 (+93d) | 2026-05-15 → 2026-08-15 (+92d) | 8d → 6.75d | 1392FS+0.25d → 1392FS+0.25d, 1405FS+0.25d |  |
| 1409 | IPS flooring work | 2026-06-04 → 2026-09-12 (+100d) | 2026-06-13 → 2026-09-21 (+100d) | 9d → 10.12d | 1393, 1405, 1406, 1391 → 1393, 1405, 1406, 1407 |  |
| 1410 | Toilet dado work | 2026-06-04 → 2027-06-26 (+387d) | 2026-06-12 → 2027-07-04 (+387d) | 8d → 9d | 1394, 1391, 1424 → 1394, 1407, 1408 |  |
| 1411 | Toilet flooring work | 2026-06-16 → 2027-07-04 (+383d) | 2026-06-23 → 2027-07-11 (+383d) | 7d → 7.88d |  |  |
| 1412 | Living dinning flooring | 2026-06-19 → 2027-07-13 (+389d) | 2026-06-30 → 2027-07-21 (+386d) | 12d → 9d | 1396FS+0.25d → 1396, 1405, 1411 |  |
| 1413 | Aluminium door-window fixing | 2026-06-24 → 2027-09-21 (+454d) | 2026-07-05 → 2027-10-03 (+455d) | 12d → 13.5d | 1397FS+0.25d → 1397, 1409, 1412 |  |
| 1414 | Putty primer coat | 2026-07-01 → 2027-07-21 (+385d) | 2026-07-06 → 2027-07-27 (+386d) | 6d → 6.75d |  |  |
| 1415 | Door shutter fixing | 2026-07-01 → 2027-07-21 (+385d) | 2026-07-08 → 2027-07-29 (+386d) | 8d → 9d |  |  |
| 1416 | Electrical wiring work | 2028-07-24 → 2027-10-01 (-297d) | 2028-08-05 → 2027-10-13 (-297d) | 12d → 13.5d |  |  |
| 1417 | Painting 1st coat | 2028-08-05 → 2027-10-16 (-294d) | 2028-08-17 → 2027-10-28 (-294d) | 12d → 13.5d |  |  |
| 1418 | False ceiling | 2028-08-17 → 2027-10-28 (-294d) | 2028-08-27 → 2027-12-22 (-249d) | 10d → 11.25d |  |  |
| 1419 | **16th Floor** | 2026-04-07 → 2026-09-30 (+176d) | 2028-09-08 → 2028-01-03 (-249d) | 840.44d → 415.38d |  | constraint start no earlier than 2026-04-07 → start no earlier than 2026-09-30 |
| 1420 | Block Work | 2026-04-07 → 2026-09-30 (+176d) | 2026-04-15 → 2026-10-08 (+176d) | 8d → 9d | 1404FS+0.25d → 1157, 1404 |  |
| 1421 | Door Frame Fixing | 2026-04-20 → 2026-10-08 (+171d) | 2026-04-29 → 2026-10-17 (+171d) | 9d → 10.12d |  |  |
| 1422 | Internal Plumbing Works | 2026-05-03 → 2026-10-08 (+158d) | 2026-05-13 → 2026-10-18 (+158d) | 10d → 11.25d |  |  |
| 1423 | Waterproofing | 2026-06-16 → 2026-10-18 (+124d) | 2026-06-28 → 2026-10-30 (+124d) | 12d → 13.5d | 1407, 1438 → 1407, 1422 |  |
| 1424 | Internal Plaster | 2026-05-16 → 2026-10-30 (+167d) | 2026-05-21 → 2026-12-23 (+216d) | 5d → 10.12d | 1408FS+0.25d → 1408, 1421, 1422, 1423 |  |
| 1425 | IPS flooring work | 2026-06-16 → 2026-10-30 (+136d) | 2026-06-25 → 2026-12-23 (+181d) | 9d → 10.12d | 1409, 1421, 1422, 1407 → 1409, 1421, 1422, 1423 |  |
| 1426 | Toilet dado work | 2026-06-16 → 2027-07-04 (+383d) | 2026-06-24 → 2027-07-12 (+383d) | 8d → 9d | 1410, 1407, 1440 → 1410, 1423, 1424 |  |
| 1427 | Toilet flooring work | 2026-06-24 → 2027-07-12 (+383d) | 2026-07-01 → 2027-07-19 (+383d) | 7d → 7.88d |  |  |
| 1428 | Living dinning flooring | 2026-07-01 → 2027-07-21 (+385d) | 2026-07-13 → 2027-08-02 (+385d) | 12d → 13.5d | 1412FS+0.25d → 1412, 1421, 1427 |  |
| 1429 | Aluminium door-window fixing | 2026-07-06 → 2027-10-03 (+454d) | 2026-07-18 → 2027-10-15 (+454d) | 12d → 13.5d | 1413FS+0.25d → 1413, 1425, 1428 |  |
| 1430 | Putty primer coat | 2026-07-13 → 2027-08-02 (+385d) | 2026-07-19 → 2027-08-08 (+385d) | 6d → 6.75d |  |  |
| 1431 | Door shutter fixing | 2026-07-13 → 2027-08-02 (+385d) | 2026-07-21 → 2027-08-10 (+385d) | 8d → 9d |  |  |
| 1432 | Electrical wiring work | 2028-08-05 → 2027-10-13 (-297d) | 2028-08-17 → 2027-10-25 (-297d) | 12d → 13.5d |  |  |
| 1433 | Painting 1st coat | 2028-08-17 → 2027-10-28 (-294d) | 2028-08-29 → 2027-12-24 (-249d) | 12d → 13.5d |  |  |
| 1434 | False ceiling | 2028-08-29 → 2027-12-24 (-249d) | 2028-09-08 → 2028-01-03 (-249d) | 10d → 11.25d |  |  |
| 1435 | **17th Floor** | 2026-04-15 → 2026-10-11 (+179d) | 2028-09-20 → 2028-01-15 (-249d) | 844.19d → 416.5d |  | constraint start no earlier than 2026-04-15 → start no earlier than 2026-10-11 |
| 1436 | Block Work | 2026-04-15 → 2026-10-11 (+179d) | 2026-04-23 → 2026-10-19 (+179d) | 8d → 9d | 1420FS+0.25d → 1158, 1420 |  |
| 1437 | Door Frame Fixing | 2026-04-29 → 2026-10-19 (+173d) | 2026-05-08 → 2026-10-28 (+173d) | 9d → 10.12d |  |  |
| 1438 | Internal Plumbing Works | 2026-05-13 → 2026-10-19 (+159d) | 2026-05-23 → 2026-10-29 (+159d) | 10d → 11.25d |  |  |
| 1439 | Waterproofing | 2026-06-28 → 2026-10-30 (+124d) | 2026-07-10 → 2026-12-26 (+169d) | 12d → 13.5d | 1423, 1454 → 1423, 1438 |  |
| 1440 | Internal Plaster | 2026-05-21 → 2026-12-26 (+219d) | 2026-05-26 → 2027-01-04 (+223d) | 5d → 10.12d | 1424FS+0.25d → 1424, 1437, 1438, 1439 |  |
| 1441 | IPS flooring work | 2026-06-28 → 2026-12-26 (+181d) | 2026-07-07 → 2027-01-04 (+181d) | 9d → 10.12d | 1425, 1437, 1438, 1423 → 1425, 1437, 1438, 1439 |  |
| 1442 | Toilet dado work | 2026-06-28 → 2027-07-12 (+379d) | 2026-07-06 → 2027-07-20 (+379d) | 8d → 9d | 1426, 1423, 1456 → 1426, 1439, 1440 |  |
| 1443 | Toilet flooring work | 2026-07-06 → 2027-07-20 (+379d) | 2026-07-13 → 2027-07-27 (+379d) | 7d → 7.88d |  |  |
| 1444 | Living dinning flooring | 2026-07-13 → 2027-08-02 (+385d) | 2026-07-25 → 2027-08-14 (+385d) | 12d → 13.5d | 1428FS+0.25d → 1428, 1437, 1443 |  |
| 1445 | Aluminium door-window fixing | 2026-07-25 → 2027-10-15 (+447d) | 2026-08-06 → 2027-10-27 (+447d) | 12d → 13.5d |  |  |
| 1446 | Putty primer coat | 2026-07-25 → 2027-08-14 (+385d) | 2026-07-31 → 2027-08-20 (+385d) | 6d → 6.75d |  |  |
| 1447 | Door shutter fixing | 2026-07-25 → 2027-08-14 (+385d) | 2026-08-02 → 2027-08-22 (+385d) | 8d → 9d |  |  |
| 1448 | Electrical wiring work | 2028-08-17 → 2027-10-25 (-297d) | 2028-08-29 → 2027-12-21 (-252d) | 12d → 13.5d |  |  |
| 1449 | Painting 1st coat | 2028-08-29 → 2027-12-24 (-249d) | 2028-09-10 → 2028-01-05 (-249d) | 12d → 13.5d |  |  |
| 1450 | False ceiling | 2028-09-10 → 2028-01-05 (-249d) | 2028-09-20 → 2028-01-15 (-249d) | 10d → 11.25d |  |  |
| 1451 | **18th Floor** | 2026-04-23 → 2026-10-22 (+182d) | 2028-10-02 → 2028-01-27 (-249d) | 847.94d → 417.62d |  | constraint start no earlier than 2026-04-23 → start no earlier than 2026-10-22 |
| 1452 | Block Work | 2026-04-23 → 2026-10-22 (+182d) | 2026-05-01 → 2026-10-30 (+182d) | 8d → 9d | 1436FS+0.25d → 1159, 1436 |  |
| 1453 | Door Frame Fixing | 2026-05-08 → 2026-10-30 (+175d) | 2026-05-17 → 2026-12-23 (+220d) | 9d → 10.12d |  |  |
| 1454 | Internal Plumbing Works | 2026-05-23 → 2026-10-30 (+160d) | 2026-06-02 → 2026-12-24 (+205d) | 10d → 11.25d |  |  |
| 1455 | Waterproofing | 2026-07-10 → 2026-12-26 (+169d) | 2026-07-22 → 2027-01-07 (+169d) | 12d → 13.5d | 1439, 1470 → 1439, 1454 |  |
| 1456 | Internal Plaster | 2026-05-26 → 2027-01-07 (+226d) | 2026-05-31 → 2027-01-16 (+230d) | 5d → 10.12d | 1440FS+0.25d → 1440, 1453, 1454, 1455 |  |
| 1457 | IPS flooring work | 2026-07-10 → 2027-01-07 (+181d) | 2026-07-19 → 2027-01-16 (+181d) | 9d → 10.12d | 1441, 1453, 1454, 1439 → 1441, 1453, 1454, 1455 |  |
| 1458 | Toilet dado work | 2026-07-10 → 2027-07-20 (+375d) | 2026-07-18 → 2027-07-28 (+375d) | 8d → 9d | 1442, 1439, 1472 → 1442, 1455, 1456 |  |
| 1459 | Toilet flooring work | 2026-07-18 → 2027-07-28 (+375d) | 2026-07-25 → 2027-08-04 (+375d) | 7d → 7.88d |  |  |
| 1460 | Living dinning flooring | 2026-07-25 → 2027-08-14 (+385d) | 2026-08-06 → 2027-08-26 (+385d) | 12d → 13.5d | 1444FS+0.25d → 1444, 1453, 1459 |  |
| 1461 | Aluminium door-window fixing | 2026-08-06 → 2027-10-27 (+447d) | 2026-08-18 → 2027-12-23 (+492d) | 12d → 13.5d | 1445FS+0.25d → 1445, 1457, 1460 |  |
| 1462 | Putty primer coat | 2026-08-06 → 2027-08-26 (+385d) | 2026-08-12 → 2027-09-01 (+385d) | 6d → 6.75d |  |  |
| 1463 | Door shutter fixing | 2026-08-06 → 2027-08-26 (+385d) | 2026-08-14 → 2027-09-03 (+385d) | 8d → 9d |  |  |
| 1464 | Electrical wiring work | 2028-08-29 → 2027-12-21 (-252d) | 2028-09-10 → 2028-01-02 (-252d) | 12d → 13.5d |  |  |
| 1465 | Painting 1st coat | 2028-09-10 → 2028-01-05 (-249d) | 2028-09-22 → 2028-01-17 (-249d) | 12d → 13.5d |  |  |
| 1466 | False ceiling | 2028-09-22 → 2028-01-17 (-249d) | 2028-10-02 → 2028-01-27 (-249d) | 10d → 11.25d |  |  |
| 1467 | **19th Floor** | 2026-05-02 → 2026-12-17 (+229d) | 2028-10-14 → 2028-02-08 (-249d) | 851.69d → 418.75d |  | constraint start no earlier than 2026-05-02 → start no earlier than 2026-12-17 |
| 1468 | Block Work | 2026-05-02 → 2026-12-17 (+229d) | 2026-05-09 → 2026-12-25 (+230d) | 8d → 9d | 1452FS+0.25d → 1160, 1452 |  |
| 1469 | Door Frame Fixing | 2026-05-17 → 2026-12-25 (+222d) | 2026-05-26 → 2027-01-03 (+222d) | 9d → 10.12d |  |  |
| 1470 | Internal Plumbing Works | 2026-06-02 → 2026-12-25 (+206d) | 2026-06-12 → 2027-01-04 (+206d) | 10d → 11.25d |  |  |
| 1471 | Waterproofing | 2026-07-22 → 2027-01-07 (+169d) | 2026-08-03 → 2027-01-19 (+169d) | 12d → 13.5d | 1455, 1486 → 1455, 1470 |  |
| 1472 | Internal Plaster | 2026-05-31 → 2027-01-19 (+233d) | 2026-06-09 → 2027-01-28 (+233d) | 9d → 10.12d | 1456 → 1456, 1469, 1470, 1471 |  |
| 1473 | IPS flooring work | 2026-07-22 → 2027-01-28 (+190d) | 2026-07-31 → 2027-02-06 (+190d) | 9d → 10.12d | 1457, 1469, 1455, 1488 → 1457, 1469, 1471, 1472 |  |
| 1474 | Toilet dado work | 2026-07-22 → 2027-07-28 (+371d) | 2026-07-30 → 2027-08-05 (+371d) | 8d → 9d | 1458, 1455, 1488 → 1458, 1471, 1472 |  |
| 1475 | Toilet flooring work | 2026-07-30 → 2027-08-05 (+371d) | 2026-08-06 → 2027-08-12 (+371d) | 7d → 7.88d |  |  |

| ID | Task | Start | Finish | Duration | Predecessors | Other |
| --- | --- | --- | --- | --- | --- | --- |
| 1476 | Living dinning flooring | 2026-08-07 → 2027-08-26 (+384d) | 2026-08-18 → 2027-09-07 (+385d) | 12d → 13.5d | 1460FS+0.25d → 1460, 1469, 1475 |  |
| 1477 | Aluminium door-window fixing | 2026-08-19 → 2027-12-23 (+491d) | 2026-08-30 → 2028-01-04 (+492d) | 12d → 13.5d | 1461FS+0.25d → 1461, 1473, 1476 |  |
| 1478 | Putty primer coat | 2026-08-19 → 2027-09-07 (+384d) | 2026-08-24 → 2027-09-13 (+385d) | 6d → 6.75d |  |  |
| 1479 | Door shutter fixing | 2026-08-19 → 2027-09-07 (+384d) | 2026-08-26 → 2027-09-15 (+385d) | 8d → 9d |  |  |
| 1480 | Electrical wiring work | 2028-09-10 → 2028-01-02 (-252d) | 2028-09-22 → 2028-01-14 (-252d) | 12d → 13.5d |  |  |
| 1481 | Painting 1st coat | 2028-09-22 → 2028-01-17 (-249d) | 2028-10-04 → 2028-01-29 (-249d) | 12d → 13.5d |  |  |
| 1482 | False ceiling | 2028-10-04 → 2028-01-29 (-249d) | 2028-10-14 → 2028-02-08 (-249d) | 10d → 11.25d |  |  |
| 1483 | **20th Floor** | 2026-05-10 → 2026-12-28 (+232d) | 2028-10-26 → 2028-02-20 (-249d) | 855.44d → 419.88d |  | constraint start no earlier than 2026-05-10 → start no earlier than 2026-12-28 |
| 1484 | Block Work | 2026-05-10 → 2026-12-28 (+232d) | 2026-05-18 → 2027-01-05 (+232d) | 8d → 9d | 1468FS+0.25d → 1161, 1468 |  |
| 1485 | Door Frame Fixing | 2026-05-26 → 2027-01-05 (+224d) | 2026-06-04 → 2027-01-14 (+224d) | 9d → 10.12d |  |  |
| 1486 | Internal Plumbing Works | 2026-06-12 → 2027-01-05 (+207d) | 2026-06-22 → 2027-01-15 (+207d) | 10d → 11.25d |  |  |
| 1487 | Waterproofing | 2026-08-03 → 2027-01-19 (+169d) | 2026-08-15 → 2027-01-31 (+169d) | 12d → 13.5d | 1471, 1502 → 1471, 1486 |  |
| 1488 | Internal Plaster | 2026-06-10 → 2027-01-31 (+235d) | 2026-06-14 → 2027-02-09 (+240d) | 5d → 10.12d | 1472FS+0.25d → 1472, 1485, 1486, 1487 |  |
| 1489 | IPS flooring work | 2026-08-03 → 2027-02-09 (+190d) | 2026-08-12 → 2027-02-18 (+190d) | 9d → 10.12d | 1473, 1485, 1471, 1504 → 1473, 1485, 1487, 1488 |  |
| 1490 | Toilet dado work | 2026-08-03 → 2027-08-05 (+367d) | 2026-08-11 → 2027-08-13 (+367d) | 8d → 9d | 1474, 1471, 1504 → 1474, 1487, 1488 |  |
| 1491 | Toilet flooring work | 2026-08-11 → 2027-08-13 (+367d) | 2026-08-18 → 2027-08-20 (+367d) | 7d → 7.88d |  |  |
| 1492 | Living dinning flooring | 2026-08-19 → 2027-09-07 (+384d) | 2026-08-31 → 2027-09-19 (+384d) | 12d → 13.5d | 1476FS+0.25d → 1476, 1485, 1491 |  |
| 1493 | Aluminium door-window fixing | 2026-08-31 → 2028-01-04 (+491d) | 2026-09-12 → 2028-01-16 (+491d) | 12d → 13.5d |  |  |
| 1494 | Putty primer coat | 2026-08-31 → 2027-09-19 (+384d) | 2026-09-06 → 2027-09-25 (+384d) | 6d → 6.75d |  |  |
| 1495 | Door shutter fixing | 2026-08-31 → 2027-09-19 (+384d) | 2026-09-08 → 2027-09-27 (+384d) | 8d → 9d |  |  |
| 1496 | Electrical wiring work | 2028-09-22 → 2028-01-14 (-252d) | 2028-10-04 → 2028-01-26 (-252d) | 12d → 13.5d |  |  |
| 1497 | Painting 1st coat | 2028-10-04 → 2028-01-29 (-249d) | 2028-10-16 → 2028-02-10 (-249d) | 12d → 13.5d |  |  |
| 1498 | False ceiling | 2028-10-16 → 2028-02-10 (-249d) | 2028-10-26 → 2028-02-20 (-249d) | 10d → 11.25d |  |  |
| 1499 | **21st Floor** | 2026-05-18 → 2027-01-08 (+235d) | 2028-11-07 → 2028-03-03 (-249d) | 859.19d → 421d |  | constraint start no earlier than 2026-05-18 → start no earlier than 2027-01-08 |
| 1500 | Block Work | 2026-05-18 → 2027-01-08 (+235d) | 2026-05-26 → 2027-01-16 (+235d) | 8d → 9d | 1484FS+0.25d → 1162, 1484 |  |
| 1501 | Door Frame Fixing | 2026-06-04 → 2027-01-16 (+226d) | 2026-06-13 → 2027-01-25 (+226d) | 9d → 10.12d |  |  |
| 1502 | Internal Plumbing Works | 2026-06-22 → 2027-01-16 (+208d) | 2026-07-02 → 2027-01-26 (+208d) | 10d → 11.25d |  |  |
| 1503 | Waterproofing | 2026-08-15 → 2027-01-31 (+169d) | 2026-08-27 → 2027-02-12 (+169d) | 12d → 13.5d | 1487, 1518 → 1487, 1502 |  |
| 1504 | Internal Plaster | 2026-06-15 → 2027-02-12 (+242d) | 2026-06-20 → 2027-02-21 (+246d) | 5d → 10.12d | 1488FS+0.25d → 1488, 1501, 1502, 1503 |  |
| 1505 | IPS flooring work | 2026-08-15 → 2027-02-21 (+190d) | 2026-08-24 → 2027-03-02 (+190d) | 9d → 10.12d | 1489, 1501, 1487, 1520 → 1489, 1501, 1503, 1504 |  |
| 1506 | Toilet dado work | 2026-08-15 → 2027-08-13 (+363d) | 2026-08-23 → 2027-08-21 (+363d) | 8d → 9d | 1490, 1487, 1520 → 1490, 1503, 1504 |  |
| 1507 | Toilet flooring work | 2026-08-23 → 2027-08-21 (+363d) | 2026-08-30 → 2027-08-28 (+363d) | 7d → 7.88d |  |  |
| 1508 | Living dinning flooring | 2026-08-31 → 2027-09-19 (+384d) | 2026-09-12 → 2027-10-01 (+384d) | 12d → 13.5d |  |  |
| 1509 | Aluminium door-window fixing | 2026-09-12 → 2028-01-16 (+491d) | 2026-09-24 → 2028-01-28 (+491d) | 12d → 13.5d |  |  |
| 1510 | Putty primer coat | 2026-09-12 → 2027-10-01 (+384d) | 2026-09-18 → 2027-10-07 (+384d) | 6d → 6.75d |  |  |
| 1511 | Door shutter fixing | 2026-09-12 → 2027-10-01 (+384d) | 2026-09-20 → 2027-10-09 (+384d) | 8d → 9d |  |  |
| 1512 | Electrical wiring work | 2028-10-04 → 2028-01-26 (-252d) | 2028-10-16 → 2028-02-07 (-252d) | 12d → 13.5d |  |  |
| 1513 | Painting 1st coat | 2028-10-16 → 2028-02-10 (-249d) | 2028-10-28 → 2028-02-22 (-249d) | 12d → 13.5d |  |  |
| 1514 | False ceiling | 2028-10-28 → 2028-02-22 (-249d) | 2028-11-07 → 2028-03-03 (-249d) | 10d → 11.25d |  |  |
| 1515 | **22nd Floor** | 2026-05-26 → 2027-01-19 (+238d) | 2028-11-19 → 2028-03-15 (-249d) | 862.94d → 422.12d |  | constraint start no earlier than 2026-05-26 → start no earlier than 2027-01-19 |
| 1516 | Block Work | 2026-05-26 → 2027-01-19 (+238d) | 2026-05-31 → 2027-01-27 (+241d) | 5d → 9d | 1500FS+0.25d → 1163, 1500 |  |
| 1517 | Door Frame Fixing | 2026-06-13 → 2027-01-27 (+228d) | 2026-06-22 → 2027-02-05 (+228d) | 9d → 10.12d |  |  |
| 1518 | Internal Plumbing Works | 2026-07-02 → 2027-01-27 (+209d) | 2026-07-12 → 2027-02-06 (+209d) | 10d → 11.25d |  |  |
| 1519 | Waterproofing | 2026-08-27 → 2027-02-12 (+169d) | 2026-09-08 → 2027-02-24 (+169d) | 12d → 13.5d | 1503, 1534 → 1503, 1518 |  |
| 1520 | Internal Plaster | 2026-06-20 → 2027-02-24 (+249d) | 2026-06-28 → 2027-03-05 (+250d) | 8d → 10.12d | 1504FS+0.25d → 1504, 1517, 1518, 1519 |  |
| 1521 | IPS flooring work | 2026-08-27 → 2027-03-05 (+190d) | 2026-09-05 → 2027-03-14 (+190d) | 9d → 10.12d | 1505, 1517, 1503, 1536 → 1505, 1517, 1519, 1520 |  |
| 1522 | Toilet dado work | 2026-08-27 → 2027-08-21 (+359d) | 2026-09-04 → 2027-08-29 (+359d) | 8d → 9d | 1506, 1503, 1536 → 1506, 1519, 1520 |  |
| 1523 | Toilet flooring work | 2026-09-04 → 2027-08-29 (+359d) | 2026-09-11 → 2027-09-05 (+359d) | 7d → 7.88d |  |  |
| 1524 | Living dinning flooring | 2026-09-12 → 2027-10-01 (+384d) | 2026-09-24 → 2027-10-13 (+384d) | 12d → 13.5d |  |  |
| 1525 | Aluminium door-window fixing | 2026-09-24 → 2028-01-28 (+491d) | 2026-10-06 → 2028-02-09 (+491d) | 12d → 13.5d |  |  |
| 1526 | Putty primer coat | 2026-09-24 → 2027-10-13 (+384d) | 2026-09-30 → 2027-10-19 (+384d) | 6d → 6.75d |  |  |
| 1527 | Door shutter fixing | 2026-09-24 → 2027-10-13 (+384d) | 2026-10-02 → 2027-10-21 (+384d) | 8d → 9d |  |  |
| 1528 | Electrical wiring work | 2028-10-16 → 2028-02-07 (-252d) | 2028-10-28 → 2028-02-19 (-252d) | 12d → 13.5d |  |  |
| 1529 | Painting 1st coat | 2028-10-28 → 2028-02-22 (-249d) | 2028-11-09 → 2028-03-05 (-249d) | 12d → 13.5d |  |  |
| 1530 | False ceiling | 2028-11-09 → 2028-03-05 (-249d) | 2028-11-19 → 2028-03-15 (-249d) | 10d → 11.25d |  |  |
| 1531 | **23rd Floor** | 2026-06-01 → 2027-01-30 (+243d) | 2028-12-01 → 2028-03-27 (-249d) | 869.69d → 423.25d |  | constraint start no earlier than 2026-06-01 → start no earlier than 2027-01-30 |
| 1532 | Block Work | 2026-06-01 → 2027-01-30 (+243d) | 2026-06-08 → 2027-02-07 (+244d) | 7.94d → 9d | 1516FS+0.25d → 1164, 1516 |  |
| 1533 | Door Frame Fixing | 2026-06-22 → 2027-02-07 (+230d) | 2026-07-01 → 2027-02-16 (+230d) | 9d → 10.12d |  |  |
| 1534 | Internal Plumbing Works | 2026-07-12 → 2027-02-07 (+210d) | 2026-07-22 → 2027-02-17 (+210d) | 10d → 11.25d |  |  |
| 1535 | Waterproofing | 2026-09-08 → 2027-02-24 (+169d) | 2026-09-20 → 2027-03-08 (+169d) | 12d → 13.5d | 1519, 1550 → 1519, 1534 |  |
| 1536 | Internal Plaster | 2026-06-28 → 2027-03-08 (+253d) | 2026-07-08 → 2027-03-17 (+252d) | 10d → 10.12d | 1520FS+0.25d → 1520, 1533, 1534, 1535 |  |
| 1537 | IPS flooring work | 2026-09-08 → 2027-03-17 (+190d) | 2026-09-17 → 2027-03-26 (+190d) | 9d → 10.12d | 1521, 1533, 1519, 1552 → 1521, 1533, 1535, 1536 |  |
| 1538 | Toilet dado work | 2026-09-08 → 2027-08-29 (+355d) | 2026-09-16 → 2027-09-06 (+355d) | 8d → 9d | 1522, 1519, 1552 → 1522, 1535, 1536 |  |
| 1539 | Toilet flooring work | 2026-09-16 → 2027-09-06 (+355d) | 2026-09-23 → 2027-09-13 (+355d) | 7d → 7.88d |  |  |
| 1540 | Living dinning flooring | 2026-09-24 → 2027-10-13 (+384d) | 2026-10-09 → 2027-10-28 (+384d) | 15d → 16.88d |  |  |
| 1541 | Aluminium door-window fixing | 2026-10-09 → 2028-02-09 (+488d) | 2026-10-24 → 2028-02-24 (+488d) | 15d → 16.88d |  |  |
| 1542 | Putty primer coat | 2026-10-09 → 2027-10-28 (+384d) | 2026-10-15 → 2027-12-18 (+429d) | 6d → 6.75d |  |  |
| 1543 | Door shutter fixing | 2026-10-09 → 2027-10-28 (+384d) | 2026-10-17 → 2027-12-20 (+429d) | 8d → 9d |  |  |
| 1544 | Electrical wiring work | 2028-10-28 → 2028-02-19 (-252d) | 2028-11-09 → 2028-03-02 (-252d) | 12d → 13.5d |  |  |
| 1545 | Painting 1st coat | 2028-11-09 → 2028-03-05 (-249d) | 2028-11-21 → 2028-03-17 (-249d) | 12d → 13.5d |  |  |

| ID | Task | Start | Finish | Duration | Predecessors | Other |
| --- | --- | --- | --- | --- | --- | --- |
| 1546 | False ceiling | 2028-11-21 → 2028-03-17 (-249d) | 2028-12-01 → 2028-03-27 (-249d) | 10d → 11.25d |  |  |
| 1547 | **24th Floor** | 2026-06-09 → 2027-02-10 (+246d) | 2028-12-13 → 2028-04-08 (-249d) | 873.5d → 424.38d |  | constraint start no earlier than 2026-06-09 → start no earlier than 2027-02-10 |
| 1548 | Block Work | 2026-06-09 → 2027-02-10 (+246d) | 2026-06-13 → 2027-02-18 (+250d) | 4d → 9d | 1532FS+0.25d → 1165, 1532 |  |
| 1549 | Door Frame Fixing | 2026-07-01 → 2027-02-18 (+232d) | 2026-07-10 → 2027-02-27 (+232d) | 9d → 10.12d |  |  |
| 1550 | Internal Plumbing Works | 2026-07-22 → 2027-02-18 (+211d) | 2026-08-01 → 2027-02-28 (+211d) | 10d → 11.25d |  |  |
| 1551 | Waterproofing | 2026-09-20 → 2027-03-08 (+169d) | 2026-10-02 → 2027-03-20 (+169d) | 12d → 13.5d | 1535, 1566 → 1535, 1550 |  |
| 1552 | Internal Plaster | 2026-07-09 → 2027-03-20 (+254d) | 2026-07-18 → 2027-03-29 (+254d) | 10d → 10.12d | 1536FS+0.25d → 1536, 1549, 1550, 1551 |  |
| 1553 | IPS flooring work | 2026-09-29 → 2027-03-29 (+181d) | 2026-10-08 → 2027-04-07 (+181d) | 9d → 10.12d | 1537, 1549, 1535, 1568 → 1537, 1549, 1551, 1552 |  |
| 1554 | Toilet dado work | 2026-09-29 → 2027-09-06 (+342d) | 2026-10-07 → 2027-09-14 (+342d) | 8d → 9d | 1538, 1535, 1568 → 1538, 1551, 1552 |  |
| 1555 | Toilet flooring work | 2026-10-07 → 2027-09-14 (+342d) | 2026-10-14 → 2027-09-21 (+342d) | 7d → 7.88d |  |  |
| 1556 | Living dinning flooring | 2026-10-14 → 2027-10-28 (+379d) | 2026-10-29 → 2027-12-27 (+424d) | 15d → 16.88d |  |  |
| 1557 | Aluminium door-window fixing | 2026-10-29 → 2028-02-24 (+483d) | 2026-12-28 → 2028-03-10 (+438d) | 15d → 16.88d |  |  |
| 1558 | Putty primer coat | 2026-10-29 → 2027-12-27 (+424d) | 2026-12-19 → 2028-01-02 (+379d) | 6d → 6.75d |  |  |
| 1559 | Door shutter fixing | 2026-10-29 → 2027-12-27 (+424d) | 2026-12-21 → 2028-01-04 (+379d) | 8d → 9d |  |  |
| 1560 | Electrical wiring work | 2028-11-09 → 2028-03-02 (-252d) | 2028-11-21 → 2028-03-14 (-252d) | 12d → 13.5d |  |  |
| 1561 | Painting 1st coat | 2028-11-21 → 2028-03-17 (-249d) | 2028-12-03 → 2028-03-29 (-249d) | 12d → 13.5d |  |  |
| 1562 | False ceiling | 2028-12-03 → 2028-03-29 (-249d) | 2028-12-13 → 2028-04-08 (-249d) | 10d → 11.25d |  |  |
| 1563 | **25th Floor** | 2026-08-31 → 2027-02-21 (+174d) | 2028-12-25 → 2028-04-20 (-249d) | 801.94d → 425.5d |  | constraint start no earlier than 2026-08-31 → start no earlier than 2027-02-21 |
| 1564 | Block Work | 2026-08-31 → 2027-02-21 (+174d) | 2026-09-08 → 2027-03-01 (+174d) | 7.94d → 9d |  |  |
| 1565 | Door Frame Fixing | 2026-09-08 → 2027-03-01 (+174d) | 2026-09-17 → 2027-03-10 (+174d) | 9d → 10.12d |  |  |
| 1566 | Internal Plumbing Works | 2026-09-08 → 2027-03-01 (+174d) | 2026-09-18 → 2027-03-11 (+174d) | 10d → 11.25d |  |  |
| 1567 | Waterproofing | 2026-10-02 → 2027-03-20 (+169d) | 2026-10-14 → 2027-04-01 (+169d) | 12d → 13.5d | 1551, 1582 → 1551, 1566 |  |
| 1568 | Internal Plaster | 2026-09-20 → 2027-04-01 (+193d) | 2026-09-29 → 2027-04-10 (+193d) | 9d → 10.12d | 1552, 1549, 1550, 1535 → 1552, 1565, 1566, 1567 |  |
| 1569 | IPS flooring work | 2026-10-11 → 2027-04-10 (+181d) | 2026-10-20 → 2027-04-19 (+181d) | 9d → 10.12d | 1553, 1565, 1551, 1584 → 1553, 1565, 1567, 1568 |  |
| 1570 | Toilet dado work | 2026-10-11 → 2027-09-14 (+338d) | 2026-10-19 → 2027-09-22 (+338d) | 8d → 9d | 1554, 1551, 1584 → 1554, 1567, 1568 |  |
| 1571 | Toilet flooring work | 2026-10-19 → 2027-09-22 (+338d) | 2026-10-26 → 2027-09-29 (+338d) | 7d → 7.88d |  |  |
| 1572 | Living dinning flooring | 2026-10-29 → 2027-12-27 (+424d) | 2026-12-28 → 2028-01-11 (+379d) | 15d → 16.88d |  |  |
| 1573 | Aluminium door-window fixing | 2026-12-28 → 2028-03-10 (+438d) | 2027-01-12 → 2028-03-25 (+438d) | 15d → 16.88d |  |  |
| 1574 | Putty primer coat | 2026-12-28 → 2028-01-11 (+379d) | 2027-01-03 → 2028-01-17 (+379d) | 6d → 6.75d |  |  |
| 1575 | Door shutter fixing | 2026-12-28 → 2028-01-11 (+379d) | 2027-01-05 → 2028-01-19 (+379d) | 8d → 9d |  |  |
| 1576 | Electrical wiring work | 2028-11-21 → 2028-03-14 (-252d) | 2028-12-03 → 2028-03-26 (-252d) | 12d → 13.5d |  |  |
| 1577 | Painting 1st coat | 2028-12-03 → 2028-03-29 (-249d) | 2028-12-15 → 2028-04-10 (-249d) | 12d → 13.5d |  |  |
| 1578 | False ceiling | 2028-12-15 → 2028-04-10 (-249d) | 2028-12-25 → 2028-04-20 (-249d) | 10d → 11.25d |  |  |
| 1579 | **26th Floor** | 2026-09-14 → 2027-03-04 (+171d) | 2029-01-06 → 2028-05-02 (-249d) | 800.19d → 426.62d |  | constraint start no earlier than 2026-09-14 → start no earlier than 2027-03-04 |
| 1580 | Block Work | 2026-09-14 → 2027-03-04 (+171d) | 2026-09-22 → 2027-03-12 (+171d) | 7.94d → 9d |  |  |
| 1581 | Door Frame Fixing | 2026-09-22 → 2027-03-12 (+171d) | 2026-10-01 → 2027-03-21 (+171d) | 9d → 10.12d |  |  |
| 1582 | Internal Plumbing Works | 2026-09-22 → 2027-03-12 (+171d) | 2026-10-02 → 2027-03-22 (+171d) | 10d → 11.25d |  |  |
| 1583 | Waterproofing | 2026-10-15 → 2027-04-01 (+168d) | 2026-10-27 → 2027-04-13 (+168d) | 12d → 13.5d | 1567, 1598 → 1567, 1582 |  |
| 1584 | Internal Plaster | 2026-10-02 → 2027-04-13 (+193d) | 2026-10-11 → 2027-04-22 (+193d) | 9d → 10.12d | 1568, 1565, 1566, 1551 → 1568, 1581, 1582, 1583 |  |
| 1585 | IPS flooring work | 2026-10-23 → 2027-04-22 (+181d) | 2026-12-16 → 2027-05-01 (+136d) | 9d → 10.12d | 1569, 1581, 1567, 1600 → 1569, 1581, 1583, 1584 |  |
| 1586 | Toilet dado work | 2026-10-23 → 2027-09-22 (+334d) | 2026-10-31 → 2027-09-30 (+334d) | 8d → 9d | 1570, 1567, 1600 → 1570, 1583, 1584 |  |
| 1587 | Toilet flooring work | 2026-10-31 → 2027-09-30 (+334d) | 2026-12-22 → 2027-10-07 (+289d) | 7d → 7.88d |  |  |
| 1588 | Living dinning flooring | 2026-12-28 → 2028-01-11 (+379d) | 2027-01-12 → 2028-01-26 (+379d) | 15d → 16.88d |  |  |
| 1589 | Aluminium door-window fixing | 2027-01-12 → 2028-03-25 (+438d) | 2027-01-27 → 2028-04-09 (+438d) | 15d → 16.88d |  |  |
| 1590 | Putty primer coat | 2027-01-12 → 2028-01-26 (+379d) | 2027-01-18 → 2028-02-01 (+379d) | 6d → 6.75d |  |  |
| 1591 | Door shutter fixing | 2027-01-12 → 2028-01-26 (+379d) | 2027-01-20 → 2028-02-03 (+379d) | 8d → 9d |  |  |
| 1592 | Electrical wiring work | 2028-12-03 → 2028-03-26 (-252d) | 2028-12-15 → 2028-04-07 (-252d) | 12d → 13.5d |  |  |
| 1593 | Painting 1st coat | 2028-12-15 → 2028-04-10 (-249d) | 2028-12-27 → 2028-04-22 (-249d) | 12d → 13.5d |  |  |
| 1594 | False ceiling | 2028-12-27 → 2028-04-22 (-249d) | 2029-01-06 → 2028-05-02 (-249d) | 10d → 11.25d |  |  |
| 1595 | **27th Floor** | 2026-09-27 → 2027-03-15 (+169d) | 2029-01-18 → 2028-05-14 (-249d) | 799.44d → 427.75d |  | constraint start no earlier than 2026-09-27 → start no earlier than 2027-03-15 |
| 1596 | Block Work | 2026-09-27 → 2027-03-15 (+169d) | 2026-10-05 → 2027-03-23 (+169d) | 7.94d → 9d | 1783, 1580 → 1168, 1580 |  |
| 1597 | Door Frame Fixing | 2026-10-05 → 2027-03-23 (+169d) | 2026-10-14 → 2027-04-01 (+169d) | 8.94d → 10.12d |  |  |
| 1598 | Internal Plumbing Works | 2026-10-05 → 2027-03-23 (+169d) | 2026-10-15 → 2027-04-02 (+169d) | 10d → 11.25d |  |  |
| 1599 | Waterproofing | 2026-12-16 → 2027-04-13 (+118d) | 2026-12-28 → 2027-04-25 (+118d) | 12d → 13.5d | 1583, 1614 → 1583, 1598 |  |
| 1600 | Internal Plaster | 2026-10-14 → 2027-04-25 (+193d) | 2026-10-23 → 2027-05-04 (+193d) | 9d → 10.12d | 1584, 1581, 1582, 1567 → 1584, 1597, 1598, 1599 |  |
| 1601 | IPS flooring work | 2026-12-20 → 2027-05-04 (+135d) | 2026-12-29 → 2027-05-13 (+135d) | 9d → 10.12d | 1585, 1597, 1583, 1616 → 1585, 1597, 1599, 1600 |  |
| 1602 | Toilet dado work | 2026-12-20 → 2027-09-30 (+284d) | 2026-12-28 → 2027-10-08 (+284d) | 8d → 9d | 1586, 1583, 1616 → 1586, 1599, 1600 |  |
| 1603 | Toilet flooring work | 2026-12-28 → 2027-10-08 (+284d) | 2027-01-04 → 2027-10-15 (+284d) | 7d → 7.88d |  |  |
| 1604 | Living dinning flooring | 2027-01-12 → 2028-01-26 (+379d) | 2027-01-27 → 2028-02-10 (+379d) | 15d → 16.88d |  |  |
| 1605 | Aluminium door-window fixing | 2027-01-27 → 2028-04-09 (+438d) | 2027-02-11 → 2028-04-24 (+438d) | 15d → 16.88d |  |  |
| 1606 | Putty primer coat | 2027-01-27 → 2028-02-10 (+379d) | 2027-02-02 → 2028-02-16 (+379d) | 6d → 6.75d |  |  |
| 1607 | Door shutter fixing | 2027-01-27 → 2028-02-10 (+379d) | 2027-02-04 → 2028-02-18 (+379d) | 8d → 9d |  |  |
| 1608 | Electrical wiring work | 2028-12-15 → 2028-04-07 (-252d) | 2028-12-27 → 2028-04-19 (-252d) | 12d → 13.5d |  |  |
| 1609 | Painting 1st coat | 2028-12-27 → 2028-04-22 (-249d) | 2029-01-08 → 2028-05-04 (-249d) | 12d → 13.5d |  |  |
| 1610 | False ceiling | 2029-01-08 → 2028-05-04 (-249d) | 2029-01-18 → 2028-05-14 (-249d) | 10d → 11.25d |  |  |
| 1611 | **28th Floor** | 2026-10-15 → 2027-03-26 (+162d) | 2029-01-30 → 2028-05-26 (-249d) | 793.69d → 428.88d |  | constraint start no earlier than 2026-10-15 → start no earlier than 2027-03-26 |
| 1612 | Block Work | 2026-10-15 → 2027-03-26 (+162d) | 2026-10-22 → 2027-04-03 (+163d) | 7.94d → 9d |  |  |
| 1613 | Door Frame Fixing | 2026-10-22 → 2027-04-03 (+163d) | 2026-10-31 → 2027-04-12 (+163d) | 8.94d → 10.12d |  |  |
| 1614 | Internal Plumbing Works | 2026-10-22 → 2027-04-03 (+163d) | 2026-12-16 → 2027-04-13 (+118d) | 10d → 11.25d |  |  |
| 1615 | Waterproofing | 2027-01-02 → 2027-04-25 (+113d) | 2027-01-14 → 2027-05-07 (+113d) | 12d → 13.5d | 1599, 1630 → 1599, 1614 |  |

| ID | Task | Start | Finish | Duration | Predecessors | Other |
| --- | --- | --- | --- | --- | --- | --- |
| 1616 | Internal Plaster | 2026-10-27 → 2027-05-07 (+192d) | 2026-12-20 → 2027-05-16 (+147d) | 9d → 10.12d | 1600, 1597, 1598, 1583 → 1600, 1613, 1614, 1615 |  |
| 1617 | IPS flooring work | 2027-01-06 → 2027-05-16 (+130d) | 2027-01-15 → 2027-05-25 (+130d) | 9d → 10.12d | 1601, 1613, 1599, 1632 → 1601, 1613, 1615, 1616 |  |
| 1618 | Toilet dado work | 2027-01-06 → 2027-10-08 (+275d) | 2027-01-14 → 2027-10-16 (+275d) | 8d → 9d | 1602, 1599, 1632 → 1602, 1615, 1616 |  |
| 1619 | Toilet flooring work | 2027-01-14 → 2027-10-16 (+275d) | 2027-01-21 → 2027-10-23 (+275d) | 7d → 7.88d |  |  |
| 1620 | Living dinning flooring | 2027-01-27 → 2028-02-10 (+379d) | 2027-02-11 → 2028-02-25 (+379d) | 15d → 16.88d |  |  |
| 1621 | Aluminium door-window fixing | 2027-02-11 → 2028-04-24 (+438d) | 2027-02-26 → 2028-05-09 (+438d) | 15d → 16.88d |  |  |
| 1622 | Putty primer coat | 2027-02-11 → 2028-02-25 (+379d) | 2027-02-17 → 2028-03-02 (+379d) | 6d → 6.75d |  |  |
| 1623 | Door shutter fixing | 2027-02-11 → 2028-02-25 (+379d) | 2027-02-19 → 2028-03-04 (+379d) | 8d → 9d |  |  |
| 1624 | Electrical wiring work | 2028-12-27 → 2028-04-19 (-252d) | 2029-01-08 → 2028-05-01 (-252d) | 12d → 13.5d |  |  |
| 1625 | Painting 1st coat | 2029-01-08 → 2028-05-04 (-249d) | 2029-01-20 → 2028-05-16 (-249d) | 12d → 13.5d |  |  |
| 1626 | False ceiling | 2029-01-20 → 2028-05-16 (-249d) | 2029-01-30 → 2028-05-26 (-249d) | 10d → 11.25d |  |  |
| 1627 | **29th Floor** | 2026-10-31 → 2027-04-06 (+157d) | 2029-02-11 → 2028-06-07 (-249d) | 788.81d → 430d |  | constraint start no earlier than 2026-10-31 → start no earlier than 2027-04-06 |
| 1628 | Block Work | 2026-10-31 → 2027-04-06 (+157d) | 2026-12-23 → 2027-04-14 (+112d) | 7.94d → 9d | 1785, 1612 → 1170, 1612 |  |
| 1629 | Door Frame Fixing | 2026-12-23 → 2027-04-14 (+112d) | 2027-01-01 → 2027-04-23 (+112d) | 8.94d → 10.12d |  |  |
| 1630 | Internal Plumbing Works | 2026-12-23 → 2027-04-14 (+112d) | 2027-01-02 → 2027-04-24 (+112d) | 10d → 11.25d |  |  |
| 1631 | Waterproofing | 2027-02-11 → 2027-05-07 (+85d) | 2027-02-23 → 2027-05-19 (+85d) | 12d → 13.5d | 1615, 1646 → 1615, 1630 |  |
| 1632 | Internal Plaster | 2026-12-28 → 2027-05-19 (+142d) | 2027-01-06 → 2027-05-28 (+142d) | 9d → 10.12d | 1616, 1613, 1614, 1599 → 1616, 1629, 1630, 1631 |  |
| 1633 | IPS flooring work | 2027-01-23 → 2027-05-28 (+125d) | 2027-02-01 → 2027-06-06 (+125d) | 9d → 10.12d | 1617, 1629, 1615, 1648 → 1617, 1629, 1631, 1632 |  |
| 1634 | Toilet dado work | 2027-01-23 → 2027-10-16 (+266d) | 2027-01-31 → 2027-10-24 (+266d) | 8d → 9d | 1618, 1615, 1648 → 1618, 1631, 1632 |  |
| 1635 | Toilet flooring work | 2027-01-31 → 2027-10-24 (+266d) | 2027-02-07 → 2027-10-31 (+266d) | 7d → 7.88d |  |  |
| 1636 | Living dinning flooring | 2027-02-11 → 2028-02-25 (+379d) | 2027-02-26 → 2028-03-11 (+379d) | 15d → 16.88d |  |  |
| 1637 | Aluminium door-window fixing | 2027-02-26 → 2028-05-09 (+438d) | 2027-03-13 → 2028-05-24 (+438d) | 15d → 16.88d |  |  |
| 1638 | Putty primer coat | 2027-02-26 → 2028-03-11 (+379d) | 2027-03-04 → 2028-03-17 (+379d) | 6d → 6.75d |  |  |
| 1639 | Door shutter fixing | 2027-02-26 → 2028-03-11 (+379d) | 2027-03-06 → 2028-03-19 (+379d) | 8d → 9d |  |  |
| 1640 | Electrical wiring work | 2029-01-08 → 2028-05-01 (-252d) | 2029-01-20 → 2028-05-13 (-252d) | 12d → 13.5d |  |  |
| 1641 | Painting 1st coat | 2029-01-20 → 2028-05-16 (-249d) | 2029-02-01 → 2028-05-28 (-249d) | 12d → 13.5d |  |  |
| 1642 | False ceiling | 2029-02-01 → 2028-05-28 (-249d) | 2029-02-11 → 2028-06-07 (-249d) | 10d → 11.25d |  |  |
| 1643 | **30th Floor** | 2027-01-24 → 2027-04-17 (+83d) | 2029-03-01 → 2028-06-22 (-252d) | 767.31d → 434.5d |  | constraint start no earlier than 2027-01-24 → start no earlier than 2027-04-17 |
| 1644 | Block Work | 2027-01-24 → 2027-04-17 (+83d) | 2027-02-01 → 2027-04-25 (+83d) | 7.94d → 9d | 2088, 1628 → 1171, 1628 |  |
| 1645 | Door Frame Fixing | 2027-02-01 → 2027-04-25 (+83d) | 2027-02-10 → 2027-05-04 (+83d) | 8.94d → 10.12d |  |  |
| 1646 | Internal Plumbing Works | 2027-02-01 → 2027-04-25 (+83d) | 2027-02-11 → 2027-05-05 (+83d) | 9.94d → 11.25d |  |  |
| 1647 | Waterproofing | 2027-02-23 → 2027-05-19 (+85d) | 2027-03-07 → 2027-05-31 (+85d) | 12d → 13.5d | 1631, 1662 → 1631, 1646 |  |
| 1648 | Internal Plaster | 2027-01-14 → 2027-05-31 (+137d) | 2027-01-23 → 2027-06-09 (+137d) | 9d → 10.12d | 1632, 1629, 1630, 1615 → 1632, 1645, 1646, 1647 |  |
| 1649 | IPS flooring work | 2027-03-04 → 2027-06-09 (+97d) | 2027-03-13 → 2027-06-18 (+97d) | 9d → 10.12d | 1633, 1645, 1631, 1664 → 1633, 1645, 1647, 1648 |  |
| 1650 | Toilet dado work | 2027-03-04 → 2027-10-24 (+234d) | 2027-03-12 → 2027-12-16 (+279d) | 8d → 9d | 1634, 1631, 1664 → 1634, 1647, 1648 |  |
| 1651 | Toilet flooring work | 2027-03-12 → 2027-12-16 (+279d) | 2027-03-19 → 2027-12-23 (+279d) | 7d → 7.88d |  |  |
| 1652 | Living dinning flooring | 2027-03-19 → 2028-03-11 (+358d) | 2027-04-03 → 2028-03-26 (+358d) | 15d → 16.88d |  |  |
| 1653 | Aluminium door-window fixing | 2027-04-03 → 2028-05-24 (+417d) | 2027-04-18 → 2028-06-08 (+417d) | 15d → 16.88d |  |  |
| 1654 | Putty primer coat | 2027-04-03 → 2028-03-26 (+358d) | 2027-04-09 → 2028-04-01 (+358d) | 6d → 6.75d |  |  |
| 1655 | Door shutter fixing | 2027-04-03 → 2028-03-26 (+358d) | 2027-04-11 → 2028-04-03 (+358d) | 8d → 9d |  |  |
| 1656 | Electrical wiring work | 2029-01-20 → 2028-05-13 (-252d) | 2029-02-04 → 2028-05-28 (-252d) | 15d → 16.88d |  |  |
| 1657 | Painting 1st coat | 2029-02-04 → 2028-05-28 (-252d) | 2029-02-19 → 2028-06-12 (-252d) | 15d → 16.88d |  |  |
| 1658 | False ceiling | 2029-02-19 → 2028-06-12 (-252d) | 2029-03-01 → 2028-06-22 (-252d) | 10d → 11.25d |  |  |
| 1659 | **31st Floor** | 2027-02-01 → 2027-04-28 (+86d) | 2029-03-16 → 2028-07-07 (-252d) | 774.38d → 439d |  | constraint start no earlier than 2027-02-01 → start no earlier than 2027-04-28 |
| 1660 | Block Work | 2027-02-01 → 2027-04-28 (+86d) | 2027-02-09 → 2027-05-06 (+86d) | 7.94d → 9d |  |  |
| 1661 | Door Frame Fixing | 2027-02-10 → 2027-05-06 (+85d) | 2027-02-19 → 2027-05-15 (+85d) | 8.94d → 10.12d |  |  |
| 1662 | Internal Plumbing Works | 2027-02-11 → 2027-05-06 (+84d) | 2027-02-21 → 2027-05-16 (+84d) | 9.94d → 11.25d |  |  |
| 1663 | Waterproofing | 2027-03-07 → 2027-05-31 (+85d) | 2027-03-19 → 2027-06-12 (+85d) | 12d → 13.5d | 1647, 1678 → 1647, 1662 |  |
| 1664 | Internal Plaster | 2027-02-23 → 2027-06-12 (+109d) | 2027-03-04 → 2027-06-21 (+109d) | 9d → 10.12d | 1648, 1645, 1646, 1631 → 1648, 1661, 1662, 1663 |  |
| 1665 | IPS flooring work | 2027-03-16 → 2027-06-21 (+97d) | 2027-03-25 → 2027-06-30 (+97d) | 9d → 10.12d | 1649, 1661, 1647, 1680 → 1649, 1661, 1663, 1664 |  |
| 1666 | Toilet dado work | 2027-03-16 → 2027-12-16 (+275d) | 2027-03-24 → 2027-12-24 (+275d) | 8d → 9d | 1650, 1647, 1680 → 1650, 1663, 1664 |  |
| 1667 | Toilet flooring work | 2027-03-24 → 2027-12-24 (+275d) | 2027-03-31 → 2027-12-31 (+275d) | 7d → 7.88d |  |  |
| 1668 | Living dinning flooring | 2027-04-03 → 2028-03-26 (+358d) | 2027-04-18 → 2028-04-10 (+358d) | 15d → 16.88d |  |  |
| 1669 | Aluminium door-window fixing | 2027-04-18 → 2028-06-08 (+417d) | 2027-04-30 → 2028-06-20 (+417d) | 12d → 13.5d |  |  |
| 1670 | Putty primer coat | 2027-04-18 → 2028-04-10 (+358d) | 2027-04-24 → 2028-04-16 (+358d) | 6d → 6.75d |  |  |
| 1671 | Door shutter fixing | 2027-04-18 → 2028-04-10 (+358d) | 2027-04-26 → 2028-04-18 (+358d) | 8d → 9d |  |  |
| 1672 | Electrical wiring work | 2029-02-04 → 2028-05-28 (-252d) | 2029-02-19 → 2028-06-12 (-252d) | 15d → 16.88d |  |  |
| 1673 | Painting 1st coat | 2029-02-19 → 2028-06-12 (-252d) | 2029-03-06 → 2028-06-27 (-252d) | 15d → 16.88d |  |  |
| 1674 | False ceiling | 2029-03-06 → 2028-06-27 (-252d) | 2029-03-16 → 2028-07-07 (-252d) | 10d → 11.25d |  |  |
| 1675 | **32nd Floor** | 2027-02-09 → 2027-05-06 (+86d) | 2029-03-31 → 2028-07-22 (-252d) | 781.44d → 446.88d |  | constraint start no earlier than 2027-02-09 → start no earlier than 2027-05-06 |
| 1676 | Block Work | 2027-02-09 → 2027-05-06 (+86d) | 2027-02-17 → 2027-05-14 (+86d) | 7.94d → 9d |  |  |
| 1677 | Door Frame Fixing | 2027-02-19 → 2027-05-15 (+85d) | 2027-02-28 → 2027-05-24 (+85d) | 8.94d → 10.12d |  |  |
| 1678 | Internal Plumbing Works | 2027-02-21 → 2027-05-16 (+84d) | 2027-03-03 → 2027-05-26 (+84d) | 9.94d → 11.25d |  |  |
| 1679 | Waterproofing | 2027-03-19 → 2027-06-12 (+85d) | 2027-03-31 → 2027-06-24 (+85d) | 12d → 13.5d | 1663, 1694 → 1663, 1678 |  |
| 1680 | Internal Plaster | 2027-03-07 → 2027-06-24 (+109d) | 2027-03-16 → 2027-07-03 (+109d) | 9d → 10.12d | 1664, 1661, 1662, 1647 → 1664, 1677, 1678, 1679 |  |
| 1681 | IPS flooring work | 2027-03-28 → 2027-07-03 (+97d) | 2027-04-06 → 2027-07-12 (+97d) | 9d → 10.12d | 1665, 1677, 1663, 1696 → 1665, 1677, 1679, 1680 |  |
| 1682 | Toilet dado work | 2027-03-28 → 2027-12-24 (+271d) | 2027-04-05 → 2028-01-01 (+271d) | 8d → 9d | 1666, 1663, 1696 → 1666, 1679, 1680 |  |
| 1683 | Toilet flooring work | 2027-04-05 → 2028-01-01 (+271d) | 2027-04-12 → 2028-01-08 (+271d) | 7d → 7.88d |  |  |
| 1684 | Living dinning flooring | 2027-04-18 → 2028-04-10 (+358d) | 2027-05-03 → 2028-04-25 (+358d) | 15d → 16.88d |  |  |
| 1685 | Aluminium door-window fixing | 2027-05-03 → 2028-06-20 (+414d) | 2027-05-15 → 2028-07-02 (+414d) | 12d → 13.5d |  |  |

| ID | Task | Start | Finish | Duration | Predecessors | Other |
| --- | --- | --- | --- | --- | --- | --- |
| 1686 | Putty primer coat | 2027-05-03 → 2028-04-25 (+358d) | 2027-05-09 → 2028-05-01 (+358d) | 6d → 6.75d |  |  |
| 1687 | Door shutter fixing | 2027-05-03 → 2028-04-25 (+358d) | 2027-05-11 → 2028-05-03 (+358d) | 8d → 9d |  |  |
| 1688 | Electrical wiring work | 2029-02-19 → 2028-06-12 (-252d) | 2029-03-06 → 2028-06-27 (-252d) | 15d → 16.88d |  |  |
| 1689 | Painting 1st coat | 2029-03-06 → 2028-06-27 (-252d) | 2029-03-21 → 2028-07-12 (-252d) | 15d → 16.88d |  |  |
| 1690 | False ceiling | 2029-03-21 → 2028-07-12 (-252d) | 2029-03-31 → 2028-07-22 (-252d) | 10d → 11.25d |  |  |
| 1691 | **33rd Floor** | 2027-02-17 → 2027-05-14 (+86d) | 2029-04-12 → 2028-08-03 (-252d) | 785.5d → 451.38d |  | constraint start no earlier than 2027-02-17 → start no earlier than 2027-05-14 |
| 1692 | Block Work | 2027-02-17 → 2027-05-14 (+86d) | 2027-02-25 → 2027-05-22 (+86d) | 7.94d → 9d |  |  |
| 1693 | Door Frame Fixing | 2027-02-28 → 2027-05-24 (+85d) | 2027-03-09 → 2027-06-02 (+85d) | 8.94d → 10.12d |  |  |
| 1694 | Internal Plumbing Works | 2027-03-03 → 2027-05-26 (+84d) | 2027-03-13 → 2027-06-05 (+84d) | 9.94d → 11.25d |  |  |
| 1695 | Waterproofing | 2027-03-31 → 2027-06-24 (+85d) | 2027-04-12 → 2027-07-06 (+85d) | 12d → 13.5d | 1679, 1710 → 1679, 1694 |  |
| 1696 | Internal Plaster | 2027-03-19 → 2027-07-06 (+109d) | 2027-03-28 → 2027-07-15 (+109d) | 9d → 10.12d | 1680, 1677, 1678, 1663 → 1680, 1693, 1694, 1695 |  |
| 1697 | IPS flooring work | 2027-04-09 → 2027-07-15 (+97d) | 2027-04-18 → 2027-07-24 (+97d) | 9d → 10.12d | 1681, 1693, 1679, 1712 → 1681, 1693, 1695, 1696 |  |
| 1698 | Toilet dado work | 2027-04-09 → 2028-01-01 (+267d) | 2027-04-17 → 2028-01-09 (+267d) | 8d → 9d | 1682, 1679, 1712 → 1682, 1695, 1696 |  |
| 1699 | Toilet flooring work | 2027-04-17 → 2028-01-09 (+267d) | 2027-04-24 → 2028-01-16 (+267d) | 7d → 7.88d |  |  |
| 1700 | Living dinning flooring | 2027-05-03 → 2028-04-25 (+358d) | 2027-05-18 → 2028-05-07 (+355d) | 15d → 13.5d |  |  |
| 1701 | Aluminium door-window fixing | 2027-05-18 → 2028-07-02 (+411d) | 2027-06-02 → 2028-07-17 (+411d) | 15d → 16.88d |  |  |
| 1702 | Putty primer coat | 2027-05-18 → 2028-05-07 (+355d) | 2027-05-24 → 2028-05-13 (+355d) | 6d → 6.75d |  |  |
| 1703 | Door shutter fixing | 2027-05-18 → 2028-05-07 (+355d) | 2027-05-26 → 2028-05-15 (+355d) | 8d → 9d |  |  |
| 1704 | Electrical wiring work | 2029-03-06 → 2028-06-27 (-252d) | 2029-03-18 → 2028-07-09 (-252d) | 12d → 13.5d |  |  |
| 1705 | Painting 1st coat | 2029-03-21 → 2028-07-12 (-252d) | 2029-04-02 → 2028-07-24 (-252d) | 12d → 13.5d |  |  |
| 1706 | False ceiling | 2029-04-02 → 2028-07-24 (-252d) | 2029-04-12 → 2028-08-03 (-252d) | 10d → 11.25d |  |  |
| 1707 | **34th Floor** | 2027-02-25 → 2027-05-22 (+86d) | 2029-04-24 → 2028-08-15 (-252d) | 789.56d → 455.88d |  | constraint start no earlier than 2027-02-25 → start no earlier than 2027-05-22 |
| 1708 | Block Work | 2027-02-25 → 2027-05-22 (+86d) | 2027-03-05 → 2027-05-30 (+86d) | 7.94d → 9d |  |  |
| 1709 | Door Frame Fixing | 2027-03-09 → 2027-06-02 (+85d) | 2027-03-17 → 2027-06-11 (+86d) | 8.94d → 10.12d |  |  |
| 1710 | Internal Plumbing Works | 2027-03-13 → 2027-06-05 (+84d) | 2027-03-22 → 2027-06-15 (+85d) | 9.94d → 11.25d |  |  |
| 1711 | Waterproofing | 2027-04-12 → 2027-07-06 (+85d) | 2027-04-24 → 2027-07-18 (+85d) | 12d → 13.5d | 1695, 1726 → 1695, 1710 |  |
| 1712 | Internal Plaster | 2027-03-31 → 2027-07-18 (+109d) | 2027-04-09 → 2027-07-27 (+109d) | 9d → 10.12d | 1696, 1693, 1694, 1679 → 1696, 1709, 1710, 1711 |  |
| 1713 | IPS flooring work | 2027-04-18 → 2027-07-27 (+100d) | 2027-04-27 → 2027-08-05 (+100d) | 9d → 10.12d | 1697, 1709, 1695, 1728 → 1697, 1709, 1711, 1712 |  |
| 1714 | Toilet dado work | 2027-04-17 → 2028-01-09 (+267d) | 2027-04-25 → 2028-01-17 (+267d) | 8d → 9d | 1698, 1695, 1728 → 1698, 1711, 1712 |  |
| 1715 | Toilet flooring work | 2027-04-25 → 2028-01-17 (+267d) | 2027-05-02 → 2028-01-24 (+267d) | 7d → 7.88d |  |  |
| 1716 | Living dinning flooring | 2027-05-18 → 2028-05-07 (+355d) | 2027-06-02 → 2028-05-19 (+352d) | 15d → 13.5d |  |  |
| 1717 | Aluminium door-window fixing | 2027-06-02 → 2028-07-17 (+411d) | 2027-06-17 → 2028-08-01 (+411d) | 15d → 16.88d |  |  |
| 1718 | Putty primer coat | 2027-06-02 → 2028-05-19 (+352d) | 2027-06-08 → 2028-05-25 (+352d) | 6d → 6.75d |  |  |
| 1719 | Door shutter fixing | 2027-06-02 → 2028-05-19 (+352d) | 2027-06-10 → 2028-05-27 (+352d) | 8d → 9d |  |  |
| 1720 | Electrical wiring work | 2029-03-18 → 2028-07-09 (-252d) | 2029-03-30 → 2028-07-21 (-252d) | 12d → 13.5d |  |  |
| 1721 | Painting 1st coat | 2029-04-02 → 2028-07-24 (-252d) | 2029-04-14 → 2028-08-05 (-252d) | 12d → 13.5d |  |  |
| 1722 | False ceiling | 2029-04-14 → 2028-08-05 (-252d) | 2029-04-24 → 2028-08-15 (-252d) | 10d → 11.25d |  |  |
| 1723 | **35th Floor** | 2027-03-05 → 2027-06-02 (+89d) | 2029-05-06 → 2028-08-27 (-252d) | 793.62d → 457d |  | constraint start no earlier than 2027-03-05 → start no earlier than 2027-06-02 |
| 1724 | Block Work | 2027-03-05 → 2027-06-02 (+89d) | 2027-03-12 → 2027-06-10 (+90d) | 7.94d → 9d |  |  |
| 1725 | Door Frame Fixing | 2027-03-18 → 2027-06-11 (+85d) | 2027-03-26 → 2027-06-20 (+86d) | 8.94d → 10.12d |  |  |
| 1726 | Internal Plumbing Works | 2027-03-23 → 2027-06-15 (+84d) | 2027-04-01 → 2027-06-25 (+85d) | 9.94d → 11.25d |  |  |
| 1727 | Waterproofing | 2025-12-26 → 2027-07-18 (+569d) | 2026-01-05 → 2027-07-30 (+571d) | 10d → 13.5d | 2099 → 1711, 1726 |  |
| 1728 | Internal Plaster | 2027-04-12 → 2027-08-07 (+117d) | 2027-04-16 → 2027-08-16 (+122d) | 4d → 10.12d | 1712, 1709, 1710, 1695 → 1133FF+135d, 1712FS+0.25d, 1725FS+0.25d, 1726FS+0.25d, 1727FS+0.25d |  |
| 1729 | IPS flooring work | 2027-04-27 → 2027-08-16 (+111d) | 2027-05-06 → 2027-08-25 (+111d) | 9d → 10.12d | 1713, 1725, 1711, 2101 → 1713, 1725, 1727, 1728 |  |
| 1730 | Toilet dado work | 2027-04-25 → 2028-01-17 (+267d) | 2027-05-03 → 2028-01-25 (+267d) | 8d → 9d | 1714, 1711, 2101 → 1714, 1727, 1728 |  |
| 1731 | Toilet flooring work | 2027-05-03 → 2028-01-25 (+267d) | 2027-05-10 → 2028-02-01 (+267d) | 7d → 7.88d |  |  |
| 1732 | Living dinning flooring | 2027-06-02 → 2028-05-19 (+352d) | 2027-06-09 → 2028-05-31 (+357d) | 7d → 13.5d | 1716, 1725, 1731 → 1133FF+191.25d, 1716FS+0.25d, 1725FS+0.25d, 1731FS+0.25d |  |
| 1733 | Aluminium door-window fixing | 2027-06-17 → 2028-08-01 (+411d) | 2027-07-02 → 2028-08-16 (+411d) | 15d → 16.88d |  |  |
| 1734 | Putty primer coat | 2027-06-09 → 2028-05-31 (+357d) | 2027-06-15 → 2028-06-06 (+357d) | 6d → 6.75d |  |  |
| 1735 | Door shutter fixing | 2027-06-10 → 2028-05-31 (+356d) | 2027-06-18 → 2028-06-08 (+356d) | 8d → 9d |  |  |
| 1736 | Electrical wiring work | 2029-03-30 → 2028-07-21 (-252d) | 2029-04-11 → 2028-08-02 (-252d) | 12d → 13.5d |  |  |
| 1737 | Painting 1st coat | 2029-04-14 → 2028-08-05 (-252d) | 2029-04-26 → 2028-08-17 (-252d) | 12d → 13.5d |  |  |
| 1738 | False ceiling | 2029-04-26 → 2028-08-17 (-252d) | 2029-05-06 → 2028-08-27 (-252d) | 10d → 11.25d |  |  |
| 1739 | **Terrace Finishing** | 2026-01-28 → 2027-04-18 (+445d) | 2027-04-07 → 2027-07-07 (+91d) | 389.25d → 90d |  | constraint start no earlier than 2026-01-28 → start no earlier than 2027-04-18 |
| 1740 | Terrace waterproofing | 2027-01-17 → 2027-04-18 (+91d) | 2027-02-26 → 2027-05-28 (+91d) | 39.94d → 45d | 1851 → 1133 |  |
| 1741 | Terrace finishing | 2026-01-28 → 2027-05-28 (+485d) | 2026-02-02 → 2027-07-07 (+520d) | 5d → 45d | none → 1740 | constraint start no earlier than 2026-01-28 → none |
| 1742 | **Common Area Finishing** | 2026-01-14 → 2027-05-28 (+499d) | 2027-08-27 → 2028-05-12 (+259d) | 545.38d → 343.12d |  | constraint start no earlier than 2026-01-14 → start no earlier than 2027-05-28 |
| 1745 | Staircase railing fixing | 2026-05-23 → 2027-10-30 (+525d) | 2026-10-20 → 2028-05-12 (+570d) | 149.94d → 168.75d | 1747SS+26.75d, 1746SS+26.75d → 1747SS+33.75d, 1746SS+33.75d |  |
| 1746 | Main staircase flooring | 2026-04-27 → 2027-09-30 (+521d) | 2026-09-24 → 2028-04-12 (+566d) | 149.94d → 168.75d | 1747SS+13.38d → 1747SS+16.88d |  |
| 1747 | Fire staircase flooring | 2026-04-13 → 2027-09-15 (+520d) | 2026-09-10 → 2028-03-28 (+565d) | 149.94d → 168.75d | 2117SS+13.38d, 1751SS+26.75d → 1744SS+16.88d, 1751SS+33.75d |  |
| 1748 | Fire door work | 2026-05-23 → 2027-10-30 (+525d) | 2026-07-22 → 2028-02-12 (+570d) | 59.94d → 67.5d | 1746SS+26.75d, 1747SS+26.75d → 1746SS+33.75d, 1747SS+33.75d |  |
| 1749 | Electrical wiring work | 2026-02-01 → 2027-06-17 (+501d) | 2026-06-01 → 2027-10-15 (+501d) | 119.94d → 135d | 2097SS+17.88d → 1743SS+22.5d |  |
| 1750 | Lobby flooring | 2026-02-04 → 2027-06-21 (+502d) | 2026-07-04 → 2028-01-02 (+547d) | 150d → 168.75d | 1749SS+3.38d → 1749SS+4.12d |  |
| 1751 | Ceiling & wall putty-primer | 2026-03-18 → 2027-08-16 (+516d) | 2026-07-05 → 2028-01-18 (+562d) | 109.94d → 123.75d | 2117SS+26.75d → 1744SS+33.75d |  |
| 1752 | Ceiling & wall painting | 2026-04-04 → 2027-09-05 (+519d) | 2026-07-13 → 2028-01-28 (+564d) | 99.94d → 112.5d | 1751SS+17.88d → 1751SS+22.5d |  |
| 1753 | Light fixture supply & installation | 2027-01-29 → 2027-12-19 (+324d) | 2027-08-27 → 2028-02-02 (+159d) | 210d → 50.62d | 1752SS+255d → 1752SS+67.5d |  |
| 1754 | **Balcony Glass Railing** | 2027-12-05 → 2028-01-15 (+41d) | 2028-02-11 → 2028-03-25 (+43d) | 67.81d → 78.75d |  | constraint start no earlier than 2027-12-05 → start no earlier than 2028-01-15 |
| 1755 | 1st Floor | 2027-12-05 → 2028-01-15 (+41d) | 2027-12-07 → 2028-01-17 (+41d) | 1.94d → 2.25d |  |  |
| 1756 | 2nd Floor | 2025-12-16 → 2028-01-17 (+762d) | 2025-12-23 → 2028-01-19 (+757d) | 7d → 2.25d | 1140FS+0.25d, 978FS+0.25d → 1755 |  |
| 1757 | 3rd Floor | 2027-12-09 → 2028-01-19 (+41d) | 2027-12-11 → 2028-01-21 (+41d) | 1.94d → 2.25d | 2058 → 1756 |  |

| ID | Task | Start | Finish | Duration | Complete | Predecessors | Other |
| --- | --- | --- | --- | --- | --- | --- | --- |
| 1758 | 4th Floor | 2027-12-11 → 2028-01-21 (+41d) | 2027-12-13 → 2028-01-23 (+41d) | 1.94d → 2.25d |  |  |  |
| 1759 | 5th Floor | 2027-12-13 → 2028-01-23 (+41d) | 2027-12-15 → 2028-01-25 (+41d) | 1.94d → 2.25d |  |  |  |
| 1760 | 6th Floor | 2027-12-15 → 2028-01-25 (+41d) | 2027-12-17 → 2028-01-27 (+41d) | 1.94d → 2.25d |  |  |  |
| 1761 | 7th Floor | 2027-12-17 → 2028-01-27 (+41d) | 2027-12-19 → 2028-01-29 (+41d) | 1.94d → 2.25d |  |  |  |
| 1762 | 8th Floor | 2027-12-19 → 2028-01-29 (+41d) | 2027-12-20 → 2028-01-31 (+42d) | 1.94d → 2.25d |  |  |  |
| 1763 | 9th Floor | 2027-12-21 → 2028-01-31 (+41d) | 2027-12-22 → 2028-02-02 (+42d) | 1.94d → 2.25d |  |  |  |
| 1764 | 10th Floor | 2027-12-22 → 2028-02-02 (+42d) | 2027-12-24 → 2028-02-04 (+42d) | 1.94d → 2.25d |  |  |  |
| 1765 | 11th Floor | 2027-12-24 → 2028-02-04 (+42d) | 2027-12-26 → 2028-02-06 (+42d) | 1.94d → 2.25d |  |  |  |
| 1766 | 12th Floor | 2027-12-26 → 2028-02-06 (+42d) | 2027-12-28 → 2028-02-08 (+42d) | 1.94d → 2.25d |  |  |  |
| 1767 | 13th Floor | 2027-12-28 → 2028-02-08 (+42d) | 2027-12-30 → 2028-02-10 (+42d) | 1.94d → 2.25d |  |  |  |
| 1768 | 14th Floor | 2027-12-30 → 2028-02-10 (+42d) | 2028-01-01 → 2028-02-12 (+42d) | 1.94d → 2.25d |  |  |  |
| 1769 | 15th Floor | 2028-01-01 → 2028-02-12 (+42d) | 2028-01-03 → 2028-02-14 (+42d) | 1.94d → 2.25d |  |  |  |
| 1770 | 16th Floor | 2028-01-03 → 2028-02-14 (+42d) | 2028-01-05 → 2028-02-16 (+42d) | 1.94d → 2.25d |  |  |  |
| 1771 | 17th Floor | 2028-01-05 → 2028-02-16 (+42d) | 2028-01-07 → 2028-02-18 (+42d) | 1.94d → 2.25d |  |  |  |
| 1772 | 18th Floor | 2028-01-07 → 2028-02-18 (+42d) | 2028-01-09 → 2028-02-20 (+42d) | 1.94d → 2.25d |  |  |  |
| 1773 | 19th Floor | 2028-01-09 → 2028-02-20 (+42d) | 2028-01-11 → 2028-02-22 (+42d) | 1.94d → 2.25d |  |  |  |
| 1774 | 20th Floor | 2028-01-11 → 2028-02-22 (+42d) | 2028-01-13 → 2028-02-24 (+42d) | 1.94d → 2.25d |  |  |  |
| 1775 | 21st Floor | 2028-01-13 → 2028-02-24 (+42d) | 2028-01-15 → 2028-02-26 (+42d) | 1.94d → 2.25d |  |  |  |
| 1776 | 22nd Floor | 2028-01-15 → 2028-02-26 (+42d) | 2028-01-17 → 2028-02-28 (+42d) | 1.94d → 2.25d |  |  |  |
| 1777 | 23rd Floor | 2028-01-17 → 2028-02-28 (+42d) | 2028-01-19 → 2028-03-01 (+42d) | 1.94d → 2.25d |  |  |  |
| 1778 | 24th Floor | 2028-01-19 → 2028-03-01 (+42d) | 2028-01-20 → 2028-03-03 (+43d) | 1.94d → 2.25d |  |  |  |
| 1779 | 25th Floor | 2028-01-21 → 2028-03-03 (+42d) | 2028-01-22 → 2028-03-05 (+43d) | 1.94d → 2.25d |  |  |  |
| 1780 | 26th Floor | 2028-01-22 → 2028-03-05 (+43d) | 2028-01-24 → 2028-03-07 (+43d) | 1.94d → 2.25d |  |  |  |
| 1781 | 27th Floor | 2028-01-24 → 2028-03-07 (+43d) | 2028-01-26 → 2028-03-09 (+43d) | 1.94d → 2.25d |  |  |  |
| 1782 | 28th Floor | 2028-01-26 → 2028-03-09 (+43d) | 2028-01-28 → 2028-03-11 (+43d) | 1.94d → 2.25d |  |  |  |
| 1783 | 29th Floor | 2026-09-20 → 2028-03-11 (+538d) | 2026-09-27 → 2028-03-13 (+533d) | 7d → 2.25d |  | 1167, 1128 → 1782 |  |
| 1784 | 30th Floor | 2028-01-30 → 2028-03-13 (+43d) | 2028-02-01 → 2028-03-15 (+43d) | 1.94d → 2.25d |  | 2085 → 1783 |  |
| 1785 | 31st Floor | 2026-10-24 → 2028-03-15 (+508d) | 2026-10-31 → 2028-03-17 (+503d) | 7d → 2.25d |  | 1169, 1138 → 1784 |  |
| 1786 | 32nd Floor | 2027-11-01 → 2028-03-17 (+137d) | 2027-11-01 → 2028-03-19 (+139d) | 0d → 2.25d |  | 3004 → 1785 |  |
| 1787 | 33rd Floor | 2028-02-05 → 2028-03-19 (+43d) | 2028-02-07 → 2028-03-21 (+43d) | 1.94d → 2.25d |  | 869 → 1786 |  |
| 1788 | 34th Floor | 2028-02-07 → 2028-03-21 (+43d) | 2028-02-09 → 2028-03-23 (+43d) | 1.94d → 2.25d |  |  |  |
| 1789 | 35th Floor | 2028-02-09 → 2028-03-23 (+43d) | 2028-02-11 → 2028-03-25 (+43d) | 1.94d → 2.25d |  |  |  |
| 1790 | **MEP work** | 2025-11-30 → 2027-05-28 (+544d) | 2028-07-20 → 2028-08-05 (+16d) | 909.62d → 437.88d |  |  | constraint start no earlier than 2025-11-30 → start no earlier than 2027-05-28 |
| 1791 | **Electrical work** | 2027-01-17 → 2027-05-28 (+131d) | 2027-09-07 → 2028-03-08 (+183d) | 233.25d → 270d |  |  | constraint start no earlier than 2027-01-17 → start no earlier than 2027-05-28 |
| 1792 | Cable Tray | 2027-01-17 → 2027-05-28 (+131d) | 2027-04-17 → 2027-08-26 (+131d) | 89.94d → 101.25d |  | 1851 → 1138 |  |
| 1793 | Cable, main & sub main | 2027-02-26 → 2027-07-12 (+136d) | 2027-05-17 → 2027-09-30 (+136d) | 79.94d → 90d |  | 1792SS+40d → 1792SS+50.62d |  |
| 1794 | LT panel & DB | 2027-04-17 → 2027-08-26 (+131d) | 2027-08-15 → 2028-02-07 (+176d) | 119.94d → 135d |  |  |  |
| 1795 | Rising main | 2027-06-09 → 2027-10-25 (+138d) | 2027-09-07 → 2028-03-08 (+183d) | 89.94d → 101.25d |  | 1792FS+53.38d → 1792FS+67.5d |  |
| 1796 | EARTHING Works | 2027-04-30 → 2027-09-10 (+133d) | 2027-06-29 → 2027-12-24 (+178d) | 59.94d → 67.5d |  | 1792FS+13.38d → 1792FS+16.88d |  |
| 1797 | Advance lightening protection | 2027-04-07 → 2027-07-07 (+91d) | 2027-06-06 → 2027-09-05 (+91d) | 59.94d → 67.5d |  | 2658 → 1741 |  |
| 1798 | Inverter | 2027-06-29 → 2027-12-24 (+178d) | 2027-08-03 → 2028-01-28 (+178d) | 34.94d → 39.38d |  |  |  |
| 1799 | Energy meter | 2027-05-17 → 2027-09-30 (+136d) | 2027-07-16 → 2028-01-13 (+181d) | 59.94d → 67.5d |  |  |  |
| 1800 | Exhast fan | 2027-04-03 → 2027-10-05 (+185d) | 2027-06-02 → 2028-01-18 (+230d) | 60d → 67.5d |  | 816FF+4.5d → 1799FF+5.62d |  |
| 1801 | FTTH | 2027-06-20 → 2027-10-30 (+132d) | 2027-08-19 → 2028-02-12 (+177d) | 59.94d → 67.5d |  | 1796FS-9d → 1796FS-11.25d |  |
| 1802 | Security System - FA & PA | 2027-06-25 → 2027-12-19 (+177d) | 2027-08-19 → 2028-02-12 (+177d) | 54.94d → 61.88d |  |  |  |
| 1803 | Solar water heater | 2027-04-07 → 2027-07-07 (+91d) | 2027-06-06 → 2027-09-05 (+91d) | 59.94d → 67.5d |  | 2658 → 1741 |  |
| 1804 | **Plumbing wrok** | 2025-11-30 → 2027-05-28 (+544d) | 2027-08-24 → 2028-06-15 (+296d) | 578.31d → 380.5d |  |  | constraint start no earlier than 2025-11-30 → start no earlier than 2027-05-28 |
| 1805 | Terrace looping | 2027-02-26 → 2027-05-28 (+91d) | 2027-04-12 → 2027-07-12 (+91d) | 44.94d → 50.62d |  |  |  |
| 1806 | Shaft Plumbing | 2027-04-12 → 2027-07-12 (+91d) | 2027-08-10 → 2027-12-24 (+136d) | 119.94d → 135d |  |  |  |
| 1807 | CP sanitary fixture supply | 2027-07-02 → 2028-04-01 (+274d) | 2027-09-15 → 2028-06-15 (+274d) | 75d → 84.38d |  | 2101, 1731FS+53.38d → 1728, 1731FS+67.5d |  |
| 1808 | Cold & flushing water supply | 2025-11-30 → 2027-10-15 (+684d) | 2026-03-09 → 2028-02-27 (+720d) | 89.94d → 101.25d |  | 2117SS-90d → 1744SS+101.25d |  |
| 1809 | Misc work | 2026-09-25 → 2028-02-17 (+510d) | 2026-10-25 → 2028-03-18 (+510d) | 29.94d → 33.75d |  | 1808FS+200d → 1808FS-11.25d |  |
| 1810 | **Fire fighting work** | 2026-04-13 → 2027-05-28 (+410d) | 2027-06-26 → 2028-03-08 (+256d) | 393.56d → 270d |  |  | constraint start no earlier than 2026-04-13 → start no earlier than 2027-05-28 |
| 1811 | Fire hydrant work | 2026-04-13 → 2027-07-27 (+470d) | 2026-07-12 → 2027-09-25 (+440d) | 89.94d → 67.5d |  | 2117SS+53.38d → 1744SS+11.25d |  |
| 1812 | Sprinkler & piping work | 2026-07-13 → 2027-10-25 (+469d) | 2026-10-11 → 2028-03-08 (+514d) | 89.94d → 101.25d |  | 1811FS+0.75d → 1811FS+33.75d |  |
| 1813 | Shaft Downtake works | 2027-02-26 → 2027-05-28 (+91d) | 2027-05-27 → 2027-08-26 (+91d) | 89.94d → 101.25d |  |  |  |
| 1814 | Connection to pump room | 2027-05-27 → 2027-08-26 (+91d) | 2027-06-26 → 2027-09-25 (+91d) | 29.94d → 33.75d |  |  |  |
| 1815 | **Lift work** | 2027-01-17 → 2027-05-28 (+131d) | 2027-11-18 → 2027-12-29 (+41d) | 304.88d → 191.25d |  |  | constraint start no earlier than 2027-01-17 → start no earlier than 2027-05-28 |
| 1816 | Lift Shaft Handover | 2027-01-17 → 2027-05-28 (+131d) | 2027-02-26 → 2027-07-07 (+131d) | 39.94d → 45d |  | 1851 → 1138 |  |
| 1817 | Lift installation work | 2027-02-26 → 2027-07-07 (+131d) | 2027-08-25 → 2027-08-21 (-4d) | 180d → 50.62d |  |  |  |
| 1818 | Lift testing and commissioning | 2027-08-25 → 2027-08-21 (-4d) | 2027-11-18 → 2027-12-29 (+41d) | 84.94d → 95.62d |  |  |  |
| 1819 | **AC work** | 2028-05-03 → 2028-04-27 (-6d) | 2028-07-20 → 2028-08-05 (+16d) | 77.94d → 112.5d |  |  | constraint start no earlier than 2028-05-03 → start no earlier than 2028-04-27 |
| 1820 | Split AC | 2028-05-03 → 2028-04-27 (-6d) | 2028-07-20 → 2028-08-05 (+16d) | 77.94d → 112.5d |  | 1836FS-26.75d → 1836FS-33.75d |  |
| 1821 | **Tower Completion** | 2027-06-08 → 2023-12-06 (-1280d) | 2028-02-14 → 2028-03-23 (+38d) | 251.12d → 1618.76d | 0% → 69% |  | constraint start no earlier than 2027-06-08 → start no earlier than 2023-12-06 |
| 1822 | SURFACE PREPARATION | 2027-06-08 → 2027-06-04 (-4d) | 2027-08-27 → 2027-08-23 (-4d) | 79.94d → 90d |  | 1176FS+100d → 1176FS+2.25d |  |
| 1823 | External Painting | 2027-08-27 → 2027-08-23 (-4d) | 2027-12-05 → 2028-01-15 (+41d) | 99.94d → 112.5d |  | 1822FS+0.25d → 1822 |  |
| 1824 | Waterproofing | 2026-01-05 → 2023-12-06 (-761d) | 2026-01-15 → 2028-03-23 (+798d) | 10d → 871.88d | 0% → 91% | 1727, 2115 → 1823FS-1542.26d |  |
| 1825 | Misc. work | 2027-12-05 → 2028-01-15 (+41d) | 2028-02-03 → 2028-03-15 (+41d) | 59.94d → 67.5d |  |  |  |
| 1828 | **Post OC activities** | 2028-05-03 → 2028-04-27 (-6d) | 2029-07-28 → 2028-11-30 (-240d) | 450.69d → 244.12d |  |  | constraint start no earlier than 2028-05-03 → start no earlier than 2028-04-27 |
| 1831 | Wooden Flooring | 2028-05-03 → 2028-04-27 (-6d) | 2028-10-08 → 2028-10-24 (+16d) | 157.94d → 202.5d |  | 1836FS-26.75d → 1836FS-33.75d |  |

| ID | Task | Start | Finish | Duration | Complete | Predecessors | Other |
| --- | --- | --- | --- | --- | --- | --- | --- |
| 1833 | Modular Kitchen | 2028-09-27 → 2028-04-27 (-153d) | 2029-03-04 → 2028-10-24 (-131d) | 157.94d → 202.5d |  | 1836FS+120d → 1829SS |  |
| 1835 | OC Application/Readiness | 2028-04-05 → 2028-03-26 (-10d) | 2028-04-06 → 2028-03-27 (-10d) | 0.94d → 1.12d |  | 1851, 1745FS+7.12d, 1753, 1136, 950, 951, 1748, 1818, 1814, 1812, 1809, 1806, 1794, 1795, 1797, 1798, 1799, 2717, 1802, 1803, Entrance lobby → 1789FS+0.25d, 1794FS+0.25d, 1795FS+0.25d, 1797FS+0.25d, 1798FS+0.25d, 1799FS+0.25d, 1800FS+0.25d, 1802FS+0.25d, 1803FS+0.25d, 1806FS+0.25d, 1809FS+0.25d, 1812FS+0.25d, 1814FS+0.25d, 1818FS+0.25d, 1824FS+0.25d, 1825FS+0.25d, 1827FS+0.25d |  |
| 1836 | OC Receipt | 2028-05-29 → 2028-05-26 (-3d) | 2028-05-30 → 2028-05-27 (-3d) | 0.94d → 1.12d |  | 1835FS+53.38d, 1789, 2741, 1825 → 1835FS+67.5d |  |
| 1837 | Offer To Possession | 2029-07-28 → 2028-11-30 (-240d) | 2029-08-27 → 2028-12-30 (-240d) | 29.94d → 33.75d |  | Wardrobe installation, CP & SANITARYWARE, 1831, Shaft closer, 1833, External Elevation Façade → 1829, 1830, 1831, 1832, 1833, 1834, 1820 |  |
| 1838 | **Tower 3** | 2023-09-30 → 2023-07-26 (-66d) | 2029-08-04 → 2029-04-18 (-108d) | 1993.06d → 2207.5d | 6% → 15% |  | constraint start no earlier than 2023-09-30 → start no earlier than 2023-07-26 |
| 1839 | **Substructure** | 2023-09-30 → 2024-05-14 (+227d) | 2026-04-18 → 2026-05-05 (+17d) | 833.69d → 766.12d | 64% → 80% |  | constraint start no earlier than 2023-09-30 → start no earlier than 2024-05-14 |
| 1840 | **Soil Bed Preparation** | 2023-09-30 → 2024-05-14 (+227d) | 2026-02-07 → 2026-02-24 (+17d) | 763.81d → 687.38d | 80% → 81% |  | constraint start no earlier than 2023-09-30 → start no earlier than 2024-05-14 |
| 1841 | Test Piling | 2023-09-30 → 2024-05-14 (+227d) | 2024-01-27 → 2024-08-16 (+202d) | 74.94d → 106.69d |  | none → 7SS | constraint start no earlier than 2023-09-30 → start no earlier than 2024-05-14 |
| 1842 | Excavation | 2024-01-10 → 2024-07-21 (+193d) | 2024-02-08 → 2024-08-19 (+193d) | 29.94d → 33.56d |  | 7SS+61.74d → 1841SS+68d | constraint start no earlier than 2024-01-10 → start no earlier than 2024-07-21 |
| 1843 | Main Piling Work | 2024-04-12 → 2024-08-22 (+132d) | 2024-10-13 → 2025-03-02 (+140d) | 184.12d → 174.81d |  | 7FS-5.45d → 1841FS+5d | constraint start no earlier than 2024-04-12 → start no earlier than 2024-08-22 |
| 1844 | Anti-termite | 2025-11-30 → 2025-12-27 (+27d) | 2025-12-04 → 2025-12-31 (+27d) | 4.94d → 5.62d |  | 1843FS-81d → 1843FF+2d |  |
| 1845 | PCC | 2025-11-30 → 2025-03-02 (-273d) | 2025-12-03 → 2025-03-23 (-255d) | 3.94d → 13.31d | 0% → 100% | 1842FS-14.7d → 1842FS+0.25d | constraint none → start no earlier than 2025-03-02 |
| 1846 | Backfilling | 2025-11-30 → 2025-12-27 (+27d) | 2026-02-07 → 2026-02-24 (+17d) | 59.94d → 67.5d |  | 1863FS+4d → 1859 |  |
| 1847 | **RCC Structure** | 2025-01-03 → 2025-01-17 (+14d) | 2025-05-06 → 2025-09-26 (+143d) | 123.94d → 284.62d |  |  | constraint start no earlier than 2025-01-03 → start no earlier than 2025-01-17 |
| 1848 | **Raft Foundation** | 2025-01-03 → 2025-01-17 (+14d) | 2025-02-06 → 2025-03-31 (+53d) | 35d → 83.25d |  |  | constraint start no earlier than 2025-01-03 → start no earlier than 2025-01-17 |
| 1849 | Reinforcement | 2025-01-03 → 2025-01-17 (+14d) | 2025-02-02 → 2025-03-31 (+57d) | 30d → 83.25d |  | 1845FS-30.94d → 1845FS+2.25d | constraint start no earlier than 2025-01-03 → start no earlier than 2025-01-17 |
| 1850 | Formwork | 2025-01-17 → 2025-01-25 (+8d) | 2025-02-03 → 2025-03-31 (+56d) | 18d → 74.25d |  | 1849FF+1.06d → 1849FF+7.88d | constraint start no earlier than 2025-01-17 → start no earlier than 2025-01-25 |
| 1851 | Concreting | 2027-01-14 → 2025-01-30 (-714d) | 2027-01-17 → 2025-03-31 (-657d) | 2.94d → 68.62d | 0% → 100% | 1137 → 1850 | constraint none → start no earlier than 2025-01-30 |
| 1852 | **Basement 1 Slab** | 2025-02-08 → 2025-03-27 (+47d) | 2025-03-06 → 2025-07-18 (+134d) | 27d → 128.25d |  |  | constraint start no earlier than 2025-02-08 → start no earlier than 2025-03-27 |
| 1853 | Reinforcement | 2025-02-08 → 2025-03-27 (+47d) | 2025-03-06 → 2025-07-18 (+134d) | 21d → 106.88d |  | 1855FS+1d → 1851 | constraint start no earlier than 2025-02-08 → start no earlier than 2025-03-27 |
| 1854 | Formwork | 2025-02-11 → 2025-03-28 (+45d) | 2025-03-06 → 2025-04-16 (+41d) | 15d → 22.5d |  | 1853SS+3d → 1853SS+1.12d | constraint start no earlier than 2025-02-11 → start no earlier than 2025-03-28 |
| 1855 | Concreting | 2025-02-03 → 2025-03-31 (+56d) | 2025-02-06 → 2025-04-19 (+72d) | 4d → 4.5d |  | 1850FS-1d → 1854FS-19.12d | constraint start no earlier than 2025-02-03 → start no earlier than 2025-03-31 |
| 1856 | **Basement 2 Slab/GF** | 2025-03-04 → 2025-04-20 (+47d) | 2025-03-21 → 2025-08-18 (+150d) | 18d → 136.12d |  |  | constraint start no earlier than 2025-03-04 → start no earlier than 2025-04-20 |
| 1857 | Reinforcement | 2025-03-04 → 2025-04-20 (+47d) | 2025-03-21 → 2025-08-16 (+148d) | 15d → 133.88d |  | 1859FS-2d → 1855 | constraint start no earlier than 2025-03-04 → start no earlier than 2025-04-20 |
| 1858 | Formwork | 2025-03-05 → 2025-04-21 (+47d) | 2025-03-21 → 2025-08-15 (+147d) | 15d → 131.62d |  | 1857SS+1d → 1857SS+1.12d | constraint start no earlier than 2025-03-05 → start no earlier than 2025-04-21 |
| 1859 | Concreting | 2025-03-03 → 2025-05-11 (+69d) | 2025-03-06 → 2025-08-18 (+165d) | 2d → 112.5d |  | 1854FF+3.25d → 1858 | constraint start no earlier than 2025-03-03 → start no earlier than 2025-05-11 |
| 1861 | Reinforcement | 2025-03-18 → 2025-08-12 (+147d) | 2025-05-04 → 2025-09-24 (+143d) | 22.94d → 49.5d |  | 1863FS+5d → 1859 | constraint start no earlier than 2025-03-18 → start no earlier than 2025-08-12 |
| 1862 | Formwork | 2025-03-21 → 2025-08-13 (+145d) | 2025-05-05 → 2025-09-25 (+143d) | 30.94d → 49.5d |  | 1861SS+2.75d → 1861SS+1.12d | constraint start no earlier than 2025-03-21 → start no earlier than 2025-08-13 |
| 1863 | Concreting | 2025-03-09 → 2025-08-18 (+162d) | 2025-03-11 → 2025-09-26 (+199d) | 3d → 45d |  | 1858FS-1d → 1862 | constraint start no earlier than 2025-03-09 → start no earlier than 2025-08-18 |
| 1864 | **Substructure Finishing** | 2025-11-30 → 2025-12-27 (+27d) | 2026-04-18 → 2026-05-05 (+17d) | 129.81d → 146.25d |  |  | constraint start no earlier than 2025-11-30 → start no earlier than 2025-12-27 |
| 1865 | Masonary work | 2025-11-30 → 2025-12-27 (+27d) | 2026-01-23 → 2026-02-09 (+17d) | 44.94d → 50.62d |  | 1875FS+26.75d → 1863FS+33.75d |  |
| 1866 | Plaster | 2026-01-23 → 2026-02-10 (+18d) | 2026-03-04 → 2026-03-21 (+17d) | 39.94d → 45d |  |  |  |
| 1867 | Structural steel | 2025-11-30 → 2026-01-10 (+41d) | 2026-02-07 → 2026-03-10 (+31d) | 59.94d → 67.5d |  | 1875FS+53.38d → 1863FS+67.5d |  |
| 1868 | White Wash | 2026-03-04 → 2026-03-22 (+18d) | 2026-04-18 → 2026-05-05 (+17d) | 44.94d → 50.62d |  |  |  |
| 1869 | **Superstructure** | 2025-05-07 → 2025-09-26 (+142d) | 2028-04-21 → 2029-04-18 (+362d) | 1012.44d → 1315.38d | 4% → 1% |  | constraint start no earlier than 2025-05-07 → start no earlier than 2025-09-26 |
| 1870 | **RCC structure** | 2025-05-07 → 2025-09-26 (+142d) | 2027-01-23 → 2027-05-15 (+112d) | 558.75d → 574.88d | 32% → 10% |  | constraint start no earlier than 2025-05-07 → start no earlier than 2025-09-26 |
| 1871 | **1st floor slab** | 2025-05-07 → 2025-09-26 (+142d) | 2025-06-28 → 2025-11-30 (+155d) | 52.25d → 57.38d |  |  | constraint start no earlier than 2025-05-07 → start no earlier than 2025-09-26 |
| 1872 | Reinforcement | 2025-05-07 → 2025-09-26 (+142d) | 2025-06-28 → 2025-11-28 (+153d) | 32d → 27d |  | 1875FS+2.75d → 1863 | constraint start no earlier than 2025-05-07 → start no earlier than 2025-09-26 |
| 1873 | Wall conduiting | 2025-05-10 → 2025-10-08 (+151d) | 2025-06-24 → 2025-11-29 (+158d) | 25d → 7.88d |  | 1872SS+2.75d → 1872SS+5.62d | constraint start no earlier than 2025-05-10 → start no earlier than 2025-10-08 |
| 1874 | Formwork | 2025-05-10 → 2025-10-03 (+146d) | 2025-06-26 → 2025-11-29 (+156d) | 30d → 24.75d |  | 1872SS+3d → 1872SS+5.62d | constraint start no earlier than 2025-05-10 → start no earlier than 2025-10-03 |
| 1875 | Concreting | 2025-05-05 → 2025-10-08 (+156d) | 2025-05-06 → 2025-11-30 (+208d) | 1d → 13.5d |  | 1862 → 1874FS-38.36d | constraint start no earlier than 2025-05-05 → start no earlier than 2025-10-08 |
| 1876 | **2nd floor slab** | 2025-06-28 → 2025-10-29 (+123d) | 2025-08-06 → 2026-01-27 (+174d) | 40d → 56.25d | 100% → 40% |  | constraint start no earlier than 2025-06-28 → start no earlier than 2025-10-29 |
| 1877 | Reinforcement | 2025-06-28 → 2025-10-29 (+123d) | 2025-07-31 → 2026-01-24 (+177d) | 20d → 33.75d | 100% → 40% | 1880FS+1d → 1875FS-22.39d | constraint start no earlier than 2025-06-28 → start no earlier than 2025-10-29 |
| 1878 | Wall conduiting | 2025-07-02 → 2025-12-28 (+179d) | 2025-07-31 → 2025-12-31 (+153d) | 8d → 3.38d | 100% → 0% | 1873, 1877SS+2.75d → 1873, 1877SS+3.38d | constraint start no earlier than 2025-07-02 → none |
| 1879 | Formwork | 2025-06-30 → 2025-10-31 (+123d) | 2025-07-31 → 2026-01-25 (+178d) | 20d → 51.75d | 100% → 45% | 1877SS → 1877SS+3.38d | constraint start no earlier than 2025-06-30 → start no earlier than 2025-10-31 |
| 1880 | Concreting | 2025-05-24 → 2026-01-26 (+247d) | 2025-06-27 → 2026-01-27 (+214d) | 14d → 2.25d | 100% → 0% | 1874SS+15d → 1879 | constraint start no earlier than 2025-05-24 → none |
| 1881 | **3rd floor slab** | 2025-08-02 → 2026-01-28 (+179d) | 2025-08-30 → 2026-02-14 (+168d) | 29d → 20.25d | 100% → 0% |  | constraint start no earlier than 2025-08-02 → start no earlier than 2026-01-28 |
| 1882 | Reinforcement | 2025-08-02 → 2026-01-28 (+179d) | 2025-08-26 → 2026-02-08 (+166d) | 11d → 13.5d | 100% → 0% | 1885FS+1d → 1880 | constraint start no earlier than 2025-08-02 → none |
| 1883 | Wall conduiting | 2025-10-10 → 2026-01-31 (+113d) | 2025-10-18 → 2026-02-01 (+106d) | 5d → 2.25d | 100% → 0% | 1903, 1902SS+1d → 1878, 1882SS+3.38d | constraint start no earlier than 2025-10-10 → none |
| 1884 | Formwork | 2025-08-05 → 2026-02-02 (+181d) | 2025-08-29 → 2026-02-13 (+168d) | 11d → 13.5d | 100% → 0% | 1882SS+3d → 1882SS+5.62d | constraint start no earlier than 2025-08-05 → none |
| 1885 | Concreting | 2025-07-31 → 2026-02-14 (+198d) | 2025-08-06 → 2026-02-14 (+192d) | 3d → 1.12d | 100% → 0% | 1879 → 1884 | constraint start no earlier than 2025-07-31 → none |
| 1886 | **4th floor slab** | 2025-08-28 → 2026-02-15 (+171d) | 2025-09-13 → 2026-03-01 (+169d) | 17d → 16.88d | 100% → 0% |  | constraint start no earlier than 2025-08-28 → start no earlier than 2026-02-15 |
| 1887 | Reinforcement | 2025-08-28 → 2026-02-15 (+171d) | 2025-09-12 → 2026-02-25 (+166d) | 8d → 12.38d | 100% → 0% | 1890FS+1d → 1885 | constraint start no earlier than 2025-08-28 → none |
| 1888 | Wall conduiting | 2025-08-04 → 2026-02-16 (+196d) | 2025-08-25 → 2026-02-17 (+176d) | 3d → 2.25d | 100% → 0% | 1878, 1882SS+2.75d → 1883, 1887SS+1.12d | constraint start no earlier than 2025-08-04 → none |
| 1889 | Formwork | 2025-08-29 → 2026-02-18 (+173d) | 2025-09-12 → 2026-02-28 (+169d) | 7d → 12.38d | 100% → 0% | 1887SS+1d → 1887SS+3.38d | constraint start no earlier than 2025-08-29 → none |
| 1890 | Concreting | 2025-08-24 → 2026-03-01 (+189d) | 2025-08-30 → 2026-03-01 (+183d) | 3d → 1.12d | 100% → 0% | 1884FS-5d → 1889 | constraint start no earlier than 2025-08-24 → none |
| 1891 | **5th floor slab** | 2025-09-12 → 2026-03-02 (+171d) | 2025-09-26 → 2026-03-13 (+168d) | 15d → 13.5d | 100% → 0% |  | constraint start no earlier than 2025-09-12 → start no earlier than 2026-03-02 |
| 1892 | Reinforcement | 2025-09-12 → 2026-03-02 (+171d) | 2025-09-25 → 2026-03-10 (+166d) | 8d → 10.12d | 100% → 0% | 1895FS+1d → 1890 | constraint start no earlier than 2025-09-12 → none |
| 1893 | Wall conduiting | 2025-08-28 → 2026-03-03 (+187d) | 2025-09-12 → 2026-03-04 (+173d) | 6d → 2.25d | 100% → 0% | 1888, 1887SS+1d → 1888, 1892SS+1.12d | constraint start no earlier than 2025-08-28 → none |
| 1894 | Formwork | 2025-09-12 → 2026-03-04 (+173d) | 2025-09-25 → 2026-03-12 (+168d) | 7d → 10.12d | 100% → 0% | 1892SS+1d → 1892SS+2.25d | constraint start no earlier than 2025-09-12 → none |
| 1895 | Concreting | 2025-09-12 → 2026-03-13 (+182d) | 2025-09-13 → 2026-03-13 (+181d) | 2d → 1.12d | 100% → 0% | 1889 → 1894 | constraint start no earlier than 2025-09-12 → none |
| 1896 | **6th floor slab** | 2025-09-26 → 2026-03-14 (+169d) | 2025-10-10 → 2026-03-23 (+164d) | 15d → 11.25d | 100% → 0% |  | constraint start no earlier than 2025-09-26 → start no earlier than 2026-03-14 |
| 1897 | Reinforcement | 2025-09-26 → 2026-03-14 (+169d) | 2025-10-06 → 2026-03-20 (+165d) | 8d → 7.88d | 100% → 0% | 1905FS+1d → 1895 | constraint start no earlier than 2025-09-26 → none |
| 1898 | Wall conduiting | 2025-09-12 → 2026-03-15 (+184d) | 2025-09-25 → 2026-03-16 (+172d) | 8d → 2.25d | 100% → 0% | 1893, 1892SS+1d → 1893, 1897SS+1.12d | constraint start no earlier than 2025-09-12 → none |
| 1899 | Formwork | 2025-09-26 → 2026-03-16 (+171d) | 2025-10-06 → 2026-03-22 (+167d) | 7d → 7.88d | 100% → 0% | 1897SS+1d → 1897SS+2.25d | constraint start no earlier than 2025-09-26 → none |
| 1900 | Concreting | 2025-11-29 → 2026-03-23 (+114d) | 2025-12-04 → 2026-03-23 (+109d) | 5d → 1.12d | 40% → 0% | 1914FS-2.25d → 1899 |  |
| 1901 | **7th floor slab** | 2025-10-10 → 2026-03-24 (+165d) | 2025-10-25 → 2026-04-02 (+159d) | 16d → 11.25d | 100% → 0% |  | constraint start no earlier than 2025-10-10 → start no earlier than 2026-03-24 |
| 1902 | Reinforcement | 2025-10-10 → 2026-03-24 (+165d) | 2025-10-18 → 2026-03-30 (+163d) | 8d → 7.88d | 100% → 0% | 1910FS+1d → 1900 | constraint start no earlier than 2025-10-10 → none |
| 1903 | Wall conduiting | 2025-09-26 → 2026-03-25 (+180d) | 2025-10-06 → 2026-03-26 (+171d) | 3d → 2.25d | 100% → 0% | 1898, 1897SS+1d → 1898, 1902SS+1.12d | constraint start no earlier than 2025-09-26 → none |
| 1904 | Formwork | 2025-10-10 → 2026-03-26 (+167d) | 2025-10-18 → 2026-04-01 (+165d) | 7d → 7.88d | 100% → 0% | 1902SS+1d → 1902SS+2.25d | constraint start no earlier than 2025-10-10 → none |

| ID | Task | Start | Finish | Duration | Complete | Predecessors | Other |
| --- | --- | --- | --- | --- | --- | --- | --- |
| 1905 | Concreting | 2025-09-26 → 2026-04-02 (+188d) | 2025-09-26 → 2026-04-02 (+188d) | 1d → 1.12d | 100% → 0% | 1894 → 1904 | constraint start no earlier than 2025-09-26 → none |
| 1906 | **8th floor slab** | 2025-10-20 → 2026-04-03 (+165d) | 2025-11-10 → 2026-04-13 (+154d) | 23.88d → 12.38d | 100% → 0% |  | constraint start no earlier than 2025-10-20 → start no earlier than 2026-04-03 |
| 1907 | Reinforcement | 2025-10-20 → 2026-04-03 (+165d) | 2025-11-10 → 2026-04-09 (+150d) | 10d → 7.88d | 100% → 0% | 1915FS+1d → 1905 | constraint start no earlier than 2025-10-20 → none |
| 1908 | Wall conduiting | 2025-10-20 → 2026-04-04 (+166d) | 2025-11-10 → 2026-04-05 (+146d) | 3d → 2.25d | 100% → 0% | 1883, 1907SS+1d → 1903, 1907SS+1.12d | constraint start no earlier than 2025-10-20 → none |
| 1909 | Formwork | 2025-10-20 → 2026-04-05 (+167d) | 2025-11-10 → 2026-04-12 (+153d) | 10d → 9d | 100% → 0% | 1907SS+1d → 1907SS+2.25d | constraint start no earlier than 2025-10-20 → none |
| 1910 | Concreting | 2025-10-06 → 2026-04-13 (+189d) | 2025-10-10 → 2026-04-13 (+185d) | 2d → 1.12d | 100% → 0% | 1899 → 1909 | constraint start no earlier than 2025-10-06 → none |
| 1911 | **9th floor slab** | 2025-11-05 → 2026-04-14 (+160d) | 2025-12-19 → 2026-04-23 (+125d) | 22.31d → 11.25d | 60% → 0% |  | constraint start no earlier than 2025-11-05 → start no earlier than 2026-04-14 |
| 1912 | Reinforcement | 2025-11-05 → 2026-04-14 (+160d) | 2025-12-19 → 2026-04-20 (+122d) | 8d → 7.88d | 62% → 0% | 1920FS+1d → 1910 | constraint start no earlier than 2025-11-05 → none |
| 1913 | Wall conduiting | 2025-11-05 → 2026-04-15 (+161d) | 2025-12-17 → 2026-04-16 (+120d) | 3d → 2.25d | 66% → 0% | 1908, 1912SS+1d → 1908, 1912SS+1.12d | constraint start no earlier than 2025-11-05 → none |
| 1914 | Formwork | 2025-11-05 → 2026-04-16 (+162d) | 2025-12-18 → 2026-04-22 (+125d) | 7d → 7.88d | 71% → 0% | 1912SS+1d → 1912SS+2.25d | constraint start no earlier than 2025-11-05 → none |
| 1915 | Concreting | 2025-10-18 → 2026-04-23 (+187d) | 2025-10-25 → 2026-04-23 (+180d) | 2d → 1.12d | 100% → 0% | 1904 → 1914 | constraint start no earlier than 2025-10-18 → none |
| 1916 | **10th floor slab** | 2025-12-03 → 2026-04-24 (+142d) | 2025-12-22 → 2026-05-03 (+132d) | 9d → 11.25d |  |  | constraint start no earlier than 2025-12-03 → start no earlier than 2026-04-24 |
| 1917 | Reinforcement | 2025-12-03 → 2026-04-24 (+142d) | 2025-12-21 → 2026-04-30 (+130d) | 8d → 7.88d |  | 1900FS+1d → 1915 |  |
| 1918 | Wall conduiting | 2025-12-04 → 2026-04-25 (+142d) | 2025-12-17 → 2026-04-26 (+130d) | 3d → 2.25d |  | 1913, 1917SS+1d → 1913, 1917SS+1.12d |  |
| 1919 | Formwork | 2025-12-04 → 2026-04-26 (+143d) | 2025-12-21 → 2026-05-02 (+132d) | 7d → 7.88d |  | 1917SS+1d → 1917SS+2.25d |  |
| 1920 | Concreting | 2025-11-03 → 2026-05-03 (+181d) | 2025-11-07 → 2026-05-03 (+177d) | 5d → 1.12d | 100% → 0% | 1909 → 1919 | constraint start no earlier than 2025-11-03 → none |
| 1921 | **11th floor slab** | 2025-12-23 → 2026-05-04 (+132d) | 2026-01-01 → 2026-05-13 (+132d) | 9d → 11.25d |  |  | constraint start no earlier than 2025-12-23 → start no earlier than 2026-05-04 |
| 1922 | Reinforcement | 2025-12-23 → 2026-05-04 (+132d) | 2025-12-31 → 2026-05-10 (+130d) | 8d → 7.88d |  | 1925FS+1d → 1920 |  |
| 1923 | Wall conduiting | 2025-12-24 → 2026-05-05 (+132d) | 2025-12-27 → 2026-05-06 (+130d) | 3d → 2.25d |  | 1918, 1922SS+1d → 1918, 1922SS+1.12d |  |
| 1924 | Formwork | 2025-12-24 → 2026-05-06 (+133d) | 2025-12-31 → 2026-05-12 (+132d) | 7d → 7.88d |  | 1922SS+1d → 1922SS+2.25d |  |
| 1925 | Concreting | 2025-12-21 → 2026-05-13 (+143d) | 2025-12-22 → 2026-05-13 (+142d) | 1d → 1.12d |  | 1919 → 1924 |  |
| 1926 | **12th floor slab** | 2026-01-02 → 2026-05-14 (+132d) | 2026-01-11 → 2026-05-23 (+132d) | 9d → 11.25d |  |  | constraint start no earlier than 2026-01-02 → start no earlier than 2026-05-14 |
| 1927 | Reinforcement | 2026-01-02 → 2026-05-14 (+132d) | 2026-01-10 → 2026-05-20 (+130d) | 8d → 7.88d |  | 1930FS+1d → 1925 |  |
| 1928 | Wall conduiting | 2026-01-03 → 2026-05-15 (+132d) | 2026-01-06 → 2026-05-16 (+130d) | 3d → 2.25d |  | 1923, 1927SS+1d → 1923, 1927SS+1.12d |  |
| 1929 | Formwork | 2026-01-03 → 2026-05-16 (+133d) | 2026-01-10 → 2026-05-22 (+132d) | 7d → 7.88d |  | 1927SS+1d → 1927SS+2.25d |  |
| 1930 | Concreting | 2025-12-31 → 2026-05-23 (+143d) | 2026-01-01 → 2026-05-23 (+142d) | 1d → 1.12d |  | 1924 → 1929 |  |
| 1931 | **13th floor slab** | 2026-01-13 → 2026-05-24 (+131d) | 2026-01-22 → 2026-06-02 (+131d) | 9d → 11.25d |  |  | constraint start no earlier than 2026-01-13 → start no earlier than 2026-05-24 |
| 1932 | Reinforcement | 2026-01-13 → 2026-05-24 (+131d) | 2026-01-21 → 2026-05-30 (+129d) | 8d → 7.88d |  | 1935FS+2d → 1930 |  |
| 1933 | Wall conduiting | 2026-01-14 → 2026-05-25 (+131d) | 2026-01-17 → 2026-05-26 (+129d) | 3d → 2.25d |  | 1928, 1932SS+1d → 1928, 1932SS+1.12d |  |
| 1934 | Formwork | 2026-01-14 → 2026-05-26 (+132d) | 2026-01-21 → 2026-06-01 (+131d) | 7d → 7.88d |  | 1932SS+1d → 1932SS+2.25d |  |
| 1935 | Concreting | 2026-01-10 → 2026-06-02 (+143d) | 2026-01-11 → 2026-06-02 (+142d) | 1d → 1.12d |  | 1929 → 1934 |  |
| 1936 | **14th floor slab** | 2026-01-21 → 2026-06-03 (+133d) | 2026-01-30 → 2026-06-12 (+133d) | 9d → 11.25d |  |  | constraint start no earlier than 2026-01-21 → start no earlier than 2026-06-03 |
| 1937 | Reinforcement | 2026-01-21 → 2026-06-03 (+133d) | 2026-01-29 → 2026-06-09 (+131d) | 8d → 7.88d |  | 1940FS-1d → 1935 |  |
| 1938 | Wall conduiting | 2026-01-22 → 2026-06-04 (+133d) | 2026-01-25 → 2026-06-05 (+131d) | 3d → 2.25d |  | 1933, 1937SS+1d → 1933, 1937SS+1.12d |  |
| 1939 | Formwork | 2026-01-22 → 2026-06-05 (+134d) | 2026-01-29 → 2026-06-11 (+133d) | 7d → 7.88d |  | 1937SS+1d → 1937SS+2.25d |  |
| 1940 | Concreting | 2026-01-21 → 2026-06-12 (+142d) | 2026-01-22 → 2026-06-12 (+141d) | 1d → 1.12d |  | 1934 → 1939 |  |
| 1941 | **15th floor slab** | 2026-01-31 → 2026-06-13 (+133d) | 2026-02-09 → 2026-06-22 (+133d) | 9d → 11.25d |  |  | constraint start no earlier than 2026-01-31 → start no earlier than 2026-06-13 |
| 1942 | Reinforcement | 2026-01-31 → 2026-06-13 (+133d) | 2026-02-08 → 2026-06-19 (+131d) | 8d → 7.88d |  | 1945FS+0.88d → 1940 |  |
| 1943 | Wall conduiting | 2026-02-01 → 2026-06-14 (+133d) | 2026-02-04 → 2026-06-15 (+131d) | 3d → 2.25d |  | 1938, 1942SS+1d → 1938, 1942SS+1.12d |  |
| 1944 | Formwork | 2026-02-01 → 2026-06-15 (+134d) | 2026-02-08 → 2026-06-21 (+133d) | 7d → 7.88d |  | 1942SS+1d → 1942SS+2.25d |  |
| 1945 | Concreting | 2026-01-29 → 2026-06-22 (+144d) | 2026-01-30 → 2026-06-22 (+143d) | 1d → 1.12d |  | 1939 → 1944 |  |
| 1946 | **16th floor slab** | 2026-02-08 → 2026-06-23 (+135d) | 2026-02-20 → 2026-07-03 (+133d) | 12d → 12.38d |  |  | constraint start no earlier than 2026-02-08 → start no earlier than 2026-06-23 |
| 1947 | Reinforcement | 2026-02-08 → 2026-06-23 (+135d) | 2026-02-18 → 2026-06-30 (+132d) | 10d → 9d |  | 1950FS-1d → 1945 |  |
| 1948 | Wall conduiting | 2026-02-09 → 2026-06-24 (+135d) | 2026-02-12 → 2026-06-25 (+133d) | 3d → 2.25d |  | 1943, 1947SS+1d → 1943, 1947SS+1.12d |  |
| 1949 | Formwork | 2026-02-09 → 2026-06-25 (+136d) | 2026-02-19 → 2026-07-02 (+133d) | 10d → 9d |  | 1947SS+1d → 1947SS+2.25d |  |
| 1950 | Concreting | 2026-02-08 → 2026-07-03 (+145d) | 2026-02-09 → 2026-07-03 (+144d) | 1d → 1.12d |  | 1944 → 1949 |  |
| 1951 | **17th floor slab** | 2026-02-19 → 2026-07-04 (+135d) | 2026-02-28 → 2026-07-13 (+135d) | 9d → 11.25d |  |  | constraint start no earlier than 2026-02-19 → start no earlier than 2026-07-04 |
| 1952 | Reinforcement | 2026-02-19 → 2026-07-04 (+135d) | 2026-02-27 → 2026-07-11 (+134d) | 8d → 9d |  | 1955FS-1d → 1950 |  |
| 1953 | Wall conduiting | 2026-02-20 → 2026-07-05 (+135d) | 2026-02-23 → 2026-07-06 (+133d) | 3d → 2.25d |  | 1948, 1952SS+1d → 1948, 1952SS+1.12d |  |
| 1954 | Formwork | 2026-02-20 → 2026-07-06 (+136d) | 2026-02-27 → 2026-07-12 (+135d) | 7d → 7.88d |  | 1952SS+1d → 1952SS+2.25d |  |
| 1955 | Concreting | 2026-02-19 → 2026-07-13 (+144d) | 2026-02-20 → 2026-07-13 (+143d) | 1d → 1.12d |  | 1949 → 1954 |  |
| 1956 | **18th floor slab** | 2026-02-26 → 2026-07-14 (+138d) | 2026-03-07 → 2026-07-23 (+138d) | 9d → 11.25d |  |  | constraint start no earlier than 2026-02-26 → start no earlier than 2026-07-14 |
| 1957 | Reinforcement | 2026-02-26 → 2026-07-14 (+138d) | 2026-03-06 → 2026-07-21 (+137d) | 8d → 9d |  | 1960FS-2d → 1955 |  |
| 1958 | Wall conduiting | 2026-02-27 → 2026-07-15 (+138d) | 2026-03-02 → 2026-07-16 (+136d) | 3d → 2.25d |  | 1953, 1957SS+1d → 1953, 1957SS+1.12d |  |
| 1959 | Formwork | 2026-02-27 → 2026-07-16 (+139d) | 2026-03-06 → 2026-07-22 (+138d) | 7d → 7.88d |  | 1957SS+1d → 1957SS+2.25d |  |
| 1960 | Concreting | 2026-02-27 → 2026-07-23 (+146d) | 2026-02-28 → 2026-07-23 (+145d) | 1d → 1.12d |  | 1954 → 1959 |  |
| 1961 | **19th floor slab** | 2026-03-04 → 2026-07-24 (+142d) | 2026-03-12 → 2026-08-02 (+143d) | 8d → 11.25d |  |  | constraint start no earlier than 2026-03-04 → start no earlier than 2026-07-24 |
| 1962 | Reinforcement | 2026-03-04 → 2026-07-24 (+142d) | 2026-03-11 → 2026-07-31 (+142d) | 7d → 9d |  | 1965FS-3d → 1960 |  |
| 1963 | Wall conduiting | 2026-03-05 → 2026-07-25 (+142d) | 2026-03-08 → 2026-07-26 (+140d) | 3d → 2.25d |  | 1958, 1962SS+1d → 1958, 1962SS+1.12d |  |
| 1964 | Formwork | 2026-03-05 → 2026-07-25 (+142d) | 2026-03-11 → 2026-08-01 (+143d) | 6d → 9d |  | 1962SS+1d → 1962SS+1.12d |  |
| 1965 | Concreting | 2026-03-06 → 2026-08-02 (+149d) | 2026-03-07 → 2026-08-02 (+148d) | 1d → 1.12d |  | 1959 → 1964 |  |
| 1966 | **20th floor slab** | 2026-03-13 → 2026-08-03 (+143d) | 2026-03-21 → 2026-08-12 (+144d) | 8d → 11.25d |  |  | constraint start no earlier than 2026-03-13 → start no earlier than 2026-08-03 |
| 1967 | Reinforcement | 2026-03-13 → 2026-08-03 (+143d) | 2026-03-20 → 2026-08-10 (+143d) | 7d → 9d |  | 1970FS+1d → 1965 |  |
| 1968 | Wall conduiting | 2026-03-14 → 2026-08-04 (+143d) | 2026-03-17 → 2026-08-05 (+141d) | 3d → 2.25d |  | 1963, 1967SS+1d → 1963, 1967SS+1.12d |  |
| 1969 | Formwork | 2026-03-14 → 2026-08-04 (+143d) | 2026-03-20 → 2026-08-11 (+144d) | 6d → 9d |  | 1967SS+1d → 1967SS+1.12d |  |
| 1970 | Concreting | 2026-03-11 → 2026-08-12 (+154d) | 2026-03-12 → 2026-08-12 (+153d) | 1d → 1.12d |  | 1964 → 1969 |  |
| 1971 | **21st floor slab** | 2026-03-23 → 2026-08-13 (+143d) | 2026-04-01 → 2026-08-22 (+143d) | 10d → 11.25d |  |  | constraint start no earlier than 2026-03-23 → start no earlier than 2026-08-13 |
| 1972 | Reinforcement | 2026-03-23 → 2026-08-13 (+143d) | 2026-03-31 → 2026-08-20 (+142d) |  |  | 1975FS+1.88d → 1970 |  |
| 1973 | Wall conduiting | 2026-03-24 → 2026-08-14 (+143d) | 2026-03-26 → 2026-08-15 (+142d) | 3d → 2.25d |  | 1968, 1972SS+1d → 1968, 1972SS+1.12d |  |
| 1974 | Formwork | 2026-03-24 → 2026-08-15 (+144d) | 2026-03-31 → 2026-08-21 (+143d) | 8d → 7.88d |  | 1972SS+1d → 1972SS+2.25d |  |

| ID | Task | Start | Finish | Duration | Predecessors | Other |
| --- | --- | --- | --- | --- | --- | --- |
| 1975 | Concreting | 2026-03-20 → 2026-08-22 (+155d) | 2026-03-21 → 2026-08-22 (+154d) | 1d → 1.12d | 1969 → 1974 |  |
| 1976 | **22nd floor slab** | 2026-04-06 → 2026-08-23 (+139d) | 2026-04-15 → 2026-09-01 (+139d) | 10d → 11.25d |  | constraint start no earlier than 2026-04-06 → start no earlier than 2026-08-23 |
| 1977 | Reinforcement | 2026-04-06 → 2026-08-23 (+139d) | 2026-04-14 → 2026-08-30 (+138d) |  | 1980FS+4d → 1975 |  |
| 1978 | Wall conduiting | 2026-04-07 → 2026-08-24 (+139d) | 2026-04-09 → 2026-08-25 (+138d) | 3d → 2.25d | 1973, 1977SS+1d → 1973, 1977SS+1.12d |  |
| 1979 | Formwork | 2026-04-07 → 2026-08-25 (+140d) | 2026-04-14 → 2026-08-31 (+139d) | 8d → 7.88d | 1977SS+1d → 1977SS+2.25d |  |
| 1980 | Concreting | 2026-04-01 → 2026-09-01 (+153d) | 2026-04-01 → 2026-09-01 (+153d) | 1d → 1.12d | 1974 → 1979 |  |
| 1981 | **23rd floor slab** | 2026-04-19 → 2026-09-02 (+136d) | 2026-04-28 → 2026-09-11 (+136d) | 10d → 11.25d |  | constraint start no earlier than 2026-04-19 → start no earlier than 2026-09-02 |
| 1982 | Reinforcement | 2026-04-19 → 2026-09-02 (+136d) | 2026-04-27 → 2026-09-09 (+135d) |  | 1985FS+3d → 1980 |  |
| 1983 | Wall conduiting | 2026-04-20 → 2026-09-03 (+136d) | 2026-04-22 → 2026-09-04 (+135d) | 3d → 2.25d | 1978, 1982SS+1d → 1978, 1982SS+1.12d |  |
| 1984 | Formwork | 2026-04-20 → 2026-09-04 (+137d) | 2026-04-27 → 2026-09-10 (+136d) | 8d → 7.88d | 1982SS+1d → 1982SS+2.25d |  |
| 1985 | Concreting | 2026-04-15 → 2026-09-11 (+149d) | 2026-04-15 → 2026-09-11 (+149d) | 1d → 1.12d | 1979 → 1984 |  |
| 1986 | **24th floor slab** | 2026-05-04 → 2026-09-12 (+131d) | 2026-05-15 → 2026-09-25 (+133d) | 12d → 15.75d |  | constraint start no earlier than 2026-05-04 → start no earlier than 2026-09-12 |
| 1987 | Reinforcement | 2026-05-04 → 2026-09-12 (+131d) | 2026-05-13 → 2026-09-22 (+132d) | 10d → 12.38d | 1990FS+5d → 1985 |  |
| 1988 | Wall conduiting | 2026-05-05 → 2026-09-13 (+131d) | 2026-05-07 → 2026-09-14 (+130d) | 3d → 2.25d | 1983, 1987SS+1d → 1983, 1987SS+1.12d |  |
| 1989 | Formwork | 2026-05-05 → 2026-09-14 (+132d) | 2026-05-14 → 2026-09-24 (+133d) | 10d → 12.38d | 1987SS+1d → 1987SS+2.25d |  |
| 1990 | Concreting | 2026-04-28 → 2026-09-25 (+150d) | 2026-04-28 → 2026-09-25 (+150d) | 1d → 1.12d | 1984 → 1989 |  |
| 1991 | **25th floor slab** | 2026-05-17 → 2026-09-26 (+132d) | 2026-05-28 → 2026-10-10 (+135d) | 12d → 16.88d |  | constraint start no earlier than 2026-05-17 → start no earlier than 2026-09-26 |
| 1992 | Reinforcement | 2026-05-17 → 2026-09-26 (+132d) | 2026-05-26 → 2026-10-07 (+134d) | 10d → 13.5d | 1995FS+1d → 1990 |  |
| 1993 | Wall conduiting | 2026-05-18 → 2026-09-27 (+132d) | 2026-05-20 → 2026-09-28 (+131d) | 3d → 2.25d | 1988, 1992SS+1d → 1988, 1992SS+1.12d |  |
| 1994 | Formwork | 2026-05-18 → 2026-09-28 (+133d) | 2026-05-27 → 2026-10-09 (+135d) | 10d → 13.5d | 1992SS+1d → 1992SS+2.25d |  |
| 1995 | Concreting | 2026-05-15 → 2026-10-10 (+148d) | 2026-05-15 → 2026-10-10 (+148d) | 1d → 1.12d | 1989 → 1994 |  |
| 1996 | **26th floor slab** | 2026-05-30 → 2026-10-11 (+134d) | 2026-06-08 → 2026-10-20 (+134d) | 10d → 11.25d |  | constraint start no earlier than 2026-05-30 → start no earlier than 2026-10-11 |
| 1997 | Reinforcement | 2026-05-30 → 2026-10-11 (+134d) | 2026-06-07 → 2026-10-18 (+133d) |  | 2000FS+1d → 1995 |  |
| 1998 | Wall conduiting | 2026-05-31 → 2026-10-12 (+134d) | 2026-06-02 → 2026-10-13 (+133d) | 3d → 2.25d | 1993, 1997SS+1d → 1993, 1997SS+1.12d |  |
| 1999 | Formwork | 2026-05-31 → 2026-10-13 (+135d) | 2026-06-07 → 2026-10-19 (+134d) | 8d → 7.88d | 1997SS+1d → 1997SS+2.25d |  |
| 2000 | Concreting | 2026-05-28 → 2026-10-20 (+145d) | 2026-05-28 → 2026-10-20 (+145d) | 1d → 1.12d | 1994 → 1999 |  |
| 2001 | **27th floor slab** | 2026-06-14 → 2026-10-21 (+129d) | 2026-06-23 → 2026-10-30 (+129d) | 10d → 11.25d |  | constraint start no earlier than 2026-06-14 → start no earlier than 2026-10-21 |
| 2002 | Reinforcement | 2026-06-14 → 2026-10-21 (+129d) | 2026-06-22 → 2026-10-28 (+128d) |  | 2005FS+5d → 2000 |  |
| 2003 | Wall conduiting | 2026-06-15 → 2026-10-22 (+129d) | 2026-06-17 → 2026-10-23 (+128d) | 3d → 2.25d | 1998, 2002SS+1d → 1998, 2002SS+1.12d |  |
| 2004 | Formwork | 2026-06-15 → 2026-10-23 (+130d) | 2026-06-22 → 2026-10-29 (+129d) | 8d → 7.88d | 2002SS+1d → 2002SS+2.25d |  |
| 2005 | Concreting | 2026-06-08 → 2026-10-30 (+144d) | 2026-06-08 → 2026-10-30 (+144d) | 1d → 1.12d | 1999 → 2004 |  |
| 2006 | **28th floor slab** | 2026-06-25 → 2026-10-31 (+128d) | 2026-07-04 → 2026-12-24 (+173d) | 10d → 11.25d |  | constraint start no earlier than 2026-06-25 → start no earlier than 2026-10-31 |
| 2007 | Reinforcement | 2026-06-25 → 2026-10-31 (+128d) | 2026-07-03 → 2026-12-22 (+172d) |  | 2010FS+1d → 2005 |  |
| 2008 | Wall conduiting | 2026-06-26 → 2026-12-16 (+173d) | 2026-06-28 → 2026-12-17 (+172d) | 3d → 2.25d | 2003, 2007SS+1d → 2003, 2007SS+1.12d |  |
| 2009 | Formwork | 2026-06-26 → 2026-12-17 (+174d) | 2026-07-03 → 2026-12-23 (+173d) | 8d → 7.88d | 2007SS+1d → 2007SS+2.25d |  |
| 2010 | Concreting | 2026-06-23 → 2026-12-24 (+184d) | 2026-06-23 → 2026-12-24 (+184d) | 1d → 1.12d | 2004 → 2009 |  |
| 2011 | **29th floor slab** | 2026-07-06 → 2026-12-25 (+172d) | 2026-07-15 → 2027-01-03 (+172d) | 10d → 11.25d |  | constraint start no earlier than 2026-07-06 → start no earlier than 2026-12-25 |
| 2012 | Reinforcement | 2026-07-06 → 2026-12-25 (+172d) | 2026-07-14 → 2027-01-01 (+171d) |  | 2015FS+1d → 2010 |  |
| 2013 | Wall conduiting | 2026-07-07 → 2026-12-26 (+172d) | 2026-07-09 → 2026-12-27 (+171d) | 3d → 2.25d | 2008, 2012SS+1d → 2008, 2012SS+1.12d |  |
| 2014 | Formwork | 2026-07-07 → 2026-12-27 (+173d) | 2026-07-14 → 2027-01-02 (+172d) | 8d → 7.88d | 2012SS+1d → 2012SS+2.25d |  |
| 2015 | Concreting | 2026-07-04 → 2027-01-03 (+183d) | 2026-07-04 → 2027-01-03 (+183d) | 1d → 1.12d | 2009 → 2014 |  |
| 2016 | **30th floor slab** | 2026-07-20 → 2027-01-04 (+168d) | 2026-07-29 → 2027-01-13 (+168d) | 10d → 11.25d |  | constraint start no earlier than 2026-07-20 → start no earlier than 2027-01-04 |
| 2017 | Reinforcement | 2026-07-20 → 2027-01-04 (+168d) | 2026-07-28 → 2027-01-11 (+167d) |  | 2020FS+4d → 2015 |  |
| 2018 | Wall conduiting | 2026-07-21 → 2027-01-05 (+168d) | 2026-07-23 → 2027-01-06 (+167d) | 3d → 2.25d | 2013, 2017SS+1d → 2013, 2017SS+1.12d |  |
| 2019 | Formwork | 2026-07-21 → 2027-01-06 (+169d) | 2026-07-28 → 2027-01-12 (+168d) | 8d → 7.88d | 2017SS+1d → 2017SS+2.25d |  |
| 2020 | Concreting | 2026-07-15 → 2027-01-13 (+182d) | 2026-07-15 → 2027-01-13 (+182d) | 1d → 1.12d | 2014 → 2019 |  |
| 2021 | **31st floor slab** | 2026-08-03 → 2027-01-14 (+164d) | 2026-08-13 → 2027-01-23 (+163d) | 10.88d → 11.25d |  | constraint start no earlier than 2026-08-03 → start no earlier than 2027-01-14 |
| 2022 | Reinforcement | 2026-08-03 → 2027-01-14 (+164d) | 2026-08-11 → 2027-01-20 (+162d) | 8.94d → 7.88d | 2025FS+4d → 2020 |  |
| 2023 | Wall conduiting | 2026-08-04 → 2027-01-15 (+164d) | 2026-08-05 → 2027-01-16 (+164d) | 1.94d → 2.25d | 2018, 2022SS+1d → 2018, 2022SS+1.12d |  |
| 2024 | Formwork | 2026-08-04 → 2027-01-16 (+165d) | 2026-08-12 → 2027-01-22 (+163d) | 8.94d → 7.88d | 2022SS+1d → 2022SS+2.25d |  |
| 2025 | Concreting | 2026-07-29 → 2027-01-23 (+178d) | 2026-07-29 → 2027-01-23 (+178d) | 1d → 1.12d | 2019 → 2024 |  |
| 2026 | **32nd floor slab** | 2026-08-17 → 2027-01-24 (+160d) | 2026-08-30 → 2027-02-06 (+160d) | 12.75d → 15.75d |  | constraint start no earlier than 2026-08-17 → start no earlier than 2027-01-24 |
| 2027 | Reinforcement | 2026-08-17 → 2027-01-24 (+160d) | 2026-08-27 → 2027-02-02 (+159d) | 9.94d → 11.25d | 2030FS+4d → 2025 |  |
| 2028 | Wall conduiting | 2026-08-18 → 2027-01-25 (+160d) | 2026-08-20 → 2027-01-26 (+159d) | 1.94d → 2.25d | 2023, 2027SS+1d → 2023, 2027SS+1.12d |  |
| 2029 | Formwork | 2026-08-19 → 2027-01-26 (+160d) | 2026-08-29 → 2027-02-05 (+160d) | 9.94d → 12.38d | 2027SS+1.88d → 2027SS+2.25d |  |
| 2030 | Concreting | 2026-08-12 → 2027-02-06 (+178d) | 2026-08-13 → 2027-02-06 (+177d) | 0.94d → 1.12d | 2024 → 2029 |  |
| 2031 | **33rd floor slab** | 2026-08-31 → 2027-02-07 (+160d) | 2026-09-14 → 2027-02-16 (+155d) | 14d → 11.25d |  | constraint start no earlier than 2026-08-31 → start no earlier than 2027-02-07 |
| 2032 | Reinforcement | 2026-08-31 → 2027-02-07 (+160d) | 2026-09-14 → 2027-02-13 (+152d) | 14d → 7.88d | 2035FS+1d → 2030 |  |
| 2033 | Wall conduiting | 2026-09-01 → 2027-02-08 (+160d) | 2026-09-06 → 2027-02-09 (+156d) | 5d → 2.25d | 2028, 2032SS+1d → 2028, 2032SS+1.12d |  |
| 2034 | Formwork | 2026-09-02 → 2027-02-09 (+160d) | 2026-09-12 → 2027-02-15 (+156d) | 10d → 7.88d | 2032SS+1.88d → 2032SS+2.25d |  |
| 2035 | Concreting | 2026-08-29 → 2027-02-16 (+171d) | 2026-08-30 → 2027-02-16 (+170d) | 0.94d → 1.12d | 2029 → 2034 |  |
| 2036 | **34th floor slab** | 2026-09-14 → 2027-02-17 (+156d) | 2026-09-27 → 2027-03-03 (+157d) | 12.75d → 16.88d |  | constraint start no earlier than 2026-09-14 → start no earlier than 2027-02-17 |
| 2037 | Reinforcement | 2026-09-14 → 2027-02-17 (+156d) | 2026-09-24 → 2027-02-28 (+157d) | 9.94d → 13.5d | 2040FS+1d → 2035 |  |
| 2038 | Wall conduiting | 2026-09-15 → 2027-02-18 (+156d) | 2026-09-17 → 2027-02-19 (+155d) | 1.94d → 2.25d | 2033, 2037SS+1d → 2033, 2037SS+1.12d |  |
| 2039 | Formwork | 2026-09-16 → 2027-02-19 (+156d) | 2026-09-26 → 2027-03-02 (+157d) | 9.94d → 13.5d | 2037SS+1.88d → 2037SS+2.25d |  |
| 2040 | Concreting | 2026-09-12 → 2027-03-03 (+172d) | 2026-09-13 → 2027-03-03 (+171d) | 1d → 1.12d | 2034 → 2039 |  |
| 2041 | **35th floor slab** | 2026-09-29 → 2027-03-04 (+156d) | 2026-10-10 → 2027-03-15 (+156d) | 11.75d → 13.5d |  | constraint start no earlier than 2026-09-29 → start no earlier than 2027-03-04 |
| 2042 | Reinforcement | 2026-09-29 → 2027-03-04 (+156d) | 2026-10-08 → 2027-03-11 (+154d) | 8.94d → 9d | 2045FS+2d → 2040 |  |
| 2043 | Wall conduiting | 2026-09-30 → 2027-03-05 (+156d) | 2026-10-02 → 2027-03-06 (+155d) | 1.94d → 2.25d | 2038, 2042SS+1d → 2038, 2042SS+1.12d |  |
| 2044 | Formwork | 2026-10-02 → 2027-03-07 (+156d) | 2026-10-10 → 2027-03-14 (+155d) | 7.94d → 9d | 2043SS+1.88d → 2043SS+2.25d |  |

| ID | Task | Start | Finish | Duration | Predecessors | Other |
| --- | --- | --- | --- | --- | --- | --- |
| 2045 | Concreting | 2026-09-26 → 2027-03-15 (+170d) | 2026-09-27 → 2027-03-15 (+169d) | 0.94d → 1.12d | 2039 → 2044 |  |
| 2046 | **Terrace floor slab** | 2026-10-12 → 2027-03-16 (+155d) | 2026-12-16 → 2027-04-05 (+110d) | 21d → 23.62d |  | constraint start no earlier than 2026-10-12 → start no earlier than 2027-03-16 |
| 2047 | Reinforcement | 2026-10-12 → 2027-03-16 (+155d) | 2026-12-16 → 2027-04-02 (+107d) | 21d → 20.25d | 2050FS+1d → 2045 |  |
| 2048 | Wall conduiting | 2026-10-13 → 2027-03-17 (+155d) | 2026-10-14 → 2027-03-18 (+155d) | 1.94d → 2.25d | 2043, 2047SS+1d → 2043, 2047SS+1.12d |  |
| 2049 | Formwork | 2026-10-13 → 2027-03-18 (+156d) | 2026-10-26 → 2027-04-04 (+160d) | 13d → 20.25d | 2047SS+1.88d → 2047SS+2.25d |  |
| 2050 | Concreting | 2026-10-10 → 2027-04-05 (+177d) | 2026-10-10 → 2027-04-05 (+177d) | 0.94d → 1.12d | 2044 → 2049 |  |
| 2051 | **OHT & Mumty** | 2026-10-30 → 2027-04-06 (+158d) | 2027-01-23 → 2027-05-15 (+112d) | 39.5d → 45d |  | constraint start no earlier than 2026-10-30 → start no earlier than 2027-04-06 |
| 2052 | Reinforcement | 2026-10-30 → 2027-04-06 (+158d) | 2027-01-13 → 2027-05-08 (+115d) | 29.94d → 37.12d | 2055FS+2d → 2050 |  |
| 2053 | Wall conduiting | 2026-10-31 → 2027-04-07 (+158d) | 2026-12-20 → 2027-04-11 (+112d) | 4.94d → 5.62d | 2048, 2052SS+1d → 2048, 2052SS+1.12d |  |
| 2054 | Formwork | 2026-12-18 → 2027-04-10 (+113d) | 2027-01-20 → 2027-05-12 (+112d) | 32.94d → 37.12d | 2052SS+3.62d → 2052SS+4.5d |  |
| 2055 | Concreting | 2026-10-26 → 2027-05-13 (+199d) | 2026-10-28 → 2027-05-15 (+199d) | 2d → 3.38d | 2049 → 2054 |  |
| 2056 | **Post Pour Activities** | 2025-11-30 → 2026-03-02 (+92d) | 2027-03-06 → 2027-05-16 (+71d) | 407.12d → 445.5d |  | constraint start no earlier than 2025-11-30 → start no earlier than 2026-03-02 |
| 2057 | 1st Floor | 2025-11-30 → 2026-03-02 (+92d) | 2025-12-16 → 2026-03-12 (+86d) | 7d → 12.38d | 1905 → 1890 |  |
| 2058 | 2nd Floor | 2027-12-07 → 2026-03-14 (-633d) | 2027-12-09 → 2026-03-24 (-625d) | 1.94d → 12.38d | 1755 → 2057, 1895 |  |
| 2059 | 3rd Floor | 2025-12-23 → 2026-03-25 (+92d) | 2025-12-30 → 2026-04-04 (+95d) | 7d → 12.38d | 2673, 1920 → 2058, 1900 |  |
| 2060 | 4th Floor | 2025-12-30 → 2026-04-05 (+96d) | 2026-01-06 → 2026-04-15 (+99d) | 7d → 12.38d | 2059, 1900 → 2059, 1905 |  |
| 2061 | 5th Floor | 2026-01-06 → 2026-04-16 (+100d) | 2026-01-13 → 2026-04-26 (+103d) | 7d → 12.38d | 2060, 1925 → 2060, 1910 |  |
| 2062 | 6th Floor | 2026-01-13 → 2026-04-27 (+104d) | 2026-01-20 → 2026-05-07 (+107d) | 7d → 12.38d | 2061, 1930 → 2061, 1915 |  |
| 2063 | 7th Floor | 2026-01-20 → 2026-05-08 (+108d) | 2026-01-27 → 2026-05-18 (+111d) | 7d → 12.38d | 2062, 1935 → 2062, 1920 |  |
| 2064 | 8th Floor | 2026-01-27 → 2026-05-19 (+112d) | 2026-02-03 → 2026-05-29 (+115d) | 7d → 12.38d | 2063, 1940 → 2063, 1925 |  |
| 2065 | 9th Floor | 2026-02-03 → 2026-05-30 (+116d) | 2026-02-10 → 2026-06-09 (+119d) | 7d → 12.38d | 2064, 1945 → 2064, 1930 |  |
| 2066 | 10th Floor | 2026-02-10 → 2026-06-10 (+120d) | 2026-02-17 → 2026-06-20 (+123d) | 7d → 12.38d | 2065, 1950 → 2065, 1935 |  |
| 2067 | 11th Floor | 2026-02-20 → 2026-06-21 (+121d) | 2026-02-27 → 2026-07-01 (+124d) | 7d → 12.38d | 2066, 1955 → 2066, 1940 |  |
| 2068 | 12th Floor | 2026-02-28 → 2026-07-02 (+124d) | 2026-03-07 → 2026-07-12 (+127d) | 7d → 12.38d | 2067, 1960 → 2067, 1945 |  |
| 2069 | 13th Floor | 2026-03-07 → 2026-07-13 (+128d) | 2026-03-14 → 2026-07-23 (+131d) | 7d → 12.38d | 2068, 1965 → 2068, 1950 |  |
| 2070 | 14th Floor | 2026-03-14 → 2026-07-24 (+132d) | 2026-03-21 → 2026-08-03 (+135d) | 7d → 12.38d | 2069, 1970 → 2069, 1955 |  |
| 2071 | 15th Floor | 2026-03-21 → 2026-08-04 (+136d) | 2026-03-28 → 2026-08-14 (+139d) | 7d → 12.38d | 2070, 1975 → 2070, 1960 |  |
| 2072 | 16th Floor | 2026-04-02 → 2026-08-15 (+135d) | 2026-04-08 → 2026-08-25 (+139d) | 7d → 12.38d | 2071, 1980 → 2071, 1965 |  |
| 2073 | 17th Floor | 2026-04-16 → 2026-08-26 (+132d) | 2026-04-22 → 2026-09-05 (+136d) | 7d → 12.38d | 2072, 1985 → 2072, 1970 |  |
| 2074 | 18th Floor | 2026-04-29 → 2026-09-06 (+130d) | 2026-05-05 → 2026-09-16 (+134d) | 7d → 12.38d | 2073, 1990 → 2073, 1975 |  |
| 2075 | 19th Floor | 2026-05-16 → 2026-09-17 (+124d) | 2026-05-22 → 2026-09-27 (+128d) | 7d → 12.38d | 2074, 1995 → 2074, 1980 |  |
| 2076 | 20th Floor | 2026-05-29 → 2026-09-28 (+122d) | 2026-06-04 → 2026-10-08 (+126d) | 7d → 12.38d | 2075, 2000 → 2075, 1985 |  |
| 2077 | 21st Floor | 2026-06-09 → 2026-10-09 (+122d) | 2026-06-15 → 2026-10-19 (+126d) | 7d → 12.38d | 2076, 2005 → 2076, 1990 |  |
| 2078 | 22nd Floor | 2026-06-24 → 2026-10-20 (+118d) | 2026-06-30 → 2026-10-30 (+122d) | 7d → 12.38d | 2077, 2010 → 2077, 1995 |  |
| 2079 | 23rd Floor | 2026-07-05 → 2026-10-31 (+118d) | 2026-07-11 → 2026-12-25 (+167d) | 7d → 12.38d | 2078, 2015 → 2078, 2000 |  |
| 2080 | 24th Floor | 2026-07-16 → 2026-12-26 (+163d) | 2026-07-22 → 2027-01-05 (+167d) | 7d → 12.38d | 2079, 2020 → 2079, 2005 |  |
| 2081 | 25th Floor | 2026-07-30 → 2027-01-06 (+160d) | 2026-08-05 → 2027-01-16 (+164d) | 7d → 12.38d | 2080, 2025 → 2080, 2010 |  |
| 2082 | 26th Floor | 2026-08-13 → 2027-01-17 (+157d) | 2026-08-20 → 2027-01-27 (+160d) | 7d → 12.38d | 2081, 2030 → 2081, 2015 |  |
| 2083 | 27th Floor | 2026-08-30 → 2027-01-28 (+151d) | 2026-09-06 → 2027-02-07 (+154d) | 7d → 12.38d | 2082, 2035 → 2082, 2020 |  |
| 2084 | 28th Floor | 2026-09-13 → 2027-02-08 (+148d) | 2026-09-20 → 2027-02-18 (+151d) | 7d → 12.38d | 2083, 2040 → 2083, 2025 |  |
| 2085 | 29th Floor | 2028-01-28 → 2027-02-19 (-343d) | 2028-01-30 → 2027-03-01 (-335d) | 1.94d → 12.38d | 1782 → 2084, 2030 |  |
| 2086 | 30th Floor | 2026-10-11 → 2027-03-02 (+142d) | 2026-10-17 → 2027-03-12 (+146d) | 7d → 12.38d | 2700, 2050 → 2085, 2035 |  |
| 2087 | 31st Floor | 2028-02-01 → 2027-03-13 (-325d) | 2028-02-03 → 2027-03-23 (-317d) | 1.94d → 12.38d | 1784 → 2086, 2040 |  |
| 2088 | 32nd Flood | 2027-01-17 → 2027-03-24 (+66d) | 2027-01-24 → 2027-04-03 (+69d) | 7d → 12.38d | 1785, 1851 → 2087, 2045 |  |
| 2089 | 33rd Floor | 2027-01-30 → 2027-04-04 (+64d) | 2027-02-06 → 2027-04-14 (+67d) | 7d → 12.38d | 3005 → 2088 |  |
| 2090 | 34th Floor | 2027-02-06 → 2027-04-15 (+68d) | 2027-02-13 → 2027-04-22 (+68d) | 7d → 9d |  |  |
| 2091 | 35th Floor | 2027-02-13 → 2027-04-23 (+69d) | 2027-02-20 → 2027-04-30 (+69d) | 7d → 9d |  |  |
| 2092 | Terrace | 2027-02-20 → 2027-05-01 (+70d) | 2027-02-27 → 2027-05-08 (+70d) | 7d → 9d |  |  |
| 2093 | Mumty & Machine Room | 2027-02-27 → 2027-05-09 (+71d) | 2027-03-06 → 2027-05-16 (+71d) | 7d → 9d |  |  |
| 2094 | **Finishing work** | 2025-11-30 → 2026-03-13 (+103d) | 2028-04-21 → 2029-04-18 (+362d) | 818.81d → 1172.25d |  | constraint start no earlier than 2025-11-30 → start no earlier than 2026-03-13 |
| 2095 | **Flat finishing** | 2025-11-30 → 2026-03-13 (+103d) | 2028-04-21 → 2029-04-18 (+362d) | 818.81d → 1172.25d |  | constraint start no earlier than 2025-11-30 → start no earlier than 2026-03-13 |
| 2096 | **1st Floor** | 2025-11-30 → 2026-03-13 (+103d) | 2027-04-16 → 2028-03-01 (+320d) | 448.25d → 707.62d |  | constraint start no earlier than 2025-11-30 → start no earlier than 2026-03-13 |
| 2097 | Block Work | 2026-01-14 → 2026-03-13 (+58d) | 2026-02-23 → 2026-03-21 (+26d) | 39.94d → 9d | 1144FS+0.25d → 2057FS+0.25d |  |
| 2098 | Door Frame Fixing | 2025-12-18 → 2026-03-21 (+93d) | 2025-12-27 → 2026-03-28 (+91d) | 9d → 7.88d | 2113 → 2097 |  |
| 2099 | Internal Plumbing Works | 2025-12-18 → 2026-03-21 (+93d) | 2025-12-26 → 2026-03-31 (+95d) | 8d → 11.25d | 2113 → 2097 |  |
| 2100 | Waterproofing | 2026-01-15 → 2026-03-31 (+75d) | 2026-01-25 → 2026-04-12 (+77d) | 10d → 13.5d | 1824, 2131 → 2099 |  |
| 2101 | Internal Plaster | 2027-04-16 → 2026-03-31 (-381d) | 2027-04-20 → 2026-04-04 (-381d) | 4d → 4.5d | 1728FS+0.25d → 2098FS+0.25d, 2099FS+0.25d |  |
| 2102 | IPS flooring work | 2026-01-05 → 2026-04-12 (+97d) | 2026-01-15 → 2026-04-21 (+96d) | 10d → 10.12d | 2098, 2099, 1727 → 2098, 2099, 2100 |  |
| 2103 | Toilet dado work | 2026-01-05 → 2027-02-21 (+412d) | 2026-01-13 → 2027-03-01 (+412d) | 8d → 9d | 1727, 2133 → 2100FS+303.75d, 2101FS+303.75d |  |
| 2104 | Toilet flooring work | 2026-01-13 → 2027-03-01 (+412d) | 2026-01-21 → 2027-03-08 (+411d) | 8d → 7.88d |  |  |
| 2105 | Living dinning flooring | 2025-12-27 → 2027-03-08 (+436d) | 2026-01-04 → 2027-03-12 (+432d) | 8d → 4.5d | 2098FS+0.25d → 2098, 2104 |  |
| 2106 | Aluminium door-window fixing | 2026-01-15 → 2028-02-20 (+766d) | 2026-01-23 → 2028-03-01 (+768d) | 8d → 11.25d | 2102FS+0.25d → 2102FS+337.5d, 2105FS+337.5d |  |
| 2107 | Putty primer coat | 2026-01-04 → 2027-03-12 (+432d) | 2026-01-10 → 2027-03-18 (+432d) | 6d → 6.75d |  |  |
| 2108 | Door shutter fixing | 2026-01-04 → 2027-03-12 (+432d) | 2026-01-12 → 2027-03-20 (+432d) | 8d → 9d |  |  |
| 2109 | Electrical wiring work | 2027-03-23 → 2027-03-30 (+7d) | 2027-03-31 → 2027-04-11 (+11d) | 8d → 13.5d | 2108FS+390d → 2108FS+11.25d |  |
| 2110 | Painting 1st coat | 2027-03-31 → 2027-04-11 (+11d) | 2027-04-08 → 2027-04-23 (+15d) | 8d → 13.5d |  |  |
| 2111 | False ceiling | 2027-04-08 → 2027-04-23 (+15d) | 2027-04-16 → 2027-05-03 (+17d) | 8d → 11.25d |  |  |
| 2112 | **2nd Floor** | 2025-12-17 → 2026-03-21 (+94d) | 2027-04-24 → 2028-03-11 (+322d) | 448d → 709.88d |  | constraint start no earlier than 2025-12-17 → start no earlier than 2026-03-21 |
| 2113 | Block Work | 2025-11-30 → 2026-03-21 (+111d) | 2025-12-18 → 2026-03-29 (+101d) | 8d → 9d | 2057SS+1d → 2097FS+0.25d |  |
| 2114 | Door Frame Fixing | 2025-12-26 → 2026-03-29 (+93d) | 2026-01-04 → 2026-04-05 (+91d) | 9d → 7.88d | 2129FS+0.25d → 2098, 2113 |  |

| ID | Task | Start | Finish | Duration | Predecessors | Other |
| --- | --- | --- | --- | --- | --- | --- |
| 2115 | Internal Plumbing Works | 2025-12-26 → 2026-03-31 (+95d) | 2026-01-03 → 2026-04-10 (+97d) | 8d → 11.25d | 2099, 2129 → 2099, 2113 |  |
| 2116 | Waterproofing | 2026-01-25 → 2026-04-12 (+77d) | 2026-02-04 → 2026-04-24 (+79d) | 10d → 13.5d | 2100, 2147 → 2100, 2115 |  |
| 2117 | Internal Plaster | 2026-02-19 → 2026-04-05 (+45d) | 2026-06-19 → 2026-04-09 (-71d) | 119.94d → 4.5d | 1749SS+17.88d → 2101FS+0.25d, 2114FS+0.25d |  |
| 2118 | IPS flooring work | 2026-01-15 → 2026-04-24 (+99d) | 2026-01-25 → 2026-05-03 (+98d) | 10d → 10.12d | 2102, 2114, 2115, 1824 → 2102, 2114, 2115, 2116 |  |
| 2119 | Toilet dado work | 2026-01-15 → 2027-03-01 (+410d) | 2026-01-23 → 2027-03-09 (+410d) | 8d → 9d | 2103, 1824, 2149 → 2103, 2116, 2117 |  |
| 2120 | Toilet flooring work | 2026-01-23 → 2027-03-09 (+410d) | 2026-01-31 → 2027-03-16 (+409d) | 8d → 7.88d |  |  |
| 2121 | Living dinning flooring | 2026-01-04 → 2027-03-12 (+432d) | 2026-01-12 → 2027-03-16 (+428d) | 8d → 4.5d | 2105FS+0.25d → 2105FS+0.25d, 2114FS+0.25d |  |
| 2122 | Aluminium door-window fixing | 2026-01-23 → 2028-03-01 (+768d) | 2026-01-31 → 2028-03-11 (+770d) | 8d → 11.25d | 2106FS+0.25d → 2106FS+0.25d, 2121FS+0.25d |  |
| 2123 | Putty primer coat | 2026-01-12 → 2027-03-18 (+430d) | 2026-01-18 → 2027-03-24 (+430d) | 6d → 6.75d |  |  |
| 2124 | Door shutter fixing | 2026-01-12 → 2027-03-20 (+432d) | 2026-01-20 → 2027-03-28 (+432d) | 8d → 9d |  |  |
| 2125 | Electrical wiring work | 2027-03-31 → 2027-04-11 (+11d) | 2027-04-08 → 2027-04-23 (+15d) | 8d → 13.5d |  |  |
| 2126 | Painting 1st coat | 2027-04-08 → 2027-04-23 (+15d) | 2027-04-16 → 2027-05-05 (+19d) | 8d → 13.5d |  |  |
| 2127 | False ceiling | 2027-04-16 → 2027-05-05 (+19d) | 2027-04-24 → 2027-05-15 (+21d) | 8d → 11.25d |  |  |
| 2128 | **3rd Floor** | 2025-12-25 → 2026-03-29 (+94d) | 2027-05-02 → 2028-03-21 (+324d) | 447.75d → 712.12d |  | constraint start no earlier than 2025-12-25 → start no earlier than 2026-03-29 |
| 2129 | Block Work | 2025-12-18 → 2026-03-29 (+101d) | 2025-12-26 → 2026-04-06 (+101d) | 8d → 9d |  |  |
| 2130 | Door Frame Fixing | 2026-01-04 → 2026-04-06 (+92d) | 2026-01-13 → 2026-04-13 (+90d) | 9d → 7.88d | 2114, 2145 → 2114, 2129 |  |
| 2131 | Internal Plumbing Works | 2026-01-03 → 2026-04-10 (+97d) | 2026-01-11 → 2026-04-20 (+99d) | 8d → 11.25d | 2115, 2145 → 2115, 2129 |  |
| 2132 | Waterproofing | 2026-02-04 → 2026-04-24 (+79d) | 2026-02-14 → 2026-05-06 (+81d) | 10d → 13.5d | 2116, 2163 → 2116, 2131 |  |
| 2133 | Internal Plaster | 2025-11-30 → 2026-04-13 (+134d) | 2025-12-17 → 2026-04-17 (+121d) | 8d → 4.5d | 1895FS+1d → 2117FS+0.25d, 2130FS+0.25d |  |
| 2134 | IPS flooring work | 2026-01-25 → 2026-05-06 (+101d) | 2026-02-04 → 2026-05-15 (+100d) | 10d → 10.12d | 2118, 2130, 2100, 2165 → 2118, 2130, 2132, 2133 |  |
| 2135 | Toilet dado work | 2026-01-25 → 2027-03-09 (+408d) | 2026-02-02 → 2027-03-17 (+408d) | 8d → 9d | 2119, 2100, 2165 → 2119, 2132, 2133 |  |
| 2136 | Toilet flooring work | 2026-02-02 → 2027-03-17 (+408d) | 2026-02-10 → 2027-03-24 (+407d) | 8d → 7.88d |  |  |
| 2137 | Living dinning flooring | 2026-01-13 → 2027-03-16 (+427d) | 2026-01-24 → 2027-03-20 (+420d) | 12d → 4.5d | 2121FS+0.25d → 2121FS+0.25d, 2130FS+0.25d |  |
| 2138 | Aluminium door-window fixing | 2026-02-01 → 2028-03-11 (+769d) | 2026-02-12 → 2028-03-21 (+768d) | 12d → 11.25d | 2122FS+0.25d → 2122FS+0.25d, 2137FS+0.25d |  |
| 2139 | Putty primer coat | 2026-01-25 → 2027-03-24 (+423d) | 2026-01-30 → 2027-03-30 (+424d) | 6d → 6.75d |  |  |
| 2140 | Door shutter fixing | 2026-01-25 → 2027-03-28 (+427d) | 2026-02-01 → 2027-04-05 (+428d) | 8d → 9d |  |  |
| 2141 | Electrical wiring work | 2027-04-08 → 2027-04-23 (+15d) | 2027-04-16 → 2027-05-05 (+19d) | 8d → 13.5d |  |  |
| 2142 | Painting 1st coat | 2027-04-16 → 2027-05-05 (+19d) | 2027-04-24 → 2027-05-17 (+23d) | 8d → 13.5d |  |  |
| 2143 | False ceiling | 2027-04-24 → 2027-05-17 (+23d) | 2027-05-02 → 2027-05-27 (+25d) | 8d → 11.25d |  |  |
| 2144 | **4th Floor** | 2026-01-03 → 2026-04-06 (+93d) | 2027-05-10 → 2028-03-31 (+326d) | 447.5d → 714.38d |  | constraint start no earlier than 2026-01-03 → start no earlier than 2026-04-06 |
| 2145 | Block Work | 2025-12-26 → 2026-04-06 (+101d) | 2026-01-03 → 2026-04-14 (+101d) | 8d → 9d |  |  |
| 2146 | Door Frame Fixing | 2026-01-13 → 2026-04-14 (+91d) | 2026-01-22 → 2026-04-21 (+89d) | 9d → 7.88d | 2130, 2161 → 2130, 2145 |  |
| 2147 | Internal Plumbing Works | 2026-01-12 → 2026-04-20 (+98d) | 2026-01-19 → 2026-04-30 (+101d) | 8d → 11.25d | 2131, 2161 → 2131, 2145 |  |
| 2148 | Waterproofing | 2026-02-14 → 2026-05-06 (+81d) | 2026-02-24 → 2026-05-18 (+83d) | 10d → 13.5d | 2132, 2179 → 2132, 2147 |  |
| 2149 | Internal Plaster | 2025-12-17 → 2026-04-22 (+126d) | 2025-12-25 → 2026-04-26 (+122d) | 8d → 4.5d | 2133FS+0.25d → 2133FS+0.25d, 2146FS+0.25d |  |
| 2150 | IPS flooring work | 2026-02-04 → 2026-05-18 (+103d) | 2026-02-14 → 2026-05-27 (+102d) | 10d → 10.12d | 2134, 2146, 2116, 2181 → 2134, 2146, 2148, 2149 |  |
| 2151 | Toilet dado work | 2026-02-04 → 2027-03-17 (+406d) | 2026-02-12 → 2027-03-25 (+406d) | 8d → 9d | 2135, 2116, 2181 → 2135, 2148, 2149 |  |
| 2152 | Toilet flooring work | 2026-02-12 → 2027-03-25 (+406d) | 2026-02-20 → 2027-04-01 (+405d) | 8d → 7.88d |  |  |
| 2153 | Living dinning flooring | 2026-01-25 → 2027-03-20 (+419d) | 2026-02-06 → 2027-03-24 (+411d) | 12d → 4.5d | 2137FS+0.25d → 2137FS+0.25d, 2146FS+0.25d |  |
| 2154 | Aluminium door-window fixing | 2026-02-13 → 2028-03-21 (+767d) | 2026-02-25 → 2028-03-31 (+765d) | 12d → 11.25d | 2138FS+0.25d → 2138FS+0.25d, 2153FS+0.25d |  |
| 2155 | Putty primer coat | 2026-02-06 → 2027-03-30 (+417d) | 2026-02-12 → 2027-04-05 (+417d) | 6d → 6.75d |  |  |
| 2156 | Door shutter fixing | 2026-02-06 → 2027-04-05 (+423d) | 2026-02-14 → 2027-04-13 (+423d) | 8d → 9d |  |  |
| 2157 | Electrical wiring work | 2027-04-16 → 2027-05-05 (+19d) | 2027-04-24 → 2027-05-17 (+23d) | 8d → 13.5d |  |  |
| 2158 | Painting 1st coat | 2027-04-24 → 2027-05-17 (+23d) | 2027-05-02 → 2027-05-29 (+27d) | 8d → 13.5d |  |  |
| 2159 | False ceiling | 2027-05-02 → 2027-05-29 (+27d) | 2027-05-10 → 2027-06-08 (+29d) | 8d → 11.25d |  |  |
| 2160 | **5th Floor** | 2026-01-11 → 2026-04-15 (+94d) | 2027-05-18 → 2028-04-11 (+329d) | 447.25d → 716.62d |  | constraint start no earlier than 2026-01-11 → start no earlier than 2026-04-15 |
| 2161 | Block Work | 2026-01-04 → 2026-04-15 (+101d) | 2026-01-11 → 2026-04-23 (+102d) | 8d → 9d |  |  |
| 2162 | Door Frame Fixing | 2026-01-22 → 2026-04-23 (+91d) | 2026-01-31 → 2026-04-30 (+89d) | 9d → 7.88d | 2146, 2177 → 2146, 2161 |  |
| 2163 | Internal Plumbing Works | 2026-01-20 → 2026-04-30 (+100d) | 2026-01-28 → 2026-05-10 (+102d) | 8d → 11.25d | 2147, 2177 → 2147, 2161 |  |
| 2164 | Waterproofing | 2026-02-24 → 2026-05-18 (+83d) | 2026-03-06 → 2026-05-30 (+85d) | 10d → 13.5d | 2148, 2195 → 2148, 2163 |  |
| 2165 | Internal Plaster | 2025-12-25 → 2026-04-30 (+126d) | 2026-01-02 → 2026-05-04 (+122d) | 8d → 4.5d | 2149FS+0.25d → 2149FS+0.25d, 2162FS+0.25d |  |
| 2166 | IPS flooring work | 2026-02-14 → 2026-05-30 (+105d) | 2026-02-24 → 2026-06-08 (+104d) | 10d → 10.12d | 2150, 2162, 2132, 2197 → 2150, 2162, 2164, 2165 |  |
| 2167 | Toilet dado work | 2026-02-14 → 2027-03-25 (+404d) | 2026-02-22 → 2027-04-02 (+404d) | 8d → 9d | 2151, 2132, 2197 → 2151, 2164, 2165 |  |
| 2168 | Toilet flooring work | 2026-02-22 → 2027-04-02 (+404d) | 2026-03-02 → 2027-04-09 (+403d) | 8d → 7.88d |  |  |
| 2169 | Living dinning flooring | 2026-02-06 → 2027-03-25 (+412d) | 2026-02-18 → 2027-03-29 (+404d) | 12d → 4.5d | 2153FS+0.25d → 2153FS+0.25d, 2162FS+0.25d |  |
| 2170 | Aluminium door-window fixing | 2026-02-25 → 2028-04-01 (+766d) | 2026-03-09 → 2028-04-11 (+764d) | 12d → 11.25d | 2154FS+0.25d → 2154FS+0.25d, 2169FS+0.25d |  |
| 2171 | Putty primer coat | 2026-02-18 → 2027-04-05 (+411d) | 2026-02-24 → 2027-04-11 (+411d) | 6d → 6.75d |  |  |
| 2172 | Door shutter fixing | 2026-02-18 → 2027-04-13 (+419d) | 2026-02-26 → 2027-04-21 (+419d) | 8d → 9d |  |  |
| 2173 | Electrical wiring work | 2027-04-24 → 2027-05-17 (+23d) | 2027-05-02 → 2027-05-29 (+27d) | 8d → 13.5d |  |  |
| 2174 | Painting 1st coat | 2027-05-02 → 2027-05-29 (+27d) | 2027-05-10 → 2027-06-13 (+34d) | 8d → 16.88d |  |  |
| 2175 | False ceiling | 2027-05-10 → 2027-06-13 (+34d) | 2027-05-18 → 2027-06-23 (+36d) | 8d → 11.25d |  |  |
| 2176 | **6th Floor** | 2026-01-19 → 2026-04-23 (+94d) | 2027-05-26 → 2028-04-21 (+331d) | 447d → 718.88d |  | constraint start no earlier than 2026-01-19 → start no earlier than 2026-04-23 |
| 2177 | Block Work | 2026-01-12 → 2026-04-23 (+101d) | 2026-01-20 → 2026-05-01 (+101d) | 8d → 9d |  |  |
| 2178 | Door Frame Fixing | 2026-01-31 → 2026-04-30 (+89d) | 2026-02-09 → 2026-05-07 (+87d) | 9d → 7.88d | 1920, 2162 → 1910, 2162 |  |
| 2179 | Internal Plumbing Works | 2026-01-28 → 2026-05-10 (+102d) | 2026-02-05 → 2026-05-20 (+104d) | 8d → 11.25d | 2163, 2193 → 2163, 2177 |  |
| 2180 | Waterproofing | 2026-03-06 → 2026-05-30 (+85d) | 2026-03-16 → 2026-06-11 (+87d) | 10d → 13.5d | 2164, 2211 → 2164, 2179 |  |
| 2181 | Internal Plaster | 2026-01-03 → 2026-05-07 (+124d) | 2026-01-10 → 2026-05-11 (+121d) | 8d → 4.5d | 2165FS+0.25d → 2165FS+0.25d, 2178FS+0.25d |  |
| 2182 | IPS flooring work | 2026-02-24 → 2026-06-11 (+107d) | 2026-03-06 → 2026-06-20 (+106d) | 10d → 10.12d | 2166, 2178, 2148, 2213 → 2166, 2178, 2180, 2181 |  |
| 2183 | Toilet dado work | 2026-02-24 → 2027-04-02 (+402d) | 2026-03-04 → 2027-04-10 (+402d) | 8d → 9d | 2167, 2148, 2213 → 2167, 2180, 2181 |  |
| 2184 | Toilet flooring work | 2026-03-04 → 2027-04-10 (+402d) | 2026-03-12 → 2027-04-17 (+401d) | 8d → 7.88d |  |  |

| ID | Task | Start | Finish | Duration | Predecessors | Other |
| --- | --- | --- | --- | --- | --- | --- |
| 2185 | Living dinning flooring | 2026-02-18 → 2027-03-29 (+404d) | 2026-03-02 → 2027-04-02 (+396d) | 12d → 4.5d | 2169FS+0.25d → 2169FS+0.25d, 2178FS+0.25d |  |
| 2186 | Aluminium door-window fixing | 2026-03-22 → 2028-04-11 (+751d) | 2026-04-02 → 2028-04-21 (+750d) | 12d → 11.25d | 2202FS+0.25d → 2170FS+0.25d, 2185FS+0.25d |  |
| 2187 | Putty primer coat | 2026-03-02 → 2027-04-11 (+405d) | 2026-03-08 → 2027-04-17 (+405d) | 6d → 6.75d |  |  |
| 2188 | Door shutter fixing | 2026-03-02 → 2027-04-21 (+415d) | 2026-03-10 → 2027-04-29 (+415d) | 8d → 9d |  |  |
| 2189 | Electrical wiring work | 2027-05-02 → 2027-05-29 (+27d) | 2027-05-10 → 2027-06-10 (+31d) | 8d → 13.5d |  |  |
| 2190 | Painting 1st coat | 2027-05-10 → 2027-06-13 (+34d) | 2027-05-18 → 2027-06-25 (+38d) | 8d → 13.5d |  |  |
| 2191 | False ceiling | 2027-05-18 → 2027-06-25 (+38d) | 2027-05-26 → 2027-07-05 (+40d) | 8d → 11.25d |  |  |
| 2192 | **7th Floor** | 2026-01-27 → 2026-05-01 (+94d) | 2027-06-03 → 2028-05-01 (+333d) | 446.75d → 721.12d |  | constraint start no earlier than 2026-01-27 → start no earlier than 2026-05-01 |
| 2193 | Block Work | 2026-01-20 → 2026-05-01 (+101d) | 2026-01-28 → 2026-05-09 (+101d) | 8d → 9d |  |  |
| 2194 | Door Frame Fixing | 2026-02-09 → 2026-05-09 (+89d) | 2026-02-18 → 2026-05-16 (+87d) | 9d → 7.88d | 2178, 2209 → 2178, 2193 |  |
| 2195 | Internal Plumbing Works | 2026-02-05 → 2026-05-20 (+104d) | 2026-02-13 → 2026-05-30 (+106d) | 8d → 11.25d | 2179, 2209 → 2179, 2193 |  |
| 2196 | Waterproofing | 2026-03-16 → 2026-06-11 (+87d) | 2026-03-26 → 2026-06-23 (+89d) | 10d → 13.5d | 2180, 2227 → 2180, 2195 |  |
| 2197 | Internal Plaster | 2026-01-11 → 2026-05-16 (+125d) | 2026-01-19 → 2026-05-20 (+121d) | 8d → 4.5d | 2181FS+0.25d → 2181FS+0.25d, 2194FS+0.25d |  |
| 2198 | IPS flooring work | 2026-03-06 → 2026-06-20 (+106d) | 2026-03-16 → 2026-06-29 (+105d) | 10d → 10.12d | 2182, 2194, 2164, 2229 → 2182FS+0.25d, 2194FS+0.25d |  |
| 2199 | Toilet dado work | 2026-03-16 → 2027-04-10 (+390d) | 2026-03-24 → 2027-04-18 (+390d) | 8d → 9d | 2215, 2180, 2245 → 2183, 2196, 2197 |  |
| 2200 | Toilet flooring work | 2026-03-24 → 2027-04-18 (+390d) | 2026-04-01 → 2027-04-25 (+389d) | 8d → 7.88d | 2216, 2199 → 2184, 2199 |  |
| 2201 | Living dinning flooring | 2026-03-15 → 2027-04-02 (+383d) | 2026-03-27 → 2027-04-06 (+375d) | 12d → 4.5d | 2217FS+0.25d → 2185FS+0.25d, 2194FS+0.25d |  |
| 2202 | Aluminium door-window fixing | 2026-03-09 → 2028-04-21 (+774d) | 2026-03-21 → 2028-05-01 (+772d) | 12d → 11.25d | 2170FS+0.25d → 2186FS+0.25d, 2201FS+0.25d |  |
| 2203 | Putty primer coat | 2026-03-15 → 2027-04-17 (+398d) | 2026-03-20 → 2027-04-23 (+399d) | 6d → 6.75d | 2187, 2217 → 2187, 2201 |  |
| 2204 | Door shutter fixing | 2026-03-15 → 2027-04-29 (+410d) | 2026-03-22 → 2027-05-07 (+411d) | 8d → 9d | 2188, 2217 → 2188, 2201 |  |
| 2205 | Electrical wiring work | 2027-05-10 → 2027-06-10 (+31d) | 2027-05-18 → 2027-06-22 (+35d) | 8d → 13.5d |  |  |
| 2206 | Painting 1st coat | 2027-05-18 → 2027-06-25 (+38d) | 2027-05-26 → 2027-07-07 (+42d) | 8d → 13.5d |  |  |
| 2207 | False ceiling | 2027-05-26 → 2027-07-07 (+42d) | 2027-06-03 → 2027-07-17 (+44d) | 8d → 11.25d |  |  |
| 2208 | **8th Floor** | 2026-02-05 → 2026-05-09 (+93d) | 2027-06-11 → 2028-05-11 (+335d) | 446.5d → 723.38d |  | constraint start no earlier than 2026-02-05 → start no earlier than 2026-05-09 |
| 2209 | Block Work | 2026-01-28 → 2026-05-09 (+101d) | 2026-02-05 → 2026-05-17 (+101d) | 8d → 9d |  |  |
| 2210 | Door Frame Fixing | 2026-02-18 → 2026-05-17 (+88d) | 2026-02-27 → 2026-05-24 (+86d) | 9d → 7.88d | 2194, 2225 → 2194, 2209 |  |
| 2211 | Internal Plumbing Works | 2026-02-14 → 2026-05-30 (+105d) | 2026-02-21 → 2026-06-09 (+108d) | 8d → 11.25d | 2195, 2225 → 2195, 2209 |  |
| 2212 | Waterproofing | 2026-03-26 → 2026-06-23 (+89d) | 2026-04-05 → 2026-07-05 (+91d) | 10d → 13.5d | 2196, 2243 → 2196, 2211 |  |
| 2213 | Internal Plaster | 2026-01-19 → 2026-05-25 (+126d) | 2026-01-27 → 2026-05-28 (+121d) | 8d → 4.5d | 2197FS+0.25d → 2197FS+0.25d, 2210FS+0.25d |  |
| 2214 | IPS flooring work | 2026-03-16 → 2026-07-05 (+111d) | 2026-03-26 → 2026-07-14 (+110d) | 10d → 10.12d | 2198, 2210, 2180, 2245 → 2198, 2210, 2212, 2213 |  |
| 2215 | Toilet dado work | 2026-03-06 → 2027-04-18 (+408d) | 2026-03-14 → 2027-04-26 (+408d) | 8d → 9d | 2183, 2164, 2229 → 2199, 2212, 2213 |  |
| 2216 | Toilet flooring work | 2026-03-14 → 2027-04-26 (+408d) | 2026-03-22 → 2027-05-03 (+407d) | 8d → 7.88d | 2184, 2215 → 2200, 2215 |  |
| 2217 | Living dinning flooring | 2026-03-03 → 2027-04-06 (+399d) | 2026-03-14 → 2027-04-10 (+392d) | 12d → 4.5d | 2185FS+0.25d → 2201FS+0.25d, 2210FS+0.25d |  |
| 2218 | Aluminium door-window fixing | 2026-04-03 → 2028-05-01 (+759d) | 2026-04-15 → 2028-05-11 (+757d) | 12d → 11.25d | 2186FS+0.25d → 2202FS+0.25d, 2217FS+0.25d |  |
| 2219 | Putty primer coat | 2026-03-27 → 2027-04-23 (+392d) | 2026-04-02 → 2027-04-29 (+392d) | 6d → 6.75d | 2203, 2201 → 2203, 2217 |  |
| 2220 | Door shutter fixing | 2026-03-27 → 2027-05-07 (+406d) | 2026-04-04 → 2027-05-15 (+406d) | 8d → 9d | 2204, 2201 → 2204, 2217 |  |
| 2221 | Electrical wiring work | 2027-05-18 → 2027-06-22 (+35d) | 2027-05-26 → 2027-07-04 (+39d) | 8d → 13.5d |  |  |
| 2222 | Painting 1st coat | 2027-05-26 → 2027-07-07 (+42d) | 2027-06-03 → 2027-07-19 (+46d) | 8d → 13.5d |  |  |
| 2223 | False ceiling | 2027-06-03 → 2027-07-19 (+46d) | 2027-06-11 → 2027-07-29 (+48d) | 8d → 11.25d |  |  |
| 2224 | **9th Floor** | 2026-02-13 → 2026-05-18 (+94d) | 2027-06-19 → 2028-05-21 (+337d) | 446.25d → 725.38d |  | constraint start no earlier than 2026-02-13 → start no earlier than 2026-05-18 |
| 2225 | Block Work | 2026-02-06 → 2026-05-18 (+101d) | 2026-02-13 → 2026-05-25 (+101d) | 8d → 9d |  |  |
| 2226 | Door Frame Fixing | 2026-02-27 → 2026-05-26 (+88d) | 2026-03-08 → 2026-06-01 (+85d) | 9d → 7.88d | 2210, 2241 → 2210, 2225 |  |
| 2227 | Internal Plumbing Works | 2026-02-22 → 2026-06-09 (+107d) | 2026-03-02 → 2026-06-19 (+109d) | 8d → 11.25d | 2211, 2241 → 2211, 2225 |  |
| 2228 | Waterproofing | 2026-04-05 → 2026-07-05 (+91d) | 2026-04-15 → 2026-07-17 (+93d) | 10d → 13.5d | 2212, 2259 → 2212, 2227 |  |
| 2229 | Internal Plaster | 2026-01-27 → 2026-06-02 (+126d) | 2026-02-04 → 2026-06-06 (+122d) | 8d → 4.5d | 2213FS+0.25d → 2213FS+0.25d, 2226FS+0.25d |  |
| 2230 | IPS flooring work | 2026-03-26 → 2026-07-17 (+113d) | 2026-04-05 → 2026-07-26 (+112d) | 10d → 10.12d | 2214, 2226, 2196, 2261 → 2214, 2226, 2228, 2229 |  |
| 2231 | Toilet dado work | 2026-03-26 → 2027-04-26 (+396d) | 2026-04-03 → 2027-05-04 (+396d) | 8d → 9d | 2199, 2196, 2261 → 2215, 2228, 2229 |  |
| 2232 | Toilet flooring work | 2026-04-03 → 2027-05-04 (+396d) | 2026-04-11 → 2027-05-11 (+395d) | 8d → 7.88d | 2200, 2231 → 2216, 2231 |  |
| 2233 | Living dinning flooring | 2026-03-27 → 2027-04-11 (+380d) | 2026-04-08 → 2027-04-14 (+371d) | 12d → 4.5d | 2201FS+0.25d → 2217FS+0.25d, 2226FS+0.25d |  |
| 2234 | Aluminium door-window fixing | 2026-04-15 → 2028-05-11 (+757d) | 2026-04-27 → 2028-05-21 (+755d) | 12d → 11.25d | 2218FS+0.25d → 2218, 2230, 2233 |  |
| 2235 | Putty primer coat | 2026-04-08 → 2027-04-29 (+386d) | 2026-04-14 → 2027-05-05 (+386d) | 6d → 6.75d |  |  |
| 2236 | Door shutter fixing | 2026-04-08 → 2027-05-15 (+402d) | 2026-04-16 → 2027-05-23 (+402d) | 8d → 9d |  |  |
| 2237 | Electrical wiring work | 2027-05-26 → 2027-07-04 (+39d) | 2027-06-03 → 2027-07-16 (+43d) | 8d → 13.5d |  |  |
| 2238 | Painting 1st coat | 2027-06-03 → 2027-07-19 (+46d) | 2027-06-11 → 2027-07-31 (+50d) | 8d → 13.5d |  |  |
| 2239 | False ceiling | 2027-06-11 → 2027-07-31 (+50d) | 2027-06-19 → 2027-08-10 (+52d) | 8d → 11.25d |  |  |
| 2240 | **10th Floor** | 2026-02-21 → 2026-05-26 (+94d) | 2027-06-27 → 2028-05-31 (+339d) | 446d → 727.62d |  | constraint start no earlier than 2026-02-21 → start no earlier than 2026-05-26 |
| 2241 | Block Work | 2026-02-14 → 2026-05-26 (+101d) | 2026-02-22 → 2026-06-03 (+101d) | 8d → 9d |  |  |
| 2242 | Door Frame Fixing | 2026-03-08 → 2026-06-03 (+87d) | 2026-03-17 → 2026-06-10 (+85d) | 9d → 7.88d | 2226, 2257 → 2226, 2241 |  |
| 2243 | Internal Plumbing Works | 2026-03-02 → 2026-06-19 (+109d) | 2026-03-10 → 2026-06-29 (+111d) | 8d → 11.25d | 2227, 2257 → 2227, 2241 |  |
| 2244 | Waterproofing | 2026-04-15 → 2026-07-17 (+93d) | 2026-04-25 → 2026-07-29 (+95d) | 10d → 13.5d | 2228, 2275 → 2228, 2243 |  |
| 2245 | Internal Plaster | 2026-02-05 → 2026-06-10 (+125d) | 2026-02-12 → 2026-06-14 (+122d) | 8d → 4.5d | 2229FS+0.25d → 2229FS+0.25d, 2242FS+0.25d |  |
| 2246 | IPS flooring work | 2026-04-05 → 2026-07-29 (+115d) | 2026-04-15 → 2026-08-07 (+114d) | 10d → 10.12d | 2230, 2242, 2212, 2277 → 2230, 2242, 2244, 2245 |  |
| 2247 | Toilet dado work | 2026-04-05 → 2027-05-04 (+394d) | 2026-04-13 → 2027-05-12 (+394d) | 8d → 9d | 2231, 2212, 2277 → 2231, 2244, 2245 |  |
| 2248 | Toilet flooring work | 2026-04-13 → 2027-05-12 (+394d) | 2026-04-21 → 2027-05-19 (+393d) | 8d → 7.88d |  |  |
| 2249 | Living dinning flooring | 2026-04-08 → 2027-04-15 (+372d) | 2026-04-20 → 2027-04-19 (+364d) | 12d → 4.5d | 2233FS+0.25d → 2233FS+0.25d, 2242FS+0.25d |  |
| 2250 | Aluminium door-window fixing | 2026-04-27 → 2028-05-22 (+756d) | 2026-05-09 → 2028-05-31 (+753d) | 12d → 11.25d | 2234FS+0.25d → 2234FS+0.25d, 2249FS+0.25d |  |
| 2251 | Putty primer coat | 2026-04-20 → 2027-05-05 (+380d) | 2026-04-26 → 2027-05-11 (+380d) | 6d → 6.75d |  |  |
| 2252 | Door shutter fixing | 2026-04-20 → 2027-05-23 (+398d) | 2026-04-28 → 2027-05-31 (+398d) | 8d → 9d |  |  |
| 2253 | Electrical wiring work | 2027-06-03 → 2027-07-16 (+43d) | 2027-06-11 → 2027-07-28 (+47d) | 8d → 13.5d |  |  |
| 2254 | Painting 1st coat | 2027-06-11 → 2027-07-31 (+50d) | 2027-06-19 → 2027-08-12 (+54d) | 8d → 13.5d |  |  |

| ID | Task | Start | Finish | Duration | Predecessors | Other |
| --- | --- | --- | --- | --- | --- | --- |
| 2255 | False ceiling | 2027-06-19 → 2027-08-12 (+54d) | 2027-06-27 → 2027-08-22 (+56d) | 8d → 11.25d |  |  |
| 2256 | **11th Floor** | 2026-03-02 → 2026-06-03 (+93d) | 2027-07-05 → 2028-06-11 (+342d) | 444.75d → 729.88d |  | constraint start no earlier than 2026-03-02 → start no earlier than 2026-06-03 |
| 2257 | Block Work | 2026-02-22 → 2026-06-03 (+101d) | 2026-03-02 → 2026-06-11 (+101d) | 8d → 9d |  |  |
| 2258 | Door Frame Fixing | 2026-03-17 → 2026-06-11 (+86d) | 2026-03-26 → 2026-06-18 (+84d) | 9d → 7.88d | 2242, 2273 → 2242, 2257 |  |
| 2259 | Internal Plumbing Works | 2026-03-10 → 2026-06-29 (+111d) | 2026-03-18 → 2026-07-09 (+113d) | 8d → 11.25d | 2243, 2273 → 2243, 2257 |  |
| 2260 | Waterproofing | 2026-04-25 → 2026-07-29 (+95d) | 2026-05-05 → 2026-08-10 (+97d) | 10d → 13.5d | 2244, 2291 → 2244, 2259 |  |
| 2261 | Internal Plaster | 2026-02-13 → 2026-06-18 (+125d) | 2026-02-21 → 2026-06-22 (+121d) | 8d → 4.5d | 2245FS+0.25d → 2245FS+0.25d, 2258FS+0.25d |  |
| 2262 | IPS flooring work | 2026-04-15 → 2026-08-10 (+117d) | 2026-04-25 → 2026-08-19 (+116d) | 10d → 10.12d | 2246, 2258, 2259, 2228 → 2246, 2258, 2259, 2260 |  |
| 2263 | Toilet dado work | 2026-04-15 → 2027-05-12 (+392d) | 2026-04-23 → 2027-05-20 (+392d) | 8d → 9d | 2247, 2228, 2293 → 2247, 2260, 2261 |  |
| 2264 | Toilet flooring work | 2026-04-23 → 2027-05-20 (+392d) | 2026-05-01 → 2027-05-27 (+391d) | 8d → 7.88d |  |  |
| 2265 | Living dinning flooring | 2026-04-21 → 2027-04-19 (+363d) | 2026-05-02 → 2027-04-23 (+356d) | 12d → 4.5d | 2249FS+0.25d → 2249FS+0.25d, 2258FS+0.25d |  |
| 2266 | Aluminium door-window fixing | 2026-05-10 → 2028-06-01 (+753d) | 2026-05-21 → 2028-06-11 (+752d) | 12d → 11.25d | 2250FS+0.25d → 2250FS+0.25d, 2265FS+0.25d |  |
| 2267 | Putty primer coat | 2026-05-03 → 2027-05-11 (+373d) | 2026-05-08 → 2027-05-17 (+374d) | 6d → 6.75d |  |  |
| 2268 | Door shutter fixing | 2026-05-03 → 2027-05-31 (+393d) | 2026-05-10 → 2027-06-08 (+394d) | 8d → 9d |  |  |
| 2269 | Electrical wiring work | 2027-06-11 → 2027-07-28 (+47d) | 2027-06-19 → 2027-08-09 (+51d) | 8d → 13.5d |  |  |
| 2270 | Painting 1st coat | 2027-06-19 → 2027-08-12 (+54d) | 2027-06-27 → 2027-08-24 (+58d) | 8d → 13.5d |  |  |
| 2271 | False ceiling | 2027-06-27 → 2027-08-24 (+58d) | 2027-07-05 → 2027-09-03 (+60d) | 8d → 11.25d |  |  |
| 2272 | **12th Floor** | 2026-03-11 → 2026-06-11 (+92d) | 2027-07-13 → 2028-06-21 (+344d) | 444.5d → 731.88d |  | constraint start no earlier than 2026-03-11 → start no earlier than 2026-06-11 |
| 2273 | Block Work | 2026-03-02 → 2026-06-11 (+101d) | 2026-03-10 → 2026-06-19 (+101d) | 8d → 9d |  |  |
| 2274 | Door Frame Fixing | 2026-03-26 → 2026-06-19 (+85d) | 2026-04-04 → 2026-06-26 (+83d) | 9d → 7.88d | 2258, 2289 → 2258, 2273 |  |
| 2275 | Internal Plumbing Works | 2026-03-19 → 2026-07-09 (+112d) | 2026-03-26 → 2026-07-19 (+115d) | 8d → 11.25d | 2259, 2289 → 2259, 2273 |  |
| 2276 | Waterproofing | 2026-05-05 → 2026-08-10 (+97d) | 2026-05-20 → 2026-08-22 (+94d) | 15d → 13.5d | 2260, 2307 → 2260, 2275 |  |
| 2277 | Internal Plaster | 2026-02-21 → 2026-06-26 (+125d) | 2026-03-01 → 2026-06-30 (+121d) | 8d → 4.5d | 2261FS+0.25d → 2261FS+0.25d, 2274FS+0.25d |  |
| 2278 | IPS flooring work | 2026-04-25 → 2026-08-22 (+119d) | 2026-05-05 → 2026-08-31 (+118d) | 10d → 10.12d | 2262, 2274, 2275, 2244 → 2262, 2274, 2275, 2276 |  |
| 2279 | Toilet dado work | 2026-04-25 → 2027-05-20 (+390d) | 2026-05-03 → 2027-05-28 (+390d) | 8d → 9d | 2263, 2244, 2309 → 2263, 2276, 2277 |  |
| 2280 | Toilet flooring work | 2026-05-03 → 2027-05-28 (+390d) | 2026-05-11 → 2027-06-04 (+389d) | 8d → 7.88d |  |  |
| 2281 | Living dinning flooring | 2026-05-11 → 2027-04-23 (+347d) | 2026-05-23 → 2027-04-27 (+339d) | 12d → 4.5d | 2265, 2274, 2280 → 2265FS+0.25d, 2274FS+0.25d |  |
| 2282 | Aluminium door-window fixing | 2026-05-23 → 2028-06-11 (+750d) | 2026-06-04 → 2028-06-21 (+748d) | 12d → 11.25d |  |  |
| 2283 | Putty primer coat | 2026-05-23 → 2027-05-17 (+359d) | 2026-05-29 → 2027-05-23 (+359d) | 6d → 6.75d |  |  |
| 2284 | Door shutter fixing | 2026-05-23 → 2027-06-08 (+381d) | 2026-05-31 → 2027-06-16 (+381d) | 8d → 9d |  |  |
| 2285 | Electrical wiring work | 2027-06-19 → 2027-08-09 (+51d) | 2027-06-27 → 2027-08-21 (+55d) | 8d → 13.5d |  |  |
| 2286 | Painting 1st coat | 2027-06-27 → 2027-08-24 (+58d) | 2027-07-05 → 2027-09-05 (+62d) | 8d → 13.5d |  |  |
| 2287 | False ceiling | 2027-07-05 → 2027-09-05 (+62d) | 2027-07-13 → 2027-09-15 (+64d) | 8d → 11.25d |  |  |
| 2288 | **13th Floor** | 2026-03-19 → 2026-06-19 (+92d) | 2027-07-21 → 2028-07-01 (+346d) | 444.25d → 733.88d |  | constraint start no earlier than 2026-03-19 → start no earlier than 2026-06-19 |
| 2289 | Block Work | 2026-03-11 → 2026-06-19 (+100d) | 2026-03-18 → 2026-06-27 (+101d) | 8d → 9d |  |  |
| 2290 | Door Frame Fixing | 2026-04-04 → 2026-06-27 (+84d) | 2026-04-13 → 2026-07-04 (+82d) | 9d → 7.88d | 2274, 2305 → 2274, 2289 |  |
| 2291 | Internal Plumbing Works | 2026-03-27 → 2026-07-19 (+114d) | 2026-04-04 → 2026-07-29 (+116d) | 8d → 11.25d | 2275, 2305 → 2275, 2289 |  |
| 2292 | Waterproofing | 2026-05-20 → 2026-08-22 (+94d) | 2026-06-04 → 2026-09-03 (+91d) | 15d → 13.5d | 2276, 2323 → 2276, 2291 |  |
| 2293 | Internal Plaster | 2026-03-11 → 2026-07-05 (+116d) | 2026-03-18 → 2026-07-09 (+113d) | 8d → 4.5d | 2277FS+0.25d, 2273FS+0.25d → 2277FS+0.25d, 2290FS+0.25d |  |
| 2294 | IPS flooring work | 2026-05-05 → 2026-09-03 (+121d) | 2026-05-15 → 2026-09-12 (+120d) | 10d → 10.12d | 2278, 2290, 2260, 2325 → 2278, 2290, 2292, 2293 |  |
| 2295 | Toilet dado work | 2026-05-05 → 2027-05-28 (+388d) | 2026-05-13 → 2027-06-05 (+388d) | 8d → 9d | 2279, 2260, 2325 → 2279, 2292, 2293 |  |
| 2296 | Toilet flooring work | 2026-05-13 → 2027-06-05 (+388d) | 2026-05-21 → 2027-06-12 (+387d) | 8d → 7.88d |  |  |
| 2297 | Living dinning flooring | 2026-05-23 → 2027-06-12 (+385d) | 2026-06-04 → 2027-06-21 (+382d) | 12d → 10.12d | 2281FS+0.25d → 2281, 2290, 2296 |  |
| 2298 | Aluminium door-window fixing | 2026-06-04 → 2028-06-21 (+748d) | 2026-06-16 → 2028-07-01 (+746d) | 12d → 11.25d | 2282FS+0.25d → 2282, 2294, 2297 |  |
| 2299 | Putty primer coat | 2026-06-04 → 2027-06-21 (+382d) | 2026-06-10 → 2027-06-27 (+382d) | 6d → 6.75d |  |  |
| 2300 | Door shutter fixing | 2026-06-04 → 2027-06-21 (+382d) | 2026-06-12 → 2027-06-29 (+382d) | 8d → 9d |  |  |
| 2301 | Electrical wiring work | 2027-06-27 → 2027-08-21 (+55d) | 2027-07-05 → 2027-09-02 (+59d) | 8d → 13.5d |  |  |
| 2302 | Painting 1st coat | 2027-07-05 → 2027-09-05 (+62d) | 2027-07-13 → 2027-09-17 (+66d) | 8d → 13.5d |  |  |
| 2303 | False ceiling | 2027-07-13 → 2027-09-17 (+66d) | 2027-07-21 → 2027-09-27 (+68d) | 8d → 11.25d |  |  |
| 2304 | **14th Floor** | 2026-03-27 → 2026-06-28 (+93d) | 2027-07-27 → 2028-07-11 (+350d) | 442d → 735.88d |  | constraint start no earlier than 2026-03-27 → start no earlier than 2026-06-28 |
| 2305 | Block Work | 2026-03-19 → 2026-06-28 (+101d) | 2026-03-27 → 2026-07-06 (+101d) | 8d → 9d |  |  |
| 2306 | Door Frame Fixing | 2026-04-13 → 2026-07-06 (+84d) | 2026-04-22 → 2026-07-13 (+82d) | 9d → 7.88d | 2290, 2321 → 2290, 2305 |  |
| 2307 | Internal Plumbing Works | 2026-04-04 → 2026-07-29 (+116d) | 2026-04-19 → 2026-08-08 (+111d) | 15d → 11.25d | 2291, 2321 → 2291, 2305 |  |
| 2308 | Waterproofing | 2026-06-04 → 2026-09-03 (+91d) | 2026-06-19 → 2026-09-15 (+88d) | 15d → 13.5d | 2292, 2339 → 2292, 2307 |  |
| 2309 | Internal Plaster | 2026-03-19 → 2026-07-13 (+116d) | 2026-03-27 → 2026-07-17 (+112d) | 8d → 4.5d | 2293FS+0.25d, 2289FS+0.25d → 2293FS+0.25d, 2306FS+0.25d |  |
| 2310 | IPS flooring work | 2026-05-20 → 2026-09-15 (+118d) | 2026-06-01 → 2026-09-24 (+115d) | 12d → 10.12d | 2294, 2306, 2307, 2276 → 2294, 2306, 2307, 2308 |  |
| 2311 | Toilet dado work | 2026-05-20 → 2027-06-05 (+381d) | 2026-06-01 → 2027-06-13 (+377d) | 12d → 9d | 2295, 2276, 2341 → 2295, 2308, 2309 |  |
| 2312 | Toilet flooring work | 2026-06-01 → 2027-06-13 (+377d) | 2026-06-13 → 2027-06-20 (+372d) | 12d → 7.88d |  |  |
| 2313 | Living dinning flooring | 2026-06-04 → 2027-06-21 (+382d) | 2026-06-11 → 2027-06-30 (+384d) | 7d → 10.12d | 2297FS+0.25d → 2297, 2306, 2312 |  |
| 2314 | Aluminium door-window fixing | 2026-06-16 → 2028-07-01 (+746d) | 2026-07-04 → 2028-07-11 (+738d) | 18d → 11.25d | 2298FS+0.25d → 2298, 2310, 2313 |  |
| 2315 | Putty primer coat | 2026-06-11 → 2027-06-30 (+384d) | 2026-06-17 → 2027-07-06 (+384d) | 6d → 6.75d |  |  |
| 2316 | Door shutter fixing | 2026-06-12 → 2027-06-30 (+383d) | 2026-06-18 → 2027-07-08 (+385d) | 6d → 9d |  |  |
| 2317 | Electrical wiring work | 2027-07-05 → 2027-09-02 (+59d) | 2027-07-11 → 2027-09-14 (+65d) | 6d → 13.5d |  |  |
| 2318 | Painting 1st coat | 2027-07-13 → 2027-09-17 (+66d) | 2027-07-19 → 2027-09-29 (+72d) | 6d → 13.5d |  |  |
| 2319 | False ceiling | 2027-07-21 → 2027-09-29 (+70d) | 2027-07-27 → 2027-10-09 (+74d) | 6d → 11.25d |  |  |
| 2320 | **15th Floor** | 2026-04-01 → 2026-07-06 (+96d) | 2027-08-14 → 2028-07-21 (+342d) | 454.56d → 737.88d |  | constraint start no earlier than 2026-04-01 → start no earlier than 2026-07-06 |
| 2321 | Block Work | 2026-03-27 → 2026-07-06 (+101d) | 2026-04-01 → 2026-07-14 (+104d) | 5d → 9d |  |  |
| 2322 | Door Frame Fixing | 2026-04-22 → 2026-07-14 (+83d) | 2026-05-01 → 2026-07-21 (+81d) | 9d → 7.88d | 2306, 2337 → 2306, 2321 |  |
| 2323 | Internal Plumbing Works | 2026-04-19 → 2026-08-08 (+111d) | 2026-05-04 → 2026-08-18 (+106d) | 15d → 11.25d | 2307, 2337 → 2307, 2321 |  |
| 2324 | Waterproofing | 2026-06-19 → 2026-09-15 (+88d) | 2026-07-04 → 2026-09-27 (+85d) | 15d → 13.5d | 2308, 2355 → 2308, 2323 |  |

| ID | Task | Start | Finish | Duration | Predecessors | Other |
| --- | --- | --- | --- | --- | --- | --- |
| 2325 | Internal Plaster | 2026-03-27 → 2026-07-21 (+116d) | 2026-04-04 → 2026-07-25 (+112d) | 8d → 4.5d | 2309FS+0.25d, 2305FS+0.25d → 2309FS+0.25d, 2322FS+0.25d |  |
| 2326 | IPS flooring work | 2026-06-04 → 2026-09-27 (+115d) | 2026-06-16 → 2026-10-06 (+112d) | 12d → 10.12d | 2310, 2322, 2323, 2292 → 2310, 2322, 2323, 2324 |  |
| 2327 | Toilet dado work | 2026-06-04 → 2027-06-13 (+374d) | 2026-06-16 → 2027-06-21 (+370d) | 12d → 9d | 2311, 2292, 2357 → 2311, 2324, 2325 |  |
| 2328 | Toilet flooring work | 2026-06-16 → 2027-06-21 (+370d) | 2026-06-28 → 2027-06-28 (+365d) | 12d → 7.88d |  |  |
| 2329 | Living dinning flooring | 2026-06-12 → 2027-06-30 (+383d) | 2026-06-18 → 2027-07-09 (+386d) | 7d → 10.12d | 2313FS+0.25d → 2313, 2322, 2328 |  |
| 2330 | Aluminium door-window fixing | 2026-07-04 → 2028-07-11 (+738d) | 2026-07-22 → 2028-07-21 (+730d) | 18d → 11.25d |  |  |
| 2331 | Putty primer coat | 2026-06-19 → 2027-07-09 (+385d) | 2026-06-24 → 2027-07-15 (+386d) | 6d → 6.75d |  |  |
| 2332 | Door shutter fixing | 2026-06-19 → 2027-07-09 (+385d) | 2026-06-26 → 2027-07-17 (+386d) | 7.94d → 9d |  |  |
| 2333 | Electrical wiring work | 2027-07-11 → 2027-09-14 (+65d) | 2027-07-23 → 2027-09-26 (+65d) | 11.94d → 13.5d |  |  |
| 2334 | Painting 1st coat | 2027-07-23 → 2027-09-29 (+68d) | 2027-08-04 → 2027-10-11 (+68d) | 11.94d → 13.5d |  |  |
| 2335 | False ceiling | 2027-08-04 → 2027-10-11 (+68d) | 2027-08-14 → 2027-10-21 (+68d) | 9.94d → 11.25d |  |  |
| 2336 | **16th Floor** | 2026-04-07 → 2026-07-14 (+98d) | 2027-08-26 → 2028-07-31 (+340d) | 461.25d → 739.88d |  | constraint start no earlier than 2026-04-07 → start no earlier than 2026-07-14 |
| 2337 | Block Work | 2026-04-01 → 2026-07-14 (+104d) | 2026-04-06 → 2026-07-22 (+107d) | 5d → 9d |  |  |
| 2338 | Door Frame Fixing | 2026-05-01 → 2026-07-22 (+82d) | 2026-05-10 → 2026-07-31 (+82d) | 9d → 10.12d | 2322, 2353 → 2322, 2337 |  |
| 2339 | Internal Plumbing Works | 2026-05-04 → 2026-08-18 (+106d) | 2026-05-19 → 2026-08-28 (+101d) | 15d → 11.25d | 2323, 2353 → 2323, 2337 |  |
| 2340 | Waterproofing | 2026-07-04 → 2026-09-27 (+85d) | 2026-07-19 → 2026-10-09 (+82d) | 15d → 13.5d | 2324, 2371 → 2324, 2339 |  |
| 2341 | Internal Plaster | 2026-04-04 → 2026-10-09 (+188d) | 2026-04-12 → 2026-10-18 (+189d) | 8d → 10.12d | 2325FS+0.25d → 2325, 2338, 2339, 2340 |  |
| 2342 | IPS flooring work | 2026-06-19 → 2026-10-09 (+112d) | 2026-07-01 → 2026-10-18 (+109d) | 12d → 10.12d | 2326, 2338, 2339, 2308 → 2326, 2338, 2339, 2340 |  |
| 2343 | Toilet dado work | 2026-06-19 → 2027-06-21 (+367d) | 2026-07-01 → 2027-06-29 (+363d) | 12d → 9d | 2327, 2308, 2373 → 2327, 2340, 2341 |  |
| 2344 | Toilet flooring work | 2026-07-01 → 2027-06-29 (+363d) | 2026-07-13 → 2027-07-06 (+358d) | 12d → 7.88d |  |  |
| 2345 | Living dinning flooring | 2026-06-19 → 2027-07-09 (+385d) | 2026-06-26 → 2027-07-18 (+387d) | 7d → 10.12d | 2329FS+0.25d → 2329, 2338, 2344 |  |
| 2346 | Aluminium door-window fixing | 2026-07-23 → 2028-07-21 (+729d) | 2026-08-09 → 2028-07-31 (+722d) | 18d → 11.25d | 2330FS+0.25d → 2330, 2342, 2345 |  |
| 2347 | Putty primer coat | 2026-06-26 → 2027-07-18 (+387d) | 2026-07-02 → 2027-07-24 (+387d) | 5.94d → 6.75d |  |  |
| 2348 | Door shutter fixing | 2026-06-26 → 2027-07-18 (+387d) | 2026-07-04 → 2027-07-26 (+387d) | 7.94d → 9d |  |  |
| 2349 | Electrical wiring work | 2027-07-23 → 2027-09-26 (+65d) | 2027-08-04 → 2027-10-08 (+65d) | 11.94d → 13.5d |  |  |
| 2350 | Painting 1st coat | 2027-08-04 → 2027-10-11 (+68d) | 2027-08-16 → 2027-10-23 (+68d) | 11.94d → 13.5d |  |  |
| 2351 | False ceiling | 2027-08-16 → 2027-10-23 (+68d) | 2027-08-26 → 2027-12-17 (+113d) | 9.94d → 11.25d |  |  |
| 2352 | **17th Floor** | 2026-04-17 → 2026-09-28 (+164d) | 2027-09-07 → 2028-08-12 (+340d) | 462.94d → 668.5d |  | constraint start no earlier than 2026-04-17 → start no earlier than 2026-09-28 |
| 2353 | Block Work | 2026-04-07 → 2026-09-28 (+174d) | 2026-04-16 → 2026-10-05 (+172d) | 10d → 9d | 2337FS+0.25d → 2075, 2337 |  |
| 2354 | Door Frame Fixing | 2026-05-10 → 2026-10-06 (+149d) | 2026-05-19 → 2026-10-14 (+148d) | 9d → 10.12d | 2338, 2369 → 2338, 2353 |  |
| 2355 | Internal Plumbing Works | 2026-05-19 → 2026-10-06 (+140d) | 2026-06-03 → 2026-10-15 (+134d) | 15d → 11.25d | 2339, 2369 → 2339, 2353 |  |
| 2356 | Waterproofing | 2026-07-19 → 2026-10-16 (+89d) | 2026-08-03 → 2026-10-27 (+85d) | 15d → 13.5d | 2340, 2387 → 2340, 2355 |  |
| 2357 | Internal Plaster | 2026-04-13 → 2026-10-28 (+198d) | 2026-04-20 → 2026-12-20 (+244d) | 8d → 10.12d | 2341FS+0.25d → 2341, 2354, 2355, 2356 |  |
| 2358 | IPS flooring work | 2026-07-04 → 2026-10-28 (+116d) | 2026-07-16 → 2026-12-20 (+157d) | 12d → 10.12d | 2342, 2354, 2355, 2324 → 2342, 2354, 2355, 2356 |  |
| 2359 | Toilet dado work | 2026-07-04 → 2027-06-29 (+360d) | 2026-07-16 → 2027-07-07 (+356d) | 12d → 9d | 2343, 2324, 2389 → 2343, 2356, 2357 |  |
| 2360 | Toilet flooring work | 2026-07-16 → 2027-07-07 (+356d) | 2026-07-28 → 2027-07-14 (+351d) | 12d → 7.88d |  |  |
| 2361 | Living dinning flooring | 2026-06-26 → 2027-07-18 (+387d) | 2026-07-03 → 2027-07-30 (+392d) | 7d → 13.5d | 2345FS+0.25d → 2345, 2354, 2360 |  |
| 2362 | Aluminium door-window fixing | 2026-08-10 → 2028-07-31 (+721d) | 2026-08-27 → 2028-08-12 (+716d) | 18d → 13.5d |  |  |
| 2363 | Putty primer coat | 2026-07-03 → 2027-07-30 (+392d) | 2026-07-09 → 2027-08-05 (+392d) | 5.94d → 6.75d |  |  |
| 2364 | Door shutter fixing | 2026-07-04 → 2027-07-30 (+391d) | 2026-07-12 → 2027-08-07 (+391d) | 7.94d → 9d |  |  |
| 2365 | Electrical wiring work | 2027-08-04 → 2027-10-08 (+65d) | 2027-08-16 → 2027-10-20 (+65d) | 11.94d → 13.5d |  |  |
| 2366 | Painting 1st coat | 2027-08-16 → 2027-10-23 (+68d) | 2027-08-28 → 2027-12-19 (+113d) | 11.94d → 13.5d |  |  |
| 2367 | False ceiling | 2027-08-28 → 2027-12-19 (+113d) | 2027-09-07 → 2027-12-29 (+113d) | 9.94d → 11.25d |  |  |
| 2368 | **18th Floor** | 2026-04-29 → 2026-10-09 (+163d) | 2027-09-19 → 2028-08-24 (+340d) | 462.62d → 669.62d |  | constraint start no earlier than 2026-04-29 → start no earlier than 2026-10-09 |
| 2369 | Block Work | 2026-04-17 → 2026-10-09 (+175d) | 2026-04-29 → 2026-10-16 (+170d) | 12d → 9d | 2353FS+0.25d → 2076, 2353 |  |
| 2370 | Door Frame Fixing | 2026-05-19 → 2026-10-17 (+151d) | 2026-05-28 → 2026-10-25 (+150d) | 9d → 10.12d | 2354, 2385 → 2354, 2369 |  |
| 2371 | Internal Plumbing Works | 2026-06-03 → 2026-10-17 (+136d) | 2026-06-18 → 2026-10-26 (+130d) | 15d → 11.25d | 2355, 2385 → 2355, 2369 |  |
| 2372 | Waterproofing | 2026-08-03 → 2026-10-28 (+86d) | 2026-08-18 → 2026-12-23 (+127d) | 15d → 13.5d | 2356, 2403 → 2356, 2371 |  |
| 2373 | Internal Plaster | 2026-04-21 → 2026-12-24 (+247d) | 2026-05-03 → 2027-01-01 (+243d) | 12d → 10.12d | 2357FS+0.25d → 2357, 2370, 2371, 2372 |  |
| 2374 | IPS flooring work | 2026-07-19 → 2026-12-24 (+158d) | 2026-07-31 → 2027-01-01 (+154d) | 12d → 10.12d | 2358, 2370, 2371, 2340 → 2358, 2370, 2371, 2372 |  |
| 2375 | Toilet dado work | 2026-07-19 → 2027-07-07 (+353d) | 2026-07-31 → 2027-07-15 (+349d) | 12d → 9d | 2359, 2340, 2405 → 2359, 2372, 2373 |  |
| 2376 | Toilet flooring work | 2026-07-31 → 2027-07-15 (+349d) | 2026-08-12 → 2027-07-22 (+344d) | 12d → 7.88d |  |  |
| 2377 | Living dinning flooring | 2026-07-03 → 2027-07-30 (+392d) | 2026-07-10 → 2027-08-11 (+397d) | 7d → 13.5d | 2361FS+0.25d → 2361, 2370, 2376 |  |
| 2378 | Aluminium door-window fixing | 2026-08-28 → 2028-08-12 (+715d) | 2026-09-14 → 2028-08-24 (+710d) | 18d → 13.5d |  |  |
| 2379 | Putty primer coat | 2026-07-10 → 2027-08-11 (+397d) | 2026-07-16 → 2027-08-17 (+397d) | 5.94d → 6.75d |  |  |
| 2380 | Door shutter fixing | 2026-07-12 → 2027-08-11 (+395d) | 2026-07-20 → 2027-08-19 (+395d) | 7.94d → 9d |  |  |
| 2381 | Electrical wiring work | 2027-08-16 → 2027-10-20 (+65d) | 2027-08-28 → 2027-12-16 (+110d) | 11.94d → 13.5d |  |  |
| 2382 | Painting 1st coat | 2027-08-28 → 2027-12-19 (+113d) | 2027-09-09 → 2027-12-31 (+113d) | 11.94d → 13.5d |  |  |
| 2383 | False ceiling | 2027-09-09 → 2027-12-31 (+113d) | 2027-09-19 → 2028-01-10 (+113d) | 9.94d → 11.25d |  |  |
| 2384 | **19th Floor** | 2026-05-11 → 2026-10-20 (+162d) | 2027-10-01 → 2028-09-05 (+340d) | 462.31d → 670.75d |  | constraint start no earlier than 2026-05-11 → start no earlier than 2026-10-20 |
| 2385 | Block Work | 2026-04-29 → 2026-10-20 (+174d) | 2026-05-11 → 2026-10-27 (+169d) | 12d → 9d | 2369FS+0.25d → 2077, 2369 |  |
| 2386 | Door Frame Fixing | 2026-05-28 → 2026-10-28 (+153d) | 2026-06-06 → 2026-12-20 (+197d) | 9d → 10.12d | 2370, 2401 → 2370, 2385 |  |
| 2387 | Internal Plumbing Works | 2026-06-18 → 2026-10-28 (+132d) | 2026-07-03 → 2026-12-21 (+171d) | 15d → 11.25d | 2371, 2401 → 2371, 2385 |  |
| 2388 | Waterproofing | 2026-08-18 → 2026-12-24 (+128d) | 2026-08-30 → 2027-01-04 (+127d) | 11.94d → 13.5d | 2372, 2419 → 2372, 2387 |  |
| 2389 | Internal Plaster | 2026-05-03 → 2027-01-05 (+247d) | 2026-05-15 → 2027-01-13 (+243d) | 12d → 10.12d | 2373FS+0.25d → 2373, 2386, 2387, 2388 |  |
| 2390 | IPS flooring work | 2026-08-03 → 2027-01-14 (+164d) | 2026-08-15 → 2027-01-22 (+160d) | 12d → 10.12d | 2374, 2386, 2356, 2421 → 2374, 2386, 2388, 2389 |  |
| 2391 | Toilet dado work | 2026-08-03 → 2027-07-15 (+346d) | 2026-08-15 → 2027-07-23 (+342d) | 12d → 9d | 2375, 2356, 2421 → 2375, 2388, 2389 |  |
| 2392 | Toilet flooring work | 2026-08-15 → 2027-07-23 (+342d) | 2026-08-27 → 2027-07-30 (+337d) | 12d → 7.88d |  |  |
| 2393 | Living dinning flooring | 2026-08-27 → 2027-08-11 (+349d) | 2026-09-03 → 2027-08-23 (+354d) | 7d → 13.5d |  |  |
| 2394 | Aluminium door-window fixing | 2026-09-15 → 2028-08-24 (+709d) | 2026-10-02 → 2028-09-05 (+704d) | 18d → 13.5d |  |  |

| ID | Task | Start | Finish | Duration | Predecessors | Other |
| --- | --- | --- | --- | --- | --- | --- |
| 2395 | Putty primer coat | 2026-09-03 → 2027-08-23 (+354d) | 2026-09-09 → 2027-08-29 (+354d) | 5.94d → 6.75d |  |  |
| 2396 | Door shutter fixing | 2026-09-03 → 2027-08-23 (+354d) | 2026-09-11 → 2027-08-31 (+354d) | 7.94d → 9d |  |  |
| 2397 | Electrical wiring work | 2027-08-28 → 2027-12-16 (+110d) | 2027-09-09 → 2027-12-28 (+110d) | 11.94d → 13.5d |  |  |
| 2398 | Painting 1st coat | 2027-09-09 → 2027-12-31 (+113d) | 2027-09-21 → 2028-01-12 (+113d) | 11.94d → 13.5d |  |  |
| 2399 | False ceiling | 2027-09-21 → 2028-01-12 (+113d) | 2027-10-01 → 2028-01-22 (+113d) | 9.94d → 11.25d |  |  |
| 2400 | **20th Floor** | 2026-05-24 → 2026-10-31 (+160d) | 2027-10-12 → 2028-09-17 (+341d) | 462d → 671.88d |  | constraint start no earlier than 2026-05-24 → start no earlier than 2026-10-31 |
| 2401 | Block Work | 2026-05-11 → 2026-10-31 (+173d) | 2026-05-23 → 2026-12-22 (+213d) | 12d → 9d | 2385FS+0.25d → 2078, 2385 |  |
| 2402 | Door Frame Fixing | 2026-06-06 → 2026-12-23 (+200d) | 2026-06-15 → 2026-12-31 (+199d) | 9d → 10.12d | 2386, 2417 → 2386, 2401 |  |
| 2403 | Internal Plumbing Works | 2026-07-03 → 2026-12-23 (+173d) | 2026-07-18 → 2027-01-01 (+167d) | 15d → 11.25d | 2387, 2417 → 2387, 2401 |  |
| 2404 | Waterproofing | 2026-08-30 → 2027-01-05 (+128d) | 2026-09-11 → 2027-01-16 (+127d) | 11.94d → 13.5d | 2388, 2435 → 2388, 2403 |  |
| 2405 | Internal Plaster | 2026-05-15 → 2027-01-17 (+247d) | 2026-05-27 → 2027-01-25 (+243d) | 12d → 10.12d | 2389FS+0.25d → 2389, 2402, 2403, 2404 |  |
| 2406 | IPS flooring work | 2026-08-18 → 2027-01-26 (+161d) | 2026-08-30 → 2027-02-03 (+157d) | 12d → 10.12d | 2390, 2402, 2372, 2437 → 2390, 2402, 2404, 2405 |  |
| 2407 | Toilet dado work | 2026-08-18 → 2027-07-23 (+339d) | 2026-08-30 → 2027-07-31 (+335d) | 12d → 9d | 2391, 2372, 2437 → 2391, 2404, 2405 |  |
| 2408 | Toilet flooring work | 2026-08-30 → 2027-07-31 (+335d) | 2026-09-11 → 2027-08-07 (+330d) | 12d → 7.88d |  |  |
| 2409 | Living dinning flooring | 2026-09-11 → 2027-08-23 (+346d) | 2026-09-18 → 2027-09-04 (+351d) | 7d → 13.5d |  |  |
| 2410 | Aluminium door-window fixing | 2026-10-03 → 2028-09-05 (+703d) | 2026-10-20 → 2028-09-17 (+698d) | 18d → 13.5d |  |  |
| 2411 | Putty primer coat | 2026-09-18 → 2027-09-04 (+351d) | 2026-09-24 → 2027-09-10 (+351d) | 5.94d → 6.75d |  |  |
| 2412 | Door shutter fixing | 2026-09-18 → 2027-09-04 (+351d) | 2026-09-26 → 2027-09-12 (+351d) | 7.94d → 9d |  |  |
| 2413 | Electrical wiring work | 2027-09-09 → 2027-12-28 (+110d) | 2027-09-21 → 2028-01-09 (+110d) | 11.94d → 13.5d |  |  |
| 2414 | Painting 1st coat | 2027-09-21 → 2028-01-12 (+113d) | 2027-10-03 → 2028-01-24 (+113d) | 11.94d → 13.5d |  |  |
| 2415 | False ceiling | 2027-10-03 → 2028-01-24 (+113d) | 2027-10-12 → 2028-02-03 (+114d) | 9.94d → 11.25d |  |  |
| 2416 | **21st Floor** | 2026-06-05 → 2026-12-26 (+204d) | 2027-10-24 → 2028-09-29 (+341d) | 461.69d → 673d |  | constraint start no earlier than 2026-06-05 → start no earlier than 2026-12-26 |
| 2417 | Block Work | 2026-05-24 → 2026-12-26 (+216d) | 2026-06-04 → 2027-01-02 (+212d) | 12d → 9d | 2401FS+0.25d → 2079, 2401 |  |
| 2418 | Door Frame Fixing | 2026-06-15 → 2027-01-03 (+202d) | 2026-06-24 → 2027-01-11 (+201d) | 8.94d → 10.12d | 2402, 2433 → 2402, 2417 |  |
| 2419 | Internal Plumbing Works | 2026-06-13 → 2027-01-03 (+204d) | 2026-06-23 → 2027-01-12 (+203d) | 9.94d → 11.25d | 2433FS+0.25d → 2403, 2417 |  |
| 2420 | Waterproofing | 2026-09-11 → 2027-01-17 (+128d) | 2026-09-23 → 2027-01-28 (+127d) | 11.94d → 13.5d | 2404, 2451 → 2404, 2419 |  |
| 2421 | Internal Plaster | 2026-05-28 → 2027-01-29 (+246d) | 2026-06-08 → 2027-02-06 (+243d) | 12d → 10.12d | 2405FS+0.25d → 2405, 2418, 2419, 2420 |  |
| 2422 | IPS flooring work | 2026-08-30 → 2027-02-07 (+161d) | 2026-09-08 → 2027-02-15 (+160d) | 8.94d → 10.12d | 2406, 2418, 2388, 2453 → 2406, 2418, 2420, 2421 |  |
| 2423 | Toilet dado work | 2026-08-30 → 2027-07-31 (+335d) | 2026-09-07 → 2027-08-08 (+335d) | 7.94d → 9d | 2407, 2388, 2453 → 2407, 2420, 2421 |  |
| 2424 | Toilet flooring work | 2026-09-11 → 2027-08-08 (+331d) | 2026-09-18 → 2027-08-15 (+331d) | 6.94d → 7.88d |  |  |
| 2425 | Living dinning flooring | 2026-09-18 → 2027-09-04 (+351d) | 2026-09-30 → 2027-09-16 (+351d) | 11.94d → 13.5d |  |  |
| 2426 | Aluminium door-window fixing | 2026-10-21 → 2028-09-17 (+697d) | 2026-12-16 → 2028-09-29 (+653d) | 11.94d → 13.5d |  |  |
| 2427 | Putty primer coat | 2026-09-30 → 2027-09-16 (+351d) | 2026-10-06 → 2027-09-22 (+351d) | 5.94d → 6.75d |  |  |
| 2428 | Door shutter fixing | 2026-09-30 → 2027-09-16 (+351d) | 2026-10-08 → 2027-09-24 (+351d) | 7.94d → 9d |  |  |
| 2429 | Electrical wiring work | 2027-09-21 → 2028-01-09 (+110d) | 2027-10-03 → 2028-01-21 (+110d) | 11.94d → 13.5d |  |  |
| 2430 | Painting 1st coat | 2027-10-03 → 2028-01-24 (+113d) | 2027-10-14 → 2028-02-05 (+114d) | 11.94d → 13.5d |  |  |
| 2431 | False ceiling | 2027-10-15 → 2028-02-05 (+113d) | 2027-10-24 → 2028-02-15 (+114d) | 9.94d → 11.25d |  |  |
| 2432 | **22nd Floor** | 2026-07-23 → 2027-01-06 (+167d) | 2027-11-05 → 2028-10-11 (+341d) | 425.88d → 674.12d |  | constraint start no earlier than 2026-07-23 → start no earlier than 2027-01-06 |
| 2433 | Block Work | 2026-06-05 → 2027-01-06 (+215d) | 2026-06-13 → 2027-01-13 (+214d) | 7.94d → 9d | 2074FS+0.25d, 2417FS+0.25d → 2080, 2417 |  |
| 2434 | Door Frame Fixing | 2026-07-30 → 2027-01-14 (+168d) | 2026-08-08 → 2027-01-22 (+167d) | 8.94d → 10.12d | 2418, 2449 → 2418, 2433 |  |
| 2435 | Internal Plumbing Works | 2026-07-30 → 2027-01-14 (+168d) | 2026-08-09 → 2027-01-23 (+167d) | 9.94d → 11.25d | 2419, 2449 → 2419, 2433 |  |
| 2436 | Waterproofing | 2026-09-23 → 2027-01-29 (+128d) | 2026-10-04 → 2027-02-09 (+128d) | 11.94d → 13.5d | 2420, 2467 → 2420, 2435 |  |
| 2437 | Internal Plaster | 2026-06-09 → 2027-02-10 (+246d) | 2026-06-21 → 2027-02-18 (+242d) | 12d → 10.12d | 2421FS+0.25d → 2421, 2434, 2435, 2436 |  |
| 2438 | IPS flooring work | 2026-09-20 → 2027-02-19 (+152d) | 2026-09-28 → 2027-02-27 (+152d) | 8.94d → 10.12d | 2422, 2434, 2404, 2469 → 2422, 2434, 2436, 2437 |  |
| 2439 | Toilet dado work | 2026-09-20 → 2027-08-08 (+322d) | 2026-09-27 → 2027-08-16 (+323d) | 7.94d → 9d | 2423, 2404, 2469 → 2423, 2436, 2437 |  |
| 2440 | Toilet flooring work | 2026-09-28 → 2027-08-16 (+322d) | 2026-10-04 → 2027-08-23 (+323d) | 6.94d → 7.88d |  |  |
| 2441 | Living dinning flooring | 2026-10-04 → 2027-09-16 (+347d) | 2026-10-16 → 2027-09-28 (+347d) | 11.94d → 13.5d |  |  |
| 2442 | Aluminium door-window fixing | 2026-12-16 → 2028-09-29 (+653d) | 2026-12-28 → 2028-10-11 (+653d) | 11.94d → 13.5d |  |  |
| 2443 | Putty primer coat | 2026-10-16 → 2027-09-28 (+347d) | 2026-10-22 → 2027-10-04 (+347d) | 5.94d → 6.75d |  |  |
| 2444 | Door shutter fixing | 2026-10-16 → 2027-09-28 (+347d) | 2026-10-24 → 2027-10-06 (+347d) | 7.94d → 9d |  |  |
| 2445 | Electrical wiring work | 2027-10-03 → 2028-01-21 (+110d) | 2027-10-14 → 2028-02-02 (+111d) | 11.94d → 13.5d |  |  |
| 2446 | Painting 1st coat | 2027-10-15 → 2028-02-05 (+113d) | 2027-10-26 → 2028-02-17 (+114d) | 11.94d → 13.5d |  |  |
| 2447 | False ceiling | 2027-10-26 → 2028-02-17 (+114d) | 2027-11-05 → 2028-02-27 (+114d) | 9.94d → 11.25d |  |  |
| 2448 | **23rd Floor** | 2026-08-06 → 2027-01-17 (+164d) | 2027-11-17 → 2028-10-26 (+344d) | 423.81d → 678.62d |  | constraint start no earlier than 2026-08-06 → start no earlier than 2027-01-17 |
| 2449 | Block Work | 2026-07-23 → 2027-01-17 (+178d) | 2026-07-30 → 2027-01-24 (+178d) | 7.94d → 9d | 2080, 2433 → 2081, 2433 |  |
| 2450 | Door Frame Fixing | 2026-08-13 → 2027-01-25 (+165d) | 2026-08-22 → 2027-02-02 (+164d) | 8.94d → 10.12d | 2434, 2465 → 2434, 2449 |  |
| 2451 | Internal Plumbing Works | 2026-08-13 → 2027-01-25 (+165d) | 2026-08-23 → 2027-02-03 (+164d) | 9.94d → 11.25d | 2435, 2465 → 2435, 2449 |  |
| 2452 | Waterproofing | 2026-10-05 → 2027-02-10 (+128d) | 2026-10-16 → 2027-02-21 (+128d) | 11.94d → 13.5d | 2436, 2483 → 2436, 2451 |  |
| 2453 | Internal Plaster | 2026-06-23 → 2027-02-22 (+244d) | 2026-07-02 → 2027-03-02 (+243d) | 8.94d → 10.12d | 2437FS+0.25d, 2433FS+10d → 2437, 2450, 2451, 2452 |  |
| 2454 | IPS flooring work | 2026-10-02 → 2027-03-03 (+152d) | 2026-10-10 → 2027-03-11 (+152d) | 8.94d → 10.12d | 2438, 2450, 2420, 2485 → 2438, 2450, 2452, 2453 |  |
| 2455 | Toilet dado work | 2026-10-02 → 2027-08-16 (+318d) | 2026-10-09 → 2027-08-24 (+319d) | 7.94d → 9d | 2439, 2420, 2485 → 2439, 2452, 2453 |  |
| 2456 | Toilet flooring work | 2026-10-09 → 2027-08-24 (+319d) | 2026-10-16 → 2027-08-31 (+319d) | 6.94d → 7.88d |  |  |
| 2457 | Living dinning flooring | 2026-10-16 → 2027-09-28 (+347d) | 2026-10-31 → 2027-10-13 (+347d) | 14.94d → 16.88d |  |  |
| 2458 | Aluminium door-window fixing | 2026-12-28 → 2028-10-11 (+653d) | 2027-01-12 → 2028-10-26 (+653d) | 14.94d → 16.88d |  |  |
| 2459 | Putty primer coat | 2026-10-31 → 2027-10-13 (+347d) | 2026-12-21 → 2027-10-19 (+302d) | 5.94d → 6.75d |  |  |
| 2460 | Door shutter fixing | 2026-10-31 → 2027-10-13 (+347d) | 2026-12-23 → 2027-10-21 (+302d) | 7.94d → 9d |  |  |
| 2461 | Electrical wiring work | 2027-10-15 → 2028-02-02 (+110d) | 2027-10-26 → 2028-02-14 (+111d) | 11.94d → 13.5d |  |  |
| 2462 | Painting 1st coat | 2027-10-26 → 2028-02-17 (+114d) | 2027-11-07 → 2028-02-29 (+114d) | 11.94d → 13.5d |  |  |
| 2463 | False ceiling | 2027-11-07 → 2028-02-29 (+114d) | 2027-11-17 → 2028-03-10 (+114d) | 9.94d → 11.25d |  |  |
| 2464 | **24th Floor** | 2026-08-20 → 2027-01-28 (+161d) | 2027-11-29 → 2028-11-10 (+347d) | 420.88d → 683.12d |  | constraint start no earlier than 2026-08-20 → start no earlier than 2027-01-28 |

| ID | Task | Start | Finish | Duration | Predecessors | Other |
| --- | --- | --- | --- | --- | --- | --- |
| 2465 | Block Work | 2026-08-06 → 2027-01-28 (+175d) | 2026-08-13 → 2027-02-04 (+175d) | 7.94d → 9d | 2081, 2449 → 2082, 2449 |  |
| 2466 | Door Frame Fixing | 2026-08-28 → 2027-02-05 (+161d) | 2026-09-06 → 2027-02-13 (+160d) | 8.94d → 10.12d | 2450, 2481 → 2450, 2465 |  |
| 2467 | Internal Plumbing Works | 2026-08-28 → 2027-02-05 (+161d) | 2026-09-07 → 2027-02-14 (+160d) | 9.94d → 11.25d | 2451, 2481 → 2451, 2465 |  |
| 2468 | Waterproofing | 2026-10-16 → 2027-02-22 (+129d) | 2026-10-28 → 2027-03-05 (+128d) | 11.94d → 13.5d | 2452, 2499 → 2452, 2467 |  |
| 2469 | Internal Plaster | 2026-09-11 → 2027-03-06 (+176d) | 2026-09-20 → 2027-03-14 (+175d) | 8.94d → 10.12d | 2453, 2434, 2435, 2404 → 2453, 2466, 2467, 2468 |  |
| 2470 | IPS flooring work | 2026-10-13 → 2027-03-15 (+153d) | 2026-10-22 → 2027-03-23 (+152d) | 8.94d → 10.12d | 2454, 2466, 2436, 2501 → 2454, 2466, 2468, 2469 |  |
| 2471 | Toilet dado work | 2026-10-13 → 2027-08-24 (+315d) | 2026-10-21 → 2027-09-01 (+315d) | 7.94d → 9d | 2455, 2436, 2501 → 2455, 2468, 2469 |  |
| 2472 | Toilet flooring work | 2026-10-21 → 2027-09-01 (+315d) | 2026-10-28 → 2027-09-08 (+315d) | 6.94d → 7.88d |  |  |
| 2473 | Living dinning flooring | 2026-10-31 → 2027-10-13 (+347d) | 2026-12-30 → 2027-10-28 (+302d) | 14.94d → 16.88d |  |  |
| 2474 | Aluminium door-window fixing | 2027-01-12 → 2028-10-26 (+653d) | 2027-01-27 → 2028-11-10 (+653d) | 14.94d → 16.88d |  |  |
| 2475 | Putty primer coat | 2026-12-30 → 2027-10-28 (+302d) | 2027-01-05 → 2027-12-18 (+347d) | 5.94d → 6.75d |  |  |
| 2476 | Door shutter fixing | 2026-12-30 → 2027-10-28 (+302d) | 2027-01-07 → 2027-12-20 (+347d) | 7.94d → 9d |  |  |
| 2477 | Electrical wiring work | 2027-10-26 → 2028-02-14 (+111d) | 2027-11-07 → 2028-02-26 (+111d) | 11.94d → 13.5d |  |  |
| 2478 | Painting 1st coat | 2027-11-07 → 2028-02-29 (+114d) | 2027-11-19 → 2028-03-12 (+114d) | 11.94d → 13.5d |  |  |
| 2479 | False ceiling | 2027-11-19 → 2028-03-12 (+114d) | 2027-11-29 → 2028-03-22 (+114d) | 9.94d → 11.25d |  |  |
| 2480 | **25th Floor** | 2026-09-06 → 2027-02-08 (+155d) | 2027-12-11 → 2028-11-25 (+350d) | 416.06d → 687.62d |  | constraint start no earlier than 2026-09-06 → start no earlier than 2027-02-08 |
| 2481 | Block Work | 2026-08-20 → 2027-02-08 (+172d) | 2026-08-28 → 2027-02-15 (+171d) | 7.94d → 9d | 2082, 2465 → 2083, 2465 |  |
| 2482 | Door Frame Fixing | 2026-09-14 → 2027-02-16 (+155d) | 2026-09-23 → 2027-02-24 (+154d) | 8.94d → 10.12d | 2466, 2497 → 2466, 2481 |  |
| 2483 | Internal Plumbing Works | 2026-09-14 → 2027-02-16 (+155d) | 2026-09-24 → 2027-02-25 (+154d) | 9.94d → 11.25d | 2467, 2497 → 2467, 2481 |  |
| 2484 | Waterproofing | 2026-10-28 → 2027-03-06 (+129d) | 2026-12-24 → 2027-03-17 (+83d) | 11.94d → 13.5d | 2468, 2515 → 2468, 2483 |  |
| 2485 | Internal Plaster | 2026-09-23 → 2027-03-18 (+176d) | 2026-10-01 → 2027-03-26 (+176d) | 8.94d → 10.12d | 2469, 2450, 2451, 2420 → 2469, 2482, 2483, 2484 |  |
| 2486 | IPS flooring work | 2026-10-25 → 2027-03-27 (+153d) | 2026-12-18 → 2027-04-04 (+107d) | 8.94d → 10.12d | 2470, 2482, 2452, 2517 → 2470, 2482, 2484, 2485 |  |
| 2487 | Toilet dado work | 2026-10-25 → 2027-09-01 (+311d) | 2026-12-17 → 2027-09-09 (+266d) | 7.94d → 9d | 2471, 2452, 2517 → 2471, 2484, 2485 |  |
| 2488 | Toilet flooring work | 2026-12-17 → 2027-09-09 (+266d) | 2026-12-24 → 2027-09-16 (+266d) | 6.94d → 7.88d |  |  |
| 2489 | Living dinning flooring | 2026-12-30 → 2027-10-28 (+302d) | 2027-01-14 → 2027-12-27 (+347d) | 14.94d → 16.88d |  |  |
| 2490 | Aluminium door-window fixing | 2027-01-27 → 2028-11-10 (+653d) | 2027-02-11 → 2028-11-25 (+653d) | 14.94d → 16.88d |  |  |
| 2491 | Putty primer coat | 2027-01-14 → 2027-12-27 (+347d) | 2027-01-20 → 2028-01-02 (+347d) | 5.94d → 6.75d |  |  |
| 2492 | Door shutter fixing | 2027-01-14 → 2027-12-27 (+347d) | 2027-01-22 → 2028-01-04 (+347d) | 7.94d → 9d |  |  |
| 2493 | Electrical wiring work | 2027-11-07 → 2028-02-26 (+111d) | 2027-11-19 → 2028-03-09 (+111d) | 11.94d → 13.5d |  |  |
| 2494 | Painting 1st coat | 2027-11-19 → 2028-03-12 (+114d) | 2027-12-01 → 2028-03-24 (+114d) | 11.94d → 13.5d |  |  |
| 2495 | False ceiling | 2027-12-01 → 2028-03-24 (+114d) | 2027-12-11 → 2028-04-03 (+114d) | 9.94d → 11.25d |  |  |
| 2496 | **26th Floor** | 2026-09-20 → 2027-02-19 (+152d) | 2027-12-23 → 2028-12-10 (+353d) | 414.12d → 692.12d |  | constraint start no earlier than 2026-09-20 → start no earlier than 2027-02-19 |
| 2497 | Block Work | 2026-09-06 → 2027-02-19 (+166d) | 2026-09-14 → 2027-02-26 (+165d) | 7.94d → 9d | 2083, 2481 → 2084, 2481 |  |
| 2498 | Door Frame Fixing | 2026-09-28 → 2027-02-27 (+152d) | 2026-10-07 → 2027-03-07 (+151d) | 8.94d → 10.12d | 2482, 2513 → 2482, 2497 |  |
| 2499 | Internal Plumbing Works | 2026-09-28 → 2027-02-27 (+152d) | 2026-10-08 → 2027-03-08 (+151d) | 9.94d → 11.25d | 2483, 2513 → 2483, 2497 |  |
| 2500 | Waterproofing | 2026-12-24 → 2027-03-18 (+84d) | 2027-01-05 → 2027-03-29 (+83d) | 11.94d → 13.5d | 2484, 2531 → 2484, 2499 |  |
| 2501 | Internal Plaster | 2026-10-05 → 2027-03-30 (+176d) | 2026-10-13 → 2027-04-07 (+176d) | 8.94d → 10.12d | 2485, 2466, 2467, 2436 → 2485, 2498, 2499, 2500 |  |
| 2502 | IPS flooring work | 2026-12-21 → 2027-04-08 (+108d) | 2026-12-30 → 2027-04-16 (+107d) | 8.94d → 10.12d | 2486, 2498, 2468, 2533 → 2486, 2498, 2500, 2501 |  |
| 2503 | Toilet dado work | 2026-12-21 → 2027-09-09 (+262d) | 2026-12-29 → 2027-09-17 (+262d) | 7.94d → 9d | 2487, 2468, 2533 → 2487, 2500, 2501 |  |
| 2504 | Toilet flooring work | 2026-12-29 → 2027-09-17 (+262d) | 2027-01-05 → 2027-09-24 (+262d) | 6.94d → 7.88d |  |  |
| 2505 | Living dinning flooring | 2027-01-14 → 2027-12-27 (+347d) | 2027-01-29 → 2028-01-11 (+347d) | 14.94d → 16.88d |  |  |
| 2506 | Aluminium door-window fixing | 2027-02-11 → 2028-11-25 (+653d) | 2027-02-26 → 2028-12-10 (+653d) | 14.94d → 16.88d |  |  |
| 2507 | Putty primer coat | 2027-01-29 → 2028-01-11 (+347d) | 2027-02-04 → 2028-01-17 (+347d) | 5.94d → 6.75d |  |  |
| 2508 | Door shutter fixing | 2027-01-29 → 2028-01-11 (+347d) | 2027-02-06 → 2028-01-19 (+347d) | 7.94d → 9d |  |  |
| 2509 | Electrical wiring work | 2027-11-19 → 2028-03-09 (+111d) | 2027-12-01 → 2028-03-21 (+111d) | 11.94d → 13.5d |  |  |
| 2510 | Painting 1st coat | 2027-12-01 → 2028-03-24 (+114d) | 2027-12-13 → 2028-04-05 (+114d) | 11.94d → 13.5d |  |  |
| 2511 | False ceiling | 2027-12-13 → 2028-04-05 (+114d) | 2027-12-23 → 2028-04-15 (+114d) | 9.94d → 11.25d |  |  |
| 2512 | **27th Floor** | 2026-10-04 → 2027-03-02 (+149d) | 2028-01-04 → 2028-12-25 (+356d) | 412.31d → 696.62d |  | constraint start no earlier than 2026-10-04 → start no earlier than 2027-03-02 |
| 2513 | Block Work | 2026-09-20 → 2027-03-02 (+163d) | 2026-09-28 → 2027-03-09 (+162d) | 7.94d → 9d | 2084, 2497 → 2085, 2497 |  |
| 2514 | Door Frame Fixing | 2026-10-12 → 2027-03-10 (+149d) | 2026-10-21 → 2027-03-18 (+148d) | 8.94d → 10.12d | 2498, 2529 → 2498, 2513 |  |
| 2515 | Internal Plumbing Works | 2026-10-12 → 2027-03-10 (+149d) | 2026-10-22 → 2027-03-19 (+148d) | 9.94d → 11.25d | 2499, 2529 → 2499, 2513 |  |
| 2516 | Waterproofing | 2027-01-06 → 2027-03-30 (+83d) | 2027-01-18 → 2027-04-10 (+82d) | 11.94d → 13.5d | 2500, 2547 → 2500, 2515 |  |
| 2517 | Internal Plaster | 2026-10-16 → 2027-04-11 (+177d) | 2026-10-25 → 2027-04-19 (+176d) | 8.94d → 10.12d | 2501, 2482, 2483, 2452 → 2501, 2514, 2515, 2516 |  |
| 2518 | IPS flooring work | 2027-01-02 → 2027-04-20 (+108d) | 2027-01-11 → 2027-04-28 (+107d) | 8.94d → 10.12d | 2502, 2514, 2484, 2549 → 2502, 2514, 2516, 2517 |  |
| 2519 | Toilet dado work | 2027-01-02 → 2027-09-17 (+258d) | 2027-01-10 → 2027-09-25 (+258d) | 7.94d → 9d | 2503, 2484, 2549 → 2503, 2516, 2517 |  |
| 2520 | Toilet flooring work | 2027-01-10 → 2027-09-25 (+258d) | 2027-01-17 → 2027-10-02 (+258d) | 6.94d → 7.88d |  |  |
| 2521 | Living dinning flooring | 2027-01-29 → 2028-01-11 (+347d) | 2027-02-13 → 2028-01-26 (+347d) | 14.94d → 16.88d |  |  |
| 2522 | Aluminium door-window fixing | 2027-02-26 → 2028-12-10 (+653d) | 2027-03-13 → 2028-12-25 (+653d) | 14.94d → 16.88d |  |  |
| 2523 | Putty primer coat | 2027-02-13 → 2028-01-26 (+347d) | 2027-02-19 → 2028-02-01 (+347d) | 5.94d → 6.75d |  |  |
| 2524 | Door shutter fixing | 2027-02-13 → 2028-01-26 (+347d) | 2027-02-21 → 2028-02-03 (+347d) | 7.94d → 9d |  |  |
| 2525 | Electrical wiring work | 2027-12-01 → 2028-03-21 (+111d) | 2027-12-13 → 2028-04-02 (+111d) | 11.94d → 13.5d |  |  |
| 2526 | Painting 1st coat | 2027-12-13 → 2028-04-05 (+114d) | 2027-12-25 → 2028-04-17 (+114d) | 11.94d → 13.5d |  |  |
| 2527 | False ceiling | 2027-12-25 → 2028-04-17 (+114d) | 2028-01-04 → 2028-04-27 (+114d) | 9.94d → 11.25d |  |  |
| 2528 | **28th Floor** | 2026-10-18 → 2027-03-13 (+146d) | 2028-01-16 → 2029-01-09 (+359d) | 410.5d → 701.12d |  | constraint start no earlier than 2026-10-18 → start no earlier than 2027-03-13 |
| 2529 | Block Work | 2026-10-04 → 2027-03-13 (+160d) | 2026-10-12 → 2027-03-20 (+159d) | 7.94d → 9d | 2700, 2513 → 2086, 2513 |  |
| 2530 | Door Frame Fixing | 2026-10-25 → 2027-03-21 (+147d) | 2026-12-18 → 2027-03-29 (+101d) | 8.94d → 10.12d | 2514, 2545 → 2514, 2529 |  |
| 2531 | Internal Plumbing Works | 2026-10-25 → 2027-03-21 (+147d) | 2026-12-19 → 2027-03-30 (+101d) | 9.94d → 11.25d | 2515, 2545 → 2515, 2529 |  |
| 2532 | Waterproofing | 2027-02-17 → 2027-04-11 (+53d) | 2027-03-01 → 2027-04-22 (+52d) | 11.94d → 13.5d | 2516, 2563 → 2516, 2531 |  |
| 2533 | Internal Plaster | 2026-10-28 → 2027-04-23 (+177d) | 2026-12-21 → 2027-05-01 (+131d) | 8.94d → 10.12d | 2517, 2498, 2499, 2468 → 2517, 2530, 2531, 2532 |  |
| 2534 | IPS flooring work | 2027-01-14 → 2027-05-02 (+108d) | 2027-01-23 → 2027-05-10 (+107d) | 8.94d → 10.12d | 2518, 2530, 2500, 2565 → 2518, 2530, 2532, 2533 |  |

| ID | Task | Start | Finish | Duration | Predecessors | Other |
| --- | --- | --- | --- | --- | --- | --- |
| 2535 | Toilet dado work | 2027-01-14 → 2027-09-25 (+254d) | 2027-01-22 → 2027-10-03 (+254d) | 7.94d → 9d | 2519, 2500, 2565 → 2519, 2532, 2533 |  |
| 2536 | Toilet flooring work | 2027-01-22 → 2027-10-03 (+254d) | 2027-01-29 → 2027-10-10 (+254d) | 6.94d → 7.88d |  |  |
| 2537 | Living dinning flooring | 2027-02-13 → 2028-01-26 (+347d) | 2027-02-28 → 2028-02-10 (+347d) | 14.94d → 16.88d |  |  |
| 2538 | Aluminium door-window fixing | 2027-03-13 → 2028-12-25 (+653d) | 2027-03-28 → 2029-01-09 (+653d) | 14.94d → 16.88d |  |  |
| 2539 | Putty primer coat | 2027-02-28 → 2028-02-10 (+347d) | 2027-03-06 → 2028-02-16 (+347d) | 5.94d → 6.75d |  |  |
| 2540 | Door shutter fixing | 2027-02-28 → 2028-02-10 (+347d) | 2027-03-08 → 2028-02-18 (+347d) | 7.94d → 9d |  |  |
| 2541 | Electrical wiring work | 2027-12-13 → 2028-04-02 (+111d) | 2027-12-25 → 2028-04-14 (+111d) | 11.94d → 13.5d |  |  |
| 2542 | Painting 1st coat | 2027-12-25 → 2028-04-17 (+114d) | 2028-01-06 → 2028-04-29 (+114d) | 11.94d → 13.5d |  |  |
| 2543 | False ceiling | 2028-01-06 → 2028-04-29 (+114d) | 2028-01-16 → 2028-05-09 (+114d) | 9.94d → 11.25d |  |  |
| 2544 | **29th Floor** | 2026-12-19 → 2027-03-24 (+95d) | 2028-01-28 → 2029-01-24 (+362d) | 404.56d → 705.62d |  | constraint start no earlier than 2026-12-19 → start no earlier than 2027-03-24 |
| 2545 | Block Work | 2026-10-18 → 2027-03-24 (+157d) | 2026-10-25 → 2027-03-31 (+157d) | 7.94d → 9d | 2086, 2529 → 2087, 2529 |  |
| 2546 | Door Frame Fixing | 2026-12-27 → 2027-04-01 (+95d) | 2027-01-05 → 2027-04-09 (+94d) | 8.94d → 10.12d | 2530, 2561 → 2530, 2545 |  |
| 2547 | Internal Plumbing Works | 2026-12-27 → 2027-04-01 (+95d) | 2027-01-06 → 2027-04-10 (+94d) | 9.94d → 11.25d | 2531, 2561 → 2531, 2545 |  |
| 2548 | Waterproofing | 2027-03-01 → 2027-04-23 (+53d) | 2027-03-13 → 2027-05-04 (+52d) | 11.94d → 13.5d | 2532, 2579 → 2532, 2547 |  |
| 2549 | Internal Plaster | 2026-12-24 → 2027-05-05 (+132d) | 2027-01-02 → 2027-05-13 (+131d) | 8.94d → 10.12d | 2533, 2514, 2515, 2484 → 2533, 2546, 2547, 2548 |  |
| 2550 | IPS flooring work | 2027-01-27 → 2027-05-14 (+107d) | 2027-02-05 → 2027-05-22 (+106d) | 8.94d → 10.12d | 2534, 2546, 2516, 2581 → 2534, 2546, 2548, 2549 |  |
| 2551 | Toilet dado work | 2027-01-27 → 2027-10-03 (+249d) | 2027-02-04 → 2027-10-11 (+249d) | 7.94d → 9d | 2535, 2516, 2581 → 2535, 2548, 2549 |  |
| 2552 | Toilet flooring work | 2027-02-04 → 2027-10-11 (+249d) | 2027-02-11 → 2027-10-18 (+249d) | 6.94d → 7.88d |  |  |
| 2553 | Living dinning flooring | 2027-02-28 → 2028-02-10 (+347d) | 2027-03-15 → 2028-02-25 (+347d) | 14.94d → 16.88d |  |  |
| 2554 | Aluminium door-window fixing | 2027-03-28 → 2029-01-09 (+653d) | 2027-04-12 → 2029-01-24 (+653d) | 14.94d → 16.88d |  |  |
| 2555 | Putty primer coat | 2027-03-15 → 2028-02-25 (+347d) | 2027-03-21 → 2028-03-02 (+347d) | 5.94d → 6.75d |  |  |
| 2556 | Door shutter fixing | 2027-03-15 → 2028-02-25 (+347d) | 2027-03-23 → 2028-03-04 (+347d) | 7.94d → 9d |  |  |
| 2557 | Electrical wiring work | 2027-12-25 → 2028-04-14 (+111d) | 2028-01-06 → 2028-04-26 (+111d) | 11.94d → 13.5d |  |  |
| 2558 | Painting 1st coat | 2028-01-06 → 2028-04-29 (+114d) | 2028-01-18 → 2028-05-11 (+114d) | 11.94d → 13.5d |  |  |
| 2559 | False ceiling | 2028-01-18 → 2028-05-11 (+114d) | 2028-01-28 → 2028-05-21 (+114d) | 9.94d → 11.25d |  |  |
| 2560 | **30th Floor** | 2027-01-30 → 2027-04-04 (+64d) | 2028-02-15 → 2029-02-08 (+359d) | 381d → 710.12d |  | constraint start no earlier than 2027-01-30 → start no earlier than 2027-04-04 |
| 2561 | Block Work | 2026-12-19 → 2027-04-04 (+106d) | 2026-12-27 → 2027-04-11 (+105d) | 7.94d → 9d | 2702, 2545 → 2088, 2545 |  |
| 2562 | Door Frame Fixing | 2027-02-07 → 2027-04-12 (+64d) | 2027-02-16 → 2027-04-20 (+63d) | 8.94d → 10.12d | 2546, 2577 → 2546, 2561 |  |
| 2563 | Internal Plumbing Works | 2027-02-07 → 2027-04-12 (+64d) | 2027-02-17 → 2027-04-21 (+63d) | 9.94d → 11.25d | 2547, 2577 → 2547, 2561 |  |
| 2564 | Waterproofing | 2027-03-13 → 2027-05-05 (+53d) | 2027-03-25 → 2027-05-16 (+52d) | 11.94d → 13.5d | 2548, 2595 → 2548, 2563 |  |
| 2565 | Internal Plaster | 2027-01-05 → 2027-05-17 (+132d) | 2027-01-14 → 2027-05-25 (+131d) | 8.94d → 10.12d | 2549, 2530, 2531, 2500 → 2549, 2562, 2563, 2564 |  |
| 2566 | IPS flooring work | 2027-03-16 → 2027-05-26 (+71d) | 2027-03-25 → 2027-06-03 (+70d) | 8.94d → 10.12d | 2550, 2562, 2532, 2597 → 2550, 2562, 2564, 2565 |  |
| 2567 | Toilet dado work | 2027-03-16 → 2027-10-11 (+209d) | 2027-03-24 → 2027-10-19 (+209d) | 7.94d → 9d | 2551, 2532, 2597 → 2551, 2564, 2565 |  |
| 2568 | Toilet flooring work | 2027-03-24 → 2027-10-19 (+209d) | 2027-03-31 → 2027-10-26 (+209d) | 6.94d → 7.88d |  |  |
| 2569 | Living dinning flooring | 2027-03-31 → 2028-02-25 (+331d) | 2027-04-20 → 2028-03-11 (+326d) | 20d → 16.88d |  |  |
| 2570 | Aluminium door-window fixing | 2027-04-20 → 2029-01-24 (+645d) | 2027-05-04 → 2029-02-08 (+646d) | 14.94d → 16.88d |  |  |
| 2571 | Putty primer coat | 2027-04-20 → 2028-03-11 (+326d) | 2027-04-25 → 2028-03-17 (+327d) | 5.94d → 6.75d |  |  |
| 2572 | Door shutter fixing | 2027-04-20 → 2028-03-11 (+326d) | 2027-04-27 → 2028-03-19 (+327d) | 7.94d → 9d |  |  |
| 2573 | Electrical wiring work | 2028-01-06 → 2028-04-26 (+111d) | 2028-01-21 → 2028-05-11 (+111d) | 14.94d → 16.88d |  |  |
| 2574 | Painting 1st coat | 2028-01-21 → 2028-05-11 (+111d) | 2028-02-05 → 2028-05-26 (+111d) | 14.94d → 16.88d |  |  |
| 2575 | False ceiling | 2028-02-05 → 2028-05-26 (+111d) | 2028-02-15 → 2028-06-05 (+111d) | 9.94d → 11.25d |  |  |
| 2576 | **31st Floor** | 2027-02-07 → 2027-04-15 (+67d) | 2028-03-01 → 2029-02-20 (+356d) | 388d → 711.25d |  | constraint start no earlier than 2027-02-07 → start no earlier than 2027-04-15 |
| 2577 | Block Work | 2027-01-30 → 2027-04-15 (+75d) | 2027-02-07 → 2027-04-22 (+74d) | 7.94d → 9d | 3005, 2561 → 2089, 2561 |  |
| 2578 | Door Frame Fixing | 2027-02-16 → 2027-04-23 (+66d) | 2027-02-25 → 2027-05-01 (+65d) | 8.94d → 10.12d | 2562, 2593 → 2562, 2577 |  |
| 2579 | Internal Plumbing Works | 2027-02-17 → 2027-04-23 (+65d) | 2027-02-27 → 2027-05-02 (+64d) | 9.94d → 11.25d | 2563, 2593 → 2563, 2577 |  |
| 2580 | Waterproofing | 2027-03-25 → 2027-05-17 (+53d) | 2027-04-05 → 2027-05-26 (+51d) | 11.94d → 11.25d | 2564, 2611 → 2564, 2579 |  |
| 2581 | Internal Plaster | 2027-01-18 → 2027-05-27 (+129d) | 2027-01-27 → 2027-06-04 (+128d) | 8.94d → 10.12d | 2565, 2546, 2547, 2516 → 2565, 2578, 2579, 2580 |  |
| 2582 | IPS flooring work | 2027-03-31 → 2027-06-05 (+66d) | 2027-04-09 → 2027-06-13 (+65d) | 8.94d → 10.12d | 2566, 2578, 2548, 2613 → 2566, 2578, 2580, 2581 |  |
| 2583 | Toilet dado work | 2027-03-31 → 2027-10-19 (+202d) | 2027-04-08 → 2027-10-27 (+202d) | 7.94d → 9d | 2567, 2548, 2613 → 2567, 2580, 2581 |  |
| 2584 | Toilet flooring work | 2027-04-08 → 2027-10-27 (+202d) | 2027-04-15 → 2027-12-18 (+247d) | 6.94d → 7.88d |  |  |
| 2585 | Living dinning flooring | 2027-04-20 → 2028-03-11 (+326d) | 2027-05-10 → 2028-03-26 (+321d) | 20d → 16.88d |  |  |
| 2586 | Aluminium door-window fixing | 2027-05-10 → 2029-02-08 (+640d) | 2027-05-21 → 2029-02-20 (+641d) | 11.94d → 13.5d |  |  |
| 2587 | Putty primer coat | 2027-05-10 → 2028-03-26 (+321d) | 2027-05-15 → 2028-04-01 (+322d) | 5.94d → 6.75d |  |  |
| 2588 | Door shutter fixing | 2027-05-10 → 2028-03-26 (+321d) | 2027-05-17 → 2028-04-03 (+322d) | 7.94d → 9d |  |  |
| 2589 | Electrical wiring work | 2028-01-21 → 2028-05-11 (+111d) | 2028-02-05 → 2028-05-26 (+111d) | 14.94d → 16.88d |  |  |
| 2590 | Painting 1st coat | 2028-02-05 → 2028-05-26 (+111d) | 2028-02-20 → 2028-06-10 (+111d) | 14.94d → 16.88d |  |  |
| 2591 | False ceiling | 2028-02-20 → 2028-06-10 (+111d) | 2028-03-01 → 2028-06-20 (+111d) | 9.94d → 11.25d |  |  |
| 2592 | **32nd Floor** | 2027-02-15 → 2027-04-23 (+67d) | 2028-03-16 → 2029-03-04 (+353d) | 395d → 715.75d |  | constraint start no earlier than 2027-02-15 → start no earlier than 2027-04-23 |
| 2593 | Block Work | 2027-02-07 → 2027-04-23 (+75d) | 2027-02-15 → 2027-04-30 (+74d) | 7.94d → 9d | 2089, 2577 → 2090, 2577 |  |
| 2594 | Door Frame Fixing | 2027-02-25 → 2027-05-02 (+66d) | 2027-03-06 → 2027-05-10 (+65d) | 8.94d → 10.12d | 2578, 2609 → 2578, 2593 |  |
| 2595 | Internal Plumbing Works | 2027-02-27 → 2027-05-03 (+65d) | 2027-03-09 → 2027-05-12 (+64d) | 9.94d → 11.25d | 2579, 2609 → 2579, 2593 |  |
| 2596 | Waterproofing | 2027-04-06 → 2027-05-13 (+37d) | 2027-04-17 → 2027-05-24 (+37d) | 11.94d → 13.5d | 2580, 2627 → 2595 |  |
| 2597 | Internal Plaster | 2027-03-01 → 2027-06-05 (+96d) | 2027-03-16 → 2027-06-13 (+89d) | 15d → 10.12d | 2581, 2562, 2563, 2532 → 2581, 2594, 2595, 2596 |  |
| 2598 | IPS flooring work | 2027-04-09 → 2027-06-14 (+66d) | 2027-04-18 → 2027-06-22 (+65d) | 8.94d → 10.12d | 2582, 2594, 2564, 2629 → 2582, 2594, 2596, 2597 |  |
| 2599 | Toilet dado work | 2027-04-08 → 2027-10-27 (+202d) | 2027-04-16 → 2027-12-19 (+247d) | 7.94d → 9d | 2583, 2564, 2629 → 2583, 2596, 2597 |  |
| 2600 | Toilet flooring work | 2027-04-16 → 2027-12-19 (+247d) | 2027-04-23 → 2027-12-26 (+247d) | 6.94d → 7.88d |  |  |
| 2601 | Living dinning flooring | 2027-05-10 → 2028-03-26 (+321d) | 2027-05-22 → 2028-04-10 (+324d) | 12d → 16.88d |  |  |
| 2602 | Aluminium door-window fixing | 2027-05-22 → 2029-02-20 (+640d) | 2027-06-02 → 2029-03-04 (+641d) | 11.94d → 13.5d |  |  |
| 2603 | Putty primer coat | 2027-05-22 → 2028-04-10 (+324d) | 2027-05-27 → 2028-04-16 (+325d) | 5.94d → 6.75d |  |  |
| 2604 | Door shutter fixing | 2027-05-22 → 2028-04-10 (+324d) | 2027-05-29 → 2028-04-18 (+325d) | 7.94d → 9d |  |  |

| ID | Task | Start | Finish | Duration | Predecessors | Other |
| --- | --- | --- | --- | --- | --- | --- |
| 2605 | Electrical wiring work | 2028-02-05 → 2028-05-26 (+111d) | 2028-02-20 → 2028-06-10 (+111d) | 14.94d → 16.88d |  |  |
| 2606 | Painting 1st coat | 2028-02-20 → 2028-06-10 (+111d) | 2028-03-06 → 2028-06-25 (+111d) | 14.94d → 16.88d |  |  |
| 2607 | False ceiling | 2028-03-06 → 2028-06-25 (+111d) | 2028-03-16 → 2028-07-05 (+111d) | 9.94d → 11.25d |  |  |
| 2608 | **33rd Floor** | 2027-02-23 → 2027-05-01 (+67d) | 2028-03-28 → 2029-03-19 (+356d) | 399d → 723.62d |  | constraint start no earlier than 2027-02-23 → start no earlier than 2027-05-01 |
| 2609 | Block Work | 2027-02-15 → 2027-05-01 (+75d) | 2027-02-23 → 2027-05-08 (+74d) | 7.94d → 9d | 2090, 2593 → 2091, 2593 |  |
| 2610 | Door Frame Fixing | 2027-03-06 → 2027-05-11 (+66d) | 2027-03-15 → 2027-05-19 (+65d) | 8.94d → 10.12d | 2594, 2625 → 2594, 2609 |  |
| 2611 | Internal Plumbing Works | 2027-03-09 → 2027-05-13 (+65d) | 2027-03-19 → 2027-05-22 (+64d) | 9.94d → 11.25d | 2595, 2625 → 2595, 2609 |  |
| 2612 | Waterproofing | 2027-04-17 → 2027-05-25 (+38d) | 2027-04-29 → 2027-06-03 (+35d) | 11.94d → 11.25d | 2596, 2643 → 2596, 2611 |  |
| 2613 | Internal Plaster | 2027-03-16 → 2027-06-14 (+90d) | 2027-03-31 → 2027-06-21 (+82d) | 15d → 9d | 2597, 2578, 2579, 2548 → 2597, 2610, 2611, 2612 |  |
| 2614 | IPS flooring work | 2027-04-28 → 2027-06-23 (+56d) | 2027-05-07 → 2027-07-01 (+55d) | 8.94d → 10.12d | 2598, 2610, 2580, 2645 → 2598, 2610, 2612, 2613 |  |
| 2615 | Toilet dado work | 2027-04-28 → 2027-12-19 (+235d) | 2027-05-06 → 2027-12-27 (+235d) | 7.94d → 9d | 2599, 2580, 2645 → 2599, 2612, 2613 |  |
| 2616 | Toilet flooring work | 2027-05-06 → 2027-12-27 (+235d) | 2027-05-13 → 2028-01-03 (+235d) | 6.94d → 7.88d |  |  |
| 2617 | Living dinning flooring | 2027-05-22 → 2028-04-10 (+324d) | 2027-06-05 → 2028-04-22 (+322d) | 14.94d → 13.5d |  |  |
| 2618 | Aluminium door-window fixing | 2027-06-06 → 2029-03-04 (+637d) | 2027-06-20 → 2029-03-19 (+638d) | 14.94d → 16.88d |  |  |
| 2619 | Putty primer coat | 2027-06-06 → 2028-04-22 (+321d) | 2027-06-11 → 2028-04-28 (+322d) | 5.94d → 6.75d |  |  |
| 2620 | Door shutter fixing | 2027-06-06 → 2028-04-22 (+321d) | 2027-06-13 → 2028-04-30 (+322d) | 7.94d → 9d |  |  |
| 2621 | Electrical wiring work | 2028-02-20 → 2028-06-10 (+111d) | 2028-03-03 → 2028-06-22 (+111d) | 11.94d → 13.5d |  |  |
| 2622 | Painting 1st coat | 2028-03-06 → 2028-06-25 (+111d) | 2028-03-18 → 2028-07-07 (+111d) | 11.94d → 13.5d |  |  |
| 2623 | False ceiling | 2028-03-18 → 2028-07-07 (+111d) | 2028-03-28 → 2028-07-17 (+111d) | 9.94d → 11.25d |  |  |
| 2624 | **34th Floor** | 2027-03-03 → 2027-05-09 (+67d) | 2028-04-09 → 2029-04-03 (+359d) | 403d → 731.5d |  | constraint start no earlier than 2027-03-03 → start no earlier than 2027-05-09 |
| 2625 | Block Work | 2027-02-23 → 2027-05-09 (+75d) | 2027-03-03 → 2027-05-16 (+74d) | 7.94d → 9d | 2091, 2609 → 2092, 2609 |  |
| 2626 | Door Frame Fixing | 2027-03-15 → 2027-05-20 (+66d) | 2027-03-23 → 2027-05-28 (+66d) | 8.94d → 10.12d | 2610, 2641 → 2610, 2625 |  |
| 2627 | Internal Plumbing Works | 2027-03-19 → 2027-05-23 (+65d) | 2027-03-28 → 2027-06-01 (+65d) | 9.94d → 11.25d | 2611, 2641 → 2611, 2625 |  |
| 2628 | Waterproofing | 2026-01-01 → 2027-06-04 (+519d) | 2026-01-11 → 2027-06-13 (+518d) | 10d → 11.25d | 3016 → 2612, 2627 |  |
| 2629 | Internal Plaster | 2027-03-31 → 2027-06-22 (+83d) | 2027-04-08 → 2027-06-29 (+82d) | 8d → 9d | 2613, 2594, 2595, 2564 → 2613, 2626, 2627, 2628 |  |
| 2630 | IPS flooring work | 2027-05-07 → 2027-07-02 (+56d) | 2027-05-16 → 2027-07-10 (+55d) | 8.94d → 10.12d | 2614, 2626, 2596, 2661 → 2614, 2626, 2628, 2629 |  |
| 2631 | Toilet dado work | 2027-05-07 → 2027-12-27 (+234d) | 2027-05-15 → 2028-01-04 (+234d) | 7.94d → 9d | 2615, 2596, 2661 → 2615, 2628, 2629 |  |
| 2632 | Toilet flooring work | 2027-05-15 → 2028-01-04 (+234d) | 2027-05-21 → 2028-01-11 (+235d) | 6.94d → 7.88d |  |  |
| 2633 | Living dinning flooring | 2027-06-06 → 2028-04-22 (+321d) | 2027-06-14 → 2028-05-04 (+325d) | 9d → 13.5d |  |  |
| 2634 | Aluminium door-window fixing | 2027-06-20 → 2029-03-19 (+638d) | 2027-07-05 → 2029-04-03 (+638d) | 14.94d → 16.88d |  |  |
| 2635 | Putty primer coat | 2027-06-15 → 2028-05-04 (+324d) | 2027-06-20 → 2028-05-10 (+325d) | 5.94d → 6.75d |  |  |
| 2636 | Door shutter fixing | 2027-06-15 → 2028-05-04 (+324d) | 2027-06-22 → 2028-05-12 (+325d) | 7.94d → 9d |  |  |
| 2637 | Electrical wiring work | 2028-03-03 → 2028-06-22 (+111d) | 2028-03-15 → 2028-07-04 (+111d) | 11.94d → 13.5d |  |  |
| 2638 | Painting 1st coat | 2028-03-18 → 2028-07-07 (+111d) | 2028-03-30 → 2028-07-19 (+111d) | 11.94d → 13.5d |  |  |
| 2639 | False ceiling | 2028-03-30 → 2028-07-19 (+111d) | 2028-04-09 → 2028-07-29 (+111d) | 9.94d → 11.25d |  |  |
| 2640 | **35th Floor** | 2027-03-11 → 2027-05-17 (+67d) | 2028-04-21 → 2029-04-18 (+362d) | 407d → 739.38d |  | constraint start no earlier than 2027-03-11 → start no earlier than 2027-05-17 |
| 2641 | Block Work | 2027-03-03 → 2027-05-17 (+75d) | 2027-03-11 → 2027-05-24 (+74d) | 7.94d → 9d | 2092, 2625 → 2093, 2625 |  |
| 2642 | Door Frame Fixing | 2027-03-24 → 2027-05-29 (+66d) | 2027-04-01 → 2027-06-06 (+66d) | 8.94d → 10.12d | 2626, 2660 → 2626, 2641 |  |
| 2643 | Internal Plumbing Works | 2027-03-29 → 2027-06-02 (+65d) | 2027-04-07 → 2027-06-10 (+64d) | 9.94d → 10.12d | 2627, 2660 → 2627, 2641 |  |
| 2644 | Waterproofing | 2026-01-11 → 2027-06-14 (+519d) | 2026-01-21 → 2027-06-23 (+518d) | 10d → 11.25d | 2628, 3032 → 2628, 2643 |  |
| 2645 | Internal Plaster | 2027-04-08 → 2027-07-27 (+110d) | 2027-04-28 → 2027-08-03 (+97d) | 20d → 9d | 2629, 2610, 2611, 2580 → 2050FF+135d, 2642FS+0.25d, 2643FS+0.25d, 2644FS+0.25d | constraint none → start no earlier than 2027-06-24 |
| 2646 | IPS flooring work | 2027-05-18 → 2027-08-04 (+78d) | 2027-05-27 → 2027-08-12 (+77d) | 8.94d → 10.12d | 2630, 2642, 2612, 3018 → 2630, 2642, 2644, 2645 |  |
| 2647 | Toilet dado work | 2027-05-18 → 2028-01-04 (+231d) | 2027-05-26 → 2028-01-12 (+231d) | 7.94d → 9d | 2631, 2612, 3018 → 2631, 2644, 2645 |  |
| 2648 | Toilet flooring work | 2027-05-26 → 2028-01-12 (+231d) | 2027-06-01 → 2028-01-19 (+232d) | 6.94d → 7.88d |  |  |
| 2649 | Living dinning flooring | 2027-06-15 → 2028-05-04 (+324d) | 2027-06-23 → 2028-05-19 (+331d) | 9d → 16.88d |  |  |
| 2650 | Aluminium door-window fixing | 2027-07-05 → 2029-04-03 (+638d) | 2027-07-20 → 2029-04-18 (+638d) | 14.94d → 16.88d |  |  |
| 2651 | Putty primer coat | 2027-06-24 → 2028-05-19 (+330d) | 2027-06-29 → 2028-05-25 (+331d) | 5.94d → 6.75d |  |  |
| 2652 | Door shutter fixing | 2027-06-24 → 2028-05-19 (+330d) | 2027-07-01 → 2028-05-27 (+331d) | 7.94d → 9d |  |  |
| 2653 | Electrical wiring work | 2028-03-15 → 2028-07-04 (+111d) | 2028-03-27 → 2028-07-16 (+111d) | 11.94d → 13.5d |  |  |
| 2654 | Painting 1st coat | 2028-03-30 → 2028-07-19 (+111d) | 2028-04-11 → 2028-07-31 (+111d) | 11.94d → 13.5d |  |  |
| 2655 | False ceiling | 2028-04-11 → 2028-07-31 (+111d) | 2028-04-21 → 2028-08-10 (+111d) | 9.94d → 11.25d |  |  |
| 2656 | **Terrace Finishing** | 2026-10-28 → 2027-04-06 (+160d) | 2027-03-02 → 2027-06-24 (+114d) | 79.88d → 90d |  | constraint start no earlier than 2026-10-28 → start no earlier than 2027-04-06 |
| 2657 | Terrace waterproofing | 2026-10-28 → 2027-04-06 (+160d) | 2027-01-21 → 2027-05-15 (+114d) | 39.94d → 45d | 2055 → 2050 |  |
| 2658 | Terrace finishing | 2027-02-26 → 2027-05-16 (+79d) | 2027-04-07 → 2027-06-24 (+78d) | 39.94d → 45d | 1740, 1741 → 2657 |  |
| 2659 | **Common Area Finishing** | 2026-01-13 → 2027-05-16 (+488d) | 2026-10-19 → 2028-04-19 (+548d) | 279.31d → 331.88d |  | constraint start no earlier than 2026-01-13 → start no earlier than 2027-05-16 |
| 2660 | Block Work | 2027-03-11 → 2027-05-16 (+66d) | 2027-03-18 → 2027-06-24 (+98d) | 7.94d → 45d | 2093, 2641 → 2055 |  |
| 2661 | Internal Plaster | 2027-04-28 → 2027-06-25 (+58d) | 2027-05-07 → 2027-10-22 (+168d) | 8.94d → 135d | 2645, 2626, 2627, 2596 → 2666SS+22.5d |  |
| 2662 | Staircase railing fixing | 2026-05-22 → 2027-10-08 (+504d) | 2026-10-19 → 2028-04-19 (+548d) | 149.94d → 168.75d | 2664SS+26.75d, 2663SS+26.75d → 2664SS+33.75d, 2663SS+33.75d |  |
| 2663 | Main staircase flooring | 2026-04-26 → 2027-09-08 (+500d) | 2026-09-23 → 2028-03-20 (+544d) | 149.94d → 168.75d | 2664SS+13.38d → 2664SS+16.88d |  |
| 2664 | Fire staircase flooring | 2026-04-12 → 2027-08-24 (+499d) | 2026-09-09 → 2028-03-05 (+543d) | 149.94d → 168.75d | 3034SS+13.38d, 2668SS+26.75d → 2661SS+16.88d, 2668SS+33.75d |  |
| 2665 | Fire door work | 2026-05-22 → 2027-10-08 (+504d) | 2026-07-21 → 2028-01-20 (+548d) | 59.94d → 67.5d | 2663SS+26.75d, 2664SS+26.75d → 2663SS+33.75d, 2664SS+33.75d |  |
| 2666 | Electrical wiring work | 2026-01-31 → 2027-06-05 (+490d) | 2026-05-31 → 2027-10-02 (+489d) | 119.94d → 135d | 3014SS+17.88d → 2660SS+22.5d |  |
| 2667 | Lobby flooring | 2026-02-03 → 2027-06-08 (+490d) | 2026-07-03 → 2027-12-20 (+535d) | 150d → 168.75d | 2666SS+3.38d → 2666SS+4.12d |  |
| 2668 | Ceiling & wall putty-primer | 2026-03-17 → 2027-07-25 (+495d) | 2026-07-04 → 2027-12-26 (+540d) | 109.94d → 123.75d | 3034SS+26.75d → 2661SS+33.75d |  |
| 2669 | Ceiling & wall painting | 2026-04-03 → 2027-08-14 (+498d) | 2026-07-12 → 2028-01-05 (+542d) | 99.94d → 112.5d | 2668SS+17.88d → 2668SS+22.5d |  |
| 2670 | Light fixture supply & installation | 2026-05-27 → 2027-10-13 (+504d) | 2026-07-11 → 2028-01-10 (+548d) | 44.94d → 50.62d | 2669SS+53.38d → 2669SS+67.5d |  |
| 2671 | **Balcony Glass Railing** | 2027-09-04 → 2027-12-30 (+117d) | 2027-11-01 → 2028-03-08 (+128d) | 58.12d → 78.75d |  | constraint start no earlier than 2027-09-04 → start no earlier than 2027-12-30 |
| 2672 | 1st Floor | 2027-09-04 → 2027-12-30 (+117d) | 2027-09-06 → 2027-12-31 (+116d) | 1.94d → 2.25d |  |  |
| 2673 | 2nd Floor | 2025-12-16 → 2028-01-01 (+746d) | 2025-12-23 → 2028-01-02 (+740d) | 7d → 2.25d | 2057, 1915 → 2672 |  |
| 2674 | 3rd Floor | 2027-09-08 → 2028-01-03 (+117d) | 2027-09-09 → 2028-01-04 (+117d) | 1.94d → 2.25d | 2975 → 2673 |  |

| ID | Task | Start | Finish | Duration | Complete | Predecessors | Other |
| --- | --- | --- | --- | --- | --- | --- | --- |
| 2675 | 4th Floor | 2027-09-09 → 2028-01-05 (+118d) | 2027-09-11 → 2028-01-06 (+117d) | 1.94d → 2.25d |  |  |  |
| 2676 | 5th Floor | 2027-09-11 → 2028-01-07 (+118d) | 2027-09-13 → 2028-01-08 (+117d) | 1.94d → 2.25d |  |  |  |
| 2677 | 6th Floor | 2027-09-13 → 2028-01-09 (+118d) | 2027-09-15 → 2028-01-10 (+117d) | 1.94d → 2.25d |  |  |  |
| 2678 | 7th Floor | 2027-09-15 → 2028-01-11 (+118d) | 2027-09-17 → 2028-01-12 (+117d) | 1.94d → 2.25d |  |  |  |
| 2679 | 8th Floor | 2027-09-17 → 2028-01-13 (+118d) | 2027-09-19 → 2028-01-14 (+117d) | 1.94d → 2.25d |  |  |  |
| 2680 | 9th Floor | 2027-09-19 → 2028-01-15 (+118d) | 2027-09-21 → 2028-01-16 (+117d) | 1.94d → 2.25d |  |  |  |
| 2681 | 10th Floor | 2027-09-21 → 2028-01-17 (+118d) | 2027-09-23 → 2028-01-18 (+117d) | 1.94d → 2.25d |  |  |  |
| 2682 | 11th Floor | 2027-09-23 → 2028-01-19 (+118d) | 2027-09-25 → 2028-01-20 (+117d) | 1.94d → 2.25d |  |  |  |
| 2683 | 12th Floor | 2027-09-25 → 2028-01-21 (+118d) | 2027-09-27 → 2028-01-22 (+117d) | 1.94d → 2.25d |  |  |  |
| 2684 | 13th Floor | 2027-09-27 → 2028-01-23 (+118d) | 2027-09-29 → 2028-01-24 (+117d) | 1.94d → 2.25d |  |  |  |
| 2685 | 14th Floor | 2027-09-29 → 2028-01-25 (+118d) | 2027-10-01 → 2028-01-26 (+117d) | 1.94d → 2.25d |  |  |  |
| 2686 | 15th Floor | 2027-10-01 → 2028-01-27 (+118d) | 2027-10-03 → 2028-01-28 (+117d) | 1.94d → 2.25d |  |  |  |
| 2687 | 16th Floor | 2027-10-03 → 2028-01-29 (+118d) | 2027-10-05 → 2028-01-30 (+117d) | 1.94d → 2.25d |  |  |  |
| 2688 | 17th Floor | 2027-10-05 → 2028-01-31 (+118d) | 2027-10-07 → 2028-02-01 (+117d) | 1.94d → 2.25d |  |  |  |
| 2689 | 18th Floor | 2027-10-07 → 2028-02-02 (+118d) | 2027-10-08 → 2028-02-03 (+118d) | 1.94d → 2.25d |  |  |  |
| 2690 | 19th Floor | 2027-10-09 → 2028-02-04 (+118d) | 2027-10-10 → 2028-02-05 (+118d) | 1.94d → 2.25d |  |  |  |
| 2691 | 20th Floor | 2027-10-10 → 2028-02-06 (+119d) | 2027-10-12 → 2028-02-07 (+118d) | 1.94d → 2.25d |  |  |  |
| 2692 | 21st Floor | 2027-10-12 → 2028-02-08 (+119d) | 2027-10-14 → 2028-02-09 (+118d) | 1.94d → 2.25d |  |  |  |
| 2693 | 22nd Floor | 2027-10-14 → 2028-02-10 (+119d) | 2027-10-16 → 2028-02-11 (+118d) | 1.94d → 2.25d |  |  |  |
| 2694 | 23rd Floor | 2027-10-16 → 2028-02-12 (+119d) | 2027-10-18 → 2028-02-13 (+118d) | 1.94d → 2.25d |  |  |  |
| 2695 | 24th Floor | 2027-10-18 → 2028-02-14 (+119d) | 2027-10-20 → 2028-02-15 (+118d) | 1.94d → 2.25d |  |  |  |
| 2696 | 25th Floor | 2027-10-20 → 2028-02-16 (+119d) | 2027-10-22 → 2028-02-17 (+118d) | 1.94d → 2.25d |  |  |  |
| 2697 | 26th Floor | 2027-10-22 → 2028-02-18 (+119d) | 2027-10-24 → 2028-02-19 (+118d) | 1.94d → 2.25d |  |  |  |
| 2698 | 27th Floor | 2027-10-24 → 2028-02-20 (+119d) | 2027-10-26 → 2028-02-21 (+118d) | 1.94d → 2.25d |  |  |  |
| 2699 | 28th Floor | 2027-10-26 → 2028-02-22 (+119d) | 2027-10-28 → 2028-02-23 (+118d) | 1.94d → 2.25d |  |  |  |
| 2700 | 29th Floor | 2026-09-27 → 2028-02-24 (+515d) | 2026-10-04 → 2028-02-25 (+509d) | 7d → 2.25d |  | 2084, 2045 → 2699 |  |
| 2701 | 30th Floor | 2027-10-30 → 2028-02-26 (+119d) | 2027-11-01 → 2028-02-27 (+118d) | 1.94d → 2.25d |  | 3002 → 2700 |  |
| 2702 | 31st Floor | 2026-10-28 → 2028-02-28 (+488d) | 2026-12-19 → 2028-02-29 (+437d) | 7d → 2.25d |  | 2086, 2055 → 2701 |  |
| 2703 | 32nd Floor | 2027-10-23 → 2028-03-01 (+130d) | 2027-10-25 → 2028-03-02 (+129d) | 1.94d → 2.25d |  | 3921 → 2702 |  |
| 2704 | 33rd Floor | 2027-11-01 → 2028-03-03 (+123d) | 2027-11-01 → 2028-03-04 (+124d) | 0d → 2.25d |  | 1786 → 2703 |  |
| 2705 | 34th Floor | 2027-11-01 → 2028-03-05 (+125d) | 2027-11-01 → 2028-03-06 (+126d) | 0d → 2.25d |  |  |  |
| 2706 | 35th Floor | 2027-11-01 → 2028-03-07 (+127d) | 2027-11-01 → 2028-03-08 (+128d) | 0d → 2.25d |  |  |  |
| 2707 | **MEP work** | 2026-04-12 → 2027-05-16 (+399d) | 2029-01-16 → 2028-08-08 (-161d) | 964.69d → 455.88d |  |  | constraint start no earlier than 2026-04-12 → start no earlier than 2027-05-16 |
| 2708 | **Electrical work** | 2027-01-23 → 2027-05-16 (+113d) | 2027-09-13 → 2028-02-24 (+164d) | 233.25d → 270d |  |  | constraint start no earlier than 2027-01-23 → start no earlier than 2027-05-16 |
| 2709 | Cable Tray | 2027-01-23 → 2027-05-16 (+113d) | 2027-04-23 → 2027-08-13 (+112d) | 89.94d → 101.25d |  | 2768 → 2055 |  |
| 2710 | Cable, main & sub main | 2027-03-04 → 2027-06-30 (+118d) | 2027-05-23 → 2027-09-17 (+117d) | 79.94d → 90d |  | 2709SS+40d → 2709SS+50.62d |  |
| 2711 | LT panel & DB | 2027-04-23 → 2027-08-14 (+113d) | 2027-08-21 → 2028-01-25 (+157d) | 119.94d → 135d |  |  |  |
| 2712 | Rising main | 2027-06-15 → 2027-10-13 (+120d) | 2027-09-13 → 2028-02-24 (+164d) | 89.94d → 101.25d |  | 2709FS+53.38d → 2709FS+67.5d |  |
| 2713 | EARTHING Works | 2027-05-06 → 2027-08-29 (+115d) | 2027-07-05 → 2027-10-27 (+114d) | 59.94d → 67.5d |  | 2709FS+13.38d → 2709FS+16.88d |  |
| 2714 | Advance lightening protection | 2027-03-02 → 2027-06-25 (+115d) | 2027-05-01 → 2027-08-23 (+114d) | 59.94d → 67.5d |  | 3575 → 2658 |  |
| 2715 | Inverter | 2027-07-05 → 2027-10-28 (+115d) | 2027-08-09 → 2028-01-15 (+159d) | 34.94d → 39.38d |  |  |  |
| 2716 | Energy meter | 2027-05-23 → 2027-09-18 (+118d) | 2027-07-22 → 2027-12-31 (+162d) | 59.94d → 67.5d |  |  |  |
| 2717 | Exhast fan | 2027-05-07 → 2027-10-18 (+164d) | 2027-07-06 → 2028-01-30 (+208d) | 60d → 67.5d |  | 1733FF+4.5d → 2716FF+33.75d |  |
| 2718 | FTTH | 2027-06-26 → 2027-10-18 (+114d) | 2027-08-25 → 2028-01-30 (+158d) | 59.94d → 67.5d |  | 2713FS-9d → 2713FS-11.25d |  |
| 2719 | Security System - FA & PA | 2027-07-01 → 2027-10-23 (+114d) | 2027-08-25 → 2028-01-30 (+158d) | 54.94d → 61.88d |  |  |  |
| 2720 | Solar water heater | 2027-03-02 → 2027-06-25 (+115d) | 2027-05-01 → 2027-08-23 (+114d) | 59.94d → 67.5d |  | 3575 → 2658 |  |
| 2721 | **Plumbing wrok** | 2025-11-30 → 2027-05-16 (+532d) | 2027-09-15 → 2028-06-02 (+261d) | 600.38d → 380.5d |  |  | constraint start no earlier than 2025-11-30 → start no earlier than 2027-05-16 |
| 2722 | Terrace looping | 2027-01-21 → 2027-05-16 (+115d) | 2027-03-07 → 2027-06-29 (+114d) | 44.94d → 50.62d |  |  |  |
| 2723 | Shaft Plumbing | 2027-03-07 → 2027-06-30 (+115d) | 2027-07-05 → 2027-10-27 (+114d) | 119.94d → 135d |  |  |  |
| 2724 | CP sanitary fixture supply | 2027-07-25 → 2028-03-19 (+238d) | 2027-10-08 → 2028-06-02 (+238d) | 74.94d → 84.38d |  | 3018, 2648FS+53.38d → 2645, 2648FS+67.5d |  |
| 2725 | Cold & flushing water supply | 2027-04-19 → 2027-09-23 (+157d) | 2027-07-18 → 2028-02-04 (+201d) | 89.94d → 101.25d |  | 3034SS+380d → 2661SS+101.25d |  |
| 2726 | Misc work | 2028-01-24 → 2028-01-26 (+2d) | 2028-02-23 → 2028-02-24 (+1d) | 29.94d → 33.75d |  | 2725FS+190d → 2725FS-11.25d |  |
| 2727 | **Fire fighting work** | 2026-04-12 → 2027-05-16 (+399d) | 2027-08-08 → 2028-01-15 (+160d) | 437.94d → 225d |  |  | constraint start no earlier than 2026-04-12 → start no earlier than 2027-05-16 |
| 2728 | Fire hydrant work | 2026-04-12 → 2027-07-05 (+449d) | 2026-07-11 → 2027-09-02 (+418d) | 89.94d → 67.5d |  | 3034SS+53.38d → 2661SS+11.25d |  |
| 2729 | Sprinkler & piping work | 2027-05-12 → 2027-10-03 (+144d) | 2027-08-08 → 2028-01-15 (+160d) | 88d → 67.5d |  | 2728FS+260d → 2728FS+33.75d |  |
| 2730 | Shaft Downtake works | 2027-01-21 → 2027-05-16 (+115d) | 2027-04-21 → 2027-08-13 (+114d) | 89.94d → 101.25d |  |  |  |
| 2731 | Connection to pump room | 2027-04-21 → 2027-08-14 (+115d) | 2027-05-21 → 2027-09-12 (+114d) | 29.94d → 33.75d |  |  |  |
| 2732 | **Lift work** | 2027-01-23 → 2027-05-16 (+113d) | 2027-11-24 → 2027-12-16 (+22d) | 304.88d → 191.25d |  |  | constraint start no earlier than 2027-01-23 → start no earlier than 2027-05-16 |
| 2733 | Lift Shaft Handover | 2027-01-23 → 2027-05-16 (+113d) | 2027-03-04 → 2027-06-24 (+112d) | 39.94d → 45d |  | 2768 → 2055 |  |
| 2734 | Lift installation work | 2027-03-04 → 2027-06-25 (+113d) | 2027-08-31 → 2027-08-08 (-23d) | 180d → 50.62d |  |  |  |
| 2735 | Lift testing and commissioning | 2027-08-31 → 2027-08-09 (-22d) | 2027-11-24 → 2027-12-16 (+22d) | 84.94d → 95.62d |  |  |  |
| 2736 | **AC work** | 2028-10-11 → 2028-04-30 (-164d) | 2029-01-16 → 2028-08-08 (-161d) | 96.94d → 112.5d |  |  | constraint start no earlier than 2028-10-11 → start no earlier than 2028-04-30 |
| 2737 | Split AC | 2028-10-11 → 2028-04-30 (-164d) | 2029-01-16 → 2028-08-08 (-161d) | 96.94d → 112.5d |  | 2753FS+119d → 2753FS-33.75d |  |
| 2738 | **Tower Completion** | 2027-03-08 → 2027-05-19 (+72d) | 2027-11-03 → 2028-03-28 (+146d) | 239.88d → 303.75d |  |  | constraint start no earlier than 2027-03-08 → start no earlier than 2027-05-19 |
| 2739 | SURFACE PREPARATION | 2027-03-08 → 2027-05-19 (+72d) | 2027-05-27 → 2027-08-06 (+71d) | 79.94d → 90d |  | 2093FS+1.88d → 2093FS+2.25d |  |
| 2740 | External Painting | 2027-05-27 → 2027-08-07 (+72d) | 2027-09-04 → 2027-12-29 (+116d) | 99.94d → 112.5d |  |  |  |
| 2741 | Final coat of painting | 2027-12-05 → 2027-12-30 (+25d) | 2028-02-14 → 2028-03-28 (+43d) | 71d → 101.25d |  | 1823 → 2740 |  |
| 2742 | Misc. work | 2027-09-04 → 2027-12-30 (+117d) | 2027-11-03 → 2028-02-27 (+116d) | 59.94d → 67.5d |  |  |  |
| 2745 | **Post OC activities** | 2028-03-27 → 2023-07-26 (-1706d) | 2029-07-05 → 2028-11-13 (-234d) | 465.31d → 2032d | 0% → 50% |  | constraint start no earlier than 2028-03-27 → start no earlier than 2023-07-26 |
| 2747 | Waterproofing | 2026-01-21 → 2023-07-26 (-910d) | 2026-01-31 → 2028-08-31 (+943d) | 10d → 1046.25d | 0% → 90% | 2644, 3048 → 2753FS-1881.25d, 2724FS-1847.5d |  |

| ID | Task | Start | Finish | Duration | Complete | Predecessors | Other |
| --- | --- | --- | --- | --- | --- | --- | --- |
| 2748 | Wooden Flooring | 2028-05-18 → 2028-04-30 (-18d) | 2028-11-11 → 2028-10-27 (-15d) | 176.94d → 202.5d |  | 2753FS-26.75d → 2753FS-33.75d |  |
| 2749 | Electrical Fixtures And Fittings | 2028-03-16 → 2028-07-16 (+122d) | 2028-07-14 → 2028-11-13 (+122d) | 119.94d → 135d |  | 3570 → 2653 |  |
| 2750 | Modular Kitchen | 2029-01-09 → 2028-04-30 (-254d) | 2029-07-05 → 2028-10-27 (-251d) | 176.94d → 202.5d |  | CP & SANITARYWAREFS+119d → 2746SS |  |
| 2752 | OC Application/Readiness | 2028-04-21 → 2028-03-29 (-23d) | 2028-04-21 → 2028-03-30 (-22d) | 0d → 1.12d |  | 2768, 2662FS+7.12d, 1867, 1868, 2053, 2665, 2655, 2706, 2711, 2712, 2714, 2715, 2716, 3634, 2719, 2720, 2723, 2726, 2729, 2731, 2735 → 2706FS+0.25d, 2711FS+0.25d, 2712FS+0.25d, 2714FS+0.25d, 2715FS+0.25d, 2716FS+0.25d, 2717FS+0.25d, 2719FS+0.25d, 2720FS+0.25d, 2723FS+0.25d, 2726FS+0.25d, 2731FS+0.25d, 2729FS+0.25d, 2735FS+0.25d, 2741FS+0.25d, 2742FS+0.25d, 2744FS+0.25d |  |
| 2753 | OC Receipt | 2028-06-13 → 2028-05-29 (-15d) | 2028-06-14 → 2028-05-30 (-15d) | 0.94d → 1.12d |  | 2752FS+53.38d, Final coat of painting, 2742 → 2752FS+67.5d |  |
| 2754 | Offer To Possession | 2029-07-05 → 2028-11-13 (-234d) | 2029-08-04 → 2028-12-13 (-234d) | 29.94d → 33.75d |  | Wardrobe installation, CP & SANITARYWARE, 2748, 915, 2750, External Elevation Façade → 2746, 2747, 2748, 2749, 2750, 2751, 2737 |  |
| 2755 | **Tower 2** | 2024-01-10 → 2023-12-05 (-36d) | 2029-01-08 → 2029-04-03 (+85d) | 1728d → 2042.89d | 6% → 14% |  | constraint start no earlier than 2024-01-10 → start no earlier than 2023-12-05 |
| 2756 | **Substructure** | 2024-01-10 → 2024-05-14 (+125d) | 2026-04-18 → 2026-05-05 (+17d) | 776.69d → 766.12d | 62% → 80% |  | constraint start no earlier than 2024-01-10 → start no earlier than 2024-05-14 |
| 2757 | **Soil Bed Preparation** | 2024-01-10 → 2024-05-14 (+125d) | 2026-02-07 → 2026-02-24 (+17d) | 706.81d → 687.38d | 78% → 83% |  | constraint start no earlier than 2024-01-10 → start no earlier than 2024-05-14 |
| 2758 | Test Piling | 2024-02-01 → 2024-05-14 (+103d) | 2024-02-25 → 2024-08-14 (+171d) | 24.94d → 104.44d |  | none → 7SS | constraint start no earlier than 2024-02-01 → start no earlier than 2024-05-14 |
| 2759 | Excavation | 2024-01-10 → 2024-06-26 (+168d) | 2024-02-08 → 2024-07-25 (+168d) | 29.94d → 33.56d |  | 7SS+36.74d → 2758SS+43d | constraint start no earlier than 2024-01-10 → start no earlier than 2024-06-26 |
| 2760 | Main Piling Work | 2024-04-12 → 2024-09-04 (+145d) | 2024-10-11 → 2025-03-25 (+165d) | 169.06d → 185.62d |  | 7FS-12.45d → 2758FS+20d | constraint start no earlier than 2024-04-12 → start no earlier than 2024-09-04 |
| 2761 | Anti-termite | 2025-11-30 → 2025-12-27 (+27d) | 2025-12-04 → 2025-12-31 (+27d) | 4.94d → 5.62d |  | 2759FS-14.7d, 2760FS+1.94d → 2759, 2760FF+2d |  |
| 2762 | PCC | 2024-10-18 → 2025-02-09 (+114d) | 2024-10-27 → 2025-03-31 (+155d) | 9.69d → 57.38d |  | 2761SS+21.89d → 2761SS-2.25d | constraint start no earlier than 2024-10-18 → start no earlier than 2025-02-09 |
| 2763 | Backfilling | 2025-11-30 → 2025-12-27 (+27d) | 2026-02-07 → 2026-02-24 (+17d) | 59.94d → 67.5d |  | 2780FS-8d → 2776 |  |
| 2764 | **RCC Structure** | 2024-12-16 → 2025-03-24 (+98d) | 2025-05-06 → 2025-10-12 (+159d) | 142d → 228.38d |  |  | constraint start no earlier than 2024-12-16 → start no earlier than 2025-03-24 |
| 2765 | **Raft Foundation** | 2024-12-16 → 2025-03-24 (+98d) | 2025-01-16 → 2025-06-08 (+143d) | 32d → 86.62d |  |  | constraint start no earlier than 2024-12-16 → start no earlier than 2025-03-24 |
| 2766 | Reinforcement | 2024-12-16 → 2025-03-24 (+98d) | 2025-01-11 → 2025-06-03 (+143d) | 26d → 81d |  | 2762SS+5d → 2762FS-9d | constraint start no earlier than 2024-12-16 → start no earlier than 2025-03-24 |
| 2767 | Formwork | 2024-12-24 → 2025-05-28 (+155d) | 2025-01-13 → 2025-06-05 (+143d) | 21d → 10.12d |  | 2766FF → 2766FF+7.88d | constraint start no earlier than 2024-12-24 → start no earlier than 2025-05-28 |
| 2768 | Concreting | 2027-01-20 → 2025-06-06 (-593d) | 2027-01-23 → 2025-06-08 (-594d) | 2.94d → 3.38d | 0% → 100% | 2054 → 2767 | constraint none → start no earlier than 2025-06-06 |
| 2769 | **Basement 1 Slab** | 2025-01-17 → 2025-04-20 (+93d) | 2025-02-25 → 2025-06-25 (+120d) | 40d → 75.38d |  |  | constraint start no earlier than 2025-01-17 → start no earlier than 2025-04-20 |
| 2770 | Reinforcement | 2025-01-17 → 2025-06-06 (+140d) | 2025-02-20 → 2025-06-25 (+125d) | 21d → 22.5d |  | 2772 → 2768 | constraint start no earlier than 2025-01-17 → start no earlier than 2025-06-06 |
| 2771 | Formwork | 2025-01-20 → 2025-04-20 (+90d) | 2025-02-24 → 2025-05-09 (+74d) | 21d → 22.5d |  | 2770SS+3d → 2770SS+1.12d | constraint start no earlier than 2025-01-20 → start no earlier than 2025-04-20 |
| 2772 | Concreting | 2025-01-13 → 2025-05-10 (+117d) | 2025-01-16 → 2025-05-13 (+117d) | 4d → 4.5d |  | 2767FS+2d → 2771 | constraint start no earlier than 2025-01-13 → start no earlier than 2025-05-10 |
| 2773 | **Basement 2 Slab/GF** | 2025-02-13 → 2025-05-14 (+90d) | 2025-03-09 → 2025-09-08 (+183d) | 25d → 132.75d |  |  | constraint start no earlier than 2025-02-13 → start no earlier than 2025-05-14 |
| 2774 | Reinforcement | 2025-02-13 → 2025-05-14 (+90d) | 2025-03-06 → 2025-09-06 (+184d) | 16d → 130.5d |  | 2776 → 2772 | constraint start no earlier than 2025-02-13 → start no earlier than 2025-05-14 |
| 2775 | Formwork | 2025-02-17 → 2025-05-15 (+87d) | 2025-03-07 → 2025-09-07 (+184d) | 14d → 130.5d |  | 2774SS+3d → 2774SS+1.12d | constraint start no earlier than 2025-02-17 → start no earlier than 2025-05-15 |
| 2776 | Concreting | 2025-02-25 → 2025-06-04 (+99d) | 2025-02-25 → 2025-09-08 (+195d) | 1d → 109.12d |  | 2771 → 2775 | constraint start no earlier than 2025-02-25 → start no earlier than 2025-06-04 |
| 2778 | Reinforcement | 2025-03-01 → 2025-09-01 (+184d) | 2025-05-05 → 2025-10-10 (+158d) | 36d → 45d |  | 2780FS-8d → 2776 | constraint start no earlier than 2025-03-01 → start no earlier than 2025-09-01 |
| 2779 | Formwork | 2025-03-04 → 2025-06-09 (+97d) | 2025-05-05 → 2025-10-11 (+159d) | 33d → 140.62d |  | 2778SS+3d → 2778SS+1.12d | constraint start no earlier than 2025-03-04 → start no earlier than 2025-06-09 |
| 2780 | Concreting | 2025-03-01 → 2025-06-29 (+120d) | 2025-03-09 → 2025-10-12 (+217d) | 3d → 119.25d |  | 2775FS-6d → 2779 | constraint start no earlier than 2025-03-01 → start no earlier than 2025-06-29 |
| 2781 | **Substructure Finishing** | 2025-11-30 → 2025-12-27 (+27d) | 2026-04-18 → 2026-05-05 (+17d) | 129.81d → 146.25d |  |  | constraint start no earlier than 2025-11-30 → start no earlier than 2025-12-27 |
| 2782 | Masonary work | 2025-11-30 → 2025-12-27 (+27d) | 2026-01-23 → 2026-02-09 (+17d) | 44.94d → 50.62d |  | 2792FS+26.75d → 2780FS+33.75d |  |
| 2783 | Plaster | 2026-01-23 → 2026-02-10 (+18d) | 2026-03-04 → 2026-03-21 (+17d) | 39.94d → 45d |  |  |  |
| 2784 | Structural steel | 2025-11-30 → 2026-01-26 (+57d) | 2026-02-07 → 2026-03-26 (+47d) | 59.94d → 67.5d |  | 2792FS+53.38d → 2780FS+67.5d |  |
| 2785 | White Wash | 2026-03-04 → 2026-03-22 (+18d) | 2026-04-18 → 2026-05-05 (+17d) | 44.94d → 50.62d |  |  |  |
| 2786 | **Superstructure** | 2025-05-06 → 2025-10-07 (+154d) | 2028-04-15 → 2028-08-26 (+133d) | 1008.94d → 1038.51d | 4% → 0% |  | constraint start no earlier than 2025-05-06 → start no earlier than 2025-10-07 |
| 2787 | **RCC structure** | 2025-05-06 → 2025-10-07 (+154d) | 2027-01-12 → 2027-05-29 (+137d) | 550.12d → 578.14d | 33% → 5% |  | constraint start no earlier than 2025-05-06 → start no earlier than 2025-10-07 |
| 2788 | **1st floor slab** | 2025-05-06 → 2025-10-07 (+154d) | 2025-07-03 → 2026-01-26 (+207d) | 59d → 79.76d | 100% → 33% |  | constraint start no earlier than 2025-05-06 → start no earlier than 2025-10-07 |
| 2789 | Reinforcement | 2025-05-06 → 2025-10-07 (+154d) | 2025-06-29 → 2026-01-21 (+206d) | 28d → 56.25d | 100% → 48% | 2792FS+1d → 2780 | constraint start no earlier than 2025-05-06 → start no earlier than 2025-10-07 |
| 2790 | Wall conduiting | 2025-05-08 → 2025-10-14 (+159d) | 2025-07-01 → 2026-01-23 (+206d) | 22d → 33.75d | 100% → 6% | 2789SS+2.75d → 2789SS+10.12d | constraint start no earlier than 2025-05-08 → start no earlier than 2025-10-14 |
| 2791 | Formwork | 2025-05-09 → 2025-10-14 (+158d) | 2025-07-02 → 2026-01-25 (+207d) | 26d → 52.88d | 100% → 36% | 2789SS+3d → 2789SS+10.12d | constraint start no earlier than 2025-05-09 → start no earlier than 2025-10-14 |
| 2792 | Concreting | 2025-05-06 → 2025-10-15 (+162d) | 2025-05-06 → 2026-01-26 (+265d) | 1d → 1.12d | 100% → 10% | 2779 → 2791FS-69.75d | constraint start no earlier than 2025-05-06 → none |
| 2793 | **2nd floor slab** | 2025-07-07 → 2025-11-08 (+124d) | 2025-08-24 → 2026-02-25 (+185d) | 49d → 77.51d | 100% → 15% |  | constraint start no earlier than 2025-07-07 → start no earlier than 2025-11-08 |
| 2794 | Reinforcement | 2025-07-07 → 2025-11-08 (+124d) | 2025-08-24 → 2026-02-20 (+180d) | 15d → 37.12d | 100% → 30% | 2797FS+1d → 2792FS-43.76d | constraint start no earlier than 2025-07-07 → start no earlier than 2025-11-08 |
| 2795 | Wall conduiting | 2025-07-09 → 2026-01-27 (+202d) | 2025-08-24 → 2026-01-30 (+159d) | 8d → 3.38d | 100% → 0% | 2790, 2794SS+2.75d → 2790FS+0.25d, 2794SS+44.89d | constraint start no earlier than 2025-07-09 → none |
| 2796 | Formwork | 2025-11-06 → 2026-01-28 (+83d) | 2025-11-26 → 2026-02-24 (+90d) | 7d → 30.38d | 100% → 0% | 2829SS+1d → 2794SS+46.01d | constraint start no earlier than 2025-11-06 → none |
| 2797 | Concreting | 2025-06-13 → 2026-02-24 (+256d) | 2025-07-03 → 2026-02-25 (+237d) | 13d → 1.12d | 100% → 0% | 2791FS-13d → 2796 | constraint start no earlier than 2025-06-13 → none |
| 2798 | **3rd floor slab** | 2025-08-10 → 2026-02-25 (+199d) | 2025-09-08 → 2026-03-07 (+180d) | 30d → 11.25d | 100% → 0% |  | constraint start no earlier than 2025-08-10 → start no earlier than 2026-02-25 |
| 2799 | Reinforcement | 2025-08-10 → 2026-02-25 (+199d) | 2025-09-08 → 2026-03-04 (+177d) | 11d → 7.88d | 100% → 0% | 2802FS-15d → 2797 | constraint start no earlier than 2025-08-10 → none |
| 2800 | Wall conduiting | 2025-08-16 → 2026-02-28 (+196d) | 2025-09-07 → 2026-03-02 (+176d) | 6d → 2.25d | 100% → 0% | 2799SS+14.75d, 2795FS-8.25d → 2795, 2799SS+3.38d | constraint start no earlier than 2025-08-16 → none |
| 2801 | Formwork | 2025-07-07 → 2026-02-27 (+235d) | 2025-08-24 → 2026-03-06 (+194d) | 20d → 7.88d | 100% → 0% | 2794SS → 2799SS+2.25d | constraint start no earlier than 2025-07-07 → none |
| 2802 | Concreting | 2025-08-08 → 2026-03-06 (+210d) | 2025-08-24 → 2026-03-07 (+195d) | 3d → 1.12d | 100% → 0% | 2801FS-15d → 2801 | constraint start no earlier than 2025-08-08 → none |
| 2803 | **4th floor slab** | 2025-09-09 → 2026-03-07 (+179d) | 2025-09-22 → 2026-03-17 (+176d) | 14d → 11.25d | 100% → 0% |  | constraint start no earlier than 2025-09-09 → start no earlier than 2026-03-07 |
| 2804 | Reinforcement | 2025-09-09 → 2026-03-07 (+179d) | 2025-09-21 → 2026-03-14 (+174d) | 8d → 7.88d | 100% → 0% | 2807FS+1d → 2802 | constraint start no earlier than 2025-09-09 → none |
| 2805 | Wall conduiting | 2025-09-09 → 2026-03-08 (+180d) | 2025-09-21 → 2026-03-10 (+170d) | 8d → 2.25d | 100% → 0% | 2800, 2804SS+1d → 2800, 2804SS+1.12d | constraint start no earlier than 2025-09-09 → none |
| 2806 | Formwork | 2025-08-16 → 2026-03-09 (+205d) | 2025-09-08 → 2026-03-16 (+189d) | 14d → 7.88d | 100% → 0% | 2799SS → 2804SS+2.25d | constraint start no earlier than 2025-08-16 → none |
| 2807 | Concreting | 2025-09-08 → 2026-03-16 (+189d) | 2025-09-08 → 2026-03-17 (+190d) | 1d → 1.12d | 100% → 0% |  | constraint start no earlier than 2025-09-08 → none |
| 2808 | **5th floor slab** | 2025-09-18 → 2026-03-17 (+180d) | 2025-09-29 → 2026-03-27 (+179d) | 12d → 11.25d | 100% → 0% |  | constraint start no earlier than 2025-09-18 → start no earlier than 2026-03-17 |
| 2809 | Reinforcement | 2025-09-18 → 2026-03-17 (+180d) | 2025-09-28 → 2026-03-24 (+177d) | 8d → 7.88d | 100% → 0% | 2812FS+1d → 2807 | constraint start no earlier than 2025-09-18 → none |
| 2810 | Wall conduiting | 2025-09-18 → 2026-03-18 (+181d) | 2025-09-28 → 2026-03-20 (+173d) | 3d → 2.25d | 100% → 0% | 2805, 2809SS+1d → 2805, 2809SS+1.12d | constraint start no earlier than 2025-09-18 → none |
| 2811 | Formwork | 2025-09-09 → 2026-03-19 (+191d) | 2025-09-21 → 2026-03-26 (+186d) | 7d → 7.88d | 100% → 0% | 2804SS+1d → 2809SS+2.25d | constraint start no earlier than 2025-09-09 → none |
| 2812 | Concreting | 2025-09-14 → 2026-03-26 (+193d) | 2025-09-22 → 2026-03-27 (+186d) | 4d → 1.12d | 100% → 0% | 2811FS-7d → 2811 | constraint start no earlier than 2025-09-14 → none |
| 2813 | **6th floor slab** | 2025-09-28 → 2026-03-27 (+180d) | 2025-10-10 → 2026-04-06 (+178d) | 13d → 11.25d | 100% → 0% |  | constraint start no earlier than 2025-09-28 → start no earlier than 2026-03-27 |
| 2814 | Reinforcement | 2025-09-28 → 2026-03-27 (+180d) | 2025-10-09 → 2026-04-03 (+176d) | 8d → 7.88d | 100% → 0% | 2817FS+1d → 2812 | constraint start no earlier than 2025-09-28 → none |
| 2815 | Wall conduiting | 2025-09-28 → 2026-03-28 (+181d) | 2025-10-09 → 2026-03-30 (+172d) | 7d → 2.25d | 100% → 0% | 2810, 2814SS+1d → 2810, 2814SS+1.12d | constraint start no earlier than 2025-09-28 → none |
| 2816 | Formwork | 2025-09-18 → 2026-03-29 (+192d) | 2025-09-28 → 2026-04-05 (+189d) | 7d → 7.88d | 100% → 0% | 2809SS+1d → 2814SS+2.25d | constraint start no earlier than 2025-09-18 → none |
| 2817 | Concreting | 2025-09-29 → 2026-04-05 (+188d) | 2025-09-29 → 2026-04-06 (+189d) | 1d → 1.12d | 100% → 0% |  | constraint start no earlier than 2025-09-29 → none |
| 2818 | **7th floor slab** | 2025-10-07 → 2026-04-06 (+181d) | 2025-10-20 → 2026-04-16 (+178d) | 14d → 11.25d | 100% → 0% |  | constraint start no earlier than 2025-10-07 → start no earlier than 2026-04-06 |
| 2819 | Reinforcement | 2025-10-07 → 2026-04-06 (+181d) | 2025-10-18 → 2026-04-13 (+177d) | 8d → 7.88d | 100% → 0% | 2822FS+1d → 2817 | constraint start no earlier than 2025-10-07 → none |

| ID | Task | Start | Finish | Duration | Complete | Predecessors | Other |
| --- | --- | --- | --- | --- | --- | --- | --- |
| 2820 | Wall conduiting | 2025-10-07 → 2026-04-07 (+182d) | 2025-10-18 → 2026-04-09 (+173d) | 6d → 2.25d | 100% → 0% | 2815, 2819SS+1d → 2815, 2819SS+1.12d | constraint start no earlier than 2025-10-07 → none |
| 2821 | Formwork | 2025-09-28 → 2026-04-08 (+192d) | 2025-10-09 → 2026-04-15 (+188d) | 7d → 7.88d | 100% → 0% | 2814SS+1d → 2819SS+2.25d | constraint start no earlier than 2025-09-28 → none |
| 2822 | Concreting | 2025-10-06 → 2026-04-15 (+191d) | 2025-10-10 → 2026-04-16 (+188d) | 3d → 1.12d | 100% → 0% |  | constraint start no earlier than 2025-10-06 → none |
| 2823 | **8th floor slab** | 2025-10-20 → 2026-04-16 (+178d) | 2025-11-09 → 2026-04-27 (+169d) | 22.69d → 12.38d | 100% → 0% |  | constraint start no earlier than 2025-10-20 → start no earlier than 2026-04-16 |
| 2824 | Reinforcement | 2025-10-20 → 2026-04-16 (+178d) | 2025-11-09 → 2026-04-23 (+165d) | 10d → 7.88d | 100% → 0% | 2827FS+1d → 2822 | constraint start no earlier than 2025-10-20 → none |
| 2825 | Wall conduiting | 2025-10-20 → 2026-04-17 (+179d) | 2025-11-09 → 2026-04-19 (+161d) | 6d → 2.25d | 100% → 0% | 2820, 2824SS+1d → 2820, 2824SS+1.12d | constraint start no earlier than 2025-10-20 → none |
| 2826 | Formwork | 2025-10-07 → 2026-04-18 (+193d) | 2025-10-18 → 2026-04-26 (+190d) | 7d → 9d | 100% → 0% | 2819SS+1d → 2824SS+2.25d | constraint start no earlier than 2025-10-07 → none |
| 2827 | Concreting | 2025-10-16 → 2026-04-26 (+192d) | 2025-10-20 → 2026-04-27 (+189d) | 3d → 1.12d | 100% → 0% |  | constraint start no earlier than 2025-10-16 → none |
| 2828 | **9th floor slab** | 2025-11-06 → 2026-04-27 (+172d) | 2025-11-27 → 2026-05-07 (+161d) | 8.12d → 11.25d | 100% → 0% |  | constraint start no earlier than 2025-11-06 → start no earlier than 2026-04-27 |
| 2829 | Reinforcement | 2025-11-06 → 2026-04-27 (+172d) | 2025-11-26 → 2026-05-04 (+159d) | 7d → 7.88d | 100% → 0% | 2832FS-2.5d → 2827 | constraint start no earlier than 2025-11-06 → none |
| 2830 | Wall conduiting | 2025-11-06 → 2026-04-28 (+173d) | 2025-11-26 → 2026-04-30 (+155d) | 3d → 2.25d | 100% → 0% | 2825, 2829SS+1d → 2825, 2829SS+1.12d | constraint start no earlier than 2025-11-06 → none |
| 2831 | Formwork | 2025-10-20 → 2026-04-29 (+191d) | 2025-11-09 → 2026-05-06 (+178d) | 10d → 7.88d | 100% → 0% | 2824SS+1d → 2829SS+2.25d | constraint start no earlier than 2025-10-20 → none |
| 2832 | Concreting | 2025-10-31 → 2026-05-06 (+187d) | 2025-11-09 → 2026-05-07 (+179d) | 9.94d → 1.12d | 100% → 0% | 2831FS-15.06d → 2831 | constraint start no earlier than 2025-10-31 → none |
| 2833 | **10th floor slab** | 2025-11-28 → 2026-05-07 (+160d) | 2025-12-05 → 2026-05-17 (+163d) | 8.25d → 11.25d | 26% → 0% |  | constraint start no earlier than 2025-11-28 → start no earlier than 2026-05-07 |
| 2834 | Reinforcement | 2025-11-28 → 2026-05-07 (+160d) | 2025-12-05 → 2026-05-14 (+160d) | 8d → 7.88d | 25% → 0% | 2837FS+1d → 2832 | constraint start no earlier than 2025-11-28 → none |
| 2835 | Wall conduiting | 2025-11-28 → 2026-05-08 (+161d) | 2025-12-01 → 2026-05-10 (+160d) | 3d → 2.25d | 33% → 0% | 2830, 2834SS+1d → 2830, 2834SS+1.12d | constraint start no earlier than 2025-11-28 → none |
| 2836 | Formwork | 2025-11-28 → 2026-05-09 (+162d) | 2025-12-05 → 2026-05-16 (+162d) | 7d → 7.88d | 28% → 0% | 2834SS+1d → 2834SS+2.25d | constraint start no earlier than 2025-11-28 → none |
| 2837 | Concreting | 2025-11-10 → 2026-05-16 (+187d) | 2025-11-27 → 2026-05-17 (+171d) | 3.25d → 1.12d | 100% → 0% | 2796 → 2836 | constraint start no earlier than 2025-11-10 → none |
| 2838 | **11th floor slab** | 2025-12-24 → 2026-05-17 (+144d) | 2026-01-02 → 2026-05-27 (+145d) | 9d → 11.25d |  |  | constraint start no earlier than 2025-12-24 → start no earlier than 2026-05-17 |
| 2839 | Reinforcement | 2025-12-24 → 2026-05-17 (+144d) | 2026-01-01 → 2026-05-24 (+143d) | 8d → 7.88d |  | 2842FS+1d → 2837 |  |
| 2840 | Wall conduiting | 2025-12-25 → 2026-05-18 (+144d) | 2025-12-28 → 2026-05-20 (+143d) | 3d → 2.25d |  | 2835, 2839SS+1d → 2835, 2839SS+1.12d |  |
| 2841 | Formwork | 2025-12-25 → 2026-05-19 (+145d) | 2026-01-01 → 2026-05-26 (+145d) | 7d → 7.88d |  | 2839SS+1d → 2839SS+2.25d |  |
| 2842 | Concreting | 2025-12-04 → 2026-05-26 (+173d) | 2025-12-05 → 2026-05-27 (+173d) | 1d → 1.12d |  | 2836 → 2841 |  |
| 2843 | **12th floor slab** | 2026-01-03 → 2026-05-27 (+144d) | 2026-01-12 → 2026-06-06 (+145d) | 9d → 11.25d |  |  | constraint start no earlier than 2026-01-03 → start no earlier than 2026-05-27 |
| 2844 | Reinforcement | 2026-01-03 → 2026-05-27 (+144d) | 2026-01-11 → 2026-06-03 (+143d) | 8d → 7.88d |  | 2847FS+1d → 2842 |  |
| 2845 | Wall conduiting | 2026-01-04 → 2026-05-28 (+144d) | 2026-01-07 → 2026-05-30 (+143d) | 3d → 2.25d |  | 2840, 2844SS+1d → 2840, 2844SS+1.12d |  |
| 2846 | Formwork | 2026-01-04 → 2026-05-29 (+145d) | 2026-01-11 → 2026-06-05 (+145d) | 7d → 7.88d |  | 2844SS+1d → 2844SS+2.25d |  |
| 2847 | Concreting | 2026-01-01 → 2026-06-05 (+155d) | 2026-01-02 → 2026-06-06 (+155d) | 1d → 1.12d |  | 2841 → 2846 |  |
| 2848 | **13th floor slab** | 2026-01-08 → 2026-06-06 (+149d) | 2026-01-17 → 2026-06-16 (+150d) | 9d → 11.25d |  |  | constraint start no earlier than 2026-01-08 → start no earlier than 2026-06-06 |
| 2849 | Reinforcement | 2026-01-08 → 2026-06-06 (+149d) | 2026-01-16 → 2026-06-13 (+148d) | 8d → 7.88d |  | 2852FS-4d → 2847 |  |
| 2850 | Wall conduiting | 2026-01-09 → 2026-06-07 (+149d) | 2026-01-12 → 2026-06-09 (+148d) | 3d → 2.25d |  | 2845, 2849SS+1d → 2845, 2849SS+1.12d |  |
| 2851 | Formwork | 2026-01-09 → 2026-06-08 (+150d) | 2026-01-16 → 2026-06-15 (+150d) | 7d → 7.88d |  | 2849SS+1d → 2849SS+2.25d |  |
| 2852 | Concreting | 2026-01-11 → 2026-06-15 (+155d) | 2026-01-12 → 2026-06-16 (+155d) | 1d → 1.12d |  | 2846 → 2851 |  |
| 2853 | **14th floor slab** | 2026-01-12 → 2026-06-16 (+155d) | 2026-01-21 → 2026-06-26 (+156d) | 9d → 11.25d |  |  | constraint start no earlier than 2026-01-12 → start no earlier than 2026-06-16 |
| 2854 | Reinforcement | 2026-01-12 → 2026-06-16 (+155d) | 2026-01-20 → 2026-06-23 (+154d) | 8d → 7.88d |  | 2857FS-5d → 2852 |  |
| 2855 | Wall conduiting | 2026-01-13 → 2026-06-17 (+155d) | 2026-01-16 → 2026-06-19 (+154d) | 3d → 2.25d |  | 2850, 2854SS+1d → 2850, 2854SS+1.12d |  |
| 2856 | Formwork | 2026-01-13 → 2026-06-18 (+156d) | 2026-01-20 → 2026-06-25 (+156d) | 7d → 7.88d |  | 2854SS+1d → 2854SS+2.25d |  |
| 2857 | Concreting | 2026-01-16 → 2026-06-25 (+160d) | 2026-01-17 → 2026-06-26 (+160d) | 1d → 1.12d |  | 2851 → 2856 |  |
| 2858 | **15th floor slab** | 2026-01-20 → 2026-06-26 (+157d) | 2026-01-29 → 2026-07-06 (+158d) | 9d → 11.25d |  |  | constraint start no earlier than 2026-01-20 → start no earlier than 2026-06-26 |
| 2859 | Reinforcement | 2026-01-20 → 2026-06-26 (+157d) | 2026-01-28 → 2026-07-03 (+156d) | 8d → 7.88d |  | 2862FS-1d → 2857 |  |
| 2860 | Wall conduiting | 2026-01-21 → 2026-06-27 (+157d) | 2026-01-24 → 2026-06-29 (+156d) | 3d → 2.25d |  | 2855, 2859SS+1d → 2855, 2859SS+1.12d |  |
| 2861 | Formwork | 2026-01-21 → 2026-06-28 (+158d) | 2026-01-28 → 2026-07-05 (+158d) | 7d → 7.88d |  | 2859SS+1d → 2859SS+2.25d |  |
| 2862 | Concreting | 2026-01-20 → 2026-07-05 (+166d) | 2026-01-21 → 2026-07-06 (+166d) | 1d → 1.12d |  | 2856 → 2861 |  |
| 2863 | **16th floor slab** | 2026-01-30 → 2026-07-06 (+157d) | 2026-02-06 → 2026-07-17 (+161d) | 7d → 12.38d |  |  | constraint start no earlier than 2026-01-30 → start no earlier than 2026-07-06 |
| 2864 | Reinforcement | 2026-01-30 → 2026-07-06 (+157d) | 2026-02-05 → 2026-07-14 (+159d) | 6d → 9d |  | 2867FS+1d → 2862 |  |
| 2865 | Wall conduiting | 2026-01-31 → 2026-07-07 (+157d) | 2026-02-03 → 2026-07-09 (+156d) | 3d → 2.25d |  | 2860, 2864SS+1d → 2860, 2864SS+1.12d |  |
| 2866 | Formwork | 2026-01-31 → 2026-07-08 (+158d) | 2026-02-05 → 2026-07-16 (+161d) | 5d → 9d |  | 2864SS+1d → 2864SS+2.25d |  |
| 2867 | Concreting | 2026-01-28 → 2026-07-16 (+169d) | 2026-01-29 → 2026-07-17 (+169d) | 1d → 1.12d |  | 2861 → 2866 |  |
| 2868 | **17th floor slab** | 2026-02-06 → 2026-07-17 (+161d) | 2026-02-13 → 2026-07-27 (+164d) | 7d → 11.25d |  |  | constraint start no earlier than 2026-02-06 → start no earlier than 2026-07-17 |
| 2869 | Reinforcement | 2026-02-06 → 2026-07-17 (+161d) | 2026-02-12 → 2026-07-25 (+163d) | 6d → 9d |  | 2872 → 2867 |  |
| 2870 | Wall conduiting | 2026-02-07 → 2026-07-18 (+161d) | 2026-02-10 → 2026-07-20 (+160d) | 3d → 2.25d |  | 2865, 2869SS+1d → 2865, 2869SS+1.12d |  |
| 2871 | Formwork | 2026-02-07 → 2026-07-19 (+162d) | 2026-02-12 → 2026-07-26 (+164d) | 5d → 7.88d |  | 2869SS+1d → 2869SS+2.25d |  |
| 2872 | Concreting | 2026-02-05 → 2026-07-26 (+171d) | 2026-02-06 → 2026-07-27 (+171d) | 1d → 1.12d |  | 2866 → 2871 |  |
| 2873 | **18th floor slab** | 2026-02-12 → 2026-07-27 (+165d) | 2026-02-19 → 2026-08-06 (+168d) | 7d → 11.25d |  |  | constraint start no earlier than 2026-02-12 → start no earlier than 2026-07-27 |
| 2874 | Reinforcement | 2026-02-12 → 2026-07-27 (+165d) | 2026-02-18 → 2026-08-04 (+167d) | 6d → 9d |  | 2877FS-1d → 2872 |  |
| 2875 | Wall conduiting | 2026-02-13 → 2026-07-28 (+165d) | 2026-02-16 → 2026-07-30 (+164d) | 3d → 2.25d |  | 2870, 2874SS+1d → 2870, 2874SS+1.12d |  |
| 2876 | Formwork | 2026-02-13 → 2026-07-29 (+166d) | 2026-02-18 → 2026-08-05 (+168d) | 5d → 7.88d |  | 2874SS+1d → 2874SS+2.25d |  |
| 2877 | Concreting | 2026-02-12 → 2026-08-05 (+174d) | 2026-02-13 → 2026-08-06 (+174d) | 1d → 1.12d |  | 2871 → 2876 |  |
| 2878 | **19th floor slab** | 2026-02-18 → 2026-08-06 (+169d) | 2026-02-25 → 2026-08-16 (+172d) | 7d → 11.25d |  |  | constraint start no earlier than 2026-02-18 → start no earlier than 2026-08-06 |
| 2879 | Reinforcement | 2026-02-18 → 2026-08-06 (+169d) | 2026-02-24 → 2026-08-14 (+171d) | 6d → 9d |  | 2882FS-1d → 2877 |  |
| 2880 | Wall conduiting | 2026-02-19 → 2026-08-07 (+169d) | 2026-02-22 → 2026-08-09 (+168d) | 3d → 2.25d |  | 2875, 2879SS+1d → 2875, 2879SS+1.12d |  |
| 2881 | Formwork | 2026-02-19 → 2026-08-07 (+169d) | 2026-02-24 → 2026-08-15 (+172d) | 5d → 9d |  | 2879SS+1d → 2879SS+1.12d |  |
| 2882 | Concreting | 2026-02-18 → 2026-08-15 (+178d) | 2026-02-19 → 2026-08-16 (+178d) | 1d → 1.12d |  | 2876 → 2881 |  |
| 2883 | **20th floor slab** | 2026-02-26 → 2026-08-16 (+171d) | 2026-03-06 → 2026-08-26 (+173d) | 8d → 11.25d |  |  | constraint start no earlier than 2026-02-26 → start no earlier than 2026-08-16 |
| 2884 | Reinforcement | 2026-02-26 → 2026-08-16 (+171d) | 2026-03-04 → 2026-08-24 (+173d) | 6d → 9d |  | 2887FS+1d → 2882 |  |
| 2885 | Wall conduiting | 2026-02-27 → 2026-08-17 (+171d) | 2026-03-02 → 2026-08-19 (+170d) | 3d → 2.25d |  | 2880, 2884SS+1d → 2880, 2884SS+1.12d |  |
| 2886 | Formwork | 2026-02-27 → 2026-08-17 (+171d) | 2026-03-04 → 2026-08-25 (+174d) | 5d → 9d |  | 2884SS+1d → 2884SS+1.12d |  |
| 2887 | Concreting | 2026-02-24 → 2026-08-25 (+182d) | 2026-02-25 → 2026-08-26 (+182d) | 1d → 1.12d |  | 2881 → 2886 |  |
| 2888 | **21st floor slab** | 2026-03-10 → 2026-08-26 (+169d) | 2026-03-20 → 2026-09-05 (+169d) | 10d → 11.25d |  |  | constraint start no earlier than 2026-03-10 → start no earlier than 2026-08-26 |
| 2889 | Reinforcement | 2026-03-10 → 2026-08-26 (+169d) | 2026-03-19 → 2026-09-03 (+168d) |  |  | 2892FS+4d → 2887 |  |

| ID | Task | Start | Finish | Duration | Predecessors | Other |
| --- | --- | --- | --- | --- | --- | --- |
| 2890 | Wall conduiting | 2026-03-11 → 2026-08-27 (+169d) | 2026-03-14 → 2026-08-29 (+168d) | 3d → 2.25d | 2885, 2889SS+1d → 2885, 2889SS+1.12d |  |
| 2891 | Formwork | 2026-03-11 → 2026-08-28 (+170d) | 2026-03-19 → 2026-09-04 (+169d) | 8d → 7.88d | 2889SS+1d → 2889SS+2.25d |  |
| 2892 | Concreting | 2026-03-04 → 2026-09-04 (+184d) | 2026-03-06 → 2026-09-05 (+183d) | 2d → 1.12d | 2886 → 2891 |  |
| 2893 | **22nd floor slab** | 2026-03-24 → 2026-09-05 (+165d) | 2026-04-03 → 2026-09-15 (+165d) | 10d → 11.25d |  | constraint start no earlier than 2026-03-24 → start no earlier than 2026-09-05 |
| 2894 | Reinforcement | 2026-03-24 → 2026-09-05 (+165d) | 2026-04-02 → 2026-09-13 (+164d) |  | 2897FS+4d → 2892 |  |
| 2895 | Wall conduiting | 2026-03-25 → 2026-09-06 (+165d) | 2026-03-28 → 2026-09-08 (+164d) | 3d → 2.25d | 2890, 2894SS+1d → 2890, 2894SS+1.12d |  |
| 2896 | Formwork | 2026-03-25 → 2026-09-07 (+166d) | 2026-04-02 → 2026-09-14 (+165d) | 8d → 7.88d | 2894SS+1d → 2894SS+2.25d |  |
| 2897 | Concreting | 2026-03-19 → 2026-09-14 (+179d) | 2026-03-20 → 2026-09-15 (+179d) | 1d → 1.12d | 2891 → 2896 |  |
| 2898 | **23rd floor slab** | 2026-04-07 → 2026-09-15 (+161d) | 2026-04-17 → 2026-09-25 (+161d) | 10d → 11.25d |  | constraint start no earlier than 2026-04-07 → start no earlier than 2026-09-15 |
| 2899 | Reinforcement | 2026-04-07 → 2026-09-15 (+161d) | 2026-04-16 → 2026-09-23 (+160d) |  | 2902FS+4d → 2897 |  |
| 2900 | Wall conduiting | 2026-04-08 → 2026-09-16 (+161d) | 2026-04-11 → 2026-09-18 (+160d) | 3d → 2.25d | 2895, 2899SS+1d → 2895, 2899SS+1.12d |  |
| 2901 | Formwork | 2026-04-08 → 2026-09-17 (+162d) | 2026-04-16 → 2026-09-24 (+161d) | 8d → 7.88d | 2899SS+1d → 2899SS+2.25d |  |
| 2902 | Concreting | 2026-04-02 → 2026-09-24 (+175d) | 2026-04-03 → 2026-09-25 (+175d) | 1d → 1.12d | 2896 → 2901 |  |
| 2903 | **24th floor slab** | 2026-04-19 → 2026-09-25 (+159d) | 2026-05-01 → 2026-10-09 (+161d) | 12d → 15.75d |  | constraint start no earlier than 2026-04-19 → start no earlier than 2026-09-25 |
| 2904 | Reinforcement | 2026-04-19 → 2026-09-25 (+159d) | 2026-04-29 → 2026-10-06 (+160d) | 10d → 12.38d | 2907FS+2d → 2902 |  |
| 2905 | Wall conduiting | 2026-04-20 → 2026-09-26 (+159d) | 2026-04-23 → 2026-09-28 (+158d) | 3d → 2.25d | 2900, 2904SS+1d → 2900, 2904SS+1.12d |  |
| 2906 | Formwork | 2026-04-20 → 2026-09-27 (+160d) | 2026-04-30 → 2026-10-08 (+161d) | 10d → 12.38d | 2904SS+1d → 2904SS+2.25d |  |
| 2907 | Concreting | 2026-04-16 → 2026-10-08 (+175d) | 2026-04-17 → 2026-10-09 (+175d) | 1d → 1.12d | 2901 → 2906 |  |
| 2908 | **25th floor slab** | 2026-05-02 → 2026-10-09 (+160d) | 2026-05-15 → 2026-10-24 (+162d) | 13d → 16.88d |  | constraint start no earlier than 2026-05-02 → start no earlier than 2026-10-09 |
| 2909 | Reinforcement | 2026-05-02 → 2026-10-09 (+160d) | 2026-05-12 → 2026-10-21 (+162d) | 10d → 13.5d | 2912FS+1d → 2907 |  |
| 2910 | Wall conduiting | 2026-05-03 → 2026-10-10 (+160d) | 2026-05-06 → 2026-10-12 (+159d) | 3d → 2.25d | 2905, 2909SS+1d → 2905, 2909SS+1.12d |  |
| 2911 | Formwork | 2026-05-03 → 2026-10-11 (+161d) | 2026-05-13 → 2026-10-23 (+163d) | 10d → 13.5d | 2909SS+1d → 2909SS+2.25d |  |
| 2912 | Concreting | 2026-04-30 → 2026-10-23 (+176d) | 2026-05-01 → 2026-10-24 (+176d) | 1d → 1.12d | 2906 → 2911 |  |
| 2913 | **26th floor slab** | 2026-05-16 → 2026-10-24 (+161d) | 2026-05-26 → 2026-12-18 (+206d) | 10d → 11.25d |  | constraint start no earlier than 2026-05-16 → start no earlier than 2026-10-24 |
| 2914 | Reinforcement | 2026-05-16 → 2026-10-24 (+161d) | 2026-05-25 → 2026-12-16 (+205d) |  | 2917FS+1d → 2912 |  |
| 2915 | Wall conduiting | 2026-05-17 → 2026-10-25 (+161d) | 2026-05-20 → 2026-10-27 (+160d) | 3d → 2.25d | 2910, 2914SS+1d → 2910, 2914SS+1.12d |  |
| 2916 | Formwork | 2026-05-17 → 2026-10-26 (+162d) | 2026-05-25 → 2026-12-17 (+206d) | 8d → 7.88d | 2914SS+1d → 2914SS+2.25d |  |
| 2917 | Concreting | 2026-05-13 → 2026-12-17 (+218d) | 2026-05-15 → 2026-12-18 (+217d) | 2d → 1.12d | 2911 → 2916 |  |
| 2918 | **27th floor slab** | 2026-05-26 → 2026-12-18 (+206d) | 2026-06-05 → 2026-12-28 (+206d) | 10d → 11.25d |  | constraint start no earlier than 2026-05-26 → start no earlier than 2026-12-18 |
| 2919 | Reinforcement | 2026-05-26 → 2026-12-18 (+206d) | 2026-06-04 → 2026-12-26 (+205d) |  | 2922 → 2917 |  |
| 2920 | Wall conduiting | 2026-05-27 → 2026-12-19 (+206d) | 2026-05-30 → 2026-12-21 (+205d) | 3d → 2.25d | 2915, 2919SS+1d → 2915, 2919SS+1.12d |  |
| 2921 | Formwork | 2026-05-27 → 2026-12-20 (+207d) | 2026-06-04 → 2026-12-27 (+206d) | 8d → 7.88d | 2919SS+1d → 2919SS+2.25d |  |
| 2922 | Concreting | 2026-05-25 → 2026-12-27 (+216d) | 2026-05-26 → 2026-12-28 (+216d) | 1d → 1.12d | 2916 → 2921 |  |
| 2923 | **28th floor slab** | 2026-06-05 → 2026-12-28 (+206d) | 2026-06-15 → 2027-01-07 (+206d) | 10d → 11.25d |  | constraint start no earlier than 2026-06-05 → start no earlier than 2026-12-28 |
| 2924 | Reinforcement | 2026-06-05 → 2026-12-28 (+206d) | 2026-06-14 → 2027-01-05 (+205d) |  | 2927 → 2922 |  |
| 2925 | Wall conduiting | 2026-06-06 → 2026-12-29 (+206d) | 2026-06-09 → 2026-12-31 (+205d) | 3d → 2.25d | 2920, 2924SS+1d → 2920, 2924SS+1.12d |  |
| 2926 | Formwork | 2026-06-06 → 2026-12-30 (+207d) | 2026-06-14 → 2027-01-06 (+206d) | 8d → 7.88d | 2924SS+1d → 2924SS+2.25d |  |
| 2927 | Concreting | 2026-06-04 → 2027-01-06 (+216d) | 2026-06-05 → 2027-01-07 (+216d) | 1d → 1.12d | 2921 → 2926 |  |
| 2928 | **29th floor slab** | 2026-06-18 → 2027-01-07 (+203d) | 2026-06-28 → 2027-01-17 (+203d) | 10d → 11.25d |  | constraint start no earlier than 2026-06-18 → start no earlier than 2027-01-07 |
| 2929 | Reinforcement | 2026-06-18 → 2027-01-07 (+203d) | 2026-06-27 → 2027-01-15 (+202d) |  | 2932FS+3d → 2927 |  |
| 2930 | Wall conduiting | 2026-06-19 → 2027-01-08 (+203d) | 2026-06-22 → 2027-01-10 (+202d) | 3d → 2.25d | 2925, 2929SS+1d → 2925, 2929SS+1.12d |  |
| 2931 | Formwork | 2026-06-19 → 2027-01-09 (+204d) | 2026-06-27 → 2027-01-16 (+203d) | 8d → 7.88d | 2929SS+1d → 2929SS+2.25d |  |
| 2932 | Concreting | 2026-06-14 → 2027-01-16 (+216d) | 2026-06-15 → 2027-01-17 (+216d) | 1d → 1.12d | 2926 → 2931 |  |
| 2933 | **30th floor slab** | 2026-06-30 → 2027-01-17 (+201d) | 2026-07-10 → 2027-01-27 (+201d) | 10d → 11.25d |  | constraint start no earlier than 2026-06-30 → start no earlier than 2027-01-17 |
| 2934 | Reinforcement | 2026-06-30 → 2027-01-17 (+201d) | 2026-07-09 → 2027-01-25 (+200d) |  | 2937FS+2d → 2932 |  |
| 2935 | Wall conduiting | 2026-07-01 → 2027-01-18 (+201d) | 2026-07-04 → 2027-01-20 (+200d) | 3d → 2.25d | 2930, 2934SS+1d → 2930, 2934SS+1.12d |  |
| 2936 | Formwork | 2026-07-01 → 2027-01-19 (+202d) | 2026-07-09 → 2027-01-26 (+201d) | 8d → 7.88d | 2934SS+1d → 2934SS+2.25d |  |
| 2937 | Concreting | 2026-06-27 → 2027-01-26 (+213d) | 2026-06-28 → 2027-01-27 (+213d) | 1d → 1.12d | 2931 → 2936 |  |
| 2938 | **31st floor slab** | 2026-07-14 → 2027-01-27 (+197d) | 2026-07-24 → 2027-02-06 (+197d) | 10d → 11.25d |  | constraint start no earlier than 2026-07-14 → start no earlier than 2027-01-27 |
| 2939 | Reinforcement | 2026-07-14 → 2027-01-27 (+197d) | 2026-07-23 → 2027-02-03 (+195d) | 9d → 7.88d | 2942FS+4d → 2937 |  |
| 2940 | Wall conduiting | 2026-07-15 → 2027-01-28 (+197d) | 2026-07-18 → 2027-01-30 (+196d) | 3d → 2.25d | 2935, 2939SS+1d → 2935, 2939SS+1.12d |  |
| 2941 | Formwork | 2026-07-15 → 2027-01-29 (+198d) | 2026-07-23 → 2027-02-05 (+197d) | 8d → 7.88d | 2939SS+1d → 2939SS+2.25d |  |
| 2942 | Concreting | 2026-07-09 → 2027-02-05 (+211d) | 2026-07-10 → 2027-02-06 (+211d) | 1d → 1.12d | 2936 → 2941 |  |
| 2943 | **32nd floor slab** | 2026-07-27 → 2027-02-06 (+194d) | 2026-08-14 → 2027-02-20 (+190d) | 18d → 15.75d |  | constraint start no earlier than 2026-07-27 → start no earlier than 2027-02-06 |
| 2944 | Reinforcement | 2026-07-27 → 2027-02-06 (+194d) | 2026-08-14 → 2027-02-16 (+186d) | 18d → 11.25d | 2947FS+3d → 2942 |  |
| 2945 | Wall conduiting | 2026-07-28 → 2027-02-07 (+194d) | 2026-08-06 → 2027-02-09 (+187d) | 9d → 2.25d | 2940, 2944SS+1d → 2940, 2944SS+1.12d |  |
| 2946 | Formwork | 2026-07-29 → 2027-02-08 (+194d) | 2026-08-10 → 2027-02-19 (+193d) | 12d → 12.38d | 2944SS+1.88d → 2944SS+2.25d |  |
| 2947 | Concreting | 2026-07-23 → 2027-02-19 (+211d) | 2026-07-24 → 2027-02-20 (+211d) | 1d → 1.12d | 2941 → 2946 |  |
| 2948 | **33rd floor slab** | 2026-08-14 → 2027-02-20 (+190d) | 2026-08-25 → 2027-03-02 (+189d) | 11.88d → 11.25d |  | constraint start no earlier than 2026-08-14 → start no earlier than 2027-02-20 |
| 2949 | Reinforcement | 2026-08-14 → 2027-02-20 (+190d) | 2026-08-23 → 2027-02-27 (+188d) | 9d → 7.88d | 2952FS+3d → 2947 |  |
| 2950 | Wall conduiting | 2026-08-15 → 2027-02-21 (+190d) | 2026-08-20 → 2027-02-23 (+187d) | 5d → 2.25d | 2945, 2949SS+1d → 2945, 2949SS+1.12d |  |
| 2951 | Formwork | 2026-08-16 → 2027-02-22 (+190d) | 2026-08-24 → 2027-03-01 (+189d) | 9d → 7.88d | 2949SS+1.88d → 2949SS+2.25d |  |
| 2952 | Concreting | 2026-08-10 → 2027-03-01 (+203d) | 2026-08-11 → 2027-03-02 (+203d) | 1d → 1.12d | 2946 → 2951 |  |
| 2953 | **34th floor slab** | 2026-08-30 → 2027-03-02 (+184d) | 2026-09-11 → 2027-03-17 (+187d) | 12.75d → 16.88d |  | constraint start no earlier than 2026-08-30 → start no earlier than 2027-03-02 |
| 2954 | Reinforcement | 2026-08-30 → 2027-03-02 (+184d) | 2026-09-08 → 2027-03-14 (+187d) | 9.94d → 13.5d | 2957FS+4d → 2952 |  |
| 2955 | Wall conduiting | 2026-08-31 → 2027-03-03 (+184d) | 2026-09-01 → 2027-03-05 (+185d) | 1.94d → 2.25d | 2950, 2954SS+1d → 2950, 2954SS+1.12d |  |
| 2956 | Formwork | 2026-08-31 → 2027-03-04 (+185d) | 2026-09-10 → 2027-03-16 (+187d) | 9.94d → 13.5d | 2954SS+1.88d → 2954SS+2.25d |  |
| 2957 | Concreting | 2026-08-25 → 2027-03-16 (+203d) | 2026-08-25 → 2027-03-17 (+204d) | 1d → 1.12d | 2951 → 2956 |  |
| 2958 | **35th floor slab** | 2026-09-15 → 2027-03-17 (+183d) | 2026-09-30 → 2027-03-29 (+180d) | 14.88d → 13.5d |  | constraint start no earlier than 2026-09-15 → start no earlier than 2027-03-17 |
| 2959 | Reinforcement | 2026-09-15 → 2027-03-17 (+183d) | 2026-09-27 → 2027-03-25 (+179d) | 12d → 9d | 2962FS+4d → 2957 |  |

| ID | Task | Start | Finish | Duration | Predecessors | Other |
| --- | --- | --- | --- | --- | --- | --- |
| 2960 | Wall conduiting | 2026-09-16 → 2027-03-18 (+183d) | 2026-09-19 → 2027-03-20 (+182d) | 3d → 2.25d | 2955, 2959SS+1d → 2955, 2959SS+1.12d |  |
| 2961 | Formwork | 2026-09-18 → 2027-03-20 (+183d) | 2026-09-29 → 2027-03-28 (+180d) | 11d → 9d | 2960SS+1.88d → 2960SS+2.25d |  |
| 2962 | Concreting | 2026-09-10 → 2027-03-28 (+199d) | 2026-09-11 → 2027-03-29 (+199d) | 0.94d → 1.12d | 2956 → 2961 |  |
| 2963 | **Terrace floor slab** | 2026-09-30 → 2027-03-29 (+180d) | 2026-10-20 → 2027-04-19 (+181d) | 19.88d → 23.62d |  | constraint start no earlier than 2026-09-30 → start no earlier than 2027-03-29 |
| 2964 | Reinforcement | 2026-09-30 → 2027-03-29 (+180d) | 2026-10-16 → 2027-04-16 (+182d) | 16d → 20.25d | 2967 → 2962 |  |
| 2965 | Wall conduiting | 2026-10-01 → 2027-03-30 (+180d) | 2026-10-05 → 2027-04-01 (+178d) | 4d → 2.25d | 2960, 2964SS+1d → 2960, 2964SS+1.12d |  |
| 2966 | Formwork | 2026-10-02 → 2027-03-31 (+180d) | 2026-10-18 → 2027-04-18 (+182d) | 16d → 20.25d | 2964SS+1.88d → 2964SS+2.25d |  |
| 2967 | Concreting | 2026-09-29 → 2027-04-18 (+201d) | 2026-09-30 → 2027-04-19 (+201d) | 1d → 1.12d | 2961 → 2966 |  |
| 2968 | **OHT & Mumty** | 2026-10-20 → 2027-04-19 (+181d) | 2027-01-12 → 2027-05-29 (+137d) | 39.5d → 45d |  | constraint start no earlier than 2026-10-20 → start no earlier than 2027-04-19 |
| 2969 | Reinforcement | 2026-10-20 → 2027-04-19 (+181d) | 2027-01-03 → 2027-05-20 (+137d) | 29.94d → 34.88d | 2972 → 2967 |  |
| 2970 | Wall conduiting | 2026-10-21 → 2027-04-20 (+181d) | 2026-10-26 → 2027-04-25 (+181d) | 4.94d → 5.62d | 2965, 2969SS+1d → 2965, 2969SS+1.12d |  |
| 2971 | Formwork | 2026-10-24 → 2027-04-25 (+183d) | 2027-01-10 → 2027-05-26 (+136d) | 32.94d → 34.88d | 2969SS+3.62d → 2969SS+4.5d, 2970 |  |
| 2972 | Concreting | 2026-10-18 → 2027-05-26 (+220d) | 2026-10-20 → 2027-05-29 (+221d) | 2d → 3.38d | 2966 → 2971 |  |
| 2973 | **Post Pour Activities** | 2025-11-30 → 2026-03-17 (+107d) | 2027-02-23 → 2027-05-27 (+93d) | 396.75d → 439.88d |  | constraint start no earlier than 2025-11-30 → start no earlier than 2026-03-17 |
| 2974 | 1st Floor | 2025-11-30 → 2026-03-17 (+107d) | 2025-12-16 → 2026-03-28 (+102d) | 7d → 12.38d | 2817 → 2807 |  |
| 2975 | 2nd Floor | 2027-09-06 → 2026-03-28 (-527d) | 2027-09-07 → 2026-04-08 (-517d) | 1.94d → 12.38d | 2672 → 2974, 2812 |  |
| 2976 | 3rd Floor | 2025-12-23 → 2026-04-08 (+106d) | 2025-12-30 → 2026-04-19 (+110d) | 7d → 12.38d | 3590, 2832 → 2975, 2817 |  |
| 2977 | 4th Floor | 2025-12-30 → 2026-04-19 (+110d) | 2026-01-06 → 2026-04-30 (+114d) | 7d → 12.38d | 2976, 2837 → 2976, 2822 |  |
| 2978 | 5th Floor | 2026-01-06 → 2026-04-30 (+114d) | 2026-01-13 → 2026-05-11 (+118d) | 7d → 12.38d | 2977, 2842 → 2977, 2827 |  |
| 2979 | 6th Floor | 2026-01-13 → 2026-05-11 (+118d) | 2026-01-20 → 2026-05-22 (+122d) | 7d → 12.38d | 2978, 2847 → 2978, 2832 |  |
| 2980 | 7th Floor | 2026-01-20 → 2026-05-22 (+122d) | 2026-01-27 → 2026-06-02 (+126d) | 7d → 12.38d | 2979, 2852 → 2979, 2837 |  |
| 2981 | 8th Floor | 2026-01-27 → 2026-06-02 (+126d) | 2026-02-03 → 2026-06-13 (+130d) | 7d → 12.38d | 2980, 2857 → 2980, 2842 |  |
| 2982 | 9th Floor | 2026-02-03 → 2026-06-13 (+130d) | 2026-02-10 → 2026-06-24 (+134d) | 7d → 12.38d | 2981, 2862 → 2981, 2847 |  |
| 2983 | 10th Floor | 2026-02-10 → 2026-06-24 (+134d) | 2026-02-17 → 2026-07-04 (+137d) | 7d → 11.25d | 2982, 2867 → 2982, 2852 |  |
| 2984 | 11th Floor | 2026-02-17 → 2026-07-04 (+137d) | 2026-02-24 → 2026-07-14 (+140d) | 7d → 11.25d | 2983, 2872 → 2983, 2857 |  |
| 2985 | 12th Floor | 2026-02-24 → 2026-07-14 (+140d) | 2026-03-03 → 2026-07-24 (+143d) | 7d → 11.25d | 2984, 2877 → 2984, 2862 |  |
| 2986 | 13th Floor | 2026-03-03 → 2026-07-24 (+143d) | 2026-03-10 → 2026-08-03 (+146d) | 7d → 11.25d | 2985, 2882 → 2985, 2867 |  |
| 2987 | 14th Floor | 2026-03-10 → 2026-08-03 (+146d) | 2026-03-17 → 2026-08-14 (+150d) | 7d → 12.38d | 2986, 2887 → 2986, 2872 |  |
| 2988 | 15th Floor | 2026-03-17 → 2026-08-14 (+150d) | 2026-03-24 → 2026-08-25 (+154d) | 7d → 12.38d | 2987, 2892 → 2987, 2877 |  |
| 2989 | 16th Floor | 2026-03-24 → 2026-08-25 (+154d) | 2026-03-31 → 2026-09-05 (+158d) | 7d → 12.38d | 2988, 2897 → 2988, 2882 |  |
| 2990 | 17th Floor | 2026-04-03 → 2026-09-05 (+155d) | 2026-04-10 → 2026-09-16 (+159d) | 7d → 12.38d | 2989, 2902 → 2989, 2887 |  |
| 2991 | 18th Floor | 2026-04-17 → 2026-09-16 (+152d) | 2026-04-24 → 2026-09-27 (+156d) | 7d → 12.38d | 2990, 2907 → 2990, 2892 |  |
| 2992 | 19th Floor | 2026-05-01 → 2026-09-27 (+149d) | 2026-05-08 → 2026-10-08 (+153d) | 7d → 12.38d | 2991, 2912 → 2991, 2897 |  |
| 2993 | 20th Floor | 2026-05-15 → 2026-10-08 (+146d) | 2026-05-22 → 2026-10-19 (+150d) | 7d → 12.38d | 2992, 2917 → 2992, 2902 |  |
| 2994 | 21st Floor | 2026-05-26 → 2026-10-19 (+146d) | 2026-06-02 → 2026-10-30 (+150d) | 7d → 12.38d | 2993, 2922 → 2993, 2907 |  |
| 2995 | 22nd Floor | 2026-06-05 → 2026-10-30 (+147d) | 2026-06-12 → 2026-12-25 (+196d) | 7d → 12.38d | 2994, 2927 → 2994, 2912 |  |
| 2996 | 23rd Floor | 2026-06-15 → 2026-12-25 (+193d) | 2026-06-22 → 2027-01-05 (+197d) | 7d → 12.38d | 2995, 2932 → 2995, 2917 |  |
| 2997 | 24th Floor | 2026-06-28 → 2027-01-05 (+191d) | 2026-07-05 → 2027-01-16 (+195d) | 7d → 12.38d | 2996, 2937 → 2996, 2922 |  |
| 2998 | 25th Floor | 2026-07-10 → 2027-01-16 (+190d) | 2026-07-17 → 2027-01-27 (+194d) | 7d → 12.38d | 2997, 2942 → 2997, 2927 |  |
| 2999 | 26th Floor | 2026-07-24 → 2027-01-27 (+187d) | 2026-07-31 → 2027-02-07 (+191d) | 7d → 12.38d | 2998, 2947 → 2998, 2932 |  |
| 3000 | 27th Floor | 2026-08-11 → 2027-02-07 (+180d) | 2026-08-18 → 2027-02-18 (+184d) | 7d → 12.38d | 2999, 2952 → 2999, 2937 |  |
| 3001 | 28th Floor | 2026-08-26 → 2027-02-18 (+176d) | 2026-09-01 → 2027-03-01 (+181d) | 7d → 12.38d | 3000, 2957 → 3000, 2942 |  |
| 3002 | 29th Floor | 2027-10-28 → 2027-03-01 (-241d) | 2027-10-30 → 2027-03-12 (-232d) | 1.94d → 12.38d | 2699 → 3001, 2947 |  |
| 3003 | 30th Floor | 2026-09-30 → 2027-03-12 (+163d) | 2026-10-07 → 2027-03-23 (+167d) | 7d → 12.38d | 3617, 2967 → 3002, 2952 |  |
| 3004 | 31st Floor | 2027-11-01 → 2027-03-23 (-223d) | 2027-11-01 → 2027-04-03 (-212d) | 0d → 12.38d | 2701 → 3003, 2957 |  |
| 3005 | 32nd Flood | 2027-01-23 → 2027-04-03 (+70d) | 2027-01-30 → 2027-04-14 (+74d) | 7d → 12.38d | 2702, 2768 → 3004, 2962 |  |
| 3006 | 33rd Floor | 2027-01-20 → 2027-04-14 (+84d) | 2027-01-26 → 2027-04-25 (+89d) | 7d → 12.38d | 3922 → 3005 |  |
| 3007 | 34th Floor | 2027-01-27 → 2027-04-25 (+88d) | 2027-02-02 → 2027-05-03 (+90d) | 7d → 9d |  |  |
| 3008 | 35th Floor | 2027-02-03 → 2027-05-03 (+89d) | 2027-02-09 → 2027-05-11 (+91d) | 7d → 9d |  |  |
| 3009 | Terrace | 2027-02-10 → 2027-05-11 (+90d) | 2027-02-16 → 2027-05-19 (+92d) | 7d → 9d |  |  |
| 3010 | Mumty & Machine Room | 2027-02-17 → 2027-05-19 (+91d) | 2027-02-23 → 2027-05-27 (+93d) | 7d → 9d |  |  |
| 3011 | **Finishing work** | 2025-12-16 → 2026-03-29 (+103d) | 2028-04-15 → 2028-08-26 (+133d) | 806.31d → 889.88d |  | constraint start no earlier than 2025-12-16 → start no earlier than 2026-03-29 |
| 3012 | **Flat finishing** | 2025-12-16 → 2026-03-29 (+103d) | 2028-04-15 → 2028-08-26 (+133d) | 806.31d → 889.88d |  | constraint start no earlier than 2025-12-16 → start no earlier than 2026-03-29 |
| 3013 | **1st Floor** | 2025-12-16 → 2026-03-29 (+103d) | 2027-03-27 → 2027-05-19 (+53d) | 421.25d → 417.38d |  | constraint start no earlier than 2025-12-16 → start no earlier than 2026-03-29 |
| 3014 | Block Work | 2026-01-13 → 2026-03-29 (+75d) | 2026-02-22 → 2026-04-06 (+43d) | 39.94d → 9d | 2061FS+0.25d → 2974FS+0.25d, 2807 |  |
| 3015 | Door Frame Fixing | 2025-12-24 → 2026-04-06 (+103d) | 2026-01-02 → 2026-04-11 (+99d) | 9d → 5.62d | 3030 → 3014 |  |
| 3016 | Internal Plumbing Works | 2025-12-24 → 2026-04-06 (+103d) | 2026-01-01 → 2026-04-16 (+105d) | 8d → 11.25d | 3030 → 3014 |  |
| 3017 | Waterproofing | 2026-01-31 → 2026-04-16 (+75d) | 2026-02-10 → 2026-04-28 (+77d) | 10d → 13.5d | 2747, 3064 → 3016 |  |
| 3018 | Internal Plaster | 2027-05-07 → 2026-04-11 (-391d) | 2027-05-18 → 2026-04-20 (-393d) | 11d → 10.12d | 2661, 2642, 2643, 2612 → 3015FS+0.25d |  |
| 3019 | IPS flooring work | 2026-01-11 → 2026-04-28 (+107d) | 2026-01-21 → 2026-05-07 (+106d) | 10d → 10.12d | 3015, 3016, 2628 → 3015, 3016, 3017 |  |
| 3020 | Toilet dado work | 2026-01-21 → 2027-03-09 (+412d) | 2026-01-29 → 2027-03-17 (+412d) | 8d → 9d | 2827, 3050FS+1d → 3017FS+303.75d, 3018FS+303.75d |  |
| 3021 | Toilet flooring work | 2026-01-29 → 2027-03-17 (+412d) | 2026-02-06 → 2027-03-24 (+411d) | 8d → 7.88d |  |  |
| 3022 | Living dinning flooring | 2026-01-02 → 2027-03-24 (+446d) | 2026-01-14 → 2027-03-28 (+438d) | 12d → 4.5d | 3015FS+0.25d → 3015, 3021 |  |
| 3023 | Aluminium door-window fixing | 2026-01-21 → 2027-03-28 (+431d) | 2026-02-02 → 2027-04-05 (+427d) | 12d → 9d | 3019FS+0.25d → 2822, 3022FS+0.25d |  |
| 3024 | Putty primer coat | 2026-01-14 → 2027-03-28 (+438d) | 2026-01-20 → 2027-04-06 (+441d) | 6d → 10.12d |  |  |
| 3025 | Door shutter fixing | 2026-01-14 → 2027-03-28 (+438d) | 2026-01-22 → 2027-04-05 (+438d) | 8d → 9d |  |  |
| 3026 | Electrical wiring work | 2027-03-03 → 2027-04-15 (+43d) | 2027-03-11 → 2027-04-27 (+47d) | 8d → 13.5d | 3025FS+360d → 3025FS+11.25d |  |
| 3027 | Painting 1st coat | 2027-03-11 → 2027-04-27 (+47d) | 2027-03-19 → 2027-05-09 (+51d) | 8d → 13.5d |  |  |
| 3028 | False ceiling | 2027-03-19 → 2027-05-09 (+51d) | 2027-03-27 → 2027-05-19 (+53d) | 8d → 11.25d |  |  |
| 3029 | **2nd Floor** | 2025-12-24 → 2026-04-06 (+103d) | 2027-04-28 → 2027-05-31 (+33d) | 445.25d → 421.62d |  | constraint start no earlier than 2025-12-24 → start no earlier than 2026-04-06 |

| ID | Task | Start | Finish | Duration | Predecessors | Other |
| --- | --- | --- | --- | --- | --- | --- |
| 3030 | Block Work | 2025-12-16 → 2026-04-06 (+111d) | 2025-12-24 → 2026-04-14 (+111d) | 8d → 9d | 2974FS+0.25d → 3014FS+0.25d |  |
| 3031 | Door Frame Fixing | 2026-01-02 → 2026-04-14 (+102d) | 2026-01-11 → 2026-04-19 (+98d) | 9d → 5.62d | 3015, 3046 → 3015, 3030 |  |
| 3032 | Internal Plumbing Works | 2026-01-01 → 2026-04-16 (+105d) | 2026-01-09 → 2026-04-26 (+107d) | 8d → 11.25d | 3016, 3046 → 3016, 3030 |  |
| 3033 | Waterproofing | 2026-02-10 → 2026-04-28 (+77d) | 2026-02-20 → 2026-05-10 (+79d) | 10d → 13.5d | 3017, 3080 → 3017, 3032 |  |
| 3034 | Internal Plaster | 2026-02-18 → 2026-04-20 (+61d) | 2026-06-18 → 2026-04-29 (-50d) | 119.94d → 10.12d | 2666SS+17.88d → 3018FS+0.25d, 3031FS+0.25d |  |
| 3035 | IPS flooring work | 2026-01-21 → 2026-05-10 (+109d) | 2026-01-31 → 2026-05-19 (+108d) | 10d → 10.12d | 3019, 3031, 3032, 2644 → 3019, 3031, 3032, 3033 |  |
| 3036 | Toilet dado work | 2026-01-29 → 2027-03-17 (+412d) | 2026-02-06 → 2027-03-25 (+412d) | 8d → 9d | 3020FS+0.25d → 3020, 3033, 3034 |  |
| 3037 | Toilet flooring work | 2026-02-06 → 2027-03-25 (+412d) | 2026-02-14 → 2027-04-01 (+411d) | 8d → 7.88d |  |  |
| 3038 | Living dinning flooring | 2026-01-15 → 2027-04-01 (+441d) | 2026-01-26 → 2027-04-05 (+434d) | 12d → 4.5d | 3022FS+0.25d → 3022FS+0.25d, 3037FS+0.25d |  |
| 3039 | Aluminium door-window fixing | 2026-02-03 → 2027-04-05 (+426d) | 2026-02-14 → 2027-04-13 (+423d) | 12d → 9d | 3023FS+0.25d → 3023FS+0.25d, 3038FS+0.25d |  |
| 3040 | Putty primer coat | 2026-01-27 → 2027-04-06 (+434d) | 2026-02-01 → 2027-04-12 (+435d) | 6d → 6.75d |  |  |
| 3041 | Door shutter fixing | 2026-01-27 → 2027-04-05 (+433d) | 2026-02-03 → 2027-04-13 (+434d) | 8d → 9d |  |  |
| 3042 | Electrical wiring work | 2027-03-12 → 2027-04-27 (+46d) | 2027-03-31 → 2027-05-09 (+39d) | 20d → 13.5d | 3026FS+0.25d, 3041FS+300d → 3026, 3041 |  |
| 3043 | Painting 1st coat | 2027-04-01 → 2027-05-09 (+38d) | 2027-04-20 → 2027-05-21 (+31d) | 20d → 13.5d |  |  |
| 3044 | False ceiling | 2027-04-21 → 2027-05-21 (+30d) | 2027-04-28 → 2027-05-31 (+33d) | 8d → 11.25d |  |  |
| 3045 | **3rd Floor** | 2026-01-02 → 2026-04-14 (+102d) | 2027-05-06 → 2027-06-12 (+37d) | 445d → 425.88d |  | constraint start no earlier than 2026-01-02 → start no earlier than 2026-04-14 |
| 3046 | Block Work | 2025-12-24 → 2026-04-14 (+111d) | 2026-01-01 → 2026-04-22 (+111d) | 8d → 9d |  |  |
| 3047 | Door Frame Fixing | 2026-01-11 → 2026-04-22 (+101d) | 2026-01-20 → 2026-04-27 (+97d) | 9d → 5.62d | 3031, 3062 → 3031, 3046 |  |
| 3048 | Internal Plumbing Works | 2026-01-10 → 2026-04-26 (+106d) | 2026-01-17 → 2026-05-06 (+109d) | 8d → 11.25d | 3032, 3062 → 3032, 3046 |  |
| 3049 | Waterproofing | 2026-02-20 → 2026-05-10 (+79d) | 2026-03-02 → 2026-05-22 (+81d) | 10d → 13.5d | 3033, 3096 → 3033, 3048 |  |
| 3050 | Internal Plaster | 2026-01-12 → 2026-04-29 (+107d) | 2026-01-20 → 2026-05-08 (+108d) | 8d → 10.12d | 3030FS+1d, 3016FS+1d, 2628FS+1d → 3034FS+0.25d, 3047FS+0.25d |  |
| 3051 | IPS flooring work | 2026-01-31 → 2026-05-22 (+111d) | 2026-02-10 → 2026-05-31 (+110d) | 10d → 10.12d | 3035, 3047, 2747, 3082 → 3035, 3047, 3049, 3050 |  |
| 3052 | Toilet dado work | 2026-02-07 → 2027-03-25 (+411d) | 2026-02-14 → 2027-04-02 (+412d) | 8d → 9d | 3036FS+0.25d → 3036, 3049, 3050 |  |
| 3053 | Toilet flooring work | 2026-02-15 → 2027-04-02 (+411d) | 2026-02-22 → 2027-04-09 (+411d) | 8d → 7.88d |  |  |
| 3054 | Living dinning flooring | 2026-01-27 → 2027-04-09 (+437d) | 2026-02-08 → 2027-04-13 (+429d) | 12d → 4.5d | 3038FS+0.25d → 3038FS+0.25d, 3053FS+0.25d |  |
| 3055 | Aluminium door-window fixing | 2026-02-15 → 2027-04-13 (+422d) | 2026-02-27 → 2027-04-21 (+418d) | 12d → 9d | 3039FS+0.25d → 3039FS+0.25d, 3054FS+0.25d |  |
| 3056 | Putty primer coat | 2026-02-08 → 2027-04-13 (+429d) | 2026-02-14 → 2027-04-19 (+429d) | 6d → 6.75d |  |  |
| 3057 | Door shutter fixing | 2026-02-08 → 2027-04-13 (+429d) | 2026-02-16 → 2027-04-21 (+429d) | 8d → 9d |  |  |
| 3058 | Electrical wiring work | 2027-04-01 → 2027-05-09 (+38d) | 2027-04-08 → 2027-05-21 (+43d) | 8d → 13.5d |  |  |
| 3059 | Painting 1st coat | 2027-04-21 → 2027-05-21 (+30d) | 2027-04-28 → 2027-06-02 (+35d) | 8d → 13.5d |  |  |
| 3060 | False ceiling | 2027-04-29 → 2027-06-02 (+34d) | 2027-05-06 → 2027-06-12 (+37d) | 8d → 11.25d |  |  |
| 3061 | **4th Floor** | 2026-01-10 → 2026-04-22 (+102d) | 2027-05-14 → 2027-06-24 (+41d) | 444.75d → 430.12d |  | constraint start no earlier than 2026-01-10 → start no earlier than 2026-04-22 |
| 3062 | Block Work | 2026-01-02 → 2026-04-22 (+110d) | 2026-01-09 → 2026-04-30 (+111d) | 8d → 9d |  |  |
| 3063 | Door Frame Fixing | 2026-01-20 → 2026-04-30 (+100d) | 2026-01-29 → 2026-05-05 (+96d) | 9d → 5.62d | 3047, 3078 → 3047, 3062 |  |
| 3064 | Internal Plumbing Works | 2026-01-18 → 2026-05-06 (+108d) | 2026-01-26 → 2026-05-16 (+110d) | 8d → 11.25d | 3048, 3078 → 3048, 3062 |  |
| 3065 | Waterproofing | 2026-03-02 → 2026-05-22 (+81d) | 2026-03-12 → 2026-06-03 (+83d) | 10d → 13.5d | 3049, 3112 → 3049, 3064 |  |
| 3066 | Internal Plaster | 2026-01-02 → 2026-05-09 (+127d) | 2026-01-09 → 2026-05-18 (+129d) | 8d → 10.12d | 3046FS+0.25d → 3050FS+0.25d, 3063FS+0.25d |  |
| 3067 | IPS flooring work | 2026-02-10 → 2026-06-03 (+113d) | 2026-02-20 → 2026-06-12 (+112d) | 10d → 10.12d | 3051, 3063, 3017, 3098 → 3051, 3063, 3065, 3066 |  |
| 3068 | Toilet dado work | 2026-02-15 → 2027-04-02 (+411d) | 2026-02-23 → 2027-04-10 (+411d) | 8d → 9d | 3052FS+0.25d → 3052, 3065, 3066 |  |
| 3069 | Toilet flooring work | 2026-02-23 → 2027-04-10 (+411d) | 2026-03-03 → 2027-04-17 (+410d) | 8d → 7.88d |  |  |
| 3070 | Living dinning flooring | 2026-02-08 → 2027-04-17 (+433d) | 2026-02-20 → 2027-04-21 (+425d) | 12d → 4.5d | 3054FS+0.25d → 3054FS+0.25d, 3069FS+0.25d |  |
| 3071 | Aluminium door-window fixing | 2026-02-27 → 2027-04-22 (+419d) | 2026-03-11 → 2027-04-30 (+415d) | 12d → 9d | 3055FS+0.25d → 3055FS+0.25d, 3070FS+0.25d |  |
| 3072 | Putty primer coat | 2026-02-20 → 2027-04-21 (+425d) | 2026-02-26 → 2027-04-27 (+425d) | 6d → 6.75d |  |  |
| 3073 | Door shutter fixing | 2026-02-20 → 2027-04-21 (+425d) | 2026-02-28 → 2027-04-29 (+425d) | 8d → 9d |  |  |
| 3074 | Electrical wiring work | 2027-04-09 → 2027-05-21 (+42d) | 2027-04-16 → 2027-06-02 (+47d) | 8d → 13.5d |  |  |
| 3075 | Painting 1st coat | 2027-04-29 → 2027-06-02 (+34d) | 2027-05-06 → 2027-06-14 (+39d) | 8d → 13.5d |  |  |
| 3076 | False ceiling | 2027-05-07 → 2027-06-14 (+38d) | 2027-05-14 → 2027-06-24 (+41d) | 8d → 11.25d |  |  |
| 3077 | **5th Floor** | 2026-01-18 → 2026-05-01 (+103d) | 2027-05-22 → 2027-07-09 (+48d) | 444.5d → 437.75d |  | constraint start no earlier than 2026-01-18 → start no earlier than 2026-05-01 |
| 3078 | Block Work | 2026-01-10 → 2026-05-01 (+111d) | 2026-01-18 → 2026-05-09 (+111d) | 8d → 9d |  |  |
| 3079 | Door Frame Fixing | 2026-01-29 → 2026-05-09 (+100d) | 2026-02-07 → 2026-05-14 (+96d) | 9d → 5.62d | 3063, 3094 → 3063, 3078 |  |
| 3080 | Internal Plumbing Works | 2026-01-26 → 2026-05-16 (+110d) | 2026-02-03 → 2026-05-26 (+112d) | 8d → 11.25d | 3064, 3094 → 3064, 3078 |  |
| 3081 | Waterproofing | 2026-03-12 → 2026-06-03 (+83d) | 2026-03-22 → 2026-06-15 (+85d) | 10d → 13.5d | 3065, 3128 → 3065, 3080 |  |
| 3082 | Internal Plaster | 2026-01-10 → 2026-05-18 (+128d) | 2026-01-18 → 2026-05-27 (+129d) | 8d → 10.12d | 3066FS+0.25d → 3066FS+0.25d, 3079FS+0.25d |  |
| 3083 | IPS flooring work | 2026-02-20 → 2026-06-15 (+115d) | 2026-03-02 → 2026-06-24 (+114d) | 10d → 10.12d | 3067, 3079, 3033, 3114 → 3067, 3079, 3081, 3082 |  |
| 3084 | Toilet dado work | 2026-02-23 → 2027-04-10 (+411d) | 2026-03-03 → 2027-04-18 (+411d) | 8d → 9d | 3068, 3033, 3114 → 3068, 3081, 3082 |  |
| 3085 | Toilet flooring work | 2026-03-03 → 2027-04-18 (+411d) | 2026-03-11 → 2027-04-25 (+410d) | 8d → 7.88d |  |  |
| 3086 | Living dinning flooring | 2026-02-20 → 2027-04-25 (+429d) | 2026-03-04 → 2027-04-29 (+421d) | 12d → 4.5d | 3070FS+0.25d → 3070FS+0.25d, 3085FS+0.25d |  |
| 3087 | Aluminium door-window fixing | 2026-03-11 → 2027-04-30 (+415d) | 2026-03-23 → 2027-05-08 (+411d) | 12d → 9d | 3071FS+0.25d → 3071FS+0.25d, 3086FS+0.25d |  |
| 3088 | Putty primer coat | 2026-03-04 → 2027-04-29 (+421d) | 2026-03-10 → 2027-05-05 (+421d) | 6d → 6.75d |  |  |
| 3089 | Door shutter fixing | 2026-03-04 → 2027-04-29 (+421d) | 2026-03-12 → 2027-05-07 (+421d) | 8d → 9d |  |  |
| 3090 | Electrical wiring work | 2027-04-17 → 2027-06-02 (+46d) | 2027-04-24 → 2027-06-14 (+51d) | 8d → 13.5d |  |  |
| 3091 | Painting 1st coat | 2027-05-07 → 2027-06-14 (+38d) | 2027-05-14 → 2027-06-29 (+46d) | 8d → 16.88d |  |  |
| 3092 | False ceiling | 2027-05-15 → 2027-06-29 (+45d) | 2027-05-22 → 2027-07-09 (+48d) | 8d → 11.25d |  |  |
| 3093 | **6th Floor** | 2026-01-26 → 2026-05-09 (+103d) | 2027-05-30 → 2027-07-21 (+52d) | 444.25d → 442d |  | constraint start no earlier than 2026-01-26 → start no earlier than 2026-05-09 |
| 3094 | Block Work | 2026-01-18 → 2026-05-09 (+111d) | 2026-01-26 → 2026-05-17 (+111d) | 8d → 9d |  |  |
| 3095 | Door Frame Fixing | 2026-02-07 → 2026-05-14 (+96d) | 2026-02-16 → 2026-05-19 (+92d) | 9d → 5.62d | 2832, 3079 → 2827, 3079 |  |
| 3096 | Internal Plumbing Works | 2026-02-03 → 2026-05-26 (+112d) | 2026-02-11 → 2026-06-05 (+114d) | 8d → 11.25d | 3080, 3110 → 3080, 3094 |  |
| 3097 | Waterproofing | 2026-03-22 → 2026-06-15 (+85d) | 2026-04-01 → 2026-06-27 (+87d) | 10d → 13.5d | 3081, 3144 → 3081, 3096 |  |
| 3098 | Internal Plaster | 2026-01-18 → 2026-05-27 (+129d) | 2026-01-26 → 2026-06-05 (+130d) | 8d → 10.12d | 3082FS+0.25d → 3082FS+0.25d, 3095FS+0.25d |  |
| 3099 | IPS flooring work | 2026-03-02 → 2026-06-27 (+117d) | 2026-03-12 → 2026-07-06 (+116d) | 10d → 10.12d | 3083, 3095, 3049, 3130 → 3083, 3095, 3097, 3098 |  |

| ID | Task | Start | Finish | Duration | Predecessors | Other |
| --- | --- | --- | --- | --- | --- | --- |
| 3100 | Toilet dado work | 2026-03-03 → 2027-04-18 (+411d) | 2026-03-11 → 2027-04-26 (+411d) | 8d → 9d | 3084, 3049, 3130 → 3084, 3097, 3098 |  |
| 3101 | Toilet flooring work | 2026-03-11 → 2027-04-26 (+411d) | 2026-03-19 → 2027-05-03 (+410d) | 8d → 7.88d |  |  |
| 3102 | Living dinning flooring | 2026-03-05 → 2027-05-03 (+424d) | 2026-03-16 → 2027-05-07 (+417d) | 12d → 4.5d | 3086FS+0.25d → 3086FS+0.25d, 3101FS+0.25d |  |
| 3103 | Aluminium door-window fixing | 2026-03-24 → 2027-05-08 (+410d) | 2026-04-04 → 2027-05-16 (+407d) | 12d → 9d | 3087FS+0.25d → 3087FS+0.25d, 3102FS+0.25d |  |
| 3104 | Putty primer coat | 2026-03-17 → 2027-05-07 (+416d) | 2026-03-22 → 2027-05-13 (+417d) | 6d → 6.75d |  |  |
| 3105 | Door shutter fixing | 2026-03-17 → 2027-05-07 (+416d) | 2026-03-24 → 2027-05-15 (+417d) | 8d → 9d |  |  |
| 3106 | Electrical wiring work | 2027-04-25 → 2027-06-14 (+50d) | 2027-05-02 → 2027-06-26 (+55d) | 8d → 13.5d |  |  |
| 3107 | Painting 1st coat | 2027-05-15 → 2027-06-29 (+45d) | 2027-05-22 → 2027-07-11 (+50d) | 8d → 13.5d |  |  |
| 3108 | False ceiling | 2027-05-23 → 2027-07-11 (+49d) | 2027-05-30 → 2027-07-21 (+52d) | 8d → 11.25d |  |  |
| 3109 | **7th Floor** | 2026-02-04 → 2026-05-17 (+102d) | 2027-06-14 → 2027-08-02 (+49d) | 451d → 446.25d |  | constraint start no earlier than 2026-02-04 → start no earlier than 2026-05-17 |
| 3110 | Block Work | 2026-01-26 → 2026-05-17 (+111d) | 2026-02-03 → 2026-05-25 (+111d) | 8d → 9d |  |  |
| 3111 | Door Frame Fixing | 2026-02-16 → 2026-05-25 (+98d) | 2026-02-25 → 2026-05-30 (+94d) | 9d → 5.62d | 3095, 3126 → 3095, 3110 |  |
| 3112 | Internal Plumbing Works | 2026-02-12 → 2026-06-05 (+113d) | 2026-02-19 → 2026-06-15 (+116d) | 8d → 11.25d | 3096, 3126 → 3096, 3110 |  |
| 3113 | Waterproofing | 2026-04-01 → 2026-06-27 (+87d) | 2026-04-11 → 2026-07-09 (+89d) | 10d → 13.5d | 3097, 3176 → 3097, 3112 |  |
| 3114 | Internal Plaster | 2026-01-26 → 2026-06-05 (+130d) | 2026-02-03 → 2026-06-14 (+131d) | 8d → 10.12d | 3098FS+0.25d → 3098FS+0.25d, 3111FS+0.25d |  |
| 3115 | IPS flooring work | 2026-03-12 → 2026-07-09 (+119d) | 2026-03-22 → 2026-07-18 (+118d) | 10d → 10.12d | 3099, 3111, 3065, 3146 → 3099, 3111, 3113, 3114 |  |
| 3116 | Toilet dado work | 2026-03-12 → 2027-04-26 (+410d) | 2026-03-20 → 2027-05-04 (+410d) | 8d → 9d | 3100, 3065, 3146 → 3100, 3113, 3114 |  |
| 3117 | Toilet flooring work | 2026-03-20 → 2027-05-04 (+410d) | 2026-03-28 → 2027-05-11 (+409d) | 8d → 7.88d |  |  |
| 3118 | Living dinning flooring | 2026-03-17 → 2027-05-07 (+416d) | 2026-03-29 → 2027-05-10 (+407d) | 12d → 3.38d | 3102FS+0.25d → 3102FS+0.25d, 3111 |  |
| 3119 | Aluminium door-window fixing | 2026-04-05 → 2027-05-16 (+406d) | 2026-04-17 → 2027-05-24 (+402d) | 12d → 9d |  |  |
| 3120 | Putty primer coat | 2026-03-29 → 2027-05-13 (+410d) | 2026-04-04 → 2027-05-19 (+410d) | 6d → 6.75d |  |  |
| 3121 | Door shutter fixing | 2026-03-29 → 2027-05-15 (+412d) | 2026-04-06 → 2027-05-23 (+412d) | 8d → 9d |  |  |
| 3122 | Electrical wiring work | 2027-05-03 → 2027-06-26 (+54d) | 2027-05-17 → 2027-07-08 (+52d) | 15d → 13.5d |  |  |
| 3123 | Painting 1st coat | 2027-05-23 → 2027-07-11 (+49d) | 2027-06-06 → 2027-07-23 (+47d) | 15d → 13.5d |  |  |
| 3124 | False ceiling | 2027-06-07 → 2027-07-23 (+46d) | 2027-06-14 → 2027-08-02 (+49d) | 8d → 11.25d |  |  |
| 3125 | **8th Floor** | 2026-02-12 → 2026-05-25 (+102d) | 2027-06-22 → 2027-08-14 (+53d) | 450.75d → 450.5d |  | constraint start no earlier than 2026-02-12 → start no earlier than 2026-05-25 |
| 3126 | Block Work | 2026-02-04 → 2026-05-25 (+110d) | 2026-02-11 → 2026-06-02 (+111d) | 8d → 9d |  |  |
| 3127 | Door Frame Fixing | 2026-02-25 → 2026-06-02 (+97d) | 2026-03-06 → 2026-06-07 (+93d) | 9d → 5.62d | 3111, 3142 → 3111, 3126 |  |
| 3128 | Internal Plumbing Works | 2026-02-20 → 2026-06-15 (+115d) | 2026-02-28 → 2026-06-25 (+117d) | 8d → 11.25d | 3112, 3142 → 3112, 3126 |  |
| 3129 | Waterproofing | 2026-04-11 → 2026-07-09 (+89d) | 2026-04-21 → 2026-07-21 (+91d) | 10d → 13.5d | 3113, 3192 → 3113, 3128 |  |
| 3130 | Internal Plaster | 2026-02-04 → 2026-06-14 (+130d) | 2026-02-11 → 2026-06-23 (+132d) | 8d → 10.12d | 3114FS+0.25d → 3114FS+0.25d, 3127FS+0.25d |  |
| 3131 | IPS flooring work | 2026-03-22 → 2026-07-21 (+121d) | 2026-04-01 → 2026-07-30 (+120d) | 10d → 10.12d | 3115, 3127, 3081, 3178 → 3115, 3127, 3129, 3130 |  |
| 3132 | Toilet dado work | 2026-03-22 → 2027-05-04 (+408d) | 2026-03-30 → 2027-05-12 (+408d) | 8d → 9d | 3116, 3081, 3178 → 3116, 3129, 3130 |  |
| 3133 | Toilet flooring work | 2026-03-30 → 2027-05-12 (+408d) | 2026-04-07 → 2027-05-19 (+407d) | 8d → 7.88d |  |  |
| 3134 | Living dinning flooring | 2026-03-29 → 2027-05-10 (+407d) | 2026-04-10 → 2027-05-13 (+398d) | 12d → 3.38d |  |  |
| 3135 | Aluminium door-window fixing | 2026-04-17 → 2027-05-24 (+402d) | 2026-04-29 → 2027-06-05 (+402d) | 12d → 13.5d | 3119FS+0.25d → 3119FS+0.25d, 3134FS+0.25d |  |
| 3136 | Putty primer coat | 2026-04-10 → 2027-05-19 (+404d) | 2026-04-16 → 2027-05-25 (+404d) | 6d → 6.75d |  |  |
| 3137 | Door shutter fixing | 2026-04-10 → 2027-05-23 (+408d) | 2026-04-18 → 2027-05-31 (+408d) | 8d → 9d |  |  |
| 3138 | Electrical wiring work | 2027-05-18 → 2027-07-08 (+51d) | 2027-05-25 → 2027-07-20 (+56d) | 8d → 13.5d |  |  |
| 3139 | Painting 1st coat | 2027-06-07 → 2027-07-23 (+46d) | 2027-06-14 → 2027-08-04 (+51d) | 8d → 13.5d |  |  |
| 3140 | False ceiling | 2027-06-15 → 2027-08-04 (+50d) | 2027-06-22 → 2027-08-14 (+53d) | 8d → 11.25d |  |  |
| 3141 | **9th Floor** | 2026-02-20 → 2026-06-02 (+102d) | 2027-06-30 → 2027-08-26 (+57d) | 450.5d → 454.75d |  | constraint start no earlier than 2026-02-20 → start no earlier than 2026-06-02 |
| 3142 | Block Work | 2026-02-12 → 2026-06-02 (+110d) | 2026-02-20 → 2026-06-10 (+110d) | 8d → 9d |  |  |
| 3143 | Door Frame Fixing | 2026-03-06 → 2026-06-10 (+96d) | 2026-03-15 → 2026-06-15 (+92d) | 9d → 5.62d | 3127, 3174 → 3127, 3142 |  |
| 3144 | Internal Plumbing Works | 2026-02-28 → 2026-06-25 (+117d) | 2026-03-08 → 2026-07-05 (+119d) | 8d → 11.25d | 3128, 3174 → 3128, 3142 |  |
| 3145 | Waterproofing | 2026-05-01 → 2026-07-21 (+81d) | 2026-05-11 → 2026-08-02 (+83d) | 10d → 13.5d | 3161, 3208 → 3129, 3144 |  |
| 3146 | Internal Plaster | 2026-02-12 → 2026-06-24 (+132d) | 2026-02-20 → 2026-07-03 (+133d) | 8d → 10.12d | 3130FS+0.25d → 3130FS+0.25d, 3143FS+0.25d |  |
| 3147 | IPS flooring work | 2026-04-01 → 2026-08-02 (+123d) | 2026-04-11 → 2026-08-11 (+122d) | 10d → 10.12d | 3131, 3143, 3097, 3194 → 3131, 3143, 3145, 3146 |  |
| 3148 | Toilet dado work | 2026-04-01 → 2027-05-12 (+406d) | 2026-04-09 → 2027-05-20 (+406d) | 8d → 9d | 3132, 3097, 3194 → 3132, 3145, 3146 |  |
| 3149 | Toilet flooring work | 2026-04-09 → 2027-05-20 (+406d) | 2026-04-17 → 2027-05-27 (+405d) | 8d → 7.88d |  |  |
| 3150 | Living dinning flooring | 2026-04-10 → 2027-05-14 (+399d) | 2026-04-22 → 2027-05-17 (+390d) | 12d → 3.38d |  |  |
| 3151 | Aluminium door-window fixing | 2026-04-29 → 2027-06-06 (+403d) | 2026-05-11 → 2027-06-18 (+403d) | 12d → 13.5d | 3135FS+0.25d → 3135FS+0.25d, 3150FS+0.25d |  |
| 3152 | Putty primer coat | 2026-05-12 → 2027-05-25 (+378d) | 2026-05-18 → 2027-05-31 (+378d) | 6d → 6.75d | 3184, 3182 → 3136, 3150 |  |
| 3153 | Door shutter fixing | 2026-05-13 → 2027-05-31 (+383d) | 2026-05-20 → 2027-06-08 (+384d) | 8d → 9d | 3185, 3182 → 3137, 3150 |  |
| 3154 | Electrical wiring work | 2027-06-11 → 2027-07-20 (+39d) | 2027-06-18 → 2027-08-01 (+44d) | 8d → 13.5d | 3186, 3153 → 3138, 3153 |  |
| 3155 | Painting 1st coat | 2027-07-01 → 2027-08-04 (+34d) | 2027-07-08 → 2027-08-16 (+39d) | 8d → 13.5d | 3187, 3152, 3153, 3154 → 3139, 3152, 3153, 3154 |  |
| 3156 | False ceiling | 2027-07-09 → 2027-08-16 (+38d) | 2027-07-16 → 2027-08-26 (+41d) | 8d → 11.25d | 3188, 3155 → 3140, 3155 |  |
| 3157 | **10th Floor** | 2026-02-28 → 2026-06-11 (+103d) | 2027-07-08 → 2027-09-07 (+61d) | 450.25d → 459d |  | constraint start no earlier than 2026-02-28 → start no earlier than 2026-06-11 |
| 3158 | Block Work | 2026-03-17 → 2026-06-11 (+86d) | 2026-03-25 → 2026-06-19 (+86d) | 8d → 9d | 3206FS+0.25d → 3142FS+0.25d |  |
| 3159 | Door Frame Fixing | 2026-04-02 → 2026-06-19 (+78d) | 2026-04-11 → 2026-06-24 (+74d) | 9d → 5.62d | 3191, 3158 → 3143, 3158 |  |
| 3160 | Internal Plumbing Works | 2026-03-25 → 2026-07-05 (+102d) | 2026-04-02 → 2026-07-15 (+104d) | 8d → 11.25d | 3192, 3158 → 3144, 3158 |  |
| 3161 | Waterproofing | 2026-04-21 → 2026-08-02 (+103d) | 2026-05-01 → 2026-08-14 (+105d) | 10d → 13.5d | 3129, 3160 → 3145, 3160 |  |
| 3162 | Internal Plaster | 2026-03-25 → 2026-07-03 (+100d) | 2026-04-02 → 2026-07-12 (+101d) | 8d → 10.12d | 3226FS+0.25d → 3146FS+0.25d, 3159FS+0.25d |  |
| 3163 | IPS flooring work | 2026-04-11 → 2026-08-14 (+125d) | 2026-04-21 → 2026-08-23 (+124d) | 10d → 10.12d | 3147, 3175, 3113, 3210 → 3147, 3159, 3161, 3162 |  |
| 3164 | Toilet dado work | 2026-04-11 → 2027-05-20 (+404d) | 2026-04-19 → 2027-05-28 (+404d) | 8d → 9d | 3148, 3113, 3210 → 3148, 3161, 3162 |  |
| 3165 | Toilet flooring work | 2026-04-19 → 2027-05-28 (+404d) | 2026-04-27 → 2027-06-04 (+403d) | 8d → 7.88d |  |  |
| 3166 | Living dinning flooring | 2026-04-23 → 2027-05-17 (+389d) | 2026-05-04 → 2027-05-20 (+381d) | 12d → 3.38d |  |  |
| 3167 | Aluminium door-window fixing | 2026-05-12 → 2027-06-18 (+402d) | 2026-05-23 → 2027-06-30 (+403d) | 12d → 13.5d | 3151FS+0.25d → 3151FS+0.25d, 3166FS+0.25d |  |
| 3168 | Putty primer coat | 2026-04-22 → 2027-05-31 (+404d) | 2026-04-28 → 2027-06-06 (+404d) | 6d → 6.75d | 3136, 3150 → 3152, 3166 |  |
| 3169 | Door shutter fixing | 2026-04-22 → 2027-06-08 (+412d) | 2026-04-30 → 2027-06-16 (+412d) | 8d → 9d | 3137, 3150 → 3153, 3166 |  |

| ID | Task | Start | Finish | Duration | Predecessors | Other |
| --- | --- | --- | --- | --- | --- | --- |
| 3170 | Electrical wiring work | 2027-05-26 → 2027-08-01 (+67d) | 2027-06-02 → 2027-08-13 (+72d) | 8d → 13.5d | 3138, 3169 → 3154, 3169 |  |
| 3171 | Painting 1st coat | 2027-06-15 → 2027-08-16 (+62d) | 2027-06-22 → 2027-08-28 (+67d) | 8d → 13.5d | 3139, 3168, 3169, 3170 → 3155, 3168, 3169, 3170 |  |
| 3172 | False ceiling | 2027-06-23 → 2027-08-28 (+66d) | 2027-06-30 → 2027-09-07 (+69d) | 8d → 11.25d | 3140, 3171 → 3156, 3171 |  |
| 3173 | **11th Floor** | 2026-03-09 → 2026-06-19 (+102d) | 2027-07-16 → 2027-09-19 (+65d) | 450d → 463.25d |  | constraint start no earlier than 2026-03-09 → start no earlier than 2026-06-19 |
| 3174 | Block Work | 2026-02-20 → 2026-06-19 (+119d) | 2026-02-28 → 2026-06-27 (+119d) | 8d → 9d | 3142FS+0.25d → 3158FS+0.25d |  |
| 3175 | Door Frame Fixing | 2026-03-15 → 2026-06-27 (+104d) | 2026-03-24 → 2026-07-02 (+100d) | 9d → 5.62d | 3143, 3190 → 3159, 3174 |  |
| 3176 | Internal Plumbing Works | 2026-03-08 → 2026-07-15 (+129d) | 2026-03-16 → 2026-07-25 (+131d) | 8d → 11.25d | 3144, 3190 → 3160, 3174 |  |
| 3177 | Waterproofing | 2026-05-11 → 2026-08-14 (+95d) | 2026-05-21 → 2026-08-26 (+97d) | 10d → 13.5d | 3145, 3224 → 3161, 3176 |  |
| 3178 | Internal Plaster | 2026-02-20 → 2026-07-12 (+142d) | 2026-02-28 → 2026-07-21 (+143d) | 8d → 10.12d | 3146FS+0.25d → 3162FS+0.25d, 3175FS+0.25d |  |
| 3179 | IPS flooring work | 2026-04-21 → 2026-08-26 (+127d) | 2026-05-01 → 2026-09-04 (+126d) | 10d → 10.12d | 3163, 3191, 3192, 3129 → 3163, 3175, 3176, 3177 |  |
| 3180 | Toilet dado work | 2026-04-21 → 2027-05-28 (+402d) | 2026-04-29 → 2027-06-05 (+402d) | 8d → 9d | 3164, 3129, 3226 → 3164, 3177, 3178 |  |
| 3181 | Toilet flooring work | 2026-04-29 → 2027-06-05 (+402d) | 2026-05-07 → 2027-06-12 (+401d) | 8d → 7.88d |  |  |
| 3182 | Living dinning flooring | 2026-05-05 → 2027-05-20 (+380d) | 2026-05-12 → 2027-05-24 (+377d) | 7d → 4.5d |  |  |
| 3183 | Aluminium door-window fixing | 2026-05-24 → 2027-06-30 (+402d) | 2026-06-05 → 2027-07-12 (+402d) | 12d → 13.5d | 3167FS+0.25d → 3167FS+0.25d, 3182FS+0.25d |  |
| 3184 | Putty primer coat | 2026-05-05 → 2027-06-06 (+397d) | 2026-05-10 → 2027-06-12 (+398d) | 6d → 6.75d | 3168, 3166 → 3168, 3182 |  |
| 3185 | Door shutter fixing | 2026-05-05 → 2027-06-16 (+407d) | 2026-05-12 → 2027-06-24 (+408d) | 8d → 9d | 3169, 3166 → 3169, 3182 |  |
| 3186 | Electrical wiring work | 2027-06-03 → 2027-08-13 (+71d) | 2027-06-10 → 2027-08-25 (+76d) | 8d → 13.5d |  |  |
| 3187 | Painting 1st coat | 2027-06-23 → 2027-08-28 (+66d) | 2027-06-30 → 2027-09-09 (+71d) | 8d → 13.5d |  |  |
| 3188 | False ceiling | 2027-07-01 → 2027-09-09 (+70d) | 2027-07-08 → 2027-09-19 (+73d) | 8d → 11.25d |  |  |
| 3189 | **12th Floor** | 2026-03-17 → 2026-06-27 (+102d) | 2027-07-24 → 2027-10-01 (+69d) | 449.75d → 467.5d |  | constraint start no earlier than 2026-03-17 → start no earlier than 2026-06-27 |
| 3190 | Block Work | 2026-02-28 → 2026-06-27 (+119d) | 2026-03-08 → 2026-07-05 (+119d) | 8d → 9d |  |  |
| 3191 | Door Frame Fixing | 2026-03-24 → 2026-07-05 (+103d) | 2026-04-02 → 2026-07-10 (+99d) | 9d → 5.62d | 3175, 3206 → 3175, 3190 |  |
| 3192 | Internal Plumbing Works | 2026-03-17 → 2026-07-25 (+130d) | 2026-03-24 → 2026-08-04 (+133d) | 8d → 11.25d | 3176, 3206 → 3176, 3190 |  |
| 3193 | Waterproofing | 2026-05-21 → 2026-08-26 (+97d) | 2026-05-31 → 2026-09-07 (+99d) | 10d → 13.5d | 3177, 3240 → 3177, 3192 |  |
| 3194 | Internal Plaster | 2026-02-28 → 2026-07-21 (+143d) | 2026-03-08 → 2026-07-28 (+142d) | 8d → 7.88d | 3178FS+0.25d → 3178FS+0.25d, 3191FS+0.25d |  |
| 3195 | IPS flooring work | 2026-05-01 → 2026-09-07 (+129d) | 2026-05-11 → 2026-09-16 (+128d) | 10d → 10.12d | 3179, 3159, 3160, 3161 → 3179, 3191, 3192, 3193 |  |
| 3196 | Toilet dado work | 2026-05-01 → 2027-06-05 (+400d) | 2026-05-09 → 2027-06-13 (+400d) | 8d → 9d | 3180, 3161, 3162 → 3180, 3193, 3194 |  |
| 3197 | Toilet flooring work | 2026-05-09 → 2027-06-13 (+400d) | 2026-05-17 → 2027-06-20 (+399d) | 8d → 7.88d |  |  |
| 3198 | Living dinning flooring | 2026-05-12 → 2027-05-24 (+377d) | 2026-05-24 → 2027-06-05 (+377d) | 12d → 13.5d | 3182FS+0.25d → 3182FS+0.25d, 3191FS+0.25d |  |
| 3199 | Aluminium door-window fixing | 2026-06-05 → 2027-07-12 (+402d) | 2026-06-17 → 2027-07-24 (+402d) | 12d → 13.5d | 3183FS+0.25d → 3183, 3195, 3198 |  |
| 3200 | Putty primer coat | 2026-05-24 → 2027-06-12 (+384d) | 2026-05-30 → 2027-06-18 (+384d) | 6d → 6.75d | 3152, 3198 → 3184, 3198 |  |
| 3201 | Door shutter fixing | 2026-05-24 → 2027-06-24 (+396d) | 2026-06-01 → 2027-07-02 (+396d) | 8d → 9d | 3153, 3198 → 3185, 3198 |  |
| 3202 | Electrical wiring work | 2027-06-19 → 2027-08-25 (+67d) | 2027-06-26 → 2027-09-06 (+72d) | 8d → 13.5d | 3154, 3201 → 3186, 3201 |  |
| 3203 | Painting 1st coat | 2027-07-09 → 2027-09-09 (+62d) | 2027-07-16 → 2027-09-21 (+67d) | 8d → 13.5d | 3155, 3200, 3201, 3202 → 3187, 3200, 3201, 3202 |  |
| 3204 | False ceiling | 2027-07-17 → 2027-09-21 (+66d) | 2027-07-24 → 2027-10-01 (+69d) | 8d → 11.25d | 3156, 3203 → 3188, 3203 |  |
| 3205 | **13th Floor** | 2026-03-25 → 2026-07-05 (+102d) | 2027-08-01 → 2027-10-13 (+73d) | 449.5d → 471.75d |  | constraint start no earlier than 2026-03-25 → start no earlier than 2026-07-05 |
| 3206 | Block Work | 2026-03-09 → 2026-07-05 (+118d) | 2026-03-16 → 2026-07-13 (+119d) | 8d → 9d |  |  |
| 3207 | Door Frame Fixing | 2026-04-11 → 2026-07-13 (+93d) | 2026-04-20 → 2026-07-22 (+93d) | 9d → 10.12d | 3159, 3222 → 3191, 3206 |  |
| 3208 | Internal Plumbing Works | 2026-04-02 → 2026-08-04 (+124d) | 2026-04-10 → 2026-08-14 (+126d) | 8d → 11.25d | 3160, 3222 → 3192, 3206 |  |
| 3209 | Waterproofing | 2026-05-31 → 2026-09-07 (+99d) | 2026-06-10 → 2026-09-19 (+101d) | 10d → 13.5d | 3193, 3256 → 3193, 3208 |  |
| 3210 | Internal Plaster | 2026-03-09 → 2026-07-29 (+142d) | 2026-03-16 → 2026-08-03 (+140d) | 8d → 5.62d | 3194FS+0.25d → 3194FS+0.25d, 3207FS+0.25d |  |
| 3211 | IPS flooring work | 2026-05-11 → 2026-09-19 (+131d) | 2026-05-21 → 2026-09-28 (+130d) | 10d → 10.12d | 3195, 3207, 3145, 3242 → 3195, 3207, 3209, 3210 |  |
| 3212 | Toilet dado work | 2026-05-11 → 2027-06-13 (+398d) | 2026-05-19 → 2027-06-21 (+398d) | 8d → 9d | 3196, 3145, 3242 → 3196, 3209, 3210 |  |
| 3213 | Toilet flooring work | 2026-05-19 → 2027-06-21 (+398d) | 2026-05-27 → 2027-06-28 (+397d) | 8d → 7.88d |  |  |
| 3214 | Living dinning flooring | 2026-05-24 → 2027-06-28 (+400d) | 2026-06-01 → 2027-07-13 (+407d) | 8d → 16.88d | 3198FS+0.25d → 3198, 3207, 3213 |  |
| 3215 | Aluminium door-window fixing | 2026-06-17 → 2027-07-24 (+402d) | 2026-06-28 → 2027-08-08 (+406d) | 11d → 16.88d | 3199FS+0.25d → 3199, 3211, 3214 |  |
| 3216 | Putty primer coat | 2026-06-01 → 2027-07-13 (+407d) | 2026-06-07 → 2027-07-19 (+407d) | 6d → 6.75d |  |  |
| 3217 | Door shutter fixing | 2026-06-01 → 2027-07-13 (+407d) | 2026-06-09 → 2027-07-21 (+407d) | 8d → 9d |  |  |
| 3218 | Electrical wiring work | 2027-06-27 → 2027-09-06 (+71d) | 2027-07-04 → 2027-09-18 (+76d) | 8d → 13.5d |  |  |
| 3219 | Painting 1st coat | 2027-07-17 → 2027-09-21 (+66d) | 2027-07-24 → 2027-10-03 (+71d) | 8d → 13.5d |  |  |
| 3220 | False ceiling | 2027-07-25 → 2027-10-03 (+70d) | 2027-08-01 → 2027-10-13 (+73d) | 8d → 11.25d |  |  |
| 3221 | **14th Floor** | 2026-04-02 → 2026-07-14 (+103d) | 2027-08-09 → 2027-10-25 (+77d) | 449.25d → 476d |  | constraint start no earlier than 2026-04-02 → start no earlier than 2026-07-14 |
| 3222 | Block Work | 2026-03-25 → 2026-07-14 (+111d) | 2026-04-02 → 2026-07-22 (+111d) | 8d → 9d | 3158FS+0.25d → 3206FS+0.25d |  |
| 3223 | Door Frame Fixing | 2026-04-20 → 2026-07-22 (+93d) | 2026-04-29 → 2026-07-31 (+93d) | 9d → 10.12d | 3207, 3238 → 3207, 3222 |  |
| 3224 | Internal Plumbing Works | 2026-04-10 → 2026-08-14 (+126d) | 2026-04-18 → 2026-08-24 (+128d) | 8d → 11.25d | 3208, 3238 → 3208, 3222 |  |
| 3225 | Waterproofing | 2026-06-10 → 2026-09-19 (+101d) | 2026-06-20 → 2026-10-01 (+103d) | 10d → 13.5d | 3209, 3272 → 3209, 3224 |  |
| 3226 | Internal Plaster | 2026-03-17 → 2026-08-03 (+139d) | 2026-03-25 → 2026-08-08 (+136d) | 8d → 5.62d | 3210FS+0.25d → 3210FS+0.25d, 3223FS+0.25d |  |
| 3227 | IPS flooring work | 2026-05-21 → 2026-10-01 (+133d) | 2026-05-31 → 2026-10-10 (+132d) | 10d → 10.12d | 3211, 3223, 3224, 3177 → 3211, 3223, 3224, 3225 |  |
| 3228 | Toilet dado work | 2026-05-21 → 2027-06-21 (+396d) | 2026-05-29 → 2027-06-29 (+396d) | 8d → 9d | 3212, 3177, 3258 → 3212, 3225, 3226 |  |
| 3229 | Toilet flooring work | 2026-05-29 → 2027-06-29 (+396d) | 2026-06-06 → 2027-07-06 (+395d) | 8d → 7.88d |  |  |
| 3230 | Living dinning flooring | 2026-06-02 → 2027-07-13 (+406d) | 2026-06-09 → 2027-07-28 (+414d) | 8d → 16.88d | 3214FS+0.25d → 3214, 3223, 3229 |  |
| 3231 | Aluminium door-window fixing | 2026-06-29 → 2027-08-08 (+405d) | 2026-07-10 → 2027-08-23 (+409d) | 12d → 16.88d | 3215FS+0.25d → 3215, 3227, 3230 |  |
| 3232 | Putty primer coat | 2026-06-10 → 2027-07-28 (+413d) | 2026-06-15 → 2027-08-03 (+414d) | 6d → 6.75d |  |  |
| 3233 | Door shutter fixing | 2026-06-10 → 2027-07-28 (+413d) | 2026-06-17 → 2027-08-05 (+414d) | 8d → 9d |  |  |
| 3234 | Electrical wiring work | 2027-07-05 → 2027-09-18 (+75d) | 2027-07-12 → 2027-09-30 (+80d) | 8d → 13.5d |  |  |
| 3235 | Painting 1st coat | 2027-07-25 → 2027-10-03 (+70d) | 2027-08-01 → 2027-10-15 (+75d) | 8d → 13.5d |  |  |
| 3236 | False ceiling | 2027-08-02 → 2027-10-15 (+74d) | 2027-08-09 → 2027-10-25 (+77d) | 8d → 11.25d |  |  |
| 3237 | **15th Floor** | 2026-04-11 → 2026-07-22 (+102d) | 2027-08-17 → 2027-12-21 (+126d) | 449d → 480.25d |  | constraint start no earlier than 2026-04-11 → start no earlier than 2026-07-22 |
| 3238 | Block Work | 2026-04-02 → 2026-07-22 (+111d) | 2026-04-10 → 2026-07-30 (+111d) | 8d → 9d |  |  |
| 3239 | Door Frame Fixing | 2026-04-29 → 2026-07-31 (+93d) | 2026-05-08 → 2026-08-09 (+93d) | 9d → 10.12d | 3223, 3254 → 3223, 3238 |  |

| ID | Task | Start | Finish | Duration | Predecessors | Other |
| --- | --- | --- | --- | --- | --- | --- |
| 3240 | Internal Plumbing Works | 2026-04-19 → 2026-08-24 (+127d) | 2026-04-26 → 2026-09-03 (+130d) | 8d → 11.25d | 3224, 3254 → 3224, 3238 |  |
| 3241 | Waterproofing | 2026-06-20 → 2026-10-01 (+103d) | 2026-07-02 → 2026-10-13 (+103d) | 11.94d → 13.5d | 3225, 3288 → 3225, 3240 |  |
| 3242 | Internal Plaster | 2026-04-02 → 2026-10-13 (+194d) | 2026-04-10 → 2026-10-22 (+195d) | 8d → 10.12d | 3162FS+0.25d → 3226, 3239, 3240, 3241 |  |
| 3243 | IPS flooring work | 2026-05-31 → 2026-10-13 (+135d) | 2026-06-10 → 2026-10-22 (+134d) | 10d → 10.12d | 3227, 3239, 3240, 3193 → 3227, 3239, 3240, 3241 |  |
| 3244 | Toilet dado work | 2026-05-31 → 2027-06-29 (+394d) | 2026-06-08 → 2027-07-07 (+394d) | 8d → 9d | 3228, 3193, 3274 → 3228, 3241, 3242 |  |
| 3245 | Toilet flooring work | 2026-06-08 → 2027-07-07 (+394d) | 2026-06-16 → 2027-07-14 (+393d) | 8d → 7.88d |  |  |
| 3246 | Living dinning flooring | 2026-06-10 → 2027-07-28 (+413d) | 2026-06-18 → 2027-08-09 (+417d) | 8d → 13.5d | 3230FS+0.25d → 3230, 3239, 3245 |  |
| 3247 | Aluminium door-window fixing | 2026-07-11 → 2027-08-23 (+408d) | 2026-07-22 → 2027-09-04 (+409d) | 12d → 13.5d |  |  |
| 3248 | Putty primer coat | 2026-06-18 → 2027-08-09 (+417d) | 2026-06-24 → 2027-08-15 (+417d) | 6d → 6.75d |  |  |
| 3249 | Door shutter fixing | 2026-06-18 → 2027-08-09 (+417d) | 2026-06-26 → 2027-08-17 (+417d) | 8d → 9d |  |  |
| 3250 | Electrical wiring work | 2027-07-13 → 2027-09-30 (+79d) | 2027-07-20 → 2027-10-12 (+84d) | 8d → 13.5d |  |  |
| 3251 | Painting 1st coat | 2027-08-02 → 2027-10-15 (+74d) | 2027-08-09 → 2027-10-27 (+79d) | 8d → 13.5d |  |  |
| 3252 | False ceiling | 2027-08-10 → 2027-10-27 (+78d) | 2027-08-17 → 2027-12-21 (+126d) | 8d → 11.25d |  |  |
| 3253 | **16th Floor** | 2026-04-19 → 2026-09-27 (+161d) | 2027-08-25 → 2028-01-02 (+130d) | 448.75d → 417.62d |  | constraint start no earlier than 2026-04-19 → start no earlier than 2026-09-27 |
| 3254 | Block Work | 2026-04-11 → 2026-09-27 (+169d) | 2026-04-18 → 2026-10-05 (+170d) | 8d → 9d | 3238FS+0.25d → 2991, 3238 |  |
| 3255 | Door Frame Fixing | 2026-05-08 → 2026-10-05 (+150d) | 2026-05-17 → 2026-10-14 (+150d) | 9d → 10.12d | 3239, 3270 → 3239, 3254 |  |
| 3256 | Internal Plumbing Works | 2026-04-27 → 2026-10-05 (+161d) | 2026-05-05 → 2026-10-15 (+163d) | 8d → 11.25d | 3240, 3270 → 3240, 3254 |  |
| 3257 | Waterproofing | 2026-07-02 → 2026-10-15 (+105d) | 2026-07-14 → 2026-10-27 (+105d) | 11.94d → 13.5d | 3241, 3304 → 3241, 3256 |  |
| 3258 | Internal Plaster | 2026-04-11 → 2026-10-27 (+199d) | 2026-04-18 → 2026-12-20 (+246d) | 8d → 10.12d | 3242FS+0.25d → 3242, 3255, 3256, 3257 |  |
| 3259 | IPS flooring work | 2026-06-10 → 2026-10-27 (+139d) | 2026-06-20 → 2026-12-20 (+183d) | 10d → 10.12d | 3243, 3255, 3256, 3209 → 3243, 3255, 3256, 3257 |  |
| 3260 | Toilet dado work | 2026-06-10 → 2027-07-07 (+392d) | 2026-06-18 → 2027-07-15 (+392d) | 8d → 9d | 3244, 3209, 3290 → 3244, 3257, 3258 |  |
| 3261 | Toilet flooring work | 2026-06-18 → 2027-07-15 (+392d) | 2026-06-26 → 2027-07-22 (+391d) | 8d → 7.88d |  |  |
| 3262 | Living dinning flooring | 2026-06-18 → 2027-08-09 (+417d) | 2026-06-24 → 2027-08-21 (+423d) | 6d → 13.5d | 3246FS+0.25d → 3246, 3255, 3261 |  |
| 3263 | Aluminium door-window fixing | 2026-07-23 → 2027-09-04 (+408d) | 2026-08-03 → 2027-09-16 (+409d) | 12d → 13.5d |  |  |
| 3264 | Putty primer coat | 2026-06-24 → 2027-08-21 (+423d) | 2026-06-30 → 2027-08-27 (+423d) | 6d → 6.75d |  |  |
| 3265 | Door shutter fixing | 2026-06-26 → 2027-08-21 (+421d) | 2026-07-04 → 2027-08-29 (+421d) | 8d → 9d |  |  |
| 3266 | Electrical wiring work | 2027-07-21 → 2027-10-12 (+83d) | 2027-07-28 → 2027-10-24 (+88d) | 8d → 13.5d |  |  |
| 3267 | Painting 1st coat | 2027-08-10 → 2027-10-27 (+78d) | 2027-08-17 → 2027-12-23 (+128d) | 8d → 13.5d |  |  |
| 3268 | False ceiling | 2027-08-18 → 2027-12-23 (+127d) | 2027-08-25 → 2028-01-02 (+130d) | 8d → 11.25d |  |  |
| 3269 | **17th Floor** | 2026-04-27 → 2026-10-08 (+164d) | 2027-09-02 → 2028-01-14 (+134d) | 448.5d → 418.75d |  | constraint start no earlier than 2026-04-27 → start no earlier than 2026-10-08 |
| 3270 | Block Work | 2026-04-19 → 2026-10-08 (+172d) | 2026-04-27 → 2026-10-16 (+172d) | 8d → 9d | 3254FS+0.25d → 2992, 3254 |  |
| 3271 | Door Frame Fixing | 2026-05-17 → 2026-10-16 (+152d) | 2026-05-26 → 2026-10-25 (+152d) | 9d → 10.12d | 3255, 3286 → 3255, 3270 |  |
| 3272 | Internal Plumbing Works | 2026-05-05 → 2026-10-16 (+164d) | 2026-05-13 → 2026-10-26 (+166d) | 8d → 11.25d | 3256, 3286 → 3256, 3270 |  |
| 3273 | Waterproofing | 2026-07-14 → 2026-10-27 (+105d) | 2026-07-26 → 2026-12-23 (+150d) | 11.94d → 13.5d | 3257, 3320 → 3257, 3272 |  |
| 3274 | Internal Plaster | 2026-04-19 → 2026-12-23 (+248d) | 2026-04-27 → 2027-01-01 (+249d) | 8d → 10.12d | 3258FS+0.25d → 3258, 3271, 3272, 3273 |  |
| 3275 | IPS flooring work | 2026-06-20 → 2026-12-23 (+186d) | 2026-06-30 → 2027-01-01 (+185d) | 10d → 10.12d | 3259, 3271, 3272, 3225 → 3259, 3271, 3272, 3273 |  |
| 3276 | Toilet dado work | 2026-06-20 → 2027-07-15 (+390d) | 2026-06-28 → 2027-07-23 (+390d) | 8d → 9d | 3260, 3225, 3306 → 3260, 3273, 3274 |  |
| 3277 | Toilet flooring work | 2026-06-28 → 2027-07-23 (+390d) | 2026-07-06 → 2027-07-30 (+389d) | 8d → 7.88d |  |  |
| 3278 | Living dinning flooring | 2026-06-24 → 2027-08-21 (+423d) | 2026-07-01 → 2027-09-02 (+428d) | 7d → 13.5d | 3262FS+0.25d → 3262, 3271, 3277 |  |
| 3279 | Aluminium door-window fixing | 2026-08-04 → 2027-09-16 (+408d) | 2026-08-15 → 2027-09-28 (+409d) | 12d → 13.5d |  |  |
| 3280 | Putty primer coat | 2026-07-01 → 2027-09-02 (+428d) | 2026-07-07 → 2027-09-08 (+428d) | 6d → 6.75d |  |  |
| 3281 | Door shutter fixing | 2026-07-04 → 2027-09-02 (+425d) | 2026-07-12 → 2027-09-10 (+425d) | 8d → 9d |  |  |
| 3282 | Electrical wiring work | 2027-07-29 → 2027-10-24 (+87d) | 2027-08-05 → 2027-12-20 (+137d) | 8d → 13.5d |  |  |
| 3283 | Painting 1st coat | 2027-08-18 → 2027-12-23 (+127d) | 2027-08-25 → 2028-01-04 (+132d) | 8d → 13.5d |  |  |
| 3284 | False ceiling | 2027-08-26 → 2028-01-04 (+131d) | 2027-09-02 → 2028-01-14 (+134d) | 8d → 11.25d |  |  |
| 3285 | **18th Floor** | 2026-05-05 → 2026-10-19 (+167d) | 2027-09-16 → 2028-01-26 (+132d) | 454.12d → 419.88d |  | constraint start no earlier than 2026-05-05 → start no earlier than 2026-10-19 |
| 3286 | Block Work | 2026-04-27 → 2026-10-19 (+175d) | 2026-05-05 → 2026-10-27 (+175d) | 8d → 9d | 3270FS+0.25d → 2993, 3270 |  |
| 3287 | Door Frame Fixing | 2026-05-26 → 2026-10-27 (+154d) | 2026-06-04 → 2026-12-20 (+199d) | 8.94d → 10.12d | 3271, 3302 → 3271, 3286 |  |
| 3288 | Internal Plumbing Works | 2026-05-13 → 2026-10-27 (+167d) | 2026-05-23 → 2026-12-21 (+212d) | 9.94d → 11.25d | 3272, 3302 → 3272, 3286 |  |
| 3289 | Waterproofing | 2026-07-26 → 2026-12-23 (+150d) | 2026-08-07 → 2027-01-04 (+150d) | 11.94d → 13.5d | 3273, 3336 → 3273, 3288 |  |
| 3290 | Internal Plaster | 2026-04-27 → 2027-01-04 (+252d) | 2026-05-05 → 2027-01-13 (+253d) | 8d → 10.12d | 3274FS+0.25d → 3274, 3287, 3288, 3289 |  |
| 3291 | IPS flooring work | 2026-07-02 → 2027-01-04 (+186d) | 2026-07-11 → 2027-01-13 (+186d) | 8.94d → 10.12d | 3275, 3287, 3288, 3241 → 3275, 3287, 3288, 3289 |  |
| 3292 | Toilet dado work | 2026-07-02 → 2027-07-23 (+386d) | 2026-07-10 → 2027-07-31 (+386d) | 7.94d → 9d | 3276, 3241, 3322 → 3276, 3289, 3290 |  |
| 3293 | Toilet flooring work | 2026-07-10 → 2027-07-31 (+386d) | 2026-07-17 → 2027-08-07 (+386d) | 6.94d → 7.88d |  |  |
| 3294 | Living dinning flooring | 2026-07-17 → 2027-09-02 (+412d) | 2026-07-29 → 2027-09-14 (+412d) | 11.94d → 13.5d |  |  |
| 3295 | Aluminium door-window fixing | 2026-08-16 → 2027-09-28 (+408d) | 2026-08-27 → 2027-10-10 (+409d) | 11.94d → 13.5d |  |  |
| 3296 | Putty primer coat | 2026-07-29 → 2027-09-14 (+412d) | 2026-08-04 → 2027-09-20 (+412d) | 5.94d → 6.75d |  |  |
| 3297 | Door shutter fixing | 2026-07-29 → 2027-09-14 (+412d) | 2026-08-06 → 2027-09-22 (+412d) | 7.94d → 9d |  |  |
| 3298 | Electrical wiring work | 2027-08-06 → 2027-12-20 (+136d) | 2027-08-17 → 2028-01-01 (+137d) | 11.94d → 13.5d |  |  |
| 3299 | Painting 1st coat | 2027-08-26 → 2028-01-04 (+131d) | 2027-09-06 → 2028-01-16 (+132d) | 11.94d → 13.5d |  |  |
| 3300 | False ceiling | 2027-09-06 → 2028-01-16 (+132d) | 2027-09-16 → 2028-01-26 (+132d) | 9.94d → 11.25d |  |  |
| 3301 | **19th Floor** | 2026-05-13 → 2026-10-30 (+170d) | 2027-09-28 → 2028-02-07 (+132d) | 457.88d → 421d |  | constraint start no earlier than 2026-05-13 → start no earlier than 2026-10-30 |
| 3302 | Block Work | 2026-05-05 → 2026-10-30 (+178d) | 2026-05-13 → 2026-12-22 (+223d) | 7.94d → 9d | 3286FS+0.25d → 2994, 3286 |  |
| 3303 | Door Frame Fixing | 2026-06-04 → 2026-12-22 (+201d) | 2026-06-13 → 2026-12-31 (+201d) | 8.94d → 10.12d | 3287, 3318 → 3287, 3302 |  |
| 3304 | Internal Plumbing Works | 2026-05-23 → 2026-12-22 (+213d) | 2026-06-02 → 2027-01-01 (+213d) | 9.94d → 11.25d | 3288, 3318 → 3288, 3302 |  |
| 3305 | Waterproofing | 2026-08-07 → 2027-01-04 (+150d) | 2026-08-19 → 2027-01-16 (+150d) | 11.94d → 13.5d | 3289, 3352 → 3289, 3304 |  |
| 3306 | Internal Plaster | 2026-05-05 → 2027-01-16 (+256d) | 2026-05-13 → 2027-01-25 (+257d) | 8d → 10.12d | 3290FS+0.25d → 3290, 3303, 3304, 3305 |  |
| 3307 | IPS flooring work | 2026-07-14 → 2027-01-25 (+195d) | 2026-07-23 → 2027-02-03 (+195d) | 8.94d → 10.12d | 3291, 3303, 3257, 3338 → 3291, 3303, 3305, 3306 |  |
| 3308 | Toilet dado work | 2026-07-14 → 2027-07-31 (+382d) | 2026-07-22 → 2027-08-08 (+382d) | 7.94d → 9d | 3292, 3257, 3338 → 3292, 3305, 3306 |  |
| 3309 | Toilet flooring work | 2026-07-22 → 2027-08-08 (+382d) | 2026-07-29 → 2027-08-15 (+382d) | 6.94d → 7.88d |  |  |

| ID | Task | Start | Finish | Duration | Predecessors | Other |
| --- | --- | --- | --- | --- | --- | --- |
| 3310 | Living dinning flooring | 2026-07-29 → 2027-09-14 (+412d) | 2026-08-10 → 2027-09-26 (+412d) | 11.94d → 13.5d |  |  |
| 3311 | Aluminium door-window fixing | 2026-08-27 → 2027-10-10 (+409d) | 2026-09-08 → 2027-10-22 (+409d) | 11.94d → 13.5d |  |  |
| 3312 | Putty primer coat | 2026-08-10 → 2027-09-26 (+412d) | 2026-08-16 → 2027-10-02 (+412d) | 5.94d → 6.75d |  |  |
| 3313 | Door shutter fixing | 2026-08-10 → 2027-09-26 (+412d) | 2026-08-18 → 2027-10-04 (+412d) | 7.94d → 9d |  |  |
| 3314 | Electrical wiring work | 2027-08-17 → 2028-01-01 (+137d) | 2027-08-29 → 2028-01-13 (+137d) | 11.94d → 13.5d |  |  |
| 3315 | Painting 1st coat | 2027-09-06 → 2028-01-16 (+132d) | 2027-09-18 → 2028-01-28 (+132d) | 11.94d → 13.5d |  |  |
| 3316 | False ceiling | 2027-09-18 → 2028-01-28 (+132d) | 2027-09-28 → 2028-02-07 (+132d) | 9.94d → 11.25d |  |  |
| 3317 | **20th Floor** | 2026-05-22 → 2026-12-25 (+217d) | 2027-10-10 → 2028-02-19 (+132d) | 461.62d → 422.12d |  | constraint start no earlier than 2026-05-22 → start no earlier than 2026-12-25 |
| 3318 | Block Work | 2026-05-13 → 2026-12-25 (+226d) | 2026-05-21 → 2027-01-02 (+226d) | 7.94d → 9d | 3302FS+0.25d → 2995, 3302 |  |
| 3319 | Door Frame Fixing | 2026-06-13 → 2027-01-02 (+203d) | 2026-06-22 → 2027-01-11 (+203d) | 8.94d → 10.12d | 3303, 3334 → 3303, 3318 |  |
| 3320 | Internal Plumbing Works | 2026-06-02 → 2027-01-02 (+214d) | 2026-06-12 → 2027-01-12 (+214d) | 9.94d → 11.25d | 3304, 3334 → 3304, 3318 |  |
| 3321 | Waterproofing | 2026-08-19 → 2027-01-16 (+150d) | 2026-08-31 → 2027-01-28 (+150d) | 11.94d → 13.5d | 3305, 3368 → 3305, 3320 |  |
| 3322 | Internal Plaster | 2026-05-14 → 2027-01-28 (+259d) | 2026-05-22 → 2027-02-06 (+260d) | 8.94d → 10.12d | 3306FS+0.25d → 3306, 3319, 3320, 3321 |  |
| 3323 | IPS flooring work | 2026-08-04 → 2027-02-06 (+186d) | 2026-08-13 → 2027-02-15 (+186d) | 8.94d → 10.12d | 3307, 3319, 3273, 3354 → 3307, 3319, 3321, 3322 |  |
| 3324 | Toilet dado work | 2026-08-04 → 2027-08-08 (+369d) | 2026-08-12 → 2027-08-16 (+369d) | 7.94d → 9d | 3308, 3273, 3354 → 3308, 3321, 3322 |  |
| 3325 | Toilet flooring work | 2026-08-12 → 2027-08-16 (+369d) | 2026-08-19 → 2027-08-23 (+369d) | 6.94d → 7.88d |  |  |
| 3326 | Living dinning flooring | 2026-08-19 → 2027-09-26 (+403d) | 2026-08-31 → 2027-10-08 (+403d) | 11.94d → 13.5d |  |  |
| 3327 | Aluminium door-window fixing | 2026-09-08 → 2027-10-22 (+409d) | 2026-09-20 → 2027-12-18 (+454d) | 11.94d → 13.5d |  |  |
| 3328 | Putty primer coat | 2026-08-31 → 2027-10-08 (+403d) | 2026-09-05 → 2027-10-14 (+404d) | 5.94d → 6.75d |  |  |
| 3329 | Door shutter fixing | 2026-08-31 → 2027-10-08 (+403d) | 2026-09-07 → 2027-10-16 (+404d) | 7.94d → 9d |  |  |
| 3330 | Electrical wiring work | 2027-08-29 → 2028-01-13 (+137d) | 2027-09-10 → 2028-01-25 (+137d) | 11.94d → 13.5d |  |  |
| 3331 | Painting 1st coat | 2027-09-18 → 2028-01-28 (+132d) | 2027-09-30 → 2028-02-09 (+132d) | 11.94d → 13.5d |  |  |
| 3332 | False ceiling | 2027-09-30 → 2028-02-09 (+132d) | 2027-10-10 → 2028-02-19 (+132d) | 9.94d → 11.25d |  |  |
| 3333 | **21st Floor** | 2026-06-22 → 2027-01-05 (+197d) | 2027-10-22 → 2028-03-02 (+132d) | 442.44d → 423.25d |  | constraint start no earlier than 2026-06-22 → start no earlier than 2027-01-05 |
| 3334 | Block Work | 2026-05-22 → 2027-01-05 (+228d) | 2026-05-30 → 2027-01-13 (+228d) | 7.94d → 9d | 3318FS+0.25d → 2996, 3318 |  |
| 3335 | Door Frame Fixing | 2026-06-30 → 2027-01-13 (+197d) | 2026-07-09 → 2027-01-22 (+197d) | 8.94d → 10.12d | 3319, 3350 → 3319, 3334 |  |
| 3336 | Internal Plumbing Works | 2026-06-30 → 2027-01-13 (+197d) | 2026-07-10 → 2027-01-23 (+197d) | 9.94d → 11.25d | 3320, 3350 → 3320, 3334 |  |
| 3337 | Waterproofing | 2026-08-31 → 2027-01-28 (+150d) | 2026-09-12 → 2027-02-09 (+150d) | 11.94d → 13.5d | 3321, 3384 → 3321, 3336 |  |
| 3338 | Internal Plaster | 2026-05-23 → 2027-02-09 (+262d) | 2026-06-01 → 2027-02-18 (+262d) | 8.94d → 10.12d | 3322FS+0.25d → 3322, 3335, 3336, 3337 |  |
| 3339 | IPS flooring work | 2026-08-16 → 2027-02-18 (+186d) | 2026-08-25 → 2027-02-27 (+186d) | 8.94d → 10.12d | 3323, 3335, 3289, 3370 → 3323, 3335, 3337, 3338 |  |
| 3340 | Toilet dado work | 2026-08-16 → 2027-08-16 (+365d) | 2026-08-24 → 2027-08-24 (+365d) | 7.94d → 9d | 3324, 3289, 3370 → 3324, 3337, 3338 |  |
| 3341 | Toilet flooring work | 2026-08-24 → 2027-08-24 (+365d) | 2026-08-31 → 2027-08-31 (+365d) | 6.94d → 7.88d |  |  |
| 3342 | Living dinning flooring | 2026-08-31 → 2027-10-08 (+403d) | 2026-09-11 → 2027-10-20 (+404d) | 11.94d → 13.5d |  |  |
| 3343 | Aluminium door-window fixing | 2026-09-20 → 2027-12-18 (+454d) | 2026-10-02 → 2027-12-30 (+454d) | 11.94d → 13.5d |  |  |
| 3344 | Putty primer coat | 2026-09-12 → 2027-10-20 (+403d) | 2026-09-17 → 2027-10-26 (+404d) | 5.94d → 6.75d |  |  |
| 3345 | Door shutter fixing | 2026-09-12 → 2027-10-20 (+403d) | 2026-09-19 → 2027-10-28 (+404d) | 7.94d → 9d |  |  |
| 3346 | Electrical wiring work | 2027-09-10 → 2028-01-25 (+137d) | 2027-09-22 → 2028-02-06 (+137d) | 11.94d → 13.5d |  |  |
| 3347 | Painting 1st coat | 2027-09-30 → 2028-02-09 (+132d) | 2027-10-12 → 2028-02-21 (+132d) | 11.94d → 13.5d |  |  |
| 3348 | False ceiling | 2027-10-12 → 2028-02-21 (+132d) | 2027-10-22 → 2028-03-02 (+132d) | 9.94d → 11.25d |  |  |
| 3349 | **22nd Floor** | 2026-07-05 → 2027-01-16 (+195d) | 2027-11-03 → 2028-03-14 (+132d) | 441.38d → 424.38d |  | constraint start no earlier than 2026-07-05 → start no earlier than 2027-01-16 |
| 3350 | Block Work | 2026-06-22 → 2027-01-16 (+208d) | 2026-06-30 → 2027-01-24 (+208d) | 7.94d → 9d | 2996, 3334 → 2997, 3334 |  |
| 3351 | Door Frame Fixing | 2026-07-13 → 2027-01-24 (+195d) | 2026-07-22 → 2027-02-02 (+195d) | 8.94d → 10.12d | 3335, 3366 → 3335, 3350 |  |
| 3352 | Internal Plumbing Works | 2026-07-13 → 2027-01-24 (+195d) | 2026-07-23 → 2027-02-03 (+195d) | 9.94d → 11.25d | 3336, 3366 → 3336, 3350 |  |
| 3353 | Waterproofing | 2026-09-12 → 2027-02-09 (+150d) | 2026-09-23 → 2027-02-21 (+151d) | 11.94d → 13.5d | 3337, 3400 → 3337, 3352 |  |
| 3354 | Internal Plaster | 2026-07-26 → 2027-02-21 (+210d) | 2026-08-04 → 2027-03-02 (+210d) | 8.94d → 10.12d | 3338, 3319, 3320, 3273 → 3338, 3351, 3352, 3353 |  |
| 3355 | IPS flooring work | 2026-08-28 → 2027-03-02 (+186d) | 2026-09-06 → 2027-03-11 (+186d) | 8.94d → 10.12d | 3339, 3351, 3305, 3386 → 3339, 3351, 3353, 3354 |  |
| 3356 | Toilet dado work | 2026-08-28 → 2027-08-24 (+361d) | 2026-09-05 → 2027-09-01 (+361d) | 7.94d → 9d | 3340, 3305, 3386 → 3340, 3353, 3354 |  |
| 3357 | Toilet flooring work | 2026-09-05 → 2027-09-01 (+361d) | 2026-09-11 → 2027-09-08 (+362d) | 6.94d → 7.88d |  |  |
| 3358 | Living dinning flooring | 2026-09-12 → 2027-10-20 (+403d) | 2026-09-23 → 2027-12-16 (+449d) | 11.94d → 13.5d |  |  |
| 3359 | Aluminium door-window fixing | 2026-10-02 → 2027-12-30 (+454d) | 2026-10-14 → 2028-01-11 (+454d) | 11.94d → 13.5d |  |  |
| 3360 | Putty primer coat | 2026-09-23 → 2027-12-16 (+449d) | 2026-09-29 → 2027-12-22 (+449d) | 5.94d → 6.75d |  |  |
| 3361 | Door shutter fixing | 2026-09-23 → 2027-12-16 (+449d) | 2026-10-01 → 2027-12-24 (+449d) | 7.94d → 9d |  |  |
| 3362 | Electrical wiring work | 2027-09-22 → 2028-02-06 (+137d) | 2027-10-04 → 2028-02-18 (+137d) | 11.94d → 13.5d |  |  |
| 3363 | Painting 1st coat | 2027-10-12 → 2028-02-21 (+132d) | 2027-10-24 → 2028-03-04 (+132d) | 11.94d → 13.5d |  |  |
| 3364 | False ceiling | 2027-10-24 → 2028-03-04 (+132d) | 2027-11-03 → 2028-03-14 (+132d) | 9.94d → 11.25d |  |  |
| 3365 | **23rd Floor** | 2026-07-17 → 2027-01-27 (+194d) | 2027-11-15 → 2028-03-26 (+132d) | 441.31d → 425.5d |  | constraint start no earlier than 2026-07-17 → start no earlier than 2027-01-27 |
| 3366 | Block Work | 2026-07-05 → 2027-01-27 (+206d) | 2026-07-13 → 2027-02-04 (+206d) | 7.94d → 9d | 2997, 3350 → 2998, 3350 |  |
| 3367 | Door Frame Fixing | 2026-07-25 → 2027-02-04 (+194d) | 2026-08-03 → 2027-02-13 (+194d) | 8.94d → 10.12d | 3351, 3382 → 3351, 3366 |  |
| 3368 | Internal Plumbing Works | 2026-07-25 → 2027-02-04 (+194d) | 2026-08-04 → 2027-02-14 (+194d) | 9.94d → 11.25d | 3352, 3382 → 3352, 3366 |  |
| 3369 | Waterproofing | 2026-09-24 → 2027-02-21 (+150d) | 2026-10-05 → 2027-03-05 (+151d) | 11.94d → 13.5d | 3353, 3416 → 3353, 3368 |  |
| 3370 | Internal Plaster | 2026-08-07 → 2027-03-05 (+210d) | 2026-08-16 → 2027-03-14 (+210d) | 8.94d → 10.12d | 3354, 3335, 3336, 3289 → 3354, 3367, 3368, 3369 |  |
| 3371 | IPS flooring work | 2026-09-09 → 2027-03-14 (+186d) | 2026-09-17 → 2027-03-23 (+187d) | 8.94d → 10.12d | 3355, 3367, 3321, 3402 → 3355, 3367, 3369, 3370 |  |
| 3372 | Toilet dado work | 2026-09-09 → 2027-09-01 (+357d) | 2026-09-16 → 2027-09-09 (+358d) | 7.94d → 9d | 3356, 3321, 3402 → 3356, 3369, 3370 |  |
| 3373 | Toilet flooring work | 2026-09-17 → 2027-09-09 (+357d) | 2026-09-23 → 2027-09-16 (+358d) | 6.94d → 7.88d |  |  |
| 3374 | Living dinning flooring | 2026-09-23 → 2027-12-16 (+449d) | 2026-10-08 → 2027-12-31 (+449d) | 14.94d → 16.88d |  |  |
| 3375 | Aluminium door-window fixing | 2026-10-14 → 2028-01-11 (+454d) | 2026-10-29 → 2028-01-26 (+454d) | 14.94d → 16.88d |  |  |
| 3376 | Putty primer coat | 2026-10-08 → 2027-12-31 (+449d) | 2026-10-14 → 2028-01-06 (+449d) | 5.94d → 6.75d |  |  |
| 3377 | Door shutter fixing | 2026-10-08 → 2027-12-31 (+449d) | 2026-10-16 → 2028-01-08 (+449d) | 7.94d → 9d |  |  |
| 3378 | Electrical wiring work | 2027-10-04 → 2028-02-18 (+137d) | 2027-10-16 → 2028-03-01 (+137d) | 11.94d → 13.5d |  |  |
| 3379 | Painting 1st coat | 2027-10-24 → 2028-03-04 (+132d) | 2027-11-05 → 2028-03-16 (+132d) | 11.94d → 13.5d |  |  |

| ID | Task | Start | Finish | Duration | Predecessors | Other |
| --- | --- | --- | --- | --- | --- | --- |
| 3380 | False ceiling | 2027-11-05 → 2028-03-16 (+132d) | 2027-11-15 → 2028-03-26 (+132d) | 9.94d → 11.25d |  |  |
| 3381 | **24th Floor** | 2026-07-31 → 2027-02-07 (+191d) | 2027-11-27 → 2028-04-07 (+132d) | 439.25d → 426.62d |  | constraint start no earlier than 2026-07-31 → start no earlier than 2027-02-07 |
| 3382 | Block Work | 2026-07-17 → 2027-02-07 (+205d) | 2026-07-25 → 2027-02-15 (+205d) | 7.94d → 9d | 2998, 3366 → 2999, 3366 |  |
| 3383 | Door Frame Fixing | 2026-08-08 → 2027-02-15 (+191d) | 2026-08-17 → 2027-02-24 (+191d) | 8.94d → 10.12d | 3367, 3398 → 3367, 3382 |  |
| 3384 | Internal Plumbing Works | 2026-08-08 → 2027-02-15 (+191d) | 2026-08-18 → 2027-02-25 (+191d) | 9.94d → 11.25d | 3368, 3398 → 3368, 3382 |  |
| 3385 | Waterproofing | 2026-10-06 → 2027-03-05 (+150d) | 2026-10-18 → 2027-03-17 (+150d) | 11.94d → 13.5d | 3369, 3432 → 3369, 3384 |  |
| 3386 | Internal Plaster | 2026-08-19 → 2027-03-17 (+210d) | 2026-08-28 → 2027-03-26 (+210d) | 8.94d → 10.12d | 3370, 3351, 3352, 3305 → 3370, 3383, 3384, 3385 |  |
| 3387 | IPS flooring work | 2026-09-21 → 2027-03-26 (+186d) | 2026-09-29 → 2027-04-04 (+187d) | 8.94d → 10.12d | 3371, 3383, 3337, 3418 → 3371, 3383, 3385, 3386 |  |
| 3388 | Toilet dado work | 2026-09-21 → 2027-09-09 (+353d) | 2026-09-28 → 2027-09-17 (+354d) | 7.94d → 9d | 3372, 3337, 3418 → 3372, 3385, 3386 |  |
| 3389 | Toilet flooring work | 2026-09-28 → 2027-09-17 (+354d) | 2026-10-05 → 2027-09-24 (+354d) | 6.94d → 7.88d |  |  |
| 3390 | Living dinning flooring | 2026-10-08 → 2027-12-31 (+449d) | 2026-10-23 → 2028-01-15 (+449d) | 14.94d → 16.88d |  |  |
| 3391 | Aluminium door-window fixing | 2026-10-29 → 2028-01-26 (+454d) | 2026-12-28 → 2028-02-10 (+409d) | 14.94d → 16.88d |  |  |
| 3392 | Putty primer coat | 2026-10-23 → 2028-01-15 (+449d) | 2026-10-29 → 2028-01-21 (+449d) | 5.94d → 6.75d |  |  |
| 3393 | Door shutter fixing | 2026-10-23 → 2028-01-15 (+449d) | 2026-10-31 → 2028-01-23 (+449d) | 7.94d → 9d |  |  |
| 3394 | Electrical wiring work | 2027-10-16 → 2028-03-01 (+137d) | 2027-10-28 → 2028-03-13 (+137d) | 11.94d → 13.5d |  |  |
| 3395 | Painting 1st coat | 2027-11-05 → 2028-03-16 (+132d) | 2027-11-17 → 2028-03-28 (+132d) | 11.94d → 13.5d |  |  |
| 3396 | False ceiling | 2027-11-17 → 2028-03-28 (+132d) | 2027-11-27 → 2028-04-07 (+132d) | 9.94d → 11.25d |  |  |
| 3397 | **25th Floor** | 2026-08-18 → 2027-02-18 (+184d) | 2027-12-09 → 2028-04-19 (+132d) | 433.31d → 427.75d |  | constraint start no earlier than 2026-08-18 → start no earlier than 2027-02-18 |
| 3398 | Block Work | 2026-07-31 → 2027-02-18 (+202d) | 2026-08-08 → 2027-02-26 (+202d) | 7.94d → 9d | 2999, 3382 → 3000, 3382 |  |
| 3399 | Door Frame Fixing | 2026-08-26 → 2027-02-26 (+184d) | 2026-09-03 → 2027-03-07 (+185d) | 8.94d → 10.12d | 3383, 3414 → 3383, 3398 |  |
| 3400 | Internal Plumbing Works | 2026-08-26 → 2027-02-26 (+184d) | 2026-09-04 → 2027-03-08 (+185d) | 9.94d → 11.25d | 3384, 3414 → 3384, 3398 |  |
| 3401 | Waterproofing | 2026-10-25 → 2027-03-17 (+143d) | 2026-12-21 → 2027-03-29 (+98d) | 11.94d → 13.5d | 3385, 3448 → 3385, 3400 |  |
| 3402 | Internal Plaster | 2026-08-31 → 2027-03-29 (+210d) | 2026-09-09 → 2027-04-07 (+210d) | 8.94d → 10.12d | 3386, 3367, 3368, 3321 → 3386, 3399, 3400, 3401 |  |
| 3403 | IPS flooring work | 2026-10-02 → 2027-04-07 (+187d) | 2026-10-11 → 2027-04-16 (+187d) | 8.94d → 10.12d | 3387, 3399, 3353, 3434 → 3387, 3399, 3401, 3402 |  |
| 3404 | Toilet dado work | 2026-10-02 → 2027-09-17 (+350d) | 2026-10-10 → 2027-09-25 (+350d) | 7.94d → 9d | 3388, 3353, 3434 → 3388, 3401, 3402 |  |
| 3405 | Toilet flooring work | 2026-10-10 → 2027-09-25 (+350d) | 2026-10-17 → 2027-10-02 (+350d) | 6.94d → 7.88d |  |  |
| 3406 | Living dinning flooring | 2026-10-23 → 2028-01-15 (+449d) | 2026-12-22 → 2028-01-30 (+404d) | 14.94d → 16.88d |  |  |
| 3407 | Aluminium door-window fixing | 2026-12-28 → 2028-02-10 (+409d) | 2027-01-12 → 2028-02-25 (+409d) | 14.94d → 16.88d |  |  |
| 3408 | Putty primer coat | 2026-12-22 → 2028-01-30 (+404d) | 2026-12-28 → 2028-02-05 (+404d) | 5.94d → 6.75d |  |  |
| 3409 | Door shutter fixing | 2026-12-22 → 2028-01-30 (+404d) | 2026-12-30 → 2028-02-07 (+404d) | 7.94d → 9d |  |  |
| 3410 | Electrical wiring work | 2027-10-28 → 2028-03-13 (+137d) | 2027-11-09 → 2028-03-25 (+137d) | 11.94d → 13.5d |  |  |
| 3411 | Painting 1st coat | 2027-11-17 → 2028-03-28 (+132d) | 2027-11-29 → 2028-04-09 (+132d) | 11.94d → 13.5d |  |  |
| 3412 | False ceiling | 2027-11-29 → 2028-04-09 (+132d) | 2027-12-09 → 2028-04-19 (+132d) | 9.94d → 11.25d |  |  |
| 3413 | **26th Floor** | 2026-09-02 → 2027-03-01 (+180d) | 2027-12-21 → 2028-05-01 (+132d) | 430.38d → 428.88d |  | constraint start no earlier than 2026-09-02 → start no earlier than 2027-03-01 |
| 3414 | Block Work | 2026-08-18 → 2027-03-01 (+195d) | 2026-08-26 → 2027-03-09 (+195d) | 7.94d → 9d | 3000, 3398 → 3001, 3398 |  |
| 3415 | Door Frame Fixing | 2026-09-09 → 2027-03-09 (+181d) | 2026-09-18 → 2027-03-18 (+181d) | 8.94d → 10.12d | 3399, 3430 → 3399, 3414 |  |
| 3416 | Internal Plumbing Works | 2026-09-09 → 2027-03-09 (+181d) | 2026-09-19 → 2027-03-19 (+181d) | 9.94d → 11.25d | 3400, 3430 → 3400, 3414 |  |
| 3417 | Waterproofing | 2026-12-29 → 2027-03-29 (+90d) | 2027-01-10 → 2027-04-10 (+90d) | 11.94d → 13.5d | 3401, 3464 → 3401, 3416 |  |
| 3418 | Internal Plaster | 2026-09-12 → 2027-04-10 (+210d) | 2026-09-20 → 2027-04-19 (+211d) | 8.94d → 10.12d | 3402, 3383, 3384, 3337 → 3402, 3415, 3416, 3417 |  |
| 3419 | IPS flooring work | 2026-10-14 → 2027-04-19 (+187d) | 2026-10-23 → 2027-04-28 (+187d) | 8.94d → 10.12d | 3403, 3415, 3369, 3450 → 3403, 3415, 3417, 3418 |  |
| 3420 | Toilet dado work | 2026-10-14 → 2027-09-25 (+346d) | 2026-10-22 → 2027-10-03 (+346d) | 7.94d → 9d | 3404, 3369, 3450 → 3404, 3417, 3418 |  |
| 3421 | Toilet flooring work | 2026-10-22 → 2027-10-03 (+346d) | 2026-10-29 → 2027-10-10 (+346d) | 6.94d → 7.88d |  |  |
| 3422 | Living dinning flooring | 2026-12-22 → 2028-01-30 (+404d) | 2027-01-06 → 2028-02-14 (+404d) | 14.94d → 16.88d |  |  |
| 3423 | Aluminium door-window fixing | 2027-01-12 → 2028-02-25 (+409d) | 2027-01-27 → 2028-03-11 (+409d) | 14.94d → 16.88d |  |  |
| 3424 | Putty primer coat | 2027-01-06 → 2028-02-14 (+404d) | 2027-01-12 → 2028-02-20 (+404d) | 5.94d → 6.75d |  |  |
| 3425 | Door shutter fixing | 2027-01-06 → 2028-02-14 (+404d) | 2027-01-14 → 2028-02-22 (+404d) | 7.94d → 9d |  |  |
| 3426 | Electrical wiring work | 2027-11-09 → 2028-03-25 (+137d) | 2027-11-21 → 2028-04-06 (+137d) | 11.94d → 13.5d |  |  |
| 3427 | Painting 1st coat | 2027-11-29 → 2028-04-09 (+132d) | 2027-12-11 → 2028-04-21 (+132d) | 11.94d → 13.5d |  |  |
| 3428 | False ceiling | 2027-12-11 → 2028-04-21 (+132d) | 2027-12-21 → 2028-05-01 (+132d) | 9.94d → 11.25d |  |  |
| 3429 | **27th Floor** | 2026-09-18 → 2027-03-12 (+175d) | 2028-01-02 → 2028-05-13 (+132d) | 425.56d → 430d |  | constraint start no earlier than 2026-09-18 → start no earlier than 2027-03-12 |
| 3430 | Block Work | 2026-09-02 → 2027-03-12 (+191d) | 2026-09-09 → 2027-03-20 (+192d) | 7.94d → 9d | 3001, 3414 → 3002, 3414 |  |
| 3431 | Door Frame Fixing | 2026-09-26 → 2027-03-20 (+175d) | 2026-10-05 → 2027-03-29 (+175d) | 8.94d → 10.12d | 3415, 3446 → 3415, 3430 |  |
| 3432 | Internal Plumbing Works | 2026-09-26 → 2027-03-20 (+175d) | 2026-10-06 → 2027-03-30 (+175d) | 9.94d → 11.25d | 3416, 3446 → 3416, 3430 |  |
| 3433 | Waterproofing | 2027-02-06 → 2027-04-10 (+63d) | 2027-02-18 → 2027-04-22 (+63d) | 11.94d → 13.5d | 3417, 3480 → 3417, 3432 |  |
| 3434 | Internal Plaster | 2026-09-24 → 2027-04-22 (+210d) | 2026-10-02 → 2027-05-01 (+211d) | 8.94d → 10.12d | 3418, 3399, 3400, 3353 → 3418, 3431, 3432, 3433 |  |
| 3435 | IPS flooring work | 2026-10-27 → 2027-05-01 (+186d) | 2026-12-20 → 2027-05-10 (+141d) | 8.94d → 10.12d | 3419, 3431, 3385, 3466 → 3419, 3431, 3433, 3434 |  |
| 3436 | Toilet dado work | 2026-10-27 → 2027-10-03 (+341d) | 2026-12-19 → 2027-10-11 (+296d) | 7.94d → 9d | 3420, 3385, 3466 → 3420, 3433, 3434 |  |
| 3437 | Toilet flooring work | 2026-12-19 → 2027-10-11 (+296d) | 2026-12-26 → 2027-10-18 (+296d) | 6.94d → 7.88d |  |  |
| 3438 | Living dinning flooring | 2027-01-06 → 2028-02-14 (+404d) | 2027-01-21 → 2028-02-29 (+404d) | 14.94d → 16.88d |  |  |
| 3439 | Aluminium door-window fixing | 2027-01-27 → 2028-03-11 (+409d) | 2027-02-11 → 2028-03-26 (+409d) | 14.94d → 16.88d |  |  |
| 3440 | Putty primer coat | 2027-01-21 → 2028-02-29 (+404d) | 2027-01-27 → 2028-03-06 (+404d) | 5.94d → 6.75d |  |  |
| 3441 | Door shutter fixing | 2027-01-21 → 2028-02-29 (+404d) | 2027-01-29 → 2028-03-08 (+404d) | 7.94d → 9d |  |  |
| 3442 | Electrical wiring work | 2027-11-21 → 2028-04-06 (+137d) | 2027-12-03 → 2028-04-18 (+137d) | 11.94d → 13.5d |  |  |
| 3443 | Painting 1st coat | 2027-12-11 → 2028-04-21 (+132d) | 2027-12-23 → 2028-05-03 (+132d) | 11.94d → 13.5d |  |  |
| 3444 | False ceiling | 2027-12-23 → 2028-05-03 (+132d) | 2028-01-02 → 2028-05-13 (+132d) | 9.94d → 11.25d |  |  |
| 3445 | **28th Floor** | 2026-10-07 → 2027-03-23 (+167d) | 2028-01-14 → 2028-05-25 (+132d) | 418.62d → 431.12d |  | constraint start no earlier than 2026-10-07 → start no earlier than 2027-03-23 |
| 3446 | Block Work | 2026-09-18 → 2027-03-23 (+186d) | 2026-09-26 → 2027-03-31 (+186d) | 7.94d → 9d | 3617, 3430 → 3003, 3430 |  |
| 3447 | Door Frame Fixing | 2026-10-15 → 2027-03-31 (+167d) | 2026-10-24 → 2027-04-09 (+167d) | 8.94d → 10.12d | 3431, 3462 → 3431, 3446 |  |
| 3448 | Internal Plumbing Works | 2026-10-15 → 2027-03-31 (+167d) | 2026-10-25 → 2027-04-10 (+167d) | 9.94d → 11.25d | 3432, 3462 → 3432, 3446 |  |
| 3449 | Waterproofing | 2027-02-18 → 2027-04-22 (+63d) | 2027-03-02 → 2027-05-04 (+63d) | 11.94d → 13.5d | 3433, 3496 → 3433, 3448 |  |

| ID | Task | Start | Finish | Duration | Predecessors | Other |
| --- | --- | --- | --- | --- | --- | --- |
| 3450 | Internal Plaster | 2026-10-05 → 2027-05-04 (+211d) | 2026-10-14 → 2027-05-13 (+211d) | 8.94d → 10.12d | 3434, 3415, 3416, 3369 → 3434, 3447, 3448, 3449 |  |
| 3451 | IPS flooring work | 2026-12-30 → 2027-05-13 (+134d) | 2027-01-08 → 2027-05-22 (+134d) | 8.94d → 10.12d | 3435, 3447, 3401, 3482 → 3435, 3447, 3449, 3450 |  |
| 3452 | Toilet dado work | 2026-12-30 → 2027-10-11 (+285d) | 2027-01-07 → 2027-10-19 (+285d) | 7.94d → 9d | 3436, 3401, 3482 → 3436, 3449, 3450 |  |
| 3453 | Toilet flooring work | 2027-01-07 → 2027-10-19 (+285d) | 2027-01-14 → 2027-10-26 (+285d) | 6.94d → 7.88d |  |  |
| 3454 | Living dinning flooring | 2027-01-21 → 2028-02-29 (+404d) | 2027-02-05 → 2028-03-15 (+404d) | 14.94d → 16.88d |  |  |
| 3455 | Aluminium door-window fixing | 2027-02-11 → 2028-03-26 (+409d) | 2027-02-26 → 2028-04-10 (+409d) | 14.94d → 16.88d |  |  |
| 3456 | Putty primer coat | 2027-02-05 → 2028-03-15 (+404d) | 2027-02-11 → 2028-03-21 (+404d) | 5.94d → 6.75d |  |  |
| 3457 | Door shutter fixing | 2027-02-05 → 2028-03-15 (+404d) | 2027-02-13 → 2028-03-23 (+404d) | 7.94d → 9d |  |  |
| 3458 | Electrical wiring work | 2027-12-03 → 2028-04-18 (+137d) | 2027-12-15 → 2028-04-30 (+137d) | 11.94d → 13.5d |  |  |
| 3459 | Painting 1st coat | 2027-12-23 → 2028-05-03 (+132d) | 2028-01-04 → 2028-05-15 (+132d) | 11.94d → 13.5d |  |  |
| 3460 | False ceiling | 2028-01-04 → 2028-05-15 (+132d) | 2028-01-14 → 2028-05-25 (+132d) | 9.94d → 11.25d |  |  |
| 3461 | **29th Floor** | 2026-10-27 → 2027-04-03 (+158d) | 2028-01-26 → 2028-06-06 (+132d) | 410.69d → 432.25d |  | constraint start no earlier than 2026-10-27 → start no earlier than 2027-04-03 |
| 3462 | Block Work | 2026-10-07 → 2027-04-03 (+178d) | 2026-10-15 → 2027-04-11 (+178d) | 7.94d → 9d | 3003, 3446 → 3004, 3446 |  |
| 3463 | Door Frame Fixing | 2026-12-19 → 2027-04-11 (+113d) | 2026-12-28 → 2027-04-20 (+113d) | 8.94d → 10.12d | 3447, 3478 → 3447, 3462 |  |
| 3464 | Internal Plumbing Works | 2026-12-19 → 2027-04-11 (+113d) | 2026-12-29 → 2027-04-21 (+113d) | 9.94d → 11.25d | 3448, 3478 → 3448, 3462 |  |
| 3465 | Waterproofing | 2027-03-02 → 2027-05-04 (+63d) | 2027-03-14 → 2027-05-16 (+63d) | 11.94d → 13.5d | 3449, 3512 → 3449, 3464 |  |
| 3466 | Internal Plaster | 2026-10-18 → 2027-05-16 (+210d) | 2026-10-27 → 2027-05-25 (+210d) | 8.94d → 10.12d | 3450, 3431, 3432, 3385 → 3450, 3463, 3464, 3465 |  |
| 3467 | IPS flooring work | 2027-01-19 → 2027-05-25 (+126d) | 2027-01-28 → 2027-06-03 (+126d) | 8.94d → 10.12d | 3451, 3463, 3417, 3498 → 3451, 3463, 3465, 3466 |  |
| 3468 | Toilet dado work | 2027-01-19 → 2027-10-19 (+273d) | 2027-01-27 → 2027-10-27 (+273d) | 7.94d → 9d | 3452, 3417, 3498 → 3452, 3465, 3466 |  |
| 3469 | Toilet flooring work | 2027-01-27 → 2027-10-27 (+273d) | 2027-02-03 → 2027-12-18 (+318d) | 6.94d → 7.88d |  |  |
| 3470 | Living dinning flooring | 2027-02-05 → 2028-03-15 (+404d) | 2027-02-20 → 2028-03-30 (+404d) | 14.94d → 16.88d |  |  |
| 3471 | Aluminium door-window fixing | 2027-02-26 → 2028-04-10 (+409d) | 2027-03-13 → 2028-04-25 (+409d) | 14.94d → 16.88d |  |  |
| 3472 | Putty primer coat | 2027-02-20 → 2028-03-30 (+404d) | 2027-02-26 → 2028-04-05 (+404d) | 5.94d → 6.75d |  |  |
| 3473 | Door shutter fixing | 2027-02-20 → 2028-03-30 (+404d) | 2027-02-28 → 2028-04-07 (+404d) | 7.94d → 9d |  |  |
| 3474 | Electrical wiring work | 2027-12-15 → 2028-04-30 (+137d) | 2027-12-27 → 2028-05-12 (+137d) | 11.94d → 13.5d |  |  |
| 3475 | Painting 1st coat | 2028-01-04 → 2028-05-15 (+132d) | 2028-01-16 → 2028-05-27 (+132d) | 11.94d → 13.5d |  |  |
| 3476 | False ceiling | 2028-01-16 → 2028-05-27 (+132d) | 2028-01-26 → 2028-06-06 (+132d) | 9.94d → 11.25d |  |  |
| 3477 | **30th Floor** | 2027-01-20 → 2027-04-14 (+84d) | 2028-02-10 → 2028-06-21 (+132d) | 386.12d → 436.75d |  | constraint start no earlier than 2027-01-20 → start no earlier than 2027-04-14 |
| 3478 | Block Work | 2026-10-27 → 2027-04-14 (+169d) | 2026-12-19 → 2027-04-22 (+124d) | 7.94d → 9d | 3619, 3462 → 3005, 3462 |  |
| 3479 | Door Frame Fixing | 2027-01-27 → 2027-04-22 (+85d) | 2027-02-05 → 2027-05-01 (+85d) | 8.94d → 10.12d | 3463, 3494 → 3463, 3478 |  |
| 3480 | Internal Plumbing Works | 2027-01-27 → 2027-04-22 (+85d) | 2027-02-06 → 2027-05-02 (+85d) | 9.94d → 11.25d | 3464, 3494 → 3464, 3478 |  |
| 3481 | Waterproofing | 2027-03-14 → 2027-05-16 (+63d) | 2027-03-26 → 2027-05-28 (+63d) | 11.94d → 13.5d | 3465, 3528 → 3465, 3480 |  |
| 3482 | Internal Plaster | 2026-12-21 → 2027-05-28 (+158d) | 2026-12-30 → 2027-06-06 (+158d) | 8.94d → 10.12d | 3466, 3447, 3448, 3401 → 3466, 3479, 3480, 3481 |  |
| 3483 | IPS flooring work | 2027-02-21 → 2027-06-06 (+105d) | 2027-03-02 → 2027-06-15 (+105d) | 8.94d → 10.12d | 3467, 3479, 3433, 3514 → 3467, 3479, 3481, 3482 |  |
| 3484 | Toilet dado work | 2027-02-21 → 2027-10-27 (+248d) | 2027-03-01 → 2027-12-19 (+293d) | 7.94d → 9d | 3468, 3433, 3514 → 3468, 3481, 3482 |  |
| 3485 | Toilet flooring work | 2027-03-01 → 2027-12-19 (+293d) | 2027-03-08 → 2027-12-26 (+293d) | 6.94d → 7.88d |  |  |
| 3486 | Living dinning flooring | 2027-03-08 → 2028-03-30 (+388d) | 2027-03-15 → 2028-04-14 (+396d) | 7d → 16.88d |  |  |
| 3487 | Aluminium door-window fixing | 2027-03-15 → 2028-04-25 (+407d) | 2027-03-30 → 2028-05-10 (+407d) | 14.94d → 16.88d |  |  |
| 3488 | Putty primer coat | 2027-03-15 → 2028-04-14 (+396d) | 2027-03-21 → 2028-04-20 (+396d) | 5.94d → 6.75d |  |  |
| 3489 | Door shutter fixing | 2027-03-15 → 2028-04-14 (+396d) | 2027-03-23 → 2028-04-22 (+396d) | 7.94d → 9d |  |  |
| 3490 | Electrical wiring work | 2027-12-27 → 2028-05-12 (+137d) | 2028-01-11 → 2028-05-27 (+137d) | 14.94d → 16.88d |  |  |
| 3491 | Painting 1st coat | 2028-01-16 → 2028-05-27 (+132d) | 2028-01-31 → 2028-06-11 (+132d) | 14.94d → 16.88d |  |  |
| 3492 | False ceiling | 2028-01-31 → 2028-06-11 (+132d) | 2028-02-10 → 2028-06-21 (+132d) | 9.94d → 11.25d |  |  |
| 3493 | **31st Floor** | 2027-01-27 → 2027-04-25 (+88d) | 2028-02-25 → 2028-07-06 (+132d) | 393.12d → 441.25d |  | constraint start no earlier than 2027-01-27 → start no earlier than 2027-04-25 |
| 3494 | Block Work | 2027-01-20 → 2027-04-25 (+95d) | 2027-01-27 → 2027-05-03 (+96d) | 7.94d → 9d | 3922, 3478 → 3006, 3478 |  |
| 3495 | Door Frame Fixing | 2027-02-05 → 2027-05-03 (+87d) | 2027-02-14 → 2027-05-12 (+87d) | 8.94d → 10.12d | 3479, 3510 → 3479, 3494 |  |
| 3496 | Internal Plumbing Works | 2027-02-06 → 2027-05-03 (+86d) | 2027-02-16 → 2027-05-13 (+86d) | 9.94d → 11.25d | 3480, 3510 → 3480, 3494 |  |
| 3497 | Waterproofing | 2027-03-26 → 2027-05-13 (+48d) | 2027-04-07 → 2027-05-25 (+48d) | 11.94d → 13.5d | 3481, 3544 → 3496 |  |
| 3498 | Internal Plaster | 2027-01-10 → 2027-06-06 (+147d) | 2027-01-19 → 2027-06-15 (+147d) | 8.94d → 10.12d | 3482, 3463, 3464, 3417 → 3482, 3495, 3496, 3497 |  |
| 3499 | IPS flooring work | 2027-03-11 → 2027-06-15 (+96d) | 2027-03-20 → 2027-06-24 (+96d) | 8.94d → 10.12d | 3483, 3495, 3449, 3530 → 3483, 3495, 3497, 3498 |  |
| 3500 | Toilet dado work | 2027-03-11 → 2027-12-19 (+283d) | 2027-03-19 → 2027-12-27 (+283d) | 7.94d → 9d | 3484, 3449, 3530 → 3484, 3497, 3498 |  |
| 3501 | Toilet flooring work | 2027-03-19 → 2027-12-27 (+283d) | 2027-03-26 → 2028-01-03 (+283d) | 6.94d → 7.88d |  |  |
| 3502 | Living dinning flooring | 2027-03-26 → 2028-04-14 (+385d) | 2027-04-10 → 2028-04-29 (+385d) | 14.94d → 16.88d |  |  |
| 3503 | Aluminium door-window fixing | 2027-04-10 → 2028-05-10 (+396d) | 2027-04-22 → 2028-05-22 (+396d) | 11.94d → 13.5d |  |  |
| 3504 | Putty primer coat | 2027-04-10 → 2028-04-29 (+385d) | 2027-04-16 → 2028-05-05 (+385d) | 5.94d → 6.75d |  |  |
| 3505 | Door shutter fixing | 2027-04-10 → 2028-04-29 (+385d) | 2027-04-18 → 2028-05-07 (+385d) | 7.94d → 9d |  |  |
| 3506 | Electrical wiring work | 2028-01-11 → 2028-05-27 (+137d) | 2028-01-26 → 2028-06-11 (+137d) | 14.94d → 16.88d |  |  |
| 3507 | Painting 1st coat | 2028-01-31 → 2028-06-11 (+132d) | 2028-02-15 → 2028-06-26 (+132d) | 14.94d → 16.88d |  |  |
| 3508 | False ceiling | 2028-02-15 → 2028-06-26 (+132d) | 2028-02-25 → 2028-07-06 (+132d) | 9.94d → 11.25d |  |  |
| 3509 | **32nd Floor** | 2027-02-04 → 2027-05-03 (+88d) | 2028-03-10 → 2028-07-21 (+133d) | 400.12d → 449.12d |  | constraint start no earlier than 2027-02-04 → start no earlier than 2027-05-03 |
| 3510 | Block Work | 2027-01-27 → 2027-05-03 (+96d) | 2027-02-04 → 2027-05-11 (+96d) | 7.94d → 9d | 3006, 3494 → 3007, 3494 |  |
| 3511 | Door Frame Fixing | 2027-02-14 → 2027-05-12 (+87d) | 2027-02-23 → 2027-05-21 (+87d) | 8.94d → 10.12d | 3495, 3526 → 3495, 3510 |  |
| 3512 | Internal Plumbing Works | 2027-02-16 → 2027-05-13 (+86d) | 2027-02-26 → 2027-05-23 (+86d) | 9.94d → 11.25d | 3496, 3526 → 3496, 3510 |  |
| 3513 | Waterproofing | 2027-04-07 → 2027-05-25 (+48d) | 2027-04-19 → 2027-06-06 (+48d) | 11.94d → 13.5d | 3497, 3560 → 3497, 3512 |  |
| 3514 | Internal Plaster | 2027-02-18 → 2027-06-15 (+117d) | 2027-02-21 → 2027-06-24 (+123d) | 3d → 10.12d | 3498, 3479, 3480, 3433 → 3498, 3511, 3512, 3513 |  |
| 3515 | IPS flooring work | 2027-03-23 → 2027-06-24 (+93d) | 2027-04-01 → 2027-07-03 (+93d) | 8.94d → 10.12d | 3499, 3511, 3465, 3546 → 3499, 3511, 3513, 3514 |  |
| 3516 | Toilet dado work | 2027-03-23 → 2027-12-27 (+279d) | 2027-03-31 → 2028-01-04 (+279d) | 7.94d → 9d | 3500, 3465, 3546 → 3500, 3513, 3514 |  |
| 3517 | Toilet flooring work | 2027-03-31 → 2028-01-04 (+279d) | 2027-04-07 → 2028-01-11 (+279d) | 6.94d → 7.88d |  |  |
| 3518 | Living dinning flooring | 2027-04-10 → 2028-04-29 (+385d) | 2027-04-25 → 2028-05-14 (+385d) | 14.94d → 16.88d |  |  |
| 3519 | Aluminium door-window fixing | 2027-04-25 → 2028-05-22 (+393d) | 2027-05-07 → 2028-06-03 (+393d) | 11.94d → 13.5d |  |  |

| ID | Task | Start | Finish | Duration | Predecessors | Other |
| --- | --- | --- | --- | --- | --- | --- |
| 3520 | Putty primer coat | 2027-04-25 → 2028-05-14 (+385d) | 2027-05-01 → 2028-05-20 (+385d) | 5.94d → 6.75d |  |  |
| 3521 | Door shutter fixing | 2027-04-25 → 2028-05-14 (+385d) | 2027-05-03 → 2028-05-22 (+385d) | 7.94d → 9d |  |  |
| 3522 | Electrical wiring work | 2028-01-26 → 2028-06-11 (+137d) | 2028-02-10 → 2028-06-26 (+137d) | 14.94d → 16.88d |  |  |
| 3523 | Painting 1st coat | 2028-02-15 → 2028-06-26 (+132d) | 2028-03-01 → 2028-07-11 (+132d) | 14.94d → 16.88d |  |  |
| 3524 | False ceiling | 2028-03-01 → 2028-07-11 (+132d) | 2028-03-10 → 2028-07-21 (+133d) | 9.94d → 11.25d |  |  |
| 3525 | **33rd Floor** | 2027-02-12 → 2027-05-11 (+88d) | 2028-03-22 → 2028-08-02 (+133d) | 404.12d → 453.62d |  | constraint start no earlier than 2027-02-12 → start no earlier than 2027-05-11 |
| 3526 | Block Work | 2027-02-04 → 2027-05-11 (+96d) | 2027-02-12 → 2027-05-19 (+96d) | 7.94d → 9d | 3007, 3510 → 3008, 3510 |  |
| 3527 | Door Frame Fixing | 2027-02-23 → 2027-05-21 (+87d) | 2027-03-04 → 2027-05-30 (+87d) | 8.94d → 10.12d | 3511, 3542 → 3511, 3526 |  |
| 3528 | Internal Plumbing Works | 2027-02-26 → 2027-05-23 (+86d) | 2027-03-08 → 2027-06-02 (+86d) | 9.94d → 11.25d | 3512, 3542 → 3512, 3526 |  |
| 3529 | Waterproofing | 2026-01-01 → 2027-06-06 (+521d) | 2026-01-11 → 2027-06-18 (+523d) | 10d → 13.5d | 3933 → 3513, 3528 |  |
| 3530 | Internal Plaster | 2027-03-02 → 2027-06-18 (+108d) | 2027-03-11 → 2027-06-27 (+108d) | 8.94d → 10.12d | 3514, 3495, 3496, 3449 → 3527, 3528, 3529 |  |
| 3531 | IPS flooring work | 2027-04-01 → 2027-07-03 (+93d) | 2027-04-10 → 2027-07-12 (+93d) | 8.94d → 10.12d | 3515, 3527, 3481, 3562 → 3515, 3527, 3529, 3530 |  |
| 3532 | Toilet dado work | 2027-03-31 → 2028-01-04 (+279d) | 2027-04-08 → 2028-01-12 (+279d) | 7.94d → 9d | 3516, 3481, 3562 → 3516, 3529, 3530 |  |
| 3533 | Toilet flooring work | 2027-04-08 → 2028-01-12 (+279d) | 2027-04-15 → 2028-01-19 (+279d) | 6.94d → 7.88d |  |  |
| 3534 | Living dinning flooring | 2027-04-25 → 2028-05-14 (+385d) | 2027-05-10 → 2028-05-29 (+385d) | 14.94d → 16.88d |  |  |
| 3535 | Aluminium door-window fixing | 2027-05-10 → 2028-06-03 (+390d) | 2027-05-25 → 2028-06-18 (+390d) | 14.94d → 16.88d |  |  |
| 3536 | Putty primer coat | 2027-05-10 → 2028-05-29 (+385d) | 2027-05-16 → 2028-06-04 (+385d) | 5.94d → 6.75d |  |  |
| 3537 | Door shutter fixing | 2027-05-10 → 2028-05-29 (+385d) | 2027-05-18 → 2028-06-06 (+385d) | 7.94d → 9d |  |  |
| 3538 | Electrical wiring work | 2028-02-10 → 2028-06-26 (+137d) | 2028-02-21 → 2028-07-08 (+138d) | 11.94d → 13.5d |  |  |
| 3539 | Painting 1st coat | 2028-03-01 → 2028-07-11 (+132d) | 2028-03-12 → 2028-07-23 (+133d) | 11.94d → 13.5d |  |  |
| 3540 | False ceiling | 2028-03-13 → 2028-07-23 (+132d) | 2028-03-22 → 2028-08-02 (+133d) | 9.94d → 11.25d |  |  |
| 3541 | **34th Floor** | 2027-02-20 → 2027-05-19 (+88d) | 2028-04-03 → 2028-08-14 (+133d) | 408.12d → 458.12d |  | constraint start no earlier than 2027-02-20 → start no earlier than 2027-05-19 |
| 3542 | Block Work | 2027-02-12 → 2027-05-19 (+96d) | 2027-02-20 → 2027-05-27 (+96d) | 7.94d → 9d | 3008, 3526 → 3009, 3526 |  |
| 3543 | Door Frame Fixing | 2027-03-04 → 2027-05-30 (+87d) | 2027-03-13 → 2027-06-08 (+87d) | 8.94d → 10.12d | 3527, 3558 → 3527, 3542 |  |
| 3544 | Internal Plumbing Works | 2027-03-08 → 2027-06-02 (+86d) | 2027-03-18 → 2027-06-12 (+86d) | 9.94d → 11.25d | 3528, 3558 → 3528, 3542 |  |
| 3545 | Waterproofing | 2026-01-11 → 2027-06-12 (+517d) | 2026-01-21 → 2027-06-22 (+517d) | 10d → 11.25d | 3529, 3949 → 3544 |  |
| 3546 | Internal Plaster | 2027-03-14 → 2027-06-27 (+105d) | 2027-03-23 → 2027-07-06 (+105d) | 8.94d → 10.12d | 3530, 3511, 3512, 3465 → 3530, 3543, 3544, 3545 |  |
| 3547 | IPS flooring work | 2027-04-10 → 2027-07-12 (+93d) | 2027-04-19 → 2027-07-21 (+93d) | 8.94d → 10.12d | 3531, 3543, 3497, 3935 → 3531, 3543, 3545, 3546 |  |
| 3548 | Toilet dado work | 2027-04-08 → 2028-01-12 (+279d) | 2027-04-16 → 2028-01-20 (+279d) | 7.94d → 9d | 3532, 3497, 3935 → 3532, 3545, 3546 |  |
| 3549 | Toilet flooring work | 2027-04-16 → 2028-01-20 (+279d) | 2027-04-23 → 2028-01-27 (+279d) | 6.94d → 7.88d |  |  |
| 3550 | Living dinning flooring | 2027-05-10 → 2028-05-29 (+385d) | 2027-05-18 → 2028-06-10 (+389d) | 8d → 13.5d |  |  |
| 3551 | Aluminium door-window fixing | 2027-05-25 → 2028-06-18 (+390d) | 2027-06-09 → 2028-07-03 (+390d) | 14.94d → 16.88d |  |  |
| 3552 | Putty primer coat | 2027-05-18 → 2028-06-10 (+389d) | 2027-05-24 → 2028-06-16 (+389d) | 5.94d → 6.75d |  |  |
| 3553 | Door shutter fixing | 2027-05-18 → 2028-06-10 (+389d) | 2027-05-26 → 2028-06-18 (+389d) | 7.94d → 9d |  |  |
| 3554 | Electrical wiring work | 2028-02-22 → 2028-07-08 (+137d) | 2028-03-04 → 2028-07-20 (+138d) | 11.94d → 13.5d |  |  |
| 3555 | Painting 1st coat | 2028-03-13 → 2028-07-23 (+132d) | 2028-03-24 → 2028-08-04 (+133d) | 11.94d → 13.5d |  |  |
| 3556 | False ceiling | 2028-03-24 → 2028-08-04 (+133d) | 2028-04-03 → 2028-08-14 (+133d) | 9.94d → 11.25d |  |  |
| 3557 | **35th Floor** | 2027-02-28 → 2027-05-27 (+88d) | 2028-04-15 → 2028-08-26 (+133d) | 412.12d → 462.62d |  | constraint start no earlier than 2027-02-28 → start no earlier than 2027-05-27 |
| 3558 | Block Work | 2027-02-20 → 2027-05-27 (+96d) | 2027-02-28 → 2027-06-04 (+96d) | 7.94d → 9d | 3009, 3542 → 3010, 3542 |  |
| 3559 | Door Frame Fixing | 2027-03-13 → 2027-06-08 (+87d) | 2027-03-22 → 2027-06-17 (+87d) | 8.94d → 10.12d | 3543, 3577 → 3543, 3558 |  |
| 3560 | Internal Plumbing Works | 2027-03-18 → 2027-06-12 (+86d) | 2027-03-28 → 2027-06-22 (+86d) | 9.94d → 11.25d | 3544, 3577 → 3544, 3558 |  |
| 3561 | Waterproofing | 2026-01-21 → 2027-06-22 (+517d) | 2026-01-31 → 2027-07-04 (+519d) | 10d → 13.5d | 3545, 3965 → 3545, 3560 |  |
| 3562 | Internal Plaster | 2027-03-26 → 2027-08-08 (+135d) | 2027-03-29 → 2027-08-17 (+141d) | 3d → 10.12d | 3546, 3527, 3528, 3481 → 2967FF+135d, 3546FS+0.25d, 3559FS+0.25d, 3560FS+0.25d, 3561FS+0.25d |  |
| 3563 | IPS flooring work | 2027-04-19 → 2027-08-17 (+120d) | 2027-04-28 → 2027-08-26 (+120d) | 8.94d → 10.12d | 3547, 3559, 3513, 3951 → 3547, 3559, 3561, 3562 |  |
| 3564 | Toilet dado work | 2027-04-19 → 2028-01-20 (+276d) | 2027-04-27 → 2028-01-28 (+276d) | 7.94d → 9d | 3548, 3513, 3951 → 3548, 3561, 3562 |  |
| 3565 | Toilet flooring work | 2027-04-27 → 2028-01-28 (+276d) | 2027-05-04 → 2028-02-04 (+276d) | 6.94d → 7.88d |  |  |
| 3566 | Living dinning flooring | 2027-05-18 → 2028-06-10 (+389d) | 2027-05-23 → 2028-06-23 (+397d) | 5d → 14.62d | 3550FS+0.25d → 2967FS+168.75d, 3550FS+0.25d, 3559FS+0.25d, 3565FS+0.25d |  |
| 3567 | Aluminium door-window fixing | 2027-06-09 → 2028-07-03 (+390d) | 2027-06-24 → 2028-07-18 (+390d) | 14.94d → 16.88d |  |  |
| 3568 | Putty primer coat | 2027-05-24 → 2028-06-23 (+396d) | 2027-05-30 → 2028-06-29 (+396d) | 5.94d → 6.75d |  |  |
| 3569 | Door shutter fixing | 2027-05-26 → 2028-06-23 (+394d) | 2027-06-03 → 2028-07-01 (+394d) | 7.94d → 9d |  |  |
| 3570 | Electrical wiring work | 2028-03-04 → 2028-07-20 (+138d) | 2028-03-16 → 2028-08-01 (+138d) | 11.94d → 13.5d |  |  |
| 3571 | Painting 1st coat | 2028-03-24 → 2028-08-04 (+133d) | 2028-04-05 → 2028-08-16 (+133d) | 11.94d → 13.5d |  |  |
| 3572 | False ceiling | 2028-04-05 → 2028-08-16 (+133d) | 2028-04-15 → 2028-08-26 (+133d) | 9.94d → 11.25d |  |  |
| 3573 | **Terrace Finishing** | 2026-10-20 → 2027-04-19 (+181d) | 2027-02-22 → 2027-07-08 (+136d) | 79.88d → 90d |  | constraint start no earlier than 2026-10-20 → start no earlier than 2027-04-19 |
| 3574 | Terrace waterproofing | 2026-10-20 → 2027-04-19 (+181d) | 2027-01-13 → 2027-05-29 (+136d) | 39.94d → 45d | 2972 → 2967 |  |
| 3575 | Terrace finishing | 2027-01-21 → 2027-05-29 (+128d) | 2027-03-02 → 2027-07-08 (+128d) | 39.94d → 45d | 2657 → 3574 |  |
| 3576 | **Common Area Finishing** | 2026-01-13 → 2027-05-29 (+501d) | 2027-09-23 → 2028-05-03 (+223d) | 573.38d → 331.88d |  | constraint start no earlier than 2026-01-13 → start no earlier than 2027-05-29 |
| 3577 | Block Work | 2027-02-28 → 2027-05-29 (+90d) | 2027-03-08 → 2027-07-08 (+122d) | 7.94d → 45d | 3010, 3558 → 2972 |  |
| 3579 | Staircase railing fixing | 2026-05-22 → 2027-10-21 (+517d) | 2026-10-19 → 2028-05-03 (+562d) | 149.94d → 168.75d | 3581SS+26.75d, 3580SS+26.75d → 3581SS+33.75d, 3580SS+33.75d |  |
| 3580 | Main staircase flooring | 2026-04-26 → 2027-09-21 (+513d) | 2026-09-23 → 2028-04-03 (+558d) | 149.94d → 168.75d | 3581SS+13.38d → 3581SS+16.88d |  |
| 3581 | Fire staircase flooring | 2026-04-12 → 2027-09-06 (+512d) | 2026-09-09 → 2028-03-19 (+557d) | 149.94d → 168.75d | 3967SS+13.38d, 3585SS+26.75d → 3578SS+16.88d, 3585SS+33.75d |  |
| 3582 | Fire door work | 2026-05-22 → 2027-10-21 (+517d) | 2026-07-21 → 2028-02-03 (+562d) | 59.94d → 67.5d | 3580SS+26.75d, 3581SS+26.75d → 3580SS+33.75d, 3581SS+33.75d |  |
| 3583 | Electrical wiring work | 2026-01-31 → 2027-06-18 (+503d) | 2026-05-31 → 2027-10-16 (+503d) | 119.94d → 135d | 3931SS+17.88d → 3577SS+22.5d |  |
| 3584 | Lobby flooring | 2026-02-03 → 2027-06-22 (+504d) | 2026-07-03 → 2028-01-03 (+549d) | 150d → 168.75d | 3583SS+3.38d → 3583SS+4.12d |  |
| 3585 | Ceiling & wall putty-primer | 2026-03-17 → 2027-08-07 (+508d) | 2026-07-04 → 2028-01-09 (+554d) | 109.94d → 123.75d | 3967SS+26.75d → 3578SS+33.75d |  |
| 3586 | Ceiling & wall painting | 2026-04-03 → 2027-08-27 (+511d) | 2026-07-12 → 2028-01-19 (+556d) | 99.94d → 112.5d | 3585SS+17.88d → 3585SS+22.5d |  |
| 3587 | Light fixture supply & installation | 2027-01-26 → 2027-10-26 (+273d) | 2027-09-23 → 2028-01-24 (+123d) | 240d → 50.62d | 3586SS+253d → 3586SS+67.5d |  |
| 3588 | **Balcony Glass Railing** | 2027-08-24 → 2028-01-09 (+138d) | 2027-10-31 → 2028-03-19 (+140d) | 67.81d → 78.75d |  | constraint start no earlier than 2027-08-24 → start no earlier than 2028-01-09 |
| 3589 | 1st Floor | 2027-08-24 → 2028-01-09 (+138d) | 2027-08-26 → 2028-01-11 (+138d) | 1.94d → 2.25d |  |  |
| 3590 | 2nd Floor | 2025-12-16 → 2028-01-11 (+756d) | 2025-12-23 → 2028-01-13 (+751d) | 7d → 2.25d | 2974, 2827 → 3589 |  |

| ID | Task | Start | Finish | Duration | Complete | Predecessors | Other |
| --- | --- | --- | --- | --- | --- | --- | --- |
| 3591 | 3rd Floor | 2027-08-28 → 2028-01-13 (+138d) | 2027-08-30 → 2028-01-15 (+138d) | 1.94d → 2.25d |  | 3892 → 3590 |  |
| 3592 | 4th Floor | 2027-08-30 → 2028-01-15 (+138d) | 2027-09-01 → 2028-01-17 (+138d) | 1.94d → 2.25d |  |  |  |
| 3593 | 5th Floor | 2027-09-01 → 2028-01-17 (+138d) | 2027-09-03 → 2028-01-19 (+138d) | 1.94d → 2.25d |  |  |  |
| 3594 | 6th Floor | 2027-09-03 → 2028-01-19 (+138d) | 2027-09-05 → 2028-01-21 (+138d) | 1.94d → 2.25d |  |  |  |
| 3595 | 7th Floor | 2027-09-05 → 2028-01-21 (+138d) | 2027-09-07 → 2028-01-23 (+138d) | 1.94d → 2.25d |  |  |  |
| 3596 | 8th Floor | 2027-09-07 → 2028-01-23 (+138d) | 2027-09-09 → 2028-01-25 (+138d) | 1.94d → 2.25d |  |  |  |
| 3597 | 9th Floor | 2027-09-09 → 2028-01-25 (+138d) | 2027-09-11 → 2028-01-27 (+138d) | 1.94d → 2.25d |  |  |  |
| 3598 | 10th Floor | 2027-09-11 → 2028-01-27 (+138d) | 2027-09-13 → 2028-01-29 (+138d) | 1.94d → 2.25d |  |  |  |
| 3599 | 11th Floor | 2027-09-13 → 2028-01-29 (+138d) | 2027-09-15 → 2028-01-31 (+138d) | 1.94d → 2.25d |  |  |  |
| 3600 | 12th Floor | 2027-09-15 → 2028-01-31 (+138d) | 2027-09-16 → 2028-02-02 (+139d) | 1.94d → 2.25d |  |  |  |
| 3601 | 13th Floor | 2027-09-17 → 2028-02-02 (+138d) | 2027-09-18 → 2028-02-04 (+139d) | 1.94d → 2.25d |  |  |  |
| 3602 | 14th Floor | 2027-09-18 → 2028-02-04 (+139d) | 2027-09-20 → 2028-02-06 (+139d) | 1.94d → 2.25d |  |  |  |
| 3603 | 15th Floor | 2027-09-20 → 2028-02-06 (+139d) | 2027-09-22 → 2028-02-08 (+139d) | 1.94d → 2.25d |  |  |  |
| 3604 | 16th Floor | 2027-09-22 → 2028-02-08 (+139d) | 2027-09-24 → 2028-02-10 (+139d) | 1.94d → 2.25d |  |  |  |
| 3605 | 17th Floor | 2027-09-24 → 2028-02-10 (+139d) | 2027-09-26 → 2028-02-12 (+139d) | 1.94d → 2.25d |  |  |  |
| 3606 | 18th Floor | 2027-09-26 → 2028-02-12 (+139d) | 2027-09-28 → 2028-02-14 (+139d) | 1.94d → 2.25d |  |  |  |
| 3607 | 19th Floor | 2027-09-28 → 2028-02-14 (+139d) | 2027-09-30 → 2028-02-16 (+139d) | 1.94d → 2.25d |  |  |  |
| 3608 | 20th Floor | 2027-09-30 → 2028-02-16 (+139d) | 2027-10-02 → 2028-02-18 (+139d) | 1.94d → 2.25d |  |  |  |
| 3609 | 21st Floor | 2027-10-02 → 2028-02-18 (+139d) | 2027-10-04 → 2028-02-20 (+139d) | 1.94d → 2.25d |  |  |  |
| 3610 | 22nd Floor | 2027-10-04 → 2028-02-20 (+139d) | 2027-10-06 → 2028-02-22 (+139d) | 1.94d → 2.25d |  |  |  |
| 3611 | 23rd Floor | 2027-10-06 → 2028-02-22 (+139d) | 2027-10-08 → 2028-02-24 (+139d) | 1.94d → 2.25d |  |  |  |
| 3612 | 24th Floor | 2027-10-08 → 2028-02-24 (+139d) | 2027-10-10 → 2028-02-26 (+139d) | 1.94d → 2.25d |  |  |  |
| 3613 | 25th Floor | 2027-10-10 → 2028-02-26 (+139d) | 2027-10-12 → 2028-02-28 (+139d) | 1.94d → 2.25d |  |  |  |
| 3614 | 26th Floor | 2027-10-12 → 2028-02-28 (+139d) | 2027-10-14 → 2028-03-01 (+139d) | 1.94d → 2.25d |  |  |  |
| 3615 | 27th Floor | 2027-10-14 → 2028-03-01 (+139d) | 2027-10-16 → 2028-03-03 (+139d) | 1.94d → 2.25d |  |  |  |
| 3616 | 28th Floor | 2027-10-16 → 2028-03-03 (+139d) | 2027-10-17 → 2028-03-05 (+140d) | 1.94d → 2.25d |  |  |  |
| 3617 | 29th Floor | 2026-09-11 → 2028-03-05 (+541d) | 2026-09-18 → 2028-03-07 (+536d) | 7d → 2.25d |  | 3001, 2962 → 3616 |  |
| 3618 | 30th Floor | 2027-10-19 → 2028-03-07 (+140d) | 2027-10-21 → 2028-03-09 (+140d) | 1.94d → 2.25d |  | 3919 → 3617 |  |
| 3619 | 31st Floor | 2026-10-20 → 2028-03-09 (+506d) | 2026-10-27 → 2028-03-11 (+501d) | 7d → 2.25d |  | 3003, 2972 → 3618 |  |
| 3620 | 32nd Floor | 2027-10-19 → 2028-03-11 (+144d) | 2027-10-21 → 2028-03-13 (+144d) | 1.94d → 2.25d |  | 31st Floor → 3619 |  |
| 3621 | 33rd Floor | 2027-10-25 → 2028-03-13 (+140d) | 2027-10-27 → 2028-03-15 (+140d) | 1.94d → 2.25d |  | 2703 → 3620 |  |
| 3622 | 34th Floor | 2027-10-27 → 2028-03-15 (+140d) | 2027-10-29 → 2028-03-17 (+140d) | 1.94d → 2.25d |  |  |  |
| 3623 | 35th Floor | 2027-10-29 → 2028-03-17 (+140d) | 2027-10-31 → 2028-03-19 (+140d) | 1.94d → 2.25d |  |  |  |
| 3624 | **MEP work** | 2026-04-12 → 2027-05-29 (+412d) | 2029-01-08 → 2028-10-05 (-95d) | 956.75d → 506.25d |  |  | constraint start no earlier than 2026-04-12 → start no earlier than 2027-05-29 |
| 3625 | **Electrical work** | 2027-01-13 → 2027-05-29 (+136d) | 2027-09-03 → 2028-03-09 (+188d) | 233.25d → 270d |  |  | constraint start no earlier than 2027-01-13 → start no earlier than 2027-05-29 |
| 3626 | Cable Tray | 2027-01-13 → 2027-05-29 (+136d) | 2027-04-12 → 2027-08-27 (+137d) | 89.94d → 101.25d |  | 3685 → 2972 |  |
| 3627 | Cable, main & sub main | 2027-02-22 → 2027-07-13 (+141d) | 2027-05-12 → 2027-10-01 (+142d) | 79.94d → 90d |  | 3626SS+40d → 3626SS+50.62d |  |
| 3628 | LT panel & DB | 2027-04-12 → 2027-08-27 (+137d) | 2027-08-10 → 2028-02-08 (+182d) | 119.94d → 135d |  |  |  |
| 3629 | Rising main | 2027-06-05 → 2027-10-26 (+143d) | 2027-09-03 → 2028-03-09 (+188d) | 89.94d → 101.25d |  | 3626FS+53.38d → 3626FS+67.5d |  |
| 3630 | EARTHING Works | 2027-04-26 → 2027-09-11 (+138d) | 2027-06-25 → 2027-12-25 (+183d) | 59.94d → 67.5d |  | 3626FS+13.38d → 3626FS+16.88d |  |
| 3631 | Advance lightening protection | 2027-02-22 → 2027-07-08 (+136d) | 2027-04-23 → 2027-09-06 (+136d) | 59.94d → 67.5d |  | 4492 → 3575 |  |
| 3632 | Inverter | 2027-06-25 → 2027-12-25 (+183d) | 2027-07-30 → 2028-01-29 (+183d) | 34.94d → 39.38d |  |  |  |
| 3633 | Energy meter | 2027-05-12 → 2027-10-01 (+142d) | 2027-07-11 → 2028-01-14 (+187d) | 59.94d → 67.5d |  |  |  |
| 3634 | Exhast fan | 2027-05-26 → 2027-10-06 (+133d) | 2027-07-25 → 2028-01-19 (+178d) | 59.94d → 67.5d |  | 2650FF+4.5d → 3633FF+5.62d |  |
| 3635 | FTTH | 2027-06-16 → 2027-10-31 (+137d) | 2027-08-15 → 2028-02-13 (+182d) | 59.94d → 67.5d |  | 3630FS-9d → 3630FS-11.25d |  |
| 3636 | Security System - FA & PA | 2027-06-21 → 2027-12-20 (+182d) | 2027-08-15 → 2028-02-13 (+182d) | 54.94d → 61.88d |  |  |  |
| 3637 | Solar water heater | 2027-02-22 → 2027-07-08 (+136d) | 2027-04-23 → 2027-09-06 (+136d) | 59.94d → 67.5d |  | 4492 → 3575 |  |
| 3638 | **Plumbing wrok** | 2027-01-21 → 2027-05-29 (+128d) | 2028-02-23 → 2028-06-18 (+116d) | 397.31d → 382.75d |  |  | constraint start no earlier than 2027-01-21 → start no earlier than 2027-05-29 |
| 3639 | Terrace looping | 2027-01-13 → 2027-05-29 (+136d) | 2027-02-27 → 2027-07-13 (+136d) | 44.94d → 50.62d |  |  |  |
| 3640 | Shaft Plumbing | 2027-02-27 → 2027-07-13 (+136d) | 2027-06-27 → 2027-12-25 (+181d) | 119.94d → 135d |  |  |  |
| 3641 | CP sanitary fixture supply | 2027-06-26 → 2028-04-04 (+283d) | 2027-09-09 → 2028-06-18 (+283d) | 74.94d → 84.38d |  | 3951, 3565FS+53.38d → 3562, 3565FS+67.5d |  |
| 3642 | Cold & flushing water supply | 2027-04-19 → 2027-10-06 (+170d) | 2027-07-18 → 2028-02-18 (+215d) | 89.94d → 101.25d |  | 3967SS+380d → 3578SS+101.25d |  |
| 3643 | Misc work | 2028-02-03 → 2028-02-08 (+5d) | 2028-03-04 → 2028-03-09 (+5d) | 29.94d → 33.75d |  | 3642FS+200d → 3642FS-11.25d |  |
| 3644 | **Fire fighting work** | 2026-04-12 → 2027-05-29 (+412d) | 2027-08-10 → 2028-01-29 (+172d) | 439.88d → 225d |  |  | constraint start no earlier than 2026-04-12 → start no earlier than 2027-05-29 |
| 3645 | Fire hydrant work | 2026-04-12 → 2027-07-18 (+462d) | 2026-07-11 → 2027-09-16 (+432d) | 89.94d → 67.5d |  | 3967SS+53.38d → 3578SS+11.25d |  |
| 3646 | Sprinkler & piping work | 2027-05-12 → 2027-10-16 (+157d) | 2027-08-10 → 2028-01-29 (+172d) | 89.94d → 67.5d |  | 3645FS+260d → 3645FS+33.75d |  |
| 3647 | Shaft Downtake works | 2027-01-13 → 2027-05-29 (+136d) | 2027-04-13 → 2027-08-27 (+136d) | 89.94d → 101.25d |  |  |  |
| 3648 | Connection to pump room | 2027-04-13 → 2027-08-27 (+136d) | 2027-05-13 → 2027-09-26 (+136d) | 29.94d → 33.75d |  |  |  |
| 3649 | **Lift work** | 2027-01-13 → 2027-05-29 (+136d) | 2027-11-13 → 2027-12-30 (+47d) | 304.88d → 191.25d |  |  | constraint start no earlier than 2027-01-13 → start no earlier than 2027-05-29 |
| 3650 | Lift Shaft Handover | 2027-01-13 → 2027-05-29 (+136d) | 2027-02-21 → 2027-07-08 (+137d) | 39.94d → 45d |  | 3685 → 2972 |  |
| 3651 | Lift installation work | 2027-02-21 → 2027-07-08 (+137d) | 2027-08-20 → 2027-08-22 (+2d) | 180d → 50.62d |  |  |  |
| 3652 | Lift testing and commissioning | 2027-08-20 → 2027-08-22 (+2d) | 2027-11-13 → 2027-12-30 (+47d) | 84.94d → 95.62d |  |  |  |
| 3653 | **AC work** | 2028-05-13 → 2028-06-27 (+45d) | 2029-01-08 → 2028-10-05 (-95d) | 240d → 112.5d |  |  | constraint start no earlier than 2028-05-13 → start no earlier than 2028-06-27 |
| 3654 | Split AC | 2028-05-13 → 2028-06-27 (+45d) | 2029-01-08 → 2028-10-05 (-95d) | 240d → 112.5d |  | 3670FS-26.75d → 3652FS+202.5d |  |
| 3655 | **Tower Completion** | 2027-02-25 → 2023-12-05 (-1178d) | 2027-11-06 → 2028-03-17 (+132d) | 253.88d → 1613.14d | 0% → 69% |  | constraint start no earlier than 2027-02-25 → start no earlier than 2023-12-05 |
| 3656 | SURFACE PREPARATION | 2027-02-25 → 2027-05-29 (+93d) | 2027-05-16 → 2027-08-17 (+93d) | 79.94d → 90d |  | 3010FS+1.88d → 3010FS+2.25d |  |
| 3657 | External Painting | 2027-05-16 → 2027-08-17 (+93d) | 2027-08-24 → 2028-01-09 (+138d) | 99.94d → 112.5d |  |  |  |
| 3658 | Waterproofing | 2026-01-31 → 2023-12-05 (-788d) | 2026-02-10 → 2028-03-17 (+766d) | 10d → 873d | 0% → 91% | 3561, 3997 → 3657FS-1536.64d |  |
| 3659 | Misc. work | 2027-08-24 → 2028-01-09 (+138d) | 2027-10-23 → 2028-03-09 (+138d) | 59.94d → 67.5d |  |  |  |
| 3662 | **Post OC activities** | 2028-03-16 → 2028-03-09 (-7d) | 2028-11-22 → 2029-04-03 (+132d) | 250.88d → 438.75d |  |  | constraint start no earlier than 2028-03-16 → start no earlier than 2028-03-09 |

| ID | Task | Start | Finish | Duration | Complete | Predecessors | Other |
| --- | --- | --- | --- | --- | --- | --- | --- |
| 3663 | Wooden Flooring | 2028-05-13 → 2028-05-09 (-4d) | 2028-11-09 → 2028-11-05 (-4d) | 179.94d → 202.5d |  | 3670FS-26.75d → 3670FS-33.75d |  |
| 3667 | Modular Kitchen | 2028-05-13 → 2028-03-09 (-65d) | 2028-11-09 → 2028-09-05 (-65d) | 179.94d → 202.5d |  | Wardrobe installationSS → 3665SS |  |
| 3669 | OC Application/Readiness | 2028-04-15 → 2028-03-19 (-27d) | 2028-04-15 → 2028-03-29 (-17d) | 0d → 11.25d |  | 3685, 3579FS+7.12d, 3641, 3587, 3572, 3582, 3623, 3628, 3629, 3631, 3632, 3633, 4551, 3636, 3637, 3640, 3643, 3646, 3648, 3652, Final coat of painting, 3659, Entrance lobby → 3623, 3631, 3632, 3634, 3636, 3637, 3640, 3643, 3646, 3648, 3652, 3659 |  |
| 3670 | OC Receipt | 2028-06-08 → 2028-04-09 (-60d) | 2028-06-09 → 2028-06-08 (-1d) | 0.94d → 67.5d |  | 3669FS+53.38d → 4586FS+11.25d |  |
| 3671 | Offer To Possession | 2028-11-22 → 2028-04-09 (-227d) | 2028-12-22 → 2028-05-01 (-235d) | 29.94d → 24.75d |  | Wardrobe installation, CP & SANITARYWARE, 3663, 2749, 3667, External Elevation Façade → 4586FS+11.25d |  |
| 3672 | **Tower 1** | 2023-09-30 → 2023-11-28 (+59d) | 2029-05-11 → 2029-10-30 (+172d) | 1908.44d → 2286.75d | 7% → 12% |  | constraint start no earlier than 2023-09-30 → start no earlier than 2023-11-28 |
| 3673 | **Substructure** | 2023-09-30 → 2024-05-14 (+227d) | 2026-04-18 → 2026-05-05 (+17d) | 833.69d → 766.12d | 63% → 74% |  | constraint start no earlier than 2023-09-30 → start no earlier than 2024-05-14 |
| 3674 | **Soil Bed Preparation** | 2023-09-30 → 2024-05-14 (+227d) | 2026-02-27 → 2026-02-24 (-3d) | 783.88d → 687.38d | 77% → 79% |  | constraint start no earlier than 2023-09-30 → start no earlier than 2024-05-14 |
| 3675 | Test Piling | 2023-09-30 → 2024-05-14 (+227d) | 2024-01-27 → 2024-08-14 (+200d) | 74.94d → 104.44d |  |  | constraint start no earlier than 2023-09-30 → start no earlier than 2024-05-14 |
| 3676 | Excavation | 2024-01-10 → 2024-06-26 (+168d) | 2024-02-08 → 2024-07-25 (+168d) | 29.94d → 33.56d |  | 7SS+36.74d → 3675SS+43d | constraint start no earlier than 2024-01-10 → start no earlier than 2024-06-26 |
| 3677 | Main Piling Work | 2024-04-12 → 2024-09-26 (+167d) | 2024-10-11 → 2025-03-07 (+147d) | 182.56d → 135d |  | 7FS+227.55d → 3675FS+42d | constraint start no earlier than 2024-04-12 → start no earlier than 2024-09-26 |
| 3678 | Anti-termite | 2025-11-30 → 2025-12-27 (+27d) | 2025-12-04 → 2025-12-31 (+27d) | 4.94d → 5.62d |  | 3677FF-92.8d → 3677FF+2d |  |
| 3679 | PCC | 2024-10-18 → 2025-03-10 (+143d) | 2024-10-27 → 2025-03-31 (+155d) | 9.81d → 7.69d |  | 3676FS+55.05d, 3678SS+12.95d → 3677FS-22.5d | constraint start no earlier than 2024-10-18 → start no earlier than 2025-03-10 |
| 3680 | Backfilling | 2025-11-30 → 2025-12-27 (+27d) | 2025-12-29 → 2026-02-24 (+57d) | 20.06d → 67.5d |  | none → 3693 | constraint start no earlier than 2025-11-30 → none |
| 3681 | **RCC Structure** | 2024-12-05 → 2025-03-15 (+100d) | 2025-03-29 → 2025-09-29 (+184d) | 118.5d → 223.88d |  |  | constraint start no earlier than 2024-12-05 → start no earlier than 2025-03-15 |
| 3682 | **Raft Foundation** | 2024-12-05 → 2025-03-15 (+100d) | 2024-12-31 → 2025-05-17 (+137d) | 30.5d → 72d |  |  | constraint start no earlier than 2024-12-05 → start no earlier than 2025-03-15 |
| 3683 | Reinforcement | 2024-12-05 → 2025-03-15 (+100d) | 2024-12-31 → 2025-03-31 (+90d) | 30d → 19.12d |  | 3679FS-29.5d → 3679FS-11.25d | constraint start no earlier than 2024-12-05 → start no earlier than 2025-03-15 |
| 3684 | Formwork | 2024-12-17 → 2025-05-06 (+140d) | 2024-12-29 → 2025-05-13 (+135d) | 11d → 9d |  | 3683FF+5d → 3683FF+7.88d | constraint start no earlier than 2024-12-17 → start no earlier than 2025-05-06 |
| 3685 | Concreting | 2027-01-10 → 2025-05-15 (-605d) | 2027-01-12 → 2025-05-17 (-605d) | 2.94d → 3.38d | 0% → 100% | 2971 → 3684 | constraint none → start no earlier than 2025-05-15 |
| 3686 | **Basement 1 Slab** | 2025-01-01 → 2025-04-16 (+105d) | 2025-02-01 → 2025-06-05 (+124d) | 32d → 57.38d |  |  | constraint start no earlier than 2025-01-01 → start no earlier than 2025-04-16 |
| 3687 | Reinforcement | 2025-01-01 → 2025-05-17 (+136d) | 2025-02-01 → 2025-06-05 (+124d) | 23d → 22.5d |  | 3693FS+1d → 3685 | constraint start no earlier than 2025-01-01 → start no earlier than 2025-05-17 |
| 3688 | Formwork | 2025-09-12 → 2025-04-16 (-149d) | 2025-09-22 → 2025-05-05 (-140d) | 7d → 22.5d |  | 3741SS+1d → 3687SS+1.12d | constraint start no earlier than 2025-09-12 → start no earlier than 2025-04-16 |
| 3689 | Concreting | 2025-09-16 → 2025-05-06 (-133d) | 2025-09-28 → 2025-05-09 (-142d) | 8d → 4.5d |  |  | constraint start no earlier than 2025-09-16 → start no earlier than 2025-05-06 |
| 3690 | **Basement 2 Slab/GF** | 2025-01-26 → 2025-05-10 (+104d) | 2025-02-20 → 2025-08-25 (+186d) | 26d → 121.5d |  |  | constraint start no earlier than 2025-01-26 → start no earlier than 2025-05-10 |
| 3691 | Reinforcement | 2025-09-26 → 2025-05-10 (-139d) | 2025-10-12 → 2025-08-22 (-51d) | 10d → 118.12d |  | 3689FS+1d → 3689 | constraint start no earlier than 2025-09-26 → start no earlier than 2025-05-10 |
| 3692 | Formwork | 2025-01-03 → 2025-05-11 (+128d) | 2025-02-01 → 2025-08-22 (+202d) | 23d → 117d |  | 3687FF → 3691SS+1.12d | constraint start no earlier than 2025-01-03 → start no earlier than 2025-05-11 |
| 3693 | Concreting | 2024-12-28 → 2025-05-31 (+154d) | 2024-12-31 → 2025-08-25 (+237d) | 4d → 97.88d |  | 3684FF-2d → 3692 | constraint start no earlier than 2024-12-28 → start no earlier than 2025-05-31 |
| 3695 | Reinforcement | 2025-01-26 → 2025-08-20 (+206d) | 2025-02-16 → 2025-09-28 (+224d) | 22d → 45d |  | 3697FS-6.25d → 3693 | constraint start no earlier than 2025-01-26 → start no earlier than 2025-08-20 |
| 3696 | Formwork | 2025-01-29 → 2025-08-21 (+204d) | 2025-02-19 → 2025-09-28 (+221d) | 22d → 43.88d |  | 3695FF+3d → 3695SS+1.12d | constraint start no earlier than 2025-01-29 → start no earlier than 2025-08-21 |
| 3697 | Concreting | 2025-01-25 → 2025-08-22 (+209d) | 2025-02-01 → 2025-09-29 (+240d) | 1.25d → 43.88d |  | 3692FF-0.75d → 3696 | constraint start no earlier than 2025-01-25 → start no earlier than 2025-08-22 |
| 3698 | **Substructure Finishing** | 2025-11-30 → 2025-12-27 (+27d) | 2026-04-18 → 2026-05-05 (+17d) | 129.81d → 146.25d |  |  | constraint start no earlier than 2025-11-30 → start no earlier than 2025-12-27 |
| 3699 | Masonary work | 2025-11-30 → 2025-12-27 (+27d) | 2026-01-23 → 2026-02-09 (+17d) | 44.94d → 50.62d |  | 3714FS+26.75d → 3697FS+33.75d |  |
| 3700 | Plaster | 2026-01-23 → 2026-02-10 (+18d) | 2026-03-04 → 2026-03-21 (+17d) | 39.94d → 45d |  |  |  |
| 3701 | Structural steel | 2025-11-30 → 2026-01-13 (+44d) | 2026-02-07 → 2026-03-13 (+34d) | 59.94d → 67.5d |  | 3714FS+53.38d → 3697FS+67.5d |  |
| 3702 | White Wash | 2026-03-04 → 2026-03-22 (+18d) | 2026-04-18 → 2026-05-05 (+17d) | 44.94d → 50.62d |  |  |  |
| 3703 | **Superstructure** | 2025-03-31 → 2025-09-25 (+178d) | 2028-11-16 → 2029-07-21 (+247d) | 1260.06d → 1422.75d | 4% → 0% |  | constraint start no earlier than 2025-03-31 → start no earlier than 2025-09-25 |
| 3704 | **RCC structure** | 2025-03-31 → 2025-09-25 (+178d) | 2027-01-08 → 2027-05-13 (+125d) | 582.12d → 573.75d | 35% → 6% |  | constraint start no earlier than 2025-03-31 → start no earlier than 2025-09-25 |
| 3705 | **1st floor slab** | 2025-03-31 → 2025-09-25 (+178d) | 2025-05-24 → 2026-01-10 (+231d) | 55d → 75.26d | 100% → 57% |  | constraint start no earlier than 2025-03-31 → start no earlier than 2025-09-25 |
| 3706 | Reinforcement | 2025-02-20 → 2025-09-25 (+217d) | 2025-03-27 → 2026-01-08 (+287d) | 20d → 34.88d | 100% → 58% | 3709 → 3697 | constraint start no earlier than 2025-02-20 → start no earlier than 2025-09-25 |
| 3707 | Wall conduiting | 2025-04-01 → 2025-10-07 (+189d) | 2025-05-01 → 2025-12-27 (+240d) | 4d → 3.38d | 100% → 88% | 3711SS+2.75d → 3706SS+3.38d | constraint start no earlier than 2025-04-01 → start no earlier than 2025-10-07 |
| 3708 | Formwork | 2025-02-26 → 2025-10-03 (+219d) | 2025-03-28 → 2026-01-09 (+287d) | 18d → 36d | 100% → 56% | 3706FF+0.75d → 3706SS+5.62d | constraint start no earlier than 2025-02-26 → start no earlier than 2025-10-03 |
| 3709 | Concreting | 2025-02-19 → 2025-10-07 (+230d) | 2025-02-20 → 2026-01-10 (+324d) | 2d → 1.12d | 100% → 10% | 3696FS-1d → 3708FS-60.75d | constraint start no earlier than 2025-02-19 → none |
| 3710 | **2nd floor slab** | 2025-05-11 → 2025-10-31 (+173d) | 2025-07-13 → 2026-02-09 (+211d) | 64d → 68.51d | 100% → 20% |  | constraint start no earlier than 2025-05-11 → start no earlier than 2025-10-31 |
| 3711 | Reinforcement | 2025-03-31 → 2025-10-31 (+214d) | 2025-05-04 → 2026-02-09 (+281d) | 20d → 34.88d | 100% → 16% | 3714FS+1d → 3709FS-34.76d | constraint start no earlier than 2025-03-31 → start no earlier than 2025-10-31 |
| 3712 | Wall conduiting | 2025-05-13 → 2025-12-28 (+229d) | 2025-06-23 → 2025-12-30 (+190d) | 15d → 3.38d | 100% → 0% | 3707, 3716SS+2.75d → 3707FS+0.25d, 3711SS+19.12d | constraint start no earlier than 2025-05-13 → none |
| 3713 | Formwork | 2025-04-14 → 2025-11-09 (+209d) | 2025-05-21 → 2026-02-02 (+257d) | 21d → 50.62d | 100% → 24% | 3711SS+3d → 3711SS+19.12d | constraint start no earlier than 2025-04-14 → start no earlier than 2025-11-09 |
| 3714 | Concreting | 2025-03-28 → 2026-02-03 (+312d) | 2025-03-29 → 2026-02-03 (+311d) | 2d → 1.12d | 100% → 0% | 3708 → 3713 | constraint start no earlier than 2025-03-28 → none |
| 3715 | **3rd floor slab** | 2025-07-14 → 2026-02-04 (+205d) | 2025-08-03 → 2026-02-19 (+200d) | 21d → 18d | 100% → 0% |  | constraint start no earlier than 2025-07-14 → start no earlier than 2026-02-04 |
| 3716 | Reinforcement | 2025-05-11 → 2026-02-04 (+269d) | 2025-06-30 → 2026-02-14 (+229d) | 30d → 12.38d | 100% → 0% | 3719FS-16d → 3714 | constraint start no earlier than 2025-05-11 → none |
| 3717 | Wall conduiting | 2025-07-16 → 2026-02-07 (+206d) | 2025-07-29 → 2026-02-08 (+194d) | 10d → 2.25d | 100% → 0% | 3712, 3721SS+1.75d → 3712, 3716SS+3.38d | constraint start no earlier than 2025-07-16 → none |
| 3718 | Formwork | 2025-05-14 → 2026-02-08 (+270d) | 2025-07-02 → 2026-02-18 (+231d) | 19d → 12.38d | 100% → 0% | 3716SS+3d → 3716SS+4.5d | constraint start no earlier than 2025-05-14 → none |
| 3719 | Concreting | 2025-05-09 → 2026-02-19 (+286d) | 2025-05-24 → 2026-02-19 (+271d) | 8d → 1.12d | 100% → 0% | 3713FS-13d → 3718 | constraint start no earlier than 2025-05-09 → none |
| 3720 | **4th floor slab** | 2025-08-04 → 2026-02-20 (+200d) | 2025-08-21 → 2026-03-01 (+192d) | 18d → 11.25d | 100% → 0% |  | constraint start no earlier than 2025-08-04 → start no earlier than 2026-02-20 |
| 3721 | Reinforcement | 2025-07-14 → 2026-02-20 (+221d) | 2025-07-30 → 2026-02-26 (+211d) | 12d → 7.88d | 100% → 0% | 3724 → 3719 | constraint start no earlier than 2025-07-14 → none |
| 3722 | Wall conduiting | 2025-08-11 → 2026-02-21 (+194d) | 2025-08-18 → 2026-02-22 (+188d) | 3d → 2.25d | 100% → 0% | 3717, 3726SS+1d → 3717, 3721SS+1.12d | constraint start no earlier than 2025-08-11 → none |
| 3723 | Formwork | 2025-07-15 → 2026-02-22 (+222d) | 2025-07-30 → 2026-02-28 (+213d) | 11d → 7.88d | 100% → 0% | 3721SS+3d → 3721SS+2.25d | constraint start no earlier than 2025-07-15 → none |
| 3724 | Concreting | 2025-07-03 → 2026-03-01 (+241d) | 2025-07-13 → 2026-03-01 (+231d) | 11d → 1.12d | 100% → 0% | 3718 → 3723 | constraint start no earlier than 2025-07-03 → none |
| 3725 | **5th floor slab** | 2025-08-21 → 2026-03-02 (+193d) | 2025-09-01 → 2026-03-11 (+191d) | 12d → 11.25d | 100% → 0% |  | constraint start no earlier than 2025-08-21 → start no earlier than 2026-03-02 |
| 3726 | Reinforcement | 2025-08-04 → 2026-03-02 (+210d) | 2025-08-18 → 2026-03-08 (+202d) | 6d → 7.88d | 100% → 0% | 3729FS+1d → 3724 | constraint start no earlier than 2025-08-04 → none |
| 3727 | Wall conduiting | 2025-08-21 → 2026-03-03 (+194d) | 2025-08-30 → 2026-03-04 (+186d) | 3d → 2.25d | 100% → 0% | 3722, 3731SS+1d → 3722, 3726SS+1.12d | constraint start no earlier than 2025-08-21 → none |
| 3728 | Formwork | 2025-08-11 → 2026-03-04 (+205d) | 2025-08-18 → 2026-03-10 (+204d) | 7d → 7.88d | 100% → 0% | 3726SS+1d → 3726SS+2.25d | constraint start no earlier than 2025-08-11 → none |
| 3729 | Concreting | 2025-07-27 → 2026-03-11 (+227d) | 2025-08-03 → 2026-03-11 (+220d) | 5d → 1.12d | 100% → 0% | 3723FS-3d → 3728 | constraint start no earlier than 2025-07-27 → none |
| 3730 | **6th floor slab** | 2025-08-30 → 2026-03-12 (+194d) | 2025-09-15 → 2026-03-21 (+187d) | 17d → 11.25d | 100% → 0% |  | constraint start no earlier than 2025-08-30 → start no earlier than 2026-03-12 |
| 3731 | Reinforcement | 2025-08-21 → 2026-03-12 (+203d) | 2025-08-30 → 2026-03-18 (+200d) | 8d → 7.88d | 100% → 0% | 3734FS+1d → 3729 | constraint start no earlier than 2025-08-21 → none |
| 3732 | Wall conduiting | 2025-08-30 → 2026-03-13 (+195d) | 2025-09-14 → 2026-03-14 (+181d) | 3d → 2.25d | 100% → 0% | 3727, 3736SS+1d → 3727, 3731SS+1.12d | constraint start no earlier than 2025-08-30 → none |
| 3733 | Formwork | 2025-08-21 → 2026-03-14 (+205d) | 2025-08-30 → 2026-03-20 (+202d) | 7d → 7.88d | 100% → 0% | 3731SS+1d → 3731SS+2.25d | constraint start no earlier than 2025-08-21 → none |
| 3734 | Concreting | 2025-08-13 → 2026-03-21 (+220d) | 2025-08-21 → 2026-03-21 (+212d) | 6d → 1.12d | 100% → 0% | 3728FS-6d → 3733 | constraint start no earlier than 2025-08-13 → none |
| 3735 | **7th floor slab** | 2025-09-12 → 2026-03-22 (+191d) | 2025-09-28 → 2026-03-31 (+184d) | 17d → 11.25d | 100% → 0% |  | constraint start no earlier than 2025-09-12 → start no earlier than 2026-03-22 |
| 3736 | Reinforcement | 2025-08-30 → 2026-03-22 (+204d) | 2025-09-14 → 2026-03-28 (+195d) | 8d → 7.88d | 100% → 0% | 3739FS+1d → 3734 | constraint start no earlier than 2025-08-30 → none |
| 3737 | Wall conduiting | 2025-09-12 → 2026-03-23 (+192d) | 2025-09-22 → 2026-03-24 (+183d) | 3d → 2.25d | 100% → 0% | 3732, 3741SS+1d → 3732, 3736SS+1.12d | constraint start no earlier than 2025-09-12 → none |

| ID | Task | Start | Finish | Duration | Complete | Predecessors | Other |
| --- | --- | --- | --- | --- | --- | --- | --- |
| 3738 | Formwork | 2025-08-30 → 2026-03-24 (+206d) | 2025-09-14 → 2026-03-30 (+197d) | 7d → 7.88d | 100% → 0% | 3736SS+1d → 3736SS+2.25d | constraint start no earlier than 2025-08-30 → none |
| 3739 | Concreting | 2025-08-31 → 2026-03-31 (+212d) | 2025-09-01 → 2026-03-31 (+211d) | 2d → 1.12d | 100% → 0% | 3733 → 3738 | constraint start no earlier than 2025-08-31 → none |
| 3740 | **8th floor slab** | 2025-09-26 → 2026-04-01 (+187d) | 2025-10-13 → 2026-04-11 (+180d) | 18d → 12.38d | 100% → 0% |  | constraint start no earlier than 2025-09-26 → start no earlier than 2026-04-01 |
| 3741 | Reinforcement | 2025-09-12 → 2026-04-01 (+201d) | 2025-09-22 → 2026-04-07 (+197d) | 8d → 7.88d | 100% → 0% | 3744FS+1d → 3739 | constraint start no earlier than 2025-09-12 → none |
| 3742 | Wall conduiting | 2025-09-26 → 2026-04-02 (+188d) | 2025-10-12 → 2026-04-03 (+173d) | 8d → 2.25d | 100% → 0% | 3737, 3691SS+1d → 3737, 3741SS+1.12d | constraint start no earlier than 2025-09-26 → none |
| 3743 | Formwork | 2025-09-26 → 2026-04-03 (+189d) | 2025-10-12 → 2026-04-10 (+180d) | 10d → 9d | 100% → 0% | 3691SS+1d → 3741SS+2.25d | constraint start no earlier than 2025-09-26 → none |
| 3744 | Concreting | 2025-09-11 → 2026-04-11 (+212d) | 2025-09-15 → 2026-04-11 (+208d) | 5d → 1.12d | 100% → 0% | 3738 → 3743 | constraint start no earlier than 2025-09-11 → none |
| 3745 | **9th floor slab** | 2025-10-14 → 2026-04-12 (+180d) | 2025-10-30 → 2026-04-21 (+173d) | 17d → 11.25d | 100% → 0% |  | constraint start no earlier than 2025-10-14 → start no earlier than 2026-04-12 |
| 3746 | Reinforcement | 2025-10-14 → 2026-04-12 (+180d) | 2025-10-29 → 2026-04-18 (+171d) | 13d → 7.88d | 100% → 0% | 3749FS-1d → 3744 | constraint start no earlier than 2025-10-14 → none |
| 3747 | Wall conduiting | 2025-10-19 → 2026-04-13 (+176d) | 2025-10-29 → 2026-04-14 (+167d) | 10d → 2.25d | 100% → 0% | 3742, 3746SS+1d → 3742, 3746SS+1.12d | constraint start no earlier than 2025-10-19 → none |
| 3748 | Formwork | 2025-10-20 → 2026-04-14 (+176d) | 2025-10-30 → 2026-04-20 (+172d) | 7d → 7.88d | 100% → 0% | 3746SS+1d → 3746SS+2.25d | constraint start no earlier than 2025-10-20 → none |
| 3749 | Concreting | 2025-10-10 → 2026-04-21 (+193d) | 2025-10-13 → 2026-04-21 (+190d) | 3d → 1.12d | 100% → 0% | 3743 → 3748 | constraint start no earlier than 2025-10-10 → none |
| 3750 | **10th floor slab** | 2025-10-27 → 2026-04-22 (+177d) | 2025-11-26 → 2026-05-01 (+156d) | 18d → 11.25d | 100% → 0% |  | constraint start no earlier than 2025-10-27 → start no earlier than 2026-04-22 |
| 3751 | Reinforcement | 2025-10-27 → 2026-04-22 (+177d) | 2025-11-26 → 2026-04-28 (+153d) | 8d → 7.88d | 100% → 0% | 3754FS+1d → 3749 | constraint start no earlier than 2025-10-27 → none |
| 3752 | Wall conduiting | 2025-10-27 → 2026-04-23 (+178d) | 2025-11-26 → 2026-04-24 (+149d) | 3d → 2.25d | 100% → 0% | 3747, 3751SS+1d → 3747, 3751SS+1.12d | constraint start no earlier than 2025-10-27 → none |
| 3753 | Formwork | 2025-10-27 → 2026-04-24 (+179d) | 2025-11-26 → 2026-04-30 (+155d) | 7d → 7.88d | 100% → 0% | 3751SS+1d → 3751SS+2.25d | constraint start no earlier than 2025-10-27 → none |
| 3754 | Concreting | 2025-10-25 → 2026-05-01 (+188d) | 2025-10-30 → 2026-05-01 (+183d) | 5d → 1.12d | 100% → 0% | 3748 → 3753 | constraint start no earlier than 2025-10-25 → none |
| 3755 | **11th floor slab** | 2025-11-26 → 2026-05-02 (+157d) | 2025-12-03 → 2026-05-11 (+159d) | 8.12d → 11.25d | 47% → 0% |  | constraint start no earlier than 2025-11-26 → start no earlier than 2026-05-02 |
| 3756 | Reinforcement | 2025-11-26 → 2026-05-02 (+157d) | 2025-12-03 → 2026-05-08 (+156d) | 8d → 7.88d | 50% → 0% | 3759FS-1d → 3754 | constraint start no earlier than 2025-11-26 → none |
| 3757 | Wall conduiting | 2025-11-26 → 2026-05-03 (+158d) | 2025-12-01 → 2026-05-04 (+154d) | 3d → 2.25d | 33% → 0% | 3752, 3756SS+1d → 3752, 3756SS+1.12d | constraint start no earlier than 2025-11-26 → none |
| 3758 | Formwork | 2025-11-26 → 2026-05-04 (+159d) | 2025-12-02 → 2026-05-10 (+159d) | 7d → 7.88d | 57% → 0% | 3756SS+1d → 3756SS+2.25d | constraint start no earlier than 2025-11-26 → none |
| 3759 | Concreting | 2025-11-10 → 2026-05-11 (+182d) | 2025-11-26 → 2026-05-11 (+166d) | 1d → 1.12d | 100% → 0% | 3753 → 3758 | constraint start no earlier than 2025-11-10 → none |
| 3760 | **12th floor slab** | 2025-12-18 → 2026-05-12 (+145d) | 2025-12-27 → 2026-05-21 (+145d) | 9d → 11.25d |  |  | constraint start no earlier than 2025-12-18 → start no earlier than 2026-05-12 |
| 3761 | Reinforcement | 2025-12-18 → 2026-05-12 (+145d) | 2025-12-26 → 2026-05-18 (+143d) | 8d → 7.88d |  | 3764FS-1d → 3759 |  |
| 3762 | Wall conduiting | 2025-12-19 → 2026-05-13 (+145d) | 2025-12-22 → 2026-05-14 (+143d) | 3d → 2.25d |  | 3757, 3761SS+1d → 3757, 3761SS+1.12d |  |
| 3763 | Formwork | 2025-12-19 → 2026-05-14 (+146d) | 2025-12-26 → 2026-05-20 (+145d) | 7d → 7.88d |  | 3761SS+1d → 3761SS+2.25d |  |
| 3764 | Concreting | 2025-12-02 → 2026-05-21 (+170d) | 2025-12-03 → 2026-05-21 (+169d) | 1d → 1.12d |  | 3758 → 3763 |  |
| 3765 | **13th floor slab** | 2025-12-28 → 2026-05-22 (+145d) | 2026-01-06 → 2026-05-31 (+145d) | 9d → 11.25d |  |  | constraint start no earlier than 2025-12-28 → start no earlier than 2026-05-22 |
| 3766 | Reinforcement | 2025-12-28 → 2026-05-22 (+145d) | 2026-01-05 → 2026-05-28 (+143d) | 8d → 7.88d |  | 3769FS+1d → 3764 |  |
| 3767 | Wall conduiting | 2025-12-29 → 2026-05-23 (+145d) | 2026-01-01 → 2026-05-24 (+143d) | 3d → 2.25d |  | 3762, 3766SS+1d → 3762, 3766SS+1.12d |  |
| 3768 | Formwork | 2025-12-29 → 2026-05-24 (+146d) | 2026-01-05 → 2026-05-30 (+145d) | 7d → 7.88d |  | 3766SS+1d → 3766SS+2.25d |  |
| 3769 | Concreting | 2025-12-26 → 2026-05-31 (+156d) | 2025-12-27 → 2026-05-31 (+155d) | 1d → 1.12d |  | 3763 → 3768 |  |
| 3770 | **14th floor slab** | 2026-01-05 → 2026-06-01 (+147d) | 2026-01-14 → 2026-06-10 (+147d) | 9d → 11.25d |  |  | constraint start no earlier than 2026-01-05 → start no earlier than 2026-06-01 |
| 3771 | Reinforcement | 2026-01-05 → 2026-06-01 (+147d) | 2026-01-13 → 2026-06-07 (+145d) | 8d → 7.88d |  | 3774FS-1d → 3769 |  |
| 3772 | Wall conduiting | 2026-01-06 → 2026-06-02 (+147d) | 2026-01-09 → 2026-06-03 (+145d) | 3d → 2.25d |  | 3767, 3771SS+1d → 3767, 3771SS+1.12d |  |
| 3773 | Formwork | 2026-01-06 → 2026-06-03 (+148d) | 2026-01-13 → 2026-06-09 (+147d) | 7d → 7.88d |  | 3771SS+1d → 3771SS+2.25d |  |
| 3774 | Concreting | 2026-01-05 → 2026-06-10 (+156d) | 2026-01-06 → 2026-06-10 (+155d) | 1d → 1.12d |  | 3768 → 3773 |  |
| 3775 | **15th floor slab** | 2026-01-15 → 2026-06-11 (+147d) | 2026-01-24 → 2026-06-20 (+147d) | 9d → 11.25d |  |  | constraint start no earlier than 2026-01-15 → start no earlier than 2026-06-11 |
| 3776 | Reinforcement | 2026-01-15 → 2026-06-11 (+147d) | 2026-01-23 → 2026-06-17 (+145d) | 8d → 7.88d |  | 3779FS+1d → 3774 |  |
| 3777 | Wall conduiting | 2026-01-16 → 2026-06-12 (+147d) | 2026-01-19 → 2026-06-13 (+145d) | 3d → 2.25d |  | 3772, 3776SS+1d → 3772, 3776SS+1.12d |  |
| 3778 | Formwork | 2026-01-16 → 2026-06-13 (+148d) | 2026-01-23 → 2026-06-19 (+147d) | 7d → 7.88d |  | 3776SS+1d → 3776SS+2.25d |  |
| 3779 | Concreting | 2026-01-13 → 2026-06-20 (+158d) | 2026-01-14 → 2026-06-20 (+157d) | 1d → 1.12d |  | 3773 → 3778 |  |
| 3780 | **16th floor slab** | 2026-01-21 → 2026-06-21 (+151d) | 2026-02-02 → 2026-07-01 (+149d) | 12d → 12.38d |  |  | constraint start no earlier than 2026-01-21 → start no earlier than 2026-06-21 |
| 3781 | Reinforcement | 2026-01-21 → 2026-06-21 (+151d) | 2026-01-31 → 2026-06-28 (+148d) | 10d → 9d |  | 3784FS-3d → 3779 |  |
| 3782 | Wall conduiting | 2026-01-22 → 2026-06-22 (+151d) | 2026-01-25 → 2026-06-23 (+149d) | 3d → 2.25d |  | 3777, 3781SS+1d → 3777, 3781SS+1.12d |  |
| 3783 | Formwork | 2026-01-22 → 2026-06-23 (+152d) | 2026-02-01 → 2026-06-30 (+149d) | 10d → 9d |  | 3781SS+1d → 3781SS+2.25d |  |
| 3784 | Concreting | 2026-01-23 → 2026-07-01 (+159d) | 2026-01-24 → 2026-07-01 (+158d) | 1d → 1.12d |  | 3778 → 3783 |  |
| 3785 | **17th floor slab** | 2026-02-01 → 2026-07-02 (+151d) | 2026-02-10 → 2026-07-11 (+151d) | 9d → 11.25d |  |  | constraint start no earlier than 2026-02-01 → start no earlier than 2026-07-02 |
| 3786 | Reinforcement | 2026-02-01 → 2026-07-02 (+151d) | 2026-02-08 → 2026-07-09 (+151d) | 7d → 9d |  | 3789FS-1d → 3784 |  |
| 3787 | Wall conduiting | 2026-02-02 → 2026-07-03 (+151d) | 2026-02-05 → 2026-07-04 (+149d) | 3d → 2.25d |  | 3782, 3786SS+1d → 3782, 3786SS+1.12d |  |
| 3788 | Formwork | 2026-02-02 → 2026-07-04 (+152d) | 2026-02-09 → 2026-07-10 (+151d) | 7d → 7.88d |  | 3786SS+1d → 3786SS+2.25d |  |
| 3789 | Concreting | 2026-02-01 → 2026-07-11 (+160d) | 2026-02-02 → 2026-07-11 (+159d) | 1d → 1.12d |  | 3783 → 3788 |  |
| 3790 | **18th floor slab** | 2026-02-09 → 2026-07-12 (+153d) | 2026-02-18 → 2026-07-21 (+153d) | 9d → 11.25d |  |  | constraint start no earlier than 2026-02-09 → start no earlier than 2026-07-12 |
| 3791 | Reinforcement | 2026-02-09 → 2026-07-12 (+153d) | 2026-02-16 → 2026-07-19 (+153d) | 7d → 9d |  | 3794FS-1d → 3789 |  |
| 3792 | Wall conduiting | 2026-02-10 → 2026-07-13 (+153d) | 2026-02-13 → 2026-07-14 (+151d) | 3d → 2.25d |  | 3787, 3791SS+1d → 3787, 3791SS+1.12d |  |
| 3793 | Formwork | 2026-02-10 → 2026-07-14 (+154d) | 2026-02-17 → 2026-07-20 (+153d) | 7d → 7.88d |  | 3791SS+1d → 3791SS+2.25d |  |
| 3794 | Concreting | 2026-02-09 → 2026-07-21 (+162d) | 2026-02-10 → 2026-07-21 (+161d) | 1d → 1.12d |  | 3788 → 3793 |  |
| 3795 | **19th floor slab** | 2026-02-17 → 2026-07-22 (+155d) | 2026-02-25 → 2026-07-31 (+156d) | 8d → 11.25d |  |  | constraint start no earlier than 2026-02-17 → start no earlier than 2026-07-22 |
| 3796 | Reinforcement | 2026-02-17 → 2026-07-22 (+155d) | 2026-02-24 → 2026-07-29 (+155d) | 7d → 9d |  | 3799FS-1d → 3794 |  |
| 3797 | Wall conduiting | 2026-02-18 → 2026-07-23 (+155d) | 2026-02-21 → 2026-07-24 (+153d) | 3d → 2.25d |  | 3792, 3796SS+1d → 3792, 3796SS+1.12d |  |
| 3798 | Formwork | 2026-02-18 → 2026-07-23 (+155d) | 2026-02-24 → 2026-07-30 (+156d) | 6d → 9d |  | 3796SS+1d → 3796SS+1.12d |  |
| 3799 | Concreting | 2026-02-17 → 2026-07-31 (+164d) | 2026-02-18 → 2026-07-31 (+163d) | 1d → 1.12d |  | 3793 → 3798 |  |
| 3800 | **20th floor slab** | 2026-02-25 → 2026-08-01 (+157d) | 2026-03-05 → 2026-08-10 (+158d) | 8d → 11.25d |  |  | constraint start no earlier than 2026-02-25 → start no earlier than 2026-08-01 |
| 3801 | Reinforcement | 2026-02-25 → 2026-08-01 (+157d) | 2026-03-04 → 2026-08-08 (+157d) | 7d → 9d |  | 3804 → 3799 |  |
| 3802 | Wall conduiting | 2026-02-26 → 2026-08-02 (+157d) | 2026-03-01 → 2026-08-03 (+155d) | 3d → 2.25d |  | 3797, 3801SS+1d → 3797, 3801SS+1.12d |  |
| 3803 | Formwork | 2026-02-26 → 2026-08-02 (+157d) | 2026-03-04 → 2026-08-09 (+158d) | 6d → 9d |  | 3801SS+1d → 3801SS+1.12d |  |
| 3804 | Concreting | 2026-02-24 → 2026-08-10 (+167d) | 2026-02-25 → 2026-08-10 (+166d) | 1d → 1.12d |  | 3798 → 3803 |  |
| 3805 | **21st floor slab** | 2026-03-10 → 2026-08-11 (+154d) | 2026-03-20 → 2026-08-20 (+153d) | 10d → 11.25d |  |  | constraint start no earlier than 2026-03-10 → start no earlier than 2026-08-11 |
| 3806 | Reinforcement | 2026-03-10 → 2026-08-11 (+154d) | 2026-03-19 → 2026-08-18 (+152d) |  |  | 3809FS+5d → 3804 |  |
| 3807 | Wall conduiting | 2026-03-11 → 2026-08-12 (+154d) | 2026-03-14 → 2026-08-13 (+152d) | 3d → 2.25d |  | 3802, 3806SS+1d → 3802, 3806SS+1.12d |  |

| ID | Task | Start | Finish | Duration | Predecessors | Other |
| --- | --- | --- | --- | --- | --- | --- |
| 3808 | Formwork | 2026-03-11 → 2026-08-13 (+155d) | 2026-03-18 → 2026-08-19 (+154d) | 7d → 7.88d | 3806SS+1d → 3806SS+2.25d |  |
| 3809 | Concreting | 2026-03-04 → 2026-08-20 (+169d) | 2026-03-05 → 2026-08-20 (+168d) | 1d → 1.12d | 3803 → 3808 |  |
| 3810 | **22nd floor slab** | 2026-03-24 → 2026-08-21 (+150d) | 2026-04-03 → 2026-08-30 (+149d) | 10d → 11.25d |  | constraint start no earlier than 2026-03-24 → start no earlier than 2026-08-21 |
| 3811 | Reinforcement | 2026-03-24 → 2026-08-21 (+150d) | 2026-04-02 → 2026-08-28 (+148d) |  | 3814FS+4d → 3809 |  |
| 3812 | Wall conduiting | 2026-03-25 → 2026-08-22 (+150d) | 2026-03-28 → 2026-08-23 (+148d) | 3d → 2.25d | 3807, 3811SS+1d → 3807, 3811SS+1.12d |  |
| 3813 | Formwork | 2026-03-25 → 2026-08-23 (+151d) | 2026-04-01 → 2026-08-29 (+150d) | 7d → 7.88d | 3811SS+1d → 3811SS+2.25d |  |
| 3814 | Concreting | 2026-03-18 → 2026-08-30 (+165d) | 2026-03-20 → 2026-08-30 (+163d) | 2d → 1.12d | 3808 → 3813 |  |
| 3815 | **23rd floor slab** | 2026-04-07 → 2026-08-31 (+146d) | 2026-04-17 → 2026-09-09 (+145d) | 10d → 11.25d |  | constraint start no earlier than 2026-04-07 → start no earlier than 2026-08-31 |
| 3816 | Reinforcement | 2026-04-07 → 2026-08-31 (+146d) | 2026-04-16 → 2026-09-07 (+144d) |  | 3819FS+4d → 3814 |  |
| 3817 | Wall conduiting | 2026-04-08 → 2026-09-01 (+146d) | 2026-04-11 → 2026-09-02 (+144d) | 3d → 2.25d | 3812, 3816SS+1d → 3812, 3816SS+1.12d |  |
| 3818 | Formwork | 2026-04-08 → 2026-09-02 (+147d) | 2026-04-15 → 2026-09-08 (+146d) | 7d → 7.88d | 3816SS+1d → 3816SS+2.25d |  |
| 3819 | Concreting | 2026-04-01 → 2026-09-09 (+161d) | 2026-04-03 → 2026-09-09 (+159d) | 2d → 1.12d | 3813 → 3818 |  |
| 3820 | **24th floor slab** | 2026-04-19 → 2026-09-10 (+144d) | 2026-05-01 → 2026-09-23 (+145d) | 12d → 15.75d |  | constraint start no earlier than 2026-04-19 → start no earlier than 2026-09-10 |
| 3821 | Reinforcement | 2026-04-19 → 2026-09-10 (+144d) | 2026-04-29 → 2026-09-20 (+144d) | 10d → 12.38d | 3824FS+2d → 3819 |  |
| 3822 | Wall conduiting | 2026-04-20 → 2026-09-11 (+144d) | 2026-04-23 → 2026-09-12 (+142d) | 3d → 2.25d | 3817, 3821SS+1d → 3817, 3821SS+1.12d |  |
| 3823 | Formwork | 2026-04-20 → 2026-09-12 (+145d) | 2026-04-30 → 2026-09-22 (+145d) | 10d → 12.38d | 3821SS+1d → 3821SS+2.25d |  |
| 3824 | Concreting | 2026-04-15 → 2026-09-23 (+161d) | 2026-04-17 → 2026-09-23 (+159d) | 2d → 1.12d | 3818 → 3823 |  |
| 3825 | **25th floor slab** | 2026-05-02 → 2026-09-24 (+145d) | 2026-05-14 → 2026-10-08 (+147d) | 12d → 16.88d |  | constraint start no earlier than 2026-05-02 → start no earlier than 2026-09-24 |
| 3826 | Reinforcement | 2026-05-02 → 2026-09-24 (+145d) | 2026-05-12 → 2026-10-05 (+146d) | 10d → 13.5d | 3829FS+1d → 3824 |  |
| 3827 | Wall conduiting | 2026-05-03 → 2026-09-25 (+145d) | 2026-05-06 → 2026-09-26 (+143d) | 3d → 2.25d | 3822, 3826SS+1d → 3822, 3826SS+1.12d |  |
| 3828 | Formwork | 2026-05-03 → 2026-09-26 (+146d) | 2026-05-13 → 2026-10-07 (+147d) | 10d → 13.5d | 3826SS+1d → 3826SS+2.25d |  |
| 3829 | Concreting | 2026-04-30 → 2026-10-08 (+161d) | 2026-05-01 → 2026-10-08 (+160d) | 1d → 1.12d | 3823 → 3828 |  |
| 3830 | **26th floor slab** | 2026-05-15 → 2026-10-09 (+147d) | 2026-05-25 → 2026-10-18 (+146d) | 10d → 11.25d |  | constraint start no earlier than 2026-05-15 → start no earlier than 2026-10-09 |
| 3831 | Reinforcement | 2026-05-15 → 2026-10-09 (+147d) | 2026-05-24 → 2026-10-16 (+145d) |  | 3834FS+1d → 3829 |  |
| 3832 | Wall conduiting | 2026-05-16 → 2026-10-10 (+147d) | 2026-05-19 → 2026-10-11 (+145d) | 3d → 2.25d | 3827, 3831SS+1d → 3827, 3831SS+1.12d |  |
| 3833 | Formwork | 2026-05-16 → 2026-10-11 (+148d) | 2026-05-23 → 2026-10-17 (+147d) | 7d → 7.88d | 3831SS+1d → 3831SS+2.25d |  |
| 3834 | Concreting | 2026-05-13 → 2026-10-18 (+158d) | 2026-05-14 → 2026-10-18 (+157d) | 1d → 1.12d | 3828 → 3833 |  |
| 3835 | **27th floor slab** | 2026-05-30 → 2026-10-19 (+142d) | 2026-06-09 → 2026-10-28 (+141d) | 10d → 11.25d |  | constraint start no earlier than 2026-05-30 → start no earlier than 2026-10-19 |
| 3836 | Reinforcement | 2026-05-30 → 2026-10-19 (+142d) | 2026-06-08 → 2026-10-26 (+140d) |  | 3839FS+5d → 3834 |  |
| 3837 | Wall conduiting | 2026-05-31 → 2026-10-20 (+142d) | 2026-06-03 → 2026-10-21 (+140d) | 3d → 2.25d | 3832, 3836SS+1d → 3832, 3836SS+1.12d |  |
| 3838 | Formwork | 2026-05-31 → 2026-10-21 (+143d) | 2026-06-07 → 2026-10-27 (+142d) | 7d → 7.88d | 3836SS+1d → 3836SS+2.25d |  |
| 3839 | Concreting | 2026-05-23 → 2026-10-28 (+158d) | 2026-05-25 → 2026-10-28 (+156d) | 2d → 1.12d | 3833 → 3838 |  |
| 3840 | **28th floor slab** | 2026-06-14 → 2026-10-29 (+137d) | 2026-06-24 → 2026-12-22 (+181d) | 10d → 11.25d |  | constraint start no earlier than 2026-06-14 → start no earlier than 2026-10-29 |
| 3841 | Reinforcement | 2026-06-14 → 2026-10-29 (+137d) | 2026-06-23 → 2026-12-20 (+180d) |  | 3844FS+5d → 3839 |  |
| 3842 | Wall conduiting | 2026-06-15 → 2026-10-30 (+137d) | 2026-06-18 → 2026-10-31 (+135d) | 3d → 2.25d | 3837, 3841SS+1d → 3837, 3841SS+1.12d |  |
| 3843 | Formwork | 2026-06-15 → 2026-10-31 (+138d) | 2026-06-22 → 2026-12-21 (+182d) | 7d → 7.88d | 3841SS+1d → 3841SS+2.25d |  |
| 3844 | Concreting | 2026-06-07 → 2026-12-22 (+198d) | 2026-06-09 → 2026-12-22 (+196d) | 2d → 1.12d | 3838 → 3843 |  |
| 3845 | **29th floor slab** | 2026-06-28 → 2026-12-23 (+178d) | 2026-07-08 → 2027-01-01 (+177d) | 10d → 11.25d |  | constraint start no earlier than 2026-06-28 → start no earlier than 2026-12-23 |
| 3846 | Reinforcement | 2026-06-28 → 2026-12-23 (+178d) | 2026-07-05 → 2026-12-30 (+178d) | 7d → 9d | 3849FS+4d → 3844 |  |
| 3847 | Wall conduiting | 2026-06-29 → 2026-12-24 (+178d) | 2026-07-02 → 2026-12-25 (+176d) | 3d → 2.25d | 3842, 3846SS+1d → 3842, 3846SS+1.12d |  |
| 3848 | Formwork | 2026-06-29 → 2026-12-25 (+179d) | 2026-07-07 → 2026-12-31 (+177d) | 8d → 7.88d | 3846SS+1d → 3846SS+2.25d |  |
| 3849 | Concreting | 2026-06-22 → 2027-01-01 (+193d) | 2026-06-24 → 2027-01-01 (+191d) | 2d → 1.12d | 3843 → 3848 |  |
| 3850 | **30th floor slab** | 2026-07-12 → 2027-01-02 (+174d) | 2026-07-22 → 2027-01-11 (+173d) | 10d → 11.25d |  | constraint start no earlier than 2026-07-12 → start no earlier than 2027-01-02 |
| 3851 | Reinforcement | 2026-07-12 → 2027-01-02 (+174d) | 2026-07-19 → 2027-01-09 (+174d) | 7d → 9d | 3854FS+4d → 3849 |  |
| 3852 | Wall conduiting | 2026-07-13 → 2027-01-03 (+174d) | 2026-07-16 → 2027-01-04 (+172d) | 3d → 2.25d | 3847, 3851SS+1d → 3847, 3851SS+1.12d |  |
| 3853 | Formwork | 2026-07-13 → 2027-01-04 (+175d) | 2026-07-21 → 2027-01-10 (+173d) | 8d → 7.88d | 3851SS+1d → 3851SS+2.25d |  |
| 3854 | Concreting | 2026-07-07 → 2027-01-11 (+188d) | 2026-07-08 → 2027-01-11 (+187d) | 1d → 1.12d | 3848 → 3853 |  |
| 3855 | **31st floor slab** | 2026-07-22 → 2027-01-12 (+174d) | 2026-08-01 → 2027-01-21 (+173d) | 10d → 11.25d |  | constraint start no earlier than 2026-07-22 → start no earlier than 2027-01-12 |
| 3856 | Reinforcement | 2026-07-22 → 2027-01-12 (+174d) | 2026-07-29 → 2027-01-18 (+173d) | 7d → 7.88d | 3859 → 3854 |  |
| 3857 | Wall conduiting | 2026-07-23 → 2027-01-13 (+174d) | 2026-07-26 → 2027-01-14 (+172d) | 3d → 2.25d | 3852, 3856SS+1d → 3852, 3856SS+1.12d |  |
| 3858 | Formwork | 2026-07-23 → 2027-01-14 (+175d) | 2026-07-31 → 2027-01-20 (+173d) | 8d → 7.88d | 3856SS+1d → 3856SS+2.25d |  |
| 3859 | Concreting | 2026-07-21 → 2027-01-21 (+184d) | 2026-07-22 → 2027-01-21 (+183d) | 1d → 1.12d | 3853 → 3858 |  |
| 3860 | **32nd floor slab** | 2026-08-05 → 2027-01-22 (+170d) | 2026-08-16 → 2027-02-04 (+172d) | 11d → 15.75d |  | constraint start no earlier than 2026-08-05 → start no earlier than 2027-01-22 |
| 3861 | Reinforcement | 2026-08-05 → 2027-01-22 (+170d) | 2026-08-15 → 2027-01-31 (+169d) | 10d → 11.25d | 3864FS+4d → 3859 |  |
| 3862 | Wall conduiting | 2026-08-06 → 2027-01-23 (+170d) | 2026-08-13 → 2027-01-24 (+164d) | 7d → 2.25d | 3857, 3861SS+1d → 3857, 3861SS+1.12d |  |
| 3863 | Formwork | 2026-08-06 → 2027-01-24 (+171d) | 2026-08-14 → 2027-02-03 (+173d) | 8d → 12.38d | 3861SS+1d → 3861SS+2.25d |  |
| 3864 | Concreting | 2026-07-31 → 2027-02-04 (+188d) | 2026-08-01 → 2027-02-04 (+187d) | 1d → 1.12d | 3858 → 3863 |  |
| 3865 | **33rd floor slab** | 2026-08-20 → 2027-02-05 (+169d) | 2026-08-31 → 2027-02-14 (+167d) | 10.88d → 11.25d |  | constraint start no earlier than 2026-08-20 → start no earlier than 2027-02-05 |
| 3866 | Reinforcement | 2026-08-20 → 2027-02-05 (+169d) | 2026-08-29 → 2027-02-11 (+166d) | 8.94d → 7.88d | 3869FS+4d → 3864 |  |
| 3867 | Wall conduiting | 2026-08-21 → 2027-02-06 (+169d) | 2026-08-23 → 2027-02-07 (+168d) | 1.94d → 2.25d | 3862, 3866SS+1d → 3862, 3866SS+1.12d |  |
| 3868 | Formwork | 2026-08-21 → 2027-02-07 (+170d) | 2026-08-30 → 2027-02-13 (+167d) | 8.94d → 7.88d | 3866SS+1d → 3866SS+2.25d |  |
| 3869 | Concreting | 2026-08-14 → 2027-02-14 (+184d) | 2026-08-16 → 2027-02-14 (+182d) | 2d → 1.12d | 3863 → 3868 |  |
| 3870 | **34th floor slab** | 2026-09-04 → 2027-02-15 (+164d) | 2026-09-15 → 2027-03-01 (+167d) | 11d → 16.88d |  | constraint start no earlier than 2026-09-04 → start no earlier than 2027-02-15 |
| 3871 | Reinforcement | 2026-09-04 → 2027-02-15 (+164d) | 2026-09-14 → 2027-02-26 (+165d) | 10d → 13.5d | 3874FS+4d → 3869 |  |
| 3872 | Wall conduiting | 2026-09-05 → 2027-02-16 (+164d) | 2026-09-12 → 2027-02-17 (+158d) | 7d → 2.25d | 3867, 3871SS+1d → 3867, 3871SS+1.12d |  |
| 3873 | Formwork | 2026-09-05 → 2027-02-17 (+165d) | 2026-09-13 → 2027-02-28 (+168d) | 8d → 13.5d | 3871SS+1d → 3871SS+2.25d |  |
| 3874 | Concreting | 2026-08-30 → 2027-03-01 (+183d) | 2026-08-31 → 2027-03-01 (+182d) | 0.94d → 1.12d | 3868 → 3873 |  |
| 3875 | **35th floor slab** | 2026-09-19 → 2027-03-02 (+164d) | 2026-10-01 → 2027-03-13 (+163d) | 12d → 13.5d |  | constraint start no earlier than 2026-09-19 → start no earlier than 2027-03-02 |
| 3876 | Reinforcement | 2026-09-19 → 2027-03-02 (+164d) | 2026-09-29 → 2027-03-09 (+161d) | 10d → 9d | 3879FS+4d → 3874 |  |
| 3877 | Wall conduiting | 2026-09-20 → 2027-03-03 (+164d) | 2026-09-27 → 2027-03-04 (+158d) | 7d → 2.25d | 3872, 3876SS+1d → 3872, 3876SS+1.12d |  |

| ID | Task | Start | Finish | Duration | Predecessors | Other |
| --- | --- | --- | --- | --- | --- | --- |
| 3878 | Formwork | 2026-09-21 → 2027-03-05 (+165d) | 2026-09-29 → 2027-03-12 (+164d) | 8d → 9d | 3877SS+1d → 3877SS+2.25d |  |
| 3879 | Concreting | 2026-09-13 → 2027-03-13 (+181d) | 2026-09-15 → 2027-03-13 (+179d) | 2d → 1.12d | 3873 → 3878 |  |
| 3880 | **Terrace floor slab** | 2026-10-01 → 2027-03-14 (+164d) | 2026-10-20 → 2027-04-03 (+165d) | 19d → 23.62d |  | constraint start no earlier than 2026-10-01 → start no earlier than 2027-03-14 |
| 3881 | Reinforcement | 2026-10-01 → 2027-03-14 (+164d) | 2026-10-20 → 2027-03-31 (+162d) | 19d → 20.25d | 3884 → 3879 |  |
| 3882 | Wall conduiting | 2026-10-02 → 2027-03-15 (+164d) | 2026-10-12 → 2027-03-16 (+155d) | 10d → 2.25d | 3877, 3881SS+1d → 3877, 3881SS+1.12d |  |
| 3883 | Formwork | 2026-10-02 → 2027-03-16 (+165d) | 2026-10-15 → 2027-04-02 (+169d) | 13d → 20.25d | 3881SS+1d → 3881SS+2.25d |  |
| 3884 | Concreting | 2026-09-29 → 2027-04-03 (+186d) | 2026-10-01 → 2027-04-03 (+184d) | 2d → 1.12d | 3878 → 3883 |  |
| 3885 | **OHT & Mumty** | 2026-10-17 → 2027-04-04 (+169d) | 2027-01-08 → 2027-05-13 (+125d) | 38.88d → 45d |  | constraint start no earlier than 2026-10-17 → start no earlier than 2027-04-04 |
| 3886 | Reinforcement | 2026-10-17 → 2027-04-04 (+169d) | 2026-12-31 → 2027-05-06 (+126d) | 29.94d → 37.12d | 3889 → 3884 |  |
| 3887 | Wall conduiting | 2026-10-18 → 2027-04-05 (+169d) | 2026-10-23 → 2027-04-09 (+168d) | 4.94d → 5.62d | 3882, 3886SS+1d → 3882, 3886SS+1.12d |  |
| 3888 | Formwork | 2026-10-20 → 2027-04-08 (+170d) | 2027-01-06 → 2027-05-10 (+124d) | 32.94d → 37.12d | 3886SS+3d → 3886SS+4.5d |  |
| 3889 | Concreting | 2026-10-15 → 2027-05-11 (+208d) | 2026-10-17 → 2027-05-13 (+208d) | 2d → 3.38d | 3883 → 3888 |  |
| 3890 | **Post Pour Activities** | 2025-11-30 → 2026-02-20 (+82d) | 2027-02-19 → 2027-05-11 (+81d) | 392.75d → 450.88d |  | constraint start no earlier than 2025-11-30 → start no earlier than 2026-02-20 |
| 3891 | 1st Floor | 2025-11-30 → 2026-02-20 (+82d) | 2025-12-16 → 2026-03-03 (+77d) | 7d → 12.38d | 3729FS+0.25d → 3719FS+0.25d |  |
| 3892 | 2nd Floor | 2027-08-26 → 2026-03-12 (-532d) | 2027-08-28 → 2026-03-22 (-524d) | 1.94d → 12.38d | 3589 → 3891, 3729 |  |
| 3893 | 3rd Floor | 2025-12-23 → 2026-03-23 (+90d) | 2025-12-30 → 2026-04-02 (+93d) | 7d → 12.38d | 4507, 3749 → 3892, 3734 |  |
| 3894 | 4th Floor | 2025-12-30 → 2026-04-03 (+94d) | 2026-01-06 → 2026-04-13 (+97d) | 7d → 12.38d | 3893, 3754 → 3893, 3739 |  |
| 3895 | 5th Floor | 2026-01-06 → 2026-04-14 (+98d) | 2026-01-13 → 2026-04-24 (+101d) | 7d → 12.38d | 3894, 3759 → 3894, 3744 |  |
| 3896 | 6th Floor | 2026-01-13 → 2026-04-25 (+102d) | 2026-01-20 → 2026-05-05 (+105d) | 7d → 12.38d | 3895, 3764 → 3895, 3749 |  |
| 3897 | 7th Floor | 2026-01-20 → 2026-05-06 (+106d) | 2026-01-27 → 2026-05-16 (+109d) | 7d → 12.38d | 3896, 3769 → 3896, 3754 |  |
| 3898 | 8th Floor | 2026-01-27 → 2026-05-17 (+110d) | 2026-02-03 → 2026-05-27 (+113d) | 7d → 12.38d | 3897, 3774 → 3897, 3759 |  |
| 3899 | 9th Floor | 2026-02-03 → 2026-05-28 (+114d) | 2026-02-10 → 2026-06-07 (+117d) | 7d → 12.38d | 3898, 3779 → 3898, 3764 |  |
| 3900 | 10th Floor | 2026-02-10 → 2026-06-08 (+118d) | 2026-02-17 → 2026-06-18 (+121d) | 7d → 12.38d | 3899, 3784 → 3899, 3769 |  |
| 3901 | 11th Floor | 2026-02-17 → 2026-06-19 (+122d) | 2026-02-24 → 2026-06-29 (+125d) | 7d → 12.38d | 3900, 3789 → 3900, 3774 |  |
| 3902 | 12th Floor | 2026-02-24 → 2026-06-30 (+126d) | 2026-03-03 → 2026-07-10 (+129d) | 7d → 12.38d | 3901, 3794 → 3901, 3779 |  |
| 3903 | 13th Floor | 2026-03-03 → 2026-07-11 (+130d) | 2026-03-10 → 2026-07-21 (+133d) | 7d → 12.38d | 3902, 3799 → 3902, 3784 |  |
| 3904 | 14th Floor | 2026-03-10 → 2026-07-22 (+134d) | 2026-03-17 → 2026-08-01 (+137d) | 7d → 12.38d | 3903, 3804 → 3903, 3789 |  |
| 3905 | 15th Floor | 2026-03-17 → 2026-08-02 (+138d) | 2026-03-24 → 2026-08-12 (+141d) | 7d → 12.38d | 3904, 3809 → 3904, 3794 |  |
| 3906 | 16th Floor | 2026-03-24 → 2026-08-13 (+142d) | 2026-03-31 → 2026-08-23 (+145d) | 7d → 12.38d | 3905, 3814 → 3905, 3799 |  |
| 3907 | 17th Floor | 2026-04-03 → 2026-08-24 (+143d) | 2026-04-10 → 2026-09-03 (+146d) | 7d → 12.38d | 3906, 3819 → 3906, 3804 |  |
| 3908 | 18th Floor | 2026-04-17 → 2026-09-04 (+140d) | 2026-04-24 → 2026-09-14 (+143d) | 7d → 12.38d | 3907, 3824 → 3907, 3809 |  |
| 3909 | 19th Floor | 2026-05-01 → 2026-09-15 (+137d) | 2026-05-08 → 2026-09-25 (+140d) | 7d → 12.38d | 3908, 3829 → 3908, 3814 |  |
| 3910 | 20th Floor | 2026-05-14 → 2026-09-26 (+135d) | 2026-05-21 → 2026-10-06 (+138d) | 7d → 12.38d | 3909, 3834 → 3909, 3819 |  |
| 3911 | 21st Floor | 2026-05-25 → 2026-10-07 (+135d) | 2026-06-01 → 2026-10-17 (+138d) | 7d → 12.38d | 3910, 3839 → 3910, 3824 |  |
| 3912 | 22nd Floor | 2026-06-09 → 2026-10-18 (+131d) | 2026-06-16 → 2026-10-28 (+134d) | 7d → 12.38d | 3911, 3844 → 3911, 3829 |  |
| 3913 | 23rd Floor | 2026-06-24 → 2026-10-29 (+127d) | 2026-07-01 → 2026-12-23 (+175d) | 7d → 12.38d | 3912, 3849 → 3912, 3834 |  |
| 3914 | 24th Floor | 2026-07-08 → 2026-12-24 (+169d) | 2026-07-15 → 2027-01-03 (+172d) | 7d → 12.38d | 3913, 3854 → 3913, 3839 |  |
| 3915 | 25th Floor | 2026-07-22 → 2027-01-04 (+166d) | 2026-07-29 → 2027-01-14 (+169d) | 7d → 12.38d | 3914, 3859 → 3914, 3844 |  |
| 3916 | 26th Floor | 2026-08-01 → 2027-01-15 (+167d) | 2026-08-08 → 2027-01-25 (+170d) | 7d → 12.38d | 3915, 3864 → 3915, 3849 |  |
| 3917 | 27th Floor | 2026-08-16 → 2027-01-26 (+163d) | 2026-08-23 → 2027-02-05 (+166d) | 7d → 12.38d | 3916, 3869 → 3916, 3854 |  |
| 3918 | 28th Floor | 2026-08-31 → 2027-02-06 (+159d) | 2026-09-07 → 2027-02-16 (+162d) | 7d → 12.38d | 3917, 3874 → 3917, 3859 |  |
| 3919 | 29th Floor | 2027-10-18 → 2027-02-17 (-243d) | 2027-10-19 → 2027-02-27 (-234d) | 1.94d → 12.38d | 3616 → 3918, 3864 |  |
| 3920 | 30th Floor | 2026-10-01 → 2027-02-28 (+150d) | 2026-10-08 → 2027-03-10 (+153d) | 7d → 12.38d | 4534, 3884 → 3919, 3869 |  |
| 3921 | 31st Floor | 2027-10-21 → 2027-03-11 (-224d) | 2027-10-23 → 2027-03-21 (-216d) | 1.94d → 12.38d | 3618 → 3920, 3874 |  |
| 3922 | 32nd Flood | 2027-01-13 → 2027-03-22 (+68d) | 2027-01-19 → 2027-04-01 (+72d) | 7d → 12.38d | 3619, 3685 → 3921, 3879 |  |
| 3923 | 33rd Floor | 2027-01-16 → 2027-04-02 (+76d) | 2027-01-22 → 2027-04-09 (+77d) | 7d → 9d | 32nd Flood → 3922 |  |
| 3924 | 34th Floor | 2027-01-23 → 2027-04-10 (+77d) | 2027-01-29 → 2027-04-17 (+78d) | 7d → 9d |  |  |
| 3925 | 35th Floor | 2027-01-30 → 2027-04-18 (+78d) | 2027-02-05 → 2027-04-25 (+79d) | 7d → 9d |  |  |
| 3926 | Terrace | 2027-02-06 → 2027-04-26 (+79d) | 2027-02-12 → 2027-05-03 (+80d) | 7d → 9d |  |  |
| 3927 | Mumty & Machine Room | 2027-02-13 → 2027-05-04 (+80d) | 2027-02-19 → 2027-05-11 (+81d) | 7d → 9d |  |  |
| 3928 | **Finishing work** | 2025-12-16 → 2026-03-03 (+77d) | 2028-11-16 → 2029-07-21 (+247d) | 1021.44d → 1289.5d |  | constraint start no earlier than 2025-12-16 → start no earlier than 2026-03-03 |
| 3929 | **Flat finishing** | 2025-12-16 → 2026-03-03 (+77d) | 2028-05-12 → 2029-05-19 (+372d) | 833.12d → 1218.88d |  | constraint start no earlier than 2025-12-16 → start no earlier than 2026-03-03 |
| 3930 | **1st Floor** | 2025-12-16 → 2026-03-03 (+77d) | 2027-05-25 → 2028-02-16 (+267d) | 480d → 703.12d |  | constraint start no earlier than 2025-12-16 → start no earlier than 2026-03-03 |
| 3931 | Block Work | 2026-01-13 → 2026-03-03 (+49d) | 2026-02-22 → 2026-03-10 (+16d) | 39.94d → 7.88d | 2978FS+0.25d → 3891FS+0.25d |  |
| 3932 | Door Frame Fixing | 2025-12-24 → 2026-03-10 (+76d) | 2026-01-02 → 2026-03-15 (+72d) | 9d → 5.62d | 3947 → 3931 |  |
| 3933 | Internal Plumbing Works | 2025-12-24 → 2026-03-10 (+76d) | 2026-01-01 → 2026-03-17 (+75d) | 8d → 7.88d | 3947 → 3931 |  |
| 3934 | Waterproofing | 2026-02-10 → 2026-03-17 (+35d) | 2026-02-20 → 2026-03-24 (+32d) | 10d → 7.88d | 3658, 4013 → 3933 |  |
| 3935 | Internal Plaster | 2027-03-29 → 2026-03-15 (-379d) | 2027-04-01 → 2026-03-20 (-377d) | 3d → 5.62d | 3562FS+0.25d → 3932FS+0.25d |  |
| 3936 | IPS flooring work | 2026-01-11 → 2026-03-24 (+72d) | 2026-01-21 → 2026-03-31 (+69d) | 10d → 7.88d | 3932, 3933, 3529 → 3932, 3933, 3934 |  |
| 3937 | Toilet dado work | 2026-01-11 → 2027-02-02 (+387d) | 2026-01-19 → 2027-02-09 (+386d) | 8d → 7.88d | 3529, 3999 → 3934FS+303.75d, 3935FS+303.75d |  |
| 3938 | Toilet flooring work | 2026-01-19 → 2027-02-09 (+386d) | 2026-01-27 → 2027-02-15 (+384d) | 8d → 6.75d |  |  |
| 3939 | Living dinning flooring | 2026-02-17 → 2027-02-15 (+363d) | 2026-02-24 → 2027-02-24 (+365d) | 8d → 10.12d | 3971FS+0.25d → 3932, 3938 |  |
| 3940 | Aluminium door-window fixing | 2026-02-08 → 2028-02-04 (+726d) | 2026-02-20 → 2028-02-16 (+726d) | 12d → 13.5d | 3936, 3955 → 3939FS+337.5d |  |
| 3941 | Putty primer coat | 2026-02-08 → 2027-02-24 (+381d) | 2026-02-14 → 2027-03-02 (+381d) | 6d → 6.75d | 3955 → 3939 |  |
| 3942 | Door shutter fixing | 2026-02-25 → 2027-12-16 (+659d) | 2026-03-04 → 2027-12-24 (+660d) | 8d → 9d | 3990, 3939 → 3939FS+281.25d |  |
| 3943 | Electrical wiring work | 2027-04-17 → 2028-01-03 (+261d) | 2027-05-02 → 2028-01-15 (+258d) | 15d → 13.5d | 3958FS+380d → 3942FS+11.25d |  |
| 3944 | Painting 1st coat | 2027-05-02 → 2027-03-03 (-60d) | 2027-05-17 → 2027-03-15 (-63d) | 15d → 13.5d | 3941, 3958, 3943 → 3941FS+1.12d |  |
| 3945 | False ceiling | 2027-05-17 → 2027-03-16 (-62d) | 2027-05-25 → 2027-03-26 (-60d) | 8d → 11.25d | 3944 → 3944FS+1.12d |  |
| 3946 | **2nd Floor** | 2025-12-24 → 2026-03-10 (+76d) | 2027-06-14 → 2028-02-28 (+259d) | 491.75d → 708.75d |  | constraint start no earlier than 2025-12-24 → start no earlier than 2026-03-10 |
| 3947 | Block Work | 2025-12-16 → 2026-03-10 (+84d) | 2025-12-24 → 2026-03-17 (+83d) | 8d → 7.88d | 3891FS+0.25d → 3931FS+0.25d |  |

| ID | Task | Start | Finish | Duration | Predecessors | Other |
| --- | --- | --- | --- | --- | --- | --- |
| 3948 | Door Frame Fixing | 2026-01-02 → 2026-03-17 (+74d) | 2026-01-11 → 2026-03-22 (+70d) | 9d → 5.62d | 3932, 3963 → 3932, 3947 |  |
| 3949 | Internal Plumbing Works | 2026-01-01 → 2026-03-17 (+75d) | 2026-01-09 → 2026-03-24 (+74d) | 8d → 7.88d | 3933, 3963 → 3933, 3947 |  |
| 3950 | Waterproofing | 2026-03-02 → 2026-03-24 (+22d) | 2026-03-12 → 2026-03-31 (+19d) | 10d → 7.88d | 3982, 4029 → 3934, 3949 |  |
| 3951 | Internal Plaster | 2027-04-02 → 2026-03-22 (-376d) | 2027-04-05 → 2026-03-27 (-374d) | 3d → 5.62d | 3935FS+0.25d → 3935FS+0.25d, 3948 |  |
| 3952 | IPS flooring work | 2026-01-21 → 2026-03-31 (+69d) | 2026-01-31 → 2026-04-07 (+66d) | 10d → 7.88d | 3936, 3948, 3949, 3545 → 3936, 3948, 3949, 3950 |  |
| 3953 | Toilet dado work | 2026-01-21 → 2027-02-09 (+384d) | 2026-01-29 → 2027-02-16 (+383d) | 8d → 7.88d | 3937, 3545, 4015 → 3937, 3950, 3951 |  |
| 3954 | Toilet flooring work | 2026-01-29 → 2027-02-16 (+383d) | 2026-02-06 → 2027-02-22 (+381d) | 8d → 6.75d |  |  |
| 3955 | Living dinning flooring | 2026-01-27 → 2027-02-24 (+393d) | 2026-02-08 → 2027-03-05 (+390d) | 12d → 10.12d | 3932, 3938 → 3939, 3948, 3954 |  |
| 3956 | Aluminium door-window fixing | 2026-04-06 → 2028-02-16 (+681d) | 2026-04-14 → 2028-02-28 (+685d) | 8d → 13.5d | 3940FS+45d → 3940FS+0.25d, 3955FS+0.25d |  |
| 3957 | Putty primer coat | 2026-02-16 → 2027-03-05 (+382d) | 2026-02-22 → 2027-03-11 (+382d) | 6d → 6.75d | 3941, 3971 → 3941, 3955 |  |
| 3958 | Door shutter fixing | 2026-02-08 → 2027-12-24 (+684d) | 2026-02-16 → 2028-01-01 (+684d) | 8d → 9d | 3955 → 3942, 3955 |  |
| 3959 | Electrical wiring work | 2027-05-02 → 2028-01-16 (+259d) | 2027-05-22 → 2028-01-28 (+251d) | 20d → 13.5d | 3943, 3990 → 3943FS+1.12d, 3958FS+1.12d |  |
| 3960 | Painting 1st coat | 2027-05-22 → 2028-01-29 (+252d) | 2027-06-06 → 2028-02-10 (+249d) | 15d → 13.5d | 3944, 3957, 3990, 3959 → 3944FS+1.12d, 3957FS+1.12d, 3958FS+1.12d, 3959FS+1.12d |  |
| 3961 | False ceiling | 2027-06-06 → 2028-02-11 (+250d) | 2027-06-14 → 2028-02-21 (+252d) | 8d → 11.25d | 3945, 3960 → 3945FS+1.12d, 3960FS+1.12d |  |
| 3962 | **3rd Floor** | 2026-01-02 → 2026-03-17 (+74d) | 2027-06-26 → 2028-03-11 (+259d) | 495.5d → 714.38d |  | constraint start no earlier than 2026-01-02 → start no earlier than 2026-03-17 |
| 3963 | Block Work | 2025-12-24 → 2026-03-17 (+83d) | 2026-01-01 → 2026-03-24 (+82d) | 8d → 7.88d |  |  |
| 3964 | Door Frame Fixing | 2026-01-11 → 2026-03-24 (+72d) | 2026-01-20 → 2026-03-29 (+68d) | 9d → 5.62d | 3948, 3995 → 3948, 3963 |  |
| 3965 | Internal Plumbing Works | 2026-01-10 → 2026-03-24 (+73d) | 2026-01-17 → 2026-03-31 (+73d) | 8d → 7.88d | 3949, 3995 → 3949, 3963 |  |
| 3966 | Waterproofing | 2026-03-12 → 2026-03-31 (+19d) | 2026-03-22 → 2026-04-07 (+16d) | 10d → 7.88d | 3950, 4045 → 3950, 3965 |  |
| 3967 | Internal Plaster | 2026-02-18 → 2026-03-29 (+39d) | 2026-06-18 → 2026-04-03 (-76d) | 119.94d → 5.62d | 3583SS+17.88d → 3951FS+0.25d, 3964 |  |
| 3968 | IPS flooring work | 2026-01-31 → 2026-04-07 (+66d) | 2026-02-10 → 2026-04-14 (+63d) | 10d → 7.88d | 3952, 3964, 3561, 4031 → 3952FS+0.25d, 3964FS+0.25d |  |
| 3969 | Toilet dado work | 2026-01-31 → 2027-02-16 (+381d) | 2026-02-08 → 2027-02-23 (+380d) | 8d → 7.88d | 3953, 3561, 4031 → 3953, 3966, 3967 |  |
| 3970 | Toilet flooring work | 2026-02-08 → 2027-02-23 (+380d) | 2026-02-16 → 2027-03-01 (+378d) | 8d → 6.75d |  |  |
| 3971 | Living dinning flooring | 2026-02-08 → 2027-03-05 (+390d) | 2026-02-16 → 2027-03-14 (+391d) | 8d → 10.12d | 3955FS+0.25d → 3955, 3964, 3970 |  |
| 3972 | Aluminium door-window fixing | 2026-04-14 → 2028-02-28 (+685d) | 2026-04-22 → 2028-03-11 (+689d) | 8d → 13.5d | 3956FS+0.25d → 3956FS+0.25d, 3971FS+0.25d |  |
| 3973 | Putty primer coat | 2026-03-21 → 2027-03-14 (+358d) | 2026-03-27 → 2027-03-20 (+358d) | 6d → 6.75d | 4005, 4003 → 3957, 3971 |  |
| 3974 | Door shutter fixing | 2026-03-21 → 2028-01-01 (+651d) | 2026-03-29 → 2028-01-09 (+651d) | 8d → 9d | 4006, 4003 → 3958, 3971 |  |
| 3975 | Electrical wiring work | 2027-06-18 → 2028-01-29 (+225d) | 2027-06-26 → 2028-02-10 (+229d) | 8d → 13.5d | 4007, 3974 → 3959FS+1.12d, 3974FS+1.12d |  |
| 3976 | Painting 1st coat | 2027-06-26 → 2028-02-11 (+230d) | 2027-07-04 → 2028-02-23 (+234d) | 8d → 13.5d | 4008, 3973, 3974, 3975 → 3960FS+1.12d, 3973FS+1.12d, 3974FS+1.12d, 3975FS+1.12d |  |
| 3977 | False ceiling | 2027-07-04 → 2028-02-24 (+235d) | 2027-07-12 → 2028-03-05 (+237d) | 8d → 11.25d | 4009, 3976 → 3961FS+1.12d, 3976FS+1.12d |  |
| 3978 | **4th Floor** | 2026-01-10 → 2026-03-25 (+74d) | 2027-07-04 → 2028-03-24 (+264d) | 495.25d → 720d |  | constraint start no earlier than 2026-01-10 → start no earlier than 2026-03-25 |
| 3979 | Block Work | 2026-01-26 → 2026-03-25 (+58d) | 2026-02-03 → 2026-04-01 (+57d) | 8d → 7.88d | 4027FS+0.25d → 3963FS+0.25d |  |
| 3980 | Door Frame Fixing | 2026-02-07 → 2026-04-01 (+53d) | 2026-02-16 → 2026-04-06 (+49d) | 9d → 5.62d | 3749, 4012 → 3964, 3979 |  |
| 3981 | Internal Plumbing Works | 2026-02-03 → 2026-04-01 (+57d) | 2026-02-11 → 2026-04-08 (+56d) | 8d → 7.88d | 4013, 3979 → 3965, 3979 |  |
| 3982 | Waterproofing | 2026-02-20 → 2026-04-08 (+47d) | 2026-03-02 → 2026-04-15 (+44d) | 10d → 7.88d | 3934, 3981 → 3966, 3981 |  |
| 3983 | Internal Plaster | 2026-02-04 → 2026-04-06 (+61d) | 2026-02-12 → 2026-04-11 (+58d) | 8d → 5.62d | 4063FS+0.25d → 3967FS+0.25d, 3980FS+0.25d |  |
| 3984 | IPS flooring work | 2026-02-10 → 2026-04-15 (+64d) | 2026-02-20 → 2026-04-22 (+61d) | 10d → 7.88d | 3968, 3996, 3658, 4047 → 3968, 3980, 3982, 3983 |  |
| 3985 | Toilet dado work | 2026-02-10 → 2027-02-23 (+378d) | 2026-02-18 → 2027-03-02 (+377d) | 8d → 7.88d | 3969, 3658, 4047 → 3969, 3982, 3983 |  |
| 3986 | Toilet flooring work | 2026-02-18 → 2027-03-02 (+377d) | 2026-02-26 → 2027-03-08 (+375d) | 8d → 6.75d |  |  |
| 3987 | Living dinning flooring | 2026-02-25 → 2027-03-14 (+382d) | 2026-03-09 → 2027-03-23 (+379d) | 12d → 10.12d | 3939FS+0.25d → 3971, 3980, 3986 |  |
| 3988 | Aluminium door-window fixing | 2026-04-23 → 2028-03-12 (+689d) | 2026-05-04 → 2028-03-24 (+690d) | 12d → 13.5d | 3972FS+0.25d → 3972FS+0.25d, 3987FS+0.25d |  |
| 3989 | Putty primer coat | 2026-02-25 → 2027-03-23 (+391d) | 2026-03-02 → 2027-03-29 (+392d) | 6d → 6.75d | 3957, 3939 → 3973, 3987 |  |
| 3990 | Door shutter fixing | 2026-02-16 → 2028-01-09 (+692d) | 2026-02-24 → 2028-01-17 (+692d) | 8d → 9d | 3958, 3971 → 3974, 3987 |  |
| 3991 | Electrical wiring work | 2027-05-22 → 2028-02-11 (+265d) | 2027-06-10 → 2028-02-23 (+258d) | 19d → 13.5d | 3959, 3942 → 3975FS+1.12d, 3990FS+1.12d |  |
| 3992 | Painting 1st coat | 2027-06-10 → 2028-02-24 (+259d) | 2027-06-18 → 2028-03-07 (+263d) | 8d → 13.5d | 3960, 3989, 3942, 3991 → 3976FS+1.12d, 3989FS+1.12d, 3990FS+1.12d, 3991FS+1.12d |  |
| 3993 | False ceiling | 2027-06-18 → 2028-03-08 (+264d) | 2027-06-26 → 2028-03-18 (+266d) | 8d → 11.25d | 3961, 3992 → 3977FS+1.12d, 3992FS+1.12d |  |
| 3994 | **5th Floor** | 2026-01-18 → 2026-04-01 (+73d) | 2027-07-12 → 2028-04-05 (+268d) | 495d → 725.62d |  | constraint start no earlier than 2026-01-18 → start no earlier than 2026-04-01 |
| 3995 | Block Work | 2026-01-02 → 2026-04-01 (+89d) | 2026-01-09 → 2026-04-08 (+89d) | 8d → 7.88d | 3963FS+0.25d → 3979FS+0.25d |  |
| 3996 | Door Frame Fixing | 2026-01-20 → 2026-04-08 (+78d) | 2026-01-29 → 2026-04-13 (+74d) | 9d → 5.62d | 3964, 4011 → 3980, 3995 |  |
| 3997 | Internal Plumbing Works | 2026-01-18 → 2026-04-08 (+80d) | 2026-01-26 → 2026-04-15 (+79d) | 8d → 7.88d | 3965, 4011 → 3981, 3995 |  |
| 3998 | Waterproofing | 2026-03-22 → 2026-04-15 (+24d) | 2026-04-01 → 2026-04-22 (+21d) | 10d → 7.88d | 3966, 4061 → 3982, 3997 |  |
| 3999 | Internal Plaster | 2025-12-25 → 2026-04-13 (+109d) | 2026-01-02 → 2026-04-18 (+106d) | 8d → 5.62d | 3947FS+1d → 3983FS+0.25d, 3996FS+0.25d |  |
| 4000 | IPS flooring work | 2026-02-20 → 2026-04-22 (+61d) | 2026-03-02 → 2026-04-29 (+58d) | 10d → 7.88d | 3984, 4012, 3934, 4063 → 3984, 3996, 3998, 3999 |  |
| 4001 | Toilet dado work | 2026-02-20 → 2027-03-02 (+375d) | 2026-02-28 → 2027-03-09 (+374d) | 8d → 7.88d | 3985, 3934, 4063 → 3985, 3998, 3999 |  |
| 4002 | Toilet flooring work | 2026-02-28 → 2027-03-09 (+374d) | 2026-03-08 → 2027-03-15 (+372d) | 8d → 6.75d |  |  |
| 4003 | Living dinning flooring | 2026-03-09 → 2027-03-23 (+379d) | 2026-03-21 → 2027-04-01 (+376d) | 12d → 10.12d | 3987FS+0.25d → 3987, 3996, 4002 |  |
| 4004 | Aluminium door-window fixing | 2026-05-05 → 2028-03-24 (+689d) | 2026-05-17 → 2028-04-05 (+689d) | 12d → 13.5d | 3988FS+0.25d → 3988FS+0.25d, 4003FS+0.25d |  |
| 4005 | Putty primer coat | 2026-03-09 → 2027-04-01 (+388d) | 2026-03-15 → 2027-04-07 (+388d) | 6d → 6.75d | 3989, 3987 → 3989, 4003 |  |
| 4006 | Door shutter fixing | 2026-03-09 → 2028-01-17 (+679d) | 2026-03-17 → 2028-01-25 (+679d) | 8d → 9d | 3942, 3987 → 3990, 4003 |  |
| 4007 | Electrical wiring work | 2027-06-10 → 2028-02-24 (+259d) | 2027-06-18 → 2028-03-07 (+263d) | 8d → 13.5d | 3991, 4006 → 3991FS+1.12d, 4006FS+1.12d |  |
| 4008 | Painting 1st coat | 2027-06-18 → 2028-03-08 (+264d) | 2027-06-26 → 2028-03-20 (+268d) | 8d → 13.5d | 3992, 4005, 4006, 4007 → 3992FS+1.12d, 4005FS+1.12d, 4006FS+1.12d, 4007FS+1.12d |  |
| 4009 | False ceiling | 2027-06-26 → 2028-03-21 (+269d) | 2027-07-04 → 2028-03-31 (+271d) | 8d → 11.25d | 3993, 4008 → 3993FS+1.12d, 4008FS+1.12d |  |
| 4010 | **6th Floor** | 2026-01-26 → 2026-04-08 (+72d) | 2027-07-20 → 2028-04-17 (+272d) | 494.75d → 731.25d |  | constraint start no earlier than 2026-01-26 → start no earlier than 2026-04-08 |
| 4011 | Block Work | 2026-01-10 → 2026-04-08 (+88d) | 2026-01-18 → 2026-04-15 (+87d) | 8d → 7.88d |  |  |
| 4012 | Door Frame Fixing | 2026-01-29 → 2026-04-13 (+74d) | 2026-02-07 → 2026-04-18 (+70d) | 9d → 5.62d | 3996, 4027 → 3744, 3996 |  |
| 4013 | Internal Plumbing Works | 2026-01-26 → 2026-04-15 (+79d) | 2026-02-03 → 2026-04-22 (+78d) | 8d → 7.88d | 3997, 4027 → 3997, 4011 |  |
| 4014 | Waterproofing | 2026-04-01 → 2026-04-22 (+21d) | 2026-04-11 → 2026-04-29 (+18d) | 10d → 7.88d | 3998, 4077 → 3998, 4013 |  |
| 4015 | Internal Plaster | 2026-01-02 → 2026-04-18 (+106d) | 2026-01-10 → 2026-04-23 (+103d) | 8d → 5.62d | 3999FS+0.25d → 3999FS+0.25d, 4012FS+0.25d |  |
| 4016 | IPS flooring work | 2026-03-02 → 2026-04-29 (+58d) | 2026-03-12 → 2026-05-06 (+55d) | 10d → 7.88d | 4000, 3980, 3982, 3983 → 4000, 4012, 4014, 4015 |  |
| 4017 | Toilet dado work | 2026-03-02 → 2027-03-09 (+372d) | 2026-03-10 → 2027-03-16 (+371d) | 8d → 7.88d | 4001, 3982, 3983 → 4001, 4014, 4015 |  |

| ID | Task | Start | Finish | Duration | Predecessors | Other |
| --- | --- | --- | --- | --- | --- | --- |
| 4018 | Toilet flooring work | 2026-03-10 → 2027-03-16 (+371d) | 2026-03-18 → 2027-03-22 (+369d) | 8d → 6.75d |  |  |
| 4019 | Living dinning flooring | 2026-03-21 → 2027-04-01 (+376d) | 2026-04-02 → 2027-04-10 (+373d) | 12d → 10.12d | 4003FS+0.25d → 4003FS+0.25d, 4012FS+0.25d |  |
| 4020 | Aluminium door-window fixing | 2026-05-17 → 2028-04-05 (+689d) | 2026-05-29 → 2028-04-17 (+689d) | 12d → 13.5d | 4004FS+0.25d → 4004FS+0.25d, 4019FS+0.25d |  |
| 4021 | Putty primer coat | 2026-04-02 → 2027-04-10 (+373d) | 2026-04-08 → 2027-04-16 (+373d) | 6d → 6.75d | 3973, 4019 → 4005, 4019 |  |
| 4022 | Door shutter fixing | 2026-04-02 → 2028-01-25 (+663d) | 2026-04-10 → 2028-02-02 (+663d) | 8d → 9d | 3974, 4019 → 4006, 4019 |  |
| 4023 | Electrical wiring work | 2027-06-26 → 2028-03-08 (+256d) | 2027-07-04 → 2028-03-20 (+260d) | 8d → 13.5d | 3975, 4022 → 4007FS+1.12d, 4022FS+1.12d |  |
| 4024 | Painting 1st coat | 2027-07-04 → 2028-03-21 (+261d) | 2027-07-12 → 2028-04-02 (+265d) | 8d → 13.5d | 3976, 4021, 4022, 4023 → 4008FS+1.12d, 4021FS+1.12d, 4022FS+1.12d, 4023FS+1.12d |  |
| 4025 | False ceiling | 2027-07-12 → 2028-04-03 (+266d) | 2027-07-20 → 2028-04-13 (+268d) | 8d → 11.25d | 3977, 4024 → 4009FS+1.12d, 4024FS+1.12d |  |
| 4026 | **7th Floor** | 2026-02-04 → 2026-04-15 (+70d) | 2027-07-28 → 2028-04-29 (+276d) | 494.5d → 736.88d |  | constraint start no earlier than 2026-02-04 → start no earlier than 2026-04-15 |
| 4027 | Block Work | 2026-01-18 → 2026-04-15 (+87d) | 2026-01-26 → 2026-04-22 (+86d) | 8d → 7.88d |  |  |
| 4028 | Door Frame Fixing | 2026-02-16 → 2026-04-22 (+65d) | 2026-02-25 → 2026-04-27 (+61d) | 9d → 5.62d | 3980, 4043 → 4012, 4027 |  |
| 4029 | Internal Plumbing Works | 2026-02-12 → 2026-04-22 (+69d) | 2026-02-19 → 2026-04-29 (+69d) | 8d → 7.88d | 3981, 4043 → 4013, 4027 |  |
| 4030 | Waterproofing | 2026-04-11 → 2026-04-29 (+18d) | 2026-04-21 → 2026-05-06 (+15d) | 10d → 7.88d | 4014, 4093 → 4014, 4029 |  |
| 4031 | Internal Plaster | 2026-01-11 → 2026-04-28 (+107d) | 2026-01-18 → 2026-05-02 (+104d) | 8d → 5.62d | 4015FS+0.25d → 4015FS+0.25d, 4028FS+0.25d |  |
| 4032 | IPS flooring work | 2026-03-12 → 2026-05-06 (+55d) | 2026-03-22 → 2026-05-13 (+52d) | 10d → 7.88d | 4016, 4028, 3950, 4079 → 4016, 4028, 4030, 4031 |  |
| 4033 | Toilet dado work | 2026-03-12 → 2027-03-16 (+369d) | 2026-03-20 → 2027-03-23 (+368d) | 8d → 7.88d | 4017, 3950, 4079 → 4017, 4030, 4031 |  |
| 4034 | Toilet flooring work | 2026-03-20 → 2027-03-23 (+368d) | 2026-03-28 → 2027-03-29 (+366d) | 8d → 6.75d |  |  |
| 4035 | Living dinning flooring | 2026-04-03 → 2027-04-10 (+372d) | 2026-04-14 → 2027-04-19 (+370d) | 12d → 10.12d | 4019FS+0.25d → 4019FS+0.25d, 4028FS+0.25d |  |
| 4036 | Aluminium door-window fixing | 2026-05-29 → 2028-04-17 (+689d) | 2026-06-10 → 2028-04-29 (+689d) | 12d → 13.5d | 4020FS+0.25d → 4020FS+0.25d, 4035FS+0.25d |  |
| 4037 | Putty primer coat | 2026-04-15 → 2027-04-19 (+369d) | 2026-04-20 → 2027-04-25 (+370d) | 6d → 6.75d |  |  |
| 4038 | Door shutter fixing | 2026-04-15 → 2028-02-02 (+658d) | 2026-04-22 → 2028-02-10 (+659d) | 8d → 9d |  |  |
| 4039 | Electrical wiring work | 2027-07-04 → 2028-03-21 (+261d) | 2027-07-12 → 2028-04-02 (+265d) | 8d → 13.5d | 4023, 4038 → 4023FS+1.12d, 4038FS+1.12d |  |
| 4040 | Painting 1st coat | 2027-07-12 → 2028-04-03 (+266d) | 2027-07-20 → 2028-04-15 (+270d) | 8d → 13.5d | 4024, 4037, 4038, 4039 → 4024FS+1.12d, 4037FS+1.12d, 4038FS+1.12d, 4039FS+1.12d |  |
| 4041 | False ceiling | 2027-07-20 → 2028-04-16 (+271d) | 2027-07-28 → 2028-04-26 (+273d) | 8d → 11.25d | 4025, 4040 → 4025FS+1.12d, 4040FS+1.12d |  |
| 4042 | **8th Floor** | 2026-02-12 → 2026-04-23 (+70d) | 2027-08-05 → 2028-05-11 (+280d) | 494.25d → 742.5d |  | constraint start no earlier than 2026-02-12 → start no earlier than 2026-04-23 |
| 4043 | Block Work | 2026-02-04 → 2026-04-23 (+78d) | 2026-02-11 → 2026-04-29 (+77d) | 8d → 7.88d | 3979FS+0.25d → 4027FS+0.25d |  |
| 4044 | Door Frame Fixing | 2026-02-25 → 2026-04-30 (+64d) | 2026-03-06 → 2026-05-04 (+59d) | 9d → 5.62d | 4028, 4059 → 4028, 4043 |  |
| 4045 | Internal Plumbing Works | 2026-02-20 → 2026-04-30 (+69d) | 2026-02-28 → 2026-05-06 (+67d) | 8d → 7.88d | 4029, 4059 → 4029, 4043 |  |
| 4046 | Waterproofing | 2026-04-21 → 2026-05-07 (+16d) | 2026-05-01 → 2026-05-15 (+14d) | 10d → 10.12d | 4030, 4109 → 4030, 4045 |  |
| 4047 | Internal Plaster | 2026-01-19 → 2026-05-05 (+106d) | 2026-01-27 → 2026-05-12 (+105d) | 8d → 7.88d | 4031FS+0.25d → 4031FS+0.25d, 4044FS+0.25d |  |
| 4048 | IPS flooring work | 2026-03-22 → 2026-05-16 (+55d) | 2026-04-01 → 2026-05-20 (+49d) | 10d → 5.62d | 4032, 4044, 3966, 4095 → 4032, 4044, 4046, 4047 |  |
| 4049 | Toilet dado work | 2026-03-22 → 2027-03-23 (+366d) | 2026-03-30 → 2027-03-30 (+365d) | 8d → 7.88d | 4033, 3966, 4095 → 4033, 4046, 4047 |  |
| 4050 | Toilet flooring work | 2026-03-30 → 2027-03-30 (+365d) | 2026-04-07 → 2027-04-05 (+363d) | 8d → 6.75d |  |  |
| 4051 | Living dinning flooring | 2026-04-15 → 2027-04-20 (+370d) | 2026-04-27 → 2027-04-29 (+367d) | 12d → 10.12d | 4035FS+0.25d → 4035FS+0.25d, 4044FS+0.25d |  |
| 4052 | Aluminium door-window fixing | 2026-06-11 → 2028-04-30 (+689d) | 2026-06-22 → 2028-05-11 (+689d) | 12d → 13.5d | 4036FS+0.25d → 4036FS+0.25d, 4051FS+0.25d |  |
| 4053 | Putty primer coat | 2026-04-27 → 2027-04-29 (+367d) | 2026-05-03 → 2027-05-05 (+367d) | 6d → 6.75d |  |  |
| 4054 | Door shutter fixing | 2026-04-27 → 2028-02-10 (+654d) | 2026-05-05 → 2028-02-18 (+654d) | 8d → 9d |  |  |
| 4055 | Electrical wiring work | 2027-07-12 → 2028-04-02 (+265d) | 2027-07-20 → 2028-04-14 (+269d) | 8d → 13.5d |  |  |
| 4056 | Painting 1st coat | 2027-07-20 → 2028-04-15 (+270d) | 2027-07-28 → 2028-04-27 (+274d) | 8d → 13.5d |  |  |
| 4057 | False ceiling | 2027-07-28 → 2028-04-27 (+274d) | 2027-08-05 → 2028-05-07 (+276d) | 8d → 11.25d |  |  |
| 4058 | **9th Floor** | 2026-02-20 → 2026-04-30 (+69d) | 2027-08-13 → 2028-05-27 (+288d) | 494d → 751.5d |  | constraint start no earlier than 2026-02-20 → start no earlier than 2026-04-30 |
| 4059 | Block Work | 2026-02-12 → 2026-04-30 (+77d) | 2026-02-20 → 2026-05-07 (+76d) | 8d → 7.88d |  |  |
| 4060 | Door Frame Fixing | 2026-03-06 → 2026-05-07 (+62d) | 2026-03-15 → 2026-05-12 (+58d) | 9d → 5.62d | 4044, 4075 → 4044, 4059 |  |
| 4061 | Internal Plumbing Works | 2026-02-28 → 2026-05-07 (+68d) | 2026-03-08 → 2026-05-14 (+67d) | 8d → 7.88d | 4045, 4075 → 4045, 4059 |  |
| 4062 | Waterproofing | 2026-05-01 → 2026-05-16 (+15d) | 2026-05-11 → 2026-05-22 (+11d) | 10d → 7.88d | 4046, 4125 → 4046, 4061 |  |
| 4063 | Internal Plaster | 2026-01-27 → 2026-05-23 (+116d) | 2026-02-04 → 2026-05-27 (+112d) | 8d → 5.62d | 4047FS+0.25d → 4047, 4060, 4061, 4062 |  |
| 4064 | IPS flooring work | 2026-04-01 → 2026-05-28 (+57d) | 2026-04-11 → 2026-06-03 (+53d) | 10d → 7.88d | 4048, 4060, 3998, 4111 → 4048, 4060, 4062, 4063 |  |
| 4065 | Toilet dado work | 2026-04-01 → 2027-03-30 (+363d) | 2026-04-09 → 2027-04-06 (+362d) | 8d → 7.88d | 4049, 3998, 4111 → 4049, 4062, 4063 |  |
| 4066 | Toilet flooring work | 2026-04-09 → 2027-04-06 (+362d) | 2026-04-17 → 2027-04-12 (+360d) | 8d → 6.75d |  |  |
| 4067 | Living dinning flooring | 2026-04-27 → 2027-04-29 (+367d) | 2026-05-05 → 2027-05-08 (+368d) | 8d → 10.12d | 4051FS+0.25d → 4051FS+0.25d, 4060FS+0.25d |  |
| 4068 | Aluminium door-window fixing | 2026-06-23 → 2028-05-12 (+689d) | 2026-07-01 → 2028-05-27 (+696d) | 8d → 16.88d | 4052FS+0.25d → 4052FS+0.25d, 4067FS+0.25d |  |
| 4069 | Putty primer coat | 2026-05-05 → 2027-05-08 (+368d) | 2026-05-11 → 2027-05-14 (+368d) | 6d → 6.75d |  |  |
| 4070 | Door shutter fixing | 2026-05-05 → 2028-02-18 (+654d) | 2026-05-13 → 2028-02-26 (+654d) | 8d → 9d |  |  |
| 4071 | Electrical wiring work | 2027-07-20 → 2028-04-14 (+269d) | 2027-07-28 → 2028-04-26 (+273d) | 8d → 13.5d |  |  |
| 4072 | Painting 1st coat | 2027-07-28 → 2028-04-27 (+274d) | 2027-08-05 → 2028-05-09 (+278d) | 8d → 13.5d |  |  |
| 4073 | False ceiling | 2027-08-05 → 2028-05-09 (+278d) | 2027-08-13 → 2028-05-19 (+280d) | 8d → 11.25d |  |  |
| 4074 | **10th Floor** | 2026-02-27 → 2026-05-07 (+69d) | 2027-08-21 → 2028-06-11 (+295d) | 494.75d → 760.5d |  | constraint start no earlier than 2026-02-27 → start no earlier than 2026-05-07 |
| 4075 | Block Work | 2026-02-20 → 2026-05-07 (+76d) | 2026-02-27 → 2026-05-14 (+76d) | 7d → 7.88d |  |  |
| 4076 | Door Frame Fixing | 2026-03-15 → 2026-05-14 (+60d) | 2026-03-24 → 2026-05-19 (+56d) | 9d → 5.62d | 4060, 4091 → 4060, 4075 |  |
| 4077 | Internal Plumbing Works | 2026-03-08 → 2026-05-14 (+67d) | 2026-03-16 → 2026-05-21 (+66d) | 8d → 7.88d | 4061, 4091 → 4061, 4075 |  |
| 4078 | Waterproofing | 2026-05-11 → 2026-05-23 (+12d) | 2026-05-21 → 2026-05-29 (+8d) | 10d → 7.88d | 4062, 4141 → 4062, 4077 |  |
| 4079 | Internal Plaster | 2026-02-13 → 2026-05-30 (+106d) | 2026-02-20 → 2026-06-03 (+103d) | 8d → 5.62d | 3983FS+0.25d → 4063, 4076, 4077, 4078 |  |
| 4080 | IPS flooring work | 2026-04-11 → 2026-06-04 (+54d) | 2026-04-21 → 2026-06-10 (+50d) | 10d → 7.88d | 4064, 4076, 4014, 4127 → 4064, 4076, 4078, 4079 |  |
| 4081 | Toilet dado work | 2026-04-11 → 2027-04-06 (+360d) | 2026-04-19 → 2027-04-13 (+359d) | 8d → 7.88d | 4065, 4014, 4127 → 4065, 4078, 4079 |  |
| 4082 | Toilet flooring work | 2026-04-19 → 2027-04-13 (+359d) | 2026-04-27 → 2027-04-19 (+357d) | 8d → 6.75d |  |  |
| 4083 | Living dinning flooring | 2026-05-05 → 2027-05-08 (+368d) | 2026-05-13 → 2027-05-17 (+369d) | 8d → 10.12d | 4067FS+0.25d → 4067FS+0.25d, 4076FS+0.25d |  |
| 4084 | Aluminium door-window fixing | 2026-07-01 → 2028-05-27 (+696d) | 2026-07-09 → 2028-06-11 (+703d) | 8d → 16.88d | 4068FS+0.25d → 4068FS+0.25d, 4083FS+0.25d |  |
| 4085 | Putty primer coat | 2026-05-13 → 2027-05-17 (+369d) | 2026-05-19 → 2027-05-23 (+369d) | 6d → 6.75d |  |  |
| 4086 | Door shutter fixing | 2026-05-13 → 2028-02-26 (+654d) | 2026-05-21 → 2028-03-05 (+654d) | 8d → 9d |  |  |
| 4087 | Electrical wiring work | 2027-07-28 → 2028-04-26 (+273d) | 2027-08-05 → 2028-05-08 (+277d) | 8d → 13.5d |  |  |

| ID | Task | Start | Finish | Duration | Predecessors | Other |
| --- | --- | --- | --- | --- | --- | --- |
| 4088 | Painting 1st coat | 2027-08-05 → 2028-05-09 (+278d) | 2027-08-13 → 2028-05-21 (+282d) | 8d → 13.5d |  |  |
| 4089 | False ceiling | 2027-08-13 → 2028-05-21 (+282d) | 2027-08-21 → 2028-05-31 (+284d) | 8d → 11.25d |  |  |
| 4090 | **11th Floor** | 2026-03-07 → 2026-05-14 (+68d) | 2027-08-29 → 2028-06-26 (+302d) | 495.5d → 769.5d |  | constraint start no earlier than 2026-03-07 → start no earlier than 2026-05-14 |
| 4091 | Block Work | 2026-02-27 → 2026-05-14 (+76d) | 2026-03-06 → 2026-05-21 (+76d) | 7d → 7.88d |  |  |
| 4092 | Door Frame Fixing | 2026-03-24 → 2026-05-21 (+58d) | 2026-04-02 → 2026-05-26 (+54d) | 9d → 5.62d | 4076, 4107 → 4076, 4091 |  |
| 4093 | Internal Plumbing Works | 2026-03-16 → 2026-05-21 (+66d) | 2026-03-24 → 2026-05-28 (+65d) | 8d → 7.88d | 4077, 4107 → 4077, 4091 |  |
| 4094 | Waterproofing | 2026-05-21 → 2026-05-30 (+9d) | 2026-05-31 → 2026-06-05 (+5d) | 10d → 7.88d | 4078, 4157 → 4078, 4093 |  |
| 4095 | Internal Plaster | 2026-02-21 → 2026-06-06 (+105d) | 2026-03-01 → 2026-06-10 (+101d) | 8d → 5.62d | 4079FS+0.25d → 4079, 4092, 4093, 4094 |  |
| 4096 | IPS flooring work | 2026-04-21 → 2026-06-11 (+51d) | 2026-05-01 → 2026-06-17 (+47d) | 10d → 7.88d | 4080, 4092, 4093, 4030 → 4080, 4092, 4093, 4094 |  |
| 4097 | Toilet dado work | 2026-04-21 → 2027-04-13 (+357d) | 2026-04-29 → 2027-04-20 (+356d) | 8d → 7.88d | 4081, 4030, 4143 → 4081, 4094, 4095 |  |
| 4098 | Toilet flooring work | 2026-04-29 → 2027-04-20 (+356d) | 2026-05-07 → 2027-04-26 (+354d) | 8d → 6.75d |  |  |
| 4099 | Living dinning flooring | 2026-05-14 → 2027-05-17 (+368d) | 2026-05-21 → 2027-05-26 (+370d) | 8d → 10.12d | 4083FS+0.25d → 4083FS+0.25d, 4092FS+0.25d |  |
| 4100 | Aluminium door-window fixing | 2026-07-09 → 2028-06-11 (+703d) | 2026-07-17 → 2028-06-26 (+710d) | 8d → 16.88d | 4084FS+0.25d → 4084FS+0.25d, 4099FS+0.25d |  |
| 4101 | Putty primer coat | 2026-05-22 → 2027-05-26 (+369d) | 2026-05-27 → 2027-06-01 (+370d) | 6d → 6.75d |  |  |
| 4102 | Door shutter fixing | 2026-05-22 → 2028-03-05 (+653d) | 2026-05-29 → 2028-03-13 (+654d) | 8d → 9d |  |  |
| 4103 | Electrical wiring work | 2027-08-05 → 2028-05-08 (+277d) | 2027-08-13 → 2028-05-20 (+281d) | 8d → 13.5d |  |  |
| 4104 | Painting 1st coat | 2027-08-13 → 2028-05-21 (+282d) | 2027-08-21 → 2028-06-02 (+286d) | 8d → 13.5d |  |  |
| 4105 | False ceiling | 2027-08-21 → 2028-06-02 (+286d) | 2027-08-29 → 2028-06-12 (+288d) | 8d → 11.25d |  |  |
| 4106 | **12th Floor** | 2026-03-14 → 2026-05-21 (+68d) | 2027-09-06 → 2028-07-08 (+306d) | 496.25d → 775.12d |  | constraint start no earlier than 2026-03-14 → start no earlier than 2026-05-21 |
| 4107 | Block Work | 2026-03-07 → 2026-05-21 (+75d) | 2026-03-13 → 2026-05-29 (+77d) | 7d → 9d |  |  |
| 4108 | Door Frame Fixing | 2026-04-02 → 2026-05-29 (+57d) | 2026-04-11 → 2026-06-07 (+57d) | 9d → 10.12d | 4092, 4123 → 4092, 4107 |  |
| 4109 | Internal Plumbing Works | 2026-03-24 → 2026-05-29 (+66d) | 2026-04-01 → 2026-06-08 (+68d) | 8d → 11.25d | 4093, 4123 → 4093, 4107 |  |
| 4110 | Waterproofing | 2026-05-31 → 2026-06-08 (+8d) | 2026-06-10 → 2026-06-15 (+5d) | 10d → 7.88d | 4094, 4173 → 4094, 4109 |  |
| 4111 | Internal Plaster | 2026-03-01 → 2026-06-15 (+106d) | 2026-03-08 → 2026-06-20 (+104d) | 7d → 5.62d | 4095FS+0.25d → 4095, 4108, 4109, 4110 |  |
| 4112 | IPS flooring work | 2026-05-01 → 2026-06-18 (+48d) | 2026-05-11 → 2026-06-26 (+46d) | 10d → 10.12d | 4096, 4108, 4109, 4046 → 4096, 4108, 4109, 4110 |  |
| 4113 | Toilet dado work | 2026-05-01 → 2027-04-20 (+354d) | 2026-05-09 → 2027-04-28 (+354d) | 8d → 9d | 4097, 4046, 4159 → 4097, 4110, 4111 |  |
| 4114 | Toilet flooring work | 2026-05-09 → 2027-04-28 (+354d) | 2026-05-17 → 2027-05-05 (+353d) | 8d → 7.88d |  |  |
| 4115 | Living dinning flooring | 2026-05-22 → 2027-05-27 (+370d) | 2026-05-30 → 2027-06-05 (+371d) | 8d → 11.25d | 4099FS+0.25d → 4099FS+0.25d, 4108FS+0.25d |  |
| 4116 | Aluminium door-window fixing | 2026-07-18 → 2028-06-26 (+709d) | 2026-07-25 → 2028-07-08 (+714d) | 8d → 13.5d | 4100FS+0.25d → 4100FS+0.25d, 4112FS+0.25d |  |
| 4117 | Putty primer coat | 2026-05-30 → 2027-06-06 (+372d) | 2026-06-05 → 2027-06-11 (+371d) | 6d → 6.75d |  |  |
| 4118 | Door shutter fixing | 2026-05-30 → 2028-03-13 (+653d) | 2026-06-07 → 2028-03-21 (+653d) | 8d → 9d |  |  |
| 4119 | Electrical wiring work | 2027-08-13 → 2028-05-20 (+281d) | 2027-08-21 → 2028-06-01 (+285d) | 8d → 13.5d |  |  |
| 4120 | Painting 1st coat | 2027-08-21 → 2028-06-02 (+286d) | 2027-08-29 → 2028-06-14 (+290d) | 8d → 13.5d |  |  |
| 4121 | False ceiling | 2027-08-29 → 2028-06-14 (+290d) | 2027-09-06 → 2028-06-24 (+292d) | 8d → 11.25d |  |  |
| 4122 | **13th Floor** | 2026-03-21 → 2026-05-30 (+70d) | 2027-09-14 → 2028-07-23 (+313d) | 497d → 782.75d |  | constraint start no earlier than 2026-03-21 → start no earlier than 2026-05-30 |
| 4123 | Block Work | 2026-03-14 → 2026-05-30 (+77d) | 2026-03-21 → 2026-06-07 (+78d) | 7d → 9d |  |  |
| 4124 | Door Frame Fixing | 2026-04-11 → 2026-06-07 (+57d) | 2026-04-20 → 2026-06-16 (+57d) | 9d → 10.12d | 4108, 4139 → 4108, 4123 |  |
| 4125 | Internal Plumbing Works | 2026-04-01 → 2026-06-08 (+68d) | 2026-04-09 → 2026-06-18 (+70d) | 8d → 11.25d | 4109, 4139 → 4109, 4123 |  |
| 4126 | Waterproofing | 2026-06-10 → 2026-06-18 (+8d) | 2026-06-20 → 2026-06-25 (+5d) | 10d → 7.88d | 4110, 4189 → 4110, 4125 |  |
| 4127 | Internal Plaster | 2026-03-08 → 2026-06-21 (+105d) | 2026-03-15 → 2026-06-26 (+103d) | 7d → 5.62d | 4111FS+0.25d → 4111FS+0.25d, 4124FS+0.25d |  |
| 4128 | IPS flooring work | 2026-05-11 → 2026-06-27 (+47d) | 2026-05-21 → 2026-07-05 (+45d) | 10d → 10.12d | 4112, 4124, 4062, 4175 → 4112, 4124, 4126, 4127 |  |
| 4129 | Toilet dado work | 2026-05-11 → 2027-04-28 (+352d) | 2026-05-19 → 2027-05-06 (+352d) | 8d → 9d | 4113, 4062, 4175 → 4113, 4126, 4127 |  |
| 4130 | Toilet flooring work | 2026-05-19 → 2027-05-06 (+352d) | 2026-05-27 → 2027-05-13 (+351d) | 8d → 7.88d |  |  |
| 4131 | Living dinning flooring | 2026-05-30 → 2027-06-06 (+372d) | 2026-06-07 → 2027-06-10 (+368d) | 8d → 5.62d | 4115FS+0.25d → 4115, 4124, 4130 |  |
| 4132 | Aluminium door-window fixing | 2026-07-26 → 2028-07-08 (+713d) | 2026-08-03 → 2028-07-23 (+720d) | 8d → 16.88d | 4116FS+0.25d → 4116, 4128, 4131 |  |
| 4133 | Putty primer coat | 2026-06-07 → 2027-06-12 (+370d) | 2026-06-13 → 2027-06-17 (+369d) | 6d → 6.75d |  |  |
| 4134 | Door shutter fixing | 2026-06-07 → 2028-03-21 (+653d) | 2026-06-15 → 2028-03-29 (+653d) | 8d → 9d |  |  |
| 4135 | Electrical wiring work | 2027-08-21 → 2028-06-01 (+285d) | 2027-08-29 → 2028-06-13 (+289d) | 8d → 13.5d |  |  |
| 4136 | Painting 1st coat | 2027-08-29 → 2028-06-14 (+290d) | 2027-09-06 → 2028-06-26 (+294d) | 8d → 13.5d |  |  |
| 4137 | False ceiling | 2027-09-06 → 2028-06-26 (+294d) | 2027-09-14 → 2028-07-06 (+296d) | 8d → 11.25d |  |  |
| 4138 | **14th Floor** | 2026-03-28 → 2026-06-07 (+71d) | 2027-09-22 → 2028-08-07 (+320d) | 497.75d → 790.38d |  | constraint start no earlier than 2026-03-28 → start no earlier than 2026-06-07 |
| 4139 | Block Work | 2026-03-21 → 2026-06-07 (+78d) | 2026-03-28 → 2026-06-15 (+79d) | 7d → 9d |  |  |
| 4140 | Door Frame Fixing | 2026-04-20 → 2026-06-16 (+57d) | 2026-04-29 → 2026-06-25 (+57d) | 9d → 10.12d | 4124, 4155 → 4124, 4139 |  |
| 4141 | Internal Plumbing Works | 2026-04-09 → 2026-06-18 (+70d) | 2026-04-17 → 2026-06-28 (+72d) | 8d → 11.25d | 4125, 4155 → 4125, 4139 |  |
| 4142 | Waterproofing | 2026-06-20 → 2026-06-28 (+8d) | 2026-06-30 → 2026-07-05 (+5d) | 10d → 7.88d | 4126, 4205 → 4126, 4141 |  |
| 4143 | Internal Plaster | 2026-03-16 → 2026-06-26 (+102d) | 2026-03-22 → 2026-07-01 (+101d) | 7d → 5.62d | 4127FS+0.25d → 4127FS+0.25d, 4140FS+0.25d |  |
| 4144 | IPS flooring work | 2026-05-21 → 2026-07-06 (+46d) | 2026-05-31 → 2026-07-14 (+44d) | 10d → 10.12d | 4128, 4140, 4141, 4078 → 4128, 4140, 4141, 4142 |  |
| 4145 | Toilet dado work | 2026-05-21 → 2027-05-06 (+350d) | 2026-05-29 → 2027-05-14 (+350d) | 8d → 9d | 4129, 4078, 4191 → 4129, 4142, 4143 |  |
| 4146 | Toilet flooring work | 2026-05-29 → 2027-05-14 (+350d) | 2026-06-06 → 2027-05-21 (+349d) | 8d → 7.88d |  |  |
| 4147 | Living dinning flooring | 2026-06-07 → 2027-06-11 (+369d) | 2026-06-15 → 2027-06-25 (+375d) | 8d → 16.88d | 4131FS+0.25d → 4131, 4140, 4146 |  |
| 4148 | Aluminium door-window fixing | 2026-08-03 → 2028-07-23 (+720d) | 2026-08-11 → 2028-08-07 (+727d) | 8d → 16.88d | 4132FS+0.25d → 4132, 4144, 4147 |  |
| 4149 | Putty primer coat | 2026-06-15 → 2027-06-26 (+376d) | 2026-06-21 → 2027-07-01 (+375d) | 6d → 6.75d |  |  |
| 4150 | Door shutter fixing | 2026-06-15 → 2028-03-29 (+653d) | 2026-06-23 → 2028-04-06 (+653d) | 8d → 9d |  |  |
| 4151 | Electrical wiring work | 2027-08-29 → 2028-06-13 (+289d) | 2027-09-06 → 2028-06-25 (+293d) | 8d → 13.5d |  |  |
| 4152 | Painting 1st coat | 2027-09-06 → 2028-06-26 (+294d) | 2027-09-14 → 2028-07-08 (+298d) | 8d → 13.5d |  |  |
| 4153 | False ceiling | 2027-09-14 → 2028-07-08 (+298d) | 2027-09-22 → 2028-07-18 (+300d) | 8d → 11.25d |  |  |
| 4154 | **15th Floor** | 2026-04-06 → 2026-06-15 (+70d) | 2027-09-30 → 2028-08-19 (+324d) | 497.5d → 794.62d |  | constraint start no earlier than 2026-04-06 → start no earlier than 2026-06-15 |
| 4155 | Block Work | 2026-03-28 → 2026-06-15 (+79d) | 2026-04-05 → 2026-06-23 (+79d) | 8d → 9d |  |  |
| 4156 | Door Frame Fixing | 2026-04-29 → 2026-06-25 (+57d) | 2026-05-08 → 2026-07-04 (+57d) | 9d → 10.12d | 4140, 4171 → 4140, 4155 |  |
| 4157 | Internal Plumbing Works | 2026-04-17 → 2026-06-28 (+72d) | 2026-04-25 → 2026-07-08 (+74d) | 8d → 11.25d | 4141, 4171 → 4141, 4155 |  |

| ID | Task | Start | Finish | Duration | Predecessors | Other |
| --- | --- | --- | --- | --- | --- | --- |
| 4158 | Waterproofing | 2026-06-30 → 2026-07-08 (+8d) | 2026-07-10 → 2026-07-15 (+5d) | 10d → 7.88d | 4142, 4221 → 4142, 4157 |  |
| 4159 | Internal Plaster | 2026-03-23 → 2026-07-05 (+104d) | 2026-03-30 → 2026-07-10 (+102d) | 7d → 5.62d | 4143FS+0.25d → 4143FS+0.25d, 4156FS+0.25d |  |
| 4160 | IPS flooring work | 2026-05-31 → 2026-07-15 (+45d) | 2026-06-10 → 2026-07-24 (+44d) | 10d → 10.12d | 4144, 4156, 4157, 4094 → 4144, 4156, 4157, 4158 |  |
| 4161 | Toilet dado work | 2026-05-31 → 2027-05-14 (+348d) | 2026-06-08 → 2027-05-22 (+348d) | 8d → 9d | 4145, 4094, 4207 → 4145, 4158, 4159 |  |
| 4162 | Toilet flooring work | 2026-06-08 → 2027-05-22 (+348d) | 2026-06-16 → 2027-05-29 (+347d) | 8d → 7.88d |  |  |
| 4163 | Living dinning flooring | 2026-06-16 → 2027-06-26 (+375d) | 2026-06-23 → 2027-07-07 (+379d) | 8d → 13.5d | 4147FS+0.25d → 4147, 4156, 4162 |  |
| 4164 | Aluminium door-window fixing | 2026-08-11 → 2028-08-07 (+727d) | 2026-08-19 → 2028-08-19 (+731d) | 8d → 13.5d | 4148FS+0.25d → 4148, 4160, 4163 |  |
| 4165 | Putty primer coat | 2026-06-24 → 2027-07-08 (+379d) | 2026-06-29 → 2027-07-13 (+379d) | 6d → 6.75d |  |  |
| 4166 | Door shutter fixing | 2026-06-24 → 2028-04-06 (+652d) | 2026-07-01 → 2028-04-14 (+653d) | 8d → 9d |  |  |
| 4167 | Electrical wiring work | 2027-09-06 → 2028-06-25 (+293d) | 2027-09-14 → 2028-07-07 (+297d) | 8d → 13.5d |  |  |
| 4168 | Painting 1st coat | 2027-09-14 → 2028-07-08 (+298d) | 2027-09-22 → 2028-07-20 (+302d) | 8d → 13.5d |  |  |
| 4169 | False ceiling | 2027-09-22 → 2028-07-20 (+302d) | 2027-09-30 → 2028-07-30 (+304d) | 8d → 11.25d |  |  |
| 4170 | **16th Floor** | 2026-04-14 → 2026-06-23 (+70d) | 2027-10-08 → 2028-08-31 (+328d) | 497.25d → 798.88d |  | constraint start no earlier than 2026-04-14 → start no earlier than 2026-06-23 |
| 4171 | Block Work | 2026-04-06 → 2026-06-23 (+78d) | 2026-04-13 → 2026-07-01 (+79d) | 8d → 9d |  |  |
| 4172 | Door Frame Fixing | 2026-05-08 → 2026-07-04 (+57d) | 2026-05-17 → 2026-07-13 (+57d) | 9d → 10.12d | 4156, 4187 → 4156, 4171 |  |
| 4173 | Internal Plumbing Works | 2026-04-25 → 2026-07-08 (+74d) | 2026-05-03 → 2026-07-18 (+76d) | 8d → 11.25d | 4157, 4187 → 4157, 4171 |  |
| 4174 | Waterproofing | 2026-07-10 → 2026-07-18 (+8d) | 2026-07-20 → 2026-07-30 (+10d) | 10d → 13.5d | 4158, 4237 → 4158, 4173 |  |
| 4175 | Internal Plaster | 2026-03-30 → 2026-07-30 (+122d) | 2026-04-06 → 2026-08-08 (+124d) | 7d → 10.12d | 4159FS+0.25d → 4159, 4172, 4173, 4174 |  |
| 4176 | IPS flooring work | 2026-06-10 → 2026-07-30 (+50d) | 2026-06-20 → 2026-08-08 (+49d) | 10d → 10.12d | 4160, 4172, 4173, 4110 → 4160, 4172, 4173, 4174 |  |
| 4177 | Toilet dado work | 2026-06-10 → 2027-05-22 (+346d) | 2026-06-22 → 2027-05-30 (+342d) | 12d → 9d | 4161, 4110, 4223 → 4161, 4174, 4175 |  |
| 4178 | Toilet flooring work | 2026-06-22 → 2027-05-30 (+342d) | 2026-07-04 → 2027-06-06 (+337d) | 12d → 7.88d |  |  |
| 4179 | Living dinning flooring | 2026-06-24 → 2027-07-08 (+379d) | 2026-07-02 → 2027-07-19 (+382d) | 8d → 13.5d | 4163FS+0.25d → 4163, 4172, 4178 |  |
| 4180 | Aluminium door-window fixing | 2026-08-20 → 2028-08-19 (+730d) | 2026-08-27 → 2028-08-31 (+735d) | 8d → 13.5d | 4164FS+0.25d → 4164, 4176, 4179 |  |
| 4181 | Putty primer coat | 2026-07-02 → 2027-07-20 (+383d) | 2026-07-08 → 2027-07-25 (+382d) | 6d → 6.75d |  |  |
| 4182 | Door shutter fixing | 2026-07-02 → 2028-04-14 (+652d) | 2026-07-10 → 2028-04-22 (+652d) | 8d → 9d |  |  |
| 4183 | Electrical wiring work | 2027-09-14 → 2028-07-07 (+297d) | 2027-09-22 → 2028-07-19 (+301d) | 8d → 13.5d |  |  |
| 4184 | Painting 1st coat | 2027-09-22 → 2028-07-20 (+302d) | 2027-09-30 → 2028-08-01 (+306d) | 8d → 13.5d |  |  |
| 4185 | False ceiling | 2027-09-30 → 2028-08-01 (+306d) | 2027-10-08 → 2028-08-11 (+308d) | 8d → 11.25d |  |  |
| 4186 | **17th Floor** | 2026-04-22 → 2026-09-26 (+157d) | 2027-10-16 → 2028-09-12 (+332d) | 497d → 706.38d |  | constraint start no earlier than 2026-04-22 → start no earlier than 2026-09-26 |
| 4187 | Block Work | 2026-04-14 → 2026-09-26 (+165d) | 2026-04-22 → 2026-10-03 (+164d) | 8d → 9d | 4171FS+0.25d → 3909, 4171 |  |
| 4188 | Door Frame Fixing | 2026-04-29 → 2026-10-04 (+158d) | 2026-05-08 → 2026-10-12 (+157d) | 9d → 10.12d | 4203FS+0.25d → 4172, 4187 |  |
| 4189 | Internal Plumbing Works | 2026-05-03 → 2026-10-04 (+154d) | 2026-05-11 → 2026-10-13 (+155d) | 8d → 11.25d | 4173, 4203 → 4173, 4187 |  |
| 4190 | Waterproofing | 2026-07-20 → 2026-10-14 (+86d) | 2026-07-30 → 2026-10-25 (+87d) | 10d → 13.5d | 4174, 4253 → 4174, 4189 |  |
| 4191 | Internal Plaster | 2026-04-06 → 2026-10-26 (+203d) | 2026-04-14 → 2026-12-18 (+248d) | 8d → 10.12d | 4175FS+0.25d → 4175, 4188, 4189, 4190 |  |
| 4192 | IPS flooring work | 2026-06-20 → 2026-10-26 (+128d) | 2026-06-30 → 2026-12-18 (+171d) | 10d → 10.12d | 4176, 4188, 4189, 4126 → 4176, 4188, 4189, 4190 |  |
| 4193 | Toilet dado work | 2026-06-22 → 2027-05-30 (+342d) | 2026-06-30 → 2027-06-07 (+342d) | 8d → 9d | 4177, 4126, 4239 → 4177, 4190, 4191 |  |
| 4194 | Toilet flooring work | 2026-07-04 → 2027-06-07 (+338d) | 2026-07-12 → 2027-06-14 (+337d) | 8d → 7.88d |  |  |
| 4195 | Living dinning flooring | 2026-07-02 → 2027-07-20 (+383d) | 2026-07-10 → 2027-07-31 (+386d) | 8d → 13.5d | 4179FS+0.25d → 4179, 4188, 4194 |  |
| 4196 | Aluminium door-window fixing | 2026-08-28 → 2028-08-31 (+734d) | 2026-09-05 → 2028-09-12 (+738d) | 8d → 13.5d | 4180FS+0.25d → 4180, 4192, 4195 |  |
| 4197 | Putty primer coat | 2026-07-10 → 2027-08-01 (+387d) | 2026-07-16 → 2027-08-06 (+386d) | 6d → 6.75d |  |  |
| 4198 | Door shutter fixing | 2026-07-10 → 2028-04-22 (+652d) | 2026-07-18 → 2028-04-30 (+652d) | 8d → 9d |  |  |
| 4199 | Electrical wiring work | 2027-09-22 → 2028-07-19 (+301d) | 2027-09-30 → 2028-07-31 (+305d) | 8d → 13.5d |  |  |
| 4200 | Painting 1st coat | 2027-09-30 → 2028-08-01 (+306d) | 2027-10-08 → 2028-08-13 (+310d) | 8d → 13.5d |  |  |
| 4201 | False ceiling | 2027-10-08 → 2028-08-13 (+310d) | 2027-10-16 → 2028-08-23 (+312d) | 8d → 11.25d |  |  |
| 4202 | **18th Floor** | 2026-04-29 → 2026-10-07 (+161d) | 2027-10-24 → 2028-09-24 (+336d) | 497.75d → 707.5d |  | constraint start no earlier than 2026-04-29 → start no earlier than 2026-10-07 |
| 4203 | Block Work | 2026-04-22 → 2026-10-07 (+168d) | 2026-04-29 → 2026-10-14 (+168d) | 7d → 9d | 4187FS+0.25d → 3910, 4187 |  |
| 4204 | Door Frame Fixing | 2026-05-08 → 2026-10-15 (+160d) | 2026-05-17 → 2026-10-23 (+159d) | 9d → 10.12d | 4188, 4219 → 4188, 4203 |  |
| 4205 | Internal Plumbing Works | 2026-05-11 → 2026-10-15 (+157d) | 2026-05-19 → 2026-10-24 (+158d) | 8d → 11.25d | 4189, 4219 → 4189, 4203 |  |
| 4206 | Waterproofing | 2026-07-30 → 2026-10-26 (+88d) | 2026-08-09 → 2026-12-21 (+134d) | 10d → 13.5d | 4190, 4269 → 4190, 4205 |  |
| 4207 | Internal Plaster | 2026-04-15 → 2026-12-22 (+251d) | 2026-04-22 → 2026-12-30 (+252d) | 8d → 10.12d | 4191FS+0.25d → 4191, 4204, 4205, 4206 |  |
| 4208 | IPS flooring work | 2026-06-30 → 2026-12-22 (+175d) | 2026-07-10 → 2026-12-30 (+173d) | 10d → 10.12d | 4192, 4204, 4205, 4142 → 4192, 4204, 4205, 4206 |  |
| 4209 | Toilet dado work | 2026-06-30 → 2027-06-07 (+342d) | 2026-07-08 → 2027-06-15 (+342d) | 8d → 9d | 4193, 4142, 4255 → 4193, 4206, 4207 |  |
| 4210 | Toilet flooring work | 2026-07-12 → 2027-06-15 (+338d) | 2026-07-20 → 2027-06-22 (+337d) | 8d → 7.88d |  |  |
| 4211 | Living dinning flooring | 2026-07-10 → 2027-08-01 (+387d) | 2026-07-22 → 2027-08-12 (+386d) | 12d → 13.5d | 4195FS+0.25d → 4195, 4204, 4210 |  |
| 4212 | Aluminium door-window fixing | 2026-09-05 → 2028-09-12 (+738d) | 2026-09-17 → 2028-09-24 (+738d) | 12d → 13.5d | 4196FS+0.25d → 4196, 4208, 4211 |  |
| 4213 | Putty primer coat | 2026-07-22 → 2027-08-13 (+387d) | 2026-07-28 → 2027-08-18 (+386d) | 6d → 6.75d |  |  |
| 4214 | Door shutter fixing | 2026-07-22 → 2028-04-30 (+648d) | 2026-07-30 → 2028-05-08 (+648d) | 8d → 9d |  |  |
| 4215 | Electrical wiring work | 2027-09-30 → 2028-07-31 (+305d) | 2027-10-08 → 2028-08-12 (+309d) | 8d → 13.5d |  |  |
| 4216 | Painting 1st coat | 2027-10-08 → 2028-08-13 (+310d) | 2027-10-16 → 2028-08-25 (+314d) | 8d → 13.5d |  |  |
| 4217 | False ceiling | 2027-10-16 → 2028-08-25 (+314d) | 2027-10-24 → 2028-09-04 (+316d) | 8d → 11.25d |  |  |
| 4218 | **19th Floor** | 2026-05-08 → 2026-10-18 (+163d) | 2027-11-01 → 2028-10-06 (+340d) | 497.5d → 708.62d |  | constraint start no earlier than 2026-05-08 → start no earlier than 2026-10-18 |
| 4219 | Block Work | 2026-04-29 → 2026-10-18 (+172d) | 2026-05-07 → 2026-10-25 (+171d) | 8d → 9d | 4203FS+0.25d → 3911, 4203 |  |
| 4220 | Door Frame Fixing | 2026-05-17 → 2026-10-26 (+162d) | 2026-05-26 → 2026-12-18 (+206d) | 9d → 10.12d | 4204, 4235 → 4204, 4219 |  |
| 4221 | Internal Plumbing Works | 2026-05-19 → 2026-10-26 (+160d) | 2026-05-27 → 2026-12-19 (+206d) | 8d → 11.25d | 4205, 4235 → 4205, 4219 |  |
| 4222 | Waterproofing | 2026-08-09 → 2026-12-22 (+135d) | 2026-08-19 → 2027-01-02 (+136d) | 10d → 13.5d | 4206, 4285 → 4206, 4221 |  |
| 4223 | Internal Plaster | 2026-04-23 → 2027-01-03 (+255d) | 2026-05-01 → 2027-01-11 (+255d) | 8d → 10.12d | 4207FS+0.25d → 4207, 4220, 4221, 4222 |  |
| 4224 | IPS flooring work | 2026-07-10 → 2027-01-12 (+186d) | 2026-07-20 → 2027-01-20 (+184d) | 10d → 10.12d | 4208, 4220, 4158, 4271 → 4208, 4220, 4222, 4223 |  |
| 4225 | Toilet dado work | 2026-07-10 → 2027-06-15 (+340d) | 2026-07-18 → 2027-06-23 (+340d) | 8d → 9d | 4209, 4158, 4271 → 4209, 4222, 4223 |  |
| 4226 | Toilet flooring work | 2026-07-20 → 2027-06-23 (+338d) | 2026-07-28 → 2027-06-30 (+337d) | 8d → 7.88d |  |  |
| 4227 | Living dinning flooring | 2026-07-23 → 2027-08-13 (+386d) | 2026-07-29 → 2027-08-24 (+391d) | 7d → 13.5d | 4211FS+0.25d → 4211, 4220, 4226 |  |

| ID | Task | Start | Finish | Duration | Predecessors | Other |
| --- | --- | --- | --- | --- | --- | --- |
| 4228 | Aluminium door-window fixing | 2026-09-17 → 2028-09-24 (+738d) | 2026-09-29 → 2028-10-06 (+738d) | 12d → 13.5d |  |  |
| 4229 | Putty primer coat | 2026-07-30 → 2027-08-25 (+391d) | 2026-08-04 → 2027-08-30 (+391d) | 6d → 6.75d |  |  |
| 4230 | Door shutter fixing | 2026-07-30 → 2028-05-08 (+648d) | 2026-08-07 → 2028-05-16 (+648d) | 8d → 9d |  |  |
| 4231 | Electrical wiring work | 2027-10-08 → 2028-08-12 (+309d) | 2027-10-16 → 2028-08-24 (+313d) | 8d → 13.5d |  |  |
| 4232 | Painting 1st coat | 2027-10-16 → 2028-08-25 (+314d) | 2027-10-24 → 2028-09-06 (+318d) | 8d → 13.5d |  |  |
| 4233 | False ceiling | 2027-10-24 → 2028-09-06 (+318d) | 2027-11-01 → 2028-09-16 (+320d) | 8d → 11.25d |  |  |
| 4234 | **20th Floor** | 2026-05-16 → 2026-10-29 (+166d) | 2027-11-09 → 2028-10-18 (+344d) | 497.25d → 709.75d |  | constraint start no earlier than 2026-05-16 → start no earlier than 2026-10-29 |
| 4235 | Block Work | 2026-05-08 → 2026-10-29 (+174d) | 2026-05-15 → 2026-12-20 (+219d) | 8d → 9d | 4219FS+0.25d → 3912, 4219 |  |
| 4236 | Door Frame Fixing | 2026-05-26 → 2026-12-21 (+209d) | 2026-06-04 → 2026-12-29 (+208d) | 9d → 10.12d | 4220, 4251 → 4220, 4235 |  |
| 4237 | Internal Plumbing Works | 2026-05-27 → 2026-12-21 (+208d) | 2026-06-04 → 2026-12-30 (+209d) | 8d → 11.25d | 4221, 4251 → 4221, 4235 |  |
| 4238 | Waterproofing | 2026-08-19 → 2027-01-03 (+137d) | 2026-08-31 → 2027-01-14 (+136d) | 11.94d → 13.5d | 4222, 4301 → 4222, 4237 |  |
| 4239 | Internal Plaster | 2026-05-01 → 2027-01-15 (+259d) | 2026-05-08 → 2027-01-23 (+260d) | 7d → 10.12d | 4223FS+0.25d → 4223, 4236, 4237, 4238 |  |
| 4240 | IPS flooring work | 2026-07-20 → 2027-01-24 (+188d) | 2026-07-30 → 2027-02-01 (+186d) | 10d → 10.12d | 4224, 4236, 4174, 4287 → 4224, 4236, 4238, 4239 |  |
| 4241 | Toilet dado work | 2026-07-20 → 2027-06-23 (+338d) | 2026-07-28 → 2027-07-01 (+338d) | 8d → 9d | 4225, 4174, 4287 → 4225, 4238, 4239 |  |
| 4242 | Toilet flooring work | 2026-07-28 → 2027-07-01 (+338d) | 2026-08-05 → 2027-07-08 (+337d) | 8d → 7.88d |  |  |
| 4243 | Living dinning flooring | 2026-07-30 → 2027-08-25 (+391d) | 2026-08-07 → 2027-09-05 (+394d) | 8d → 13.5d | 4227FS+0.25d → 4227, 4236, 4242 |  |
| 4244 | Aluminium door-window fixing | 2026-09-29 → 2028-10-06 (+738d) | 2026-10-11 → 2028-10-18 (+738d) | 12d → 13.5d |  |  |
| 4245 | Putty primer coat | 2026-08-07 → 2027-09-06 (+395d) | 2026-08-13 → 2027-09-11 (+394d) | 6d → 6.75d |  |  |
| 4246 | Door shutter fixing | 2026-08-07 → 2028-05-16 (+648d) | 2026-08-15 → 2028-05-24 (+648d) | 8d → 9d |  |  |
| 4247 | Electrical wiring work | 2027-10-16 → 2028-08-24 (+313d) | 2027-10-24 → 2028-09-05 (+317d) | 8d → 13.5d |  |  |
| 4248 | Painting 1st coat | 2027-10-24 → 2028-09-06 (+318d) | 2027-11-01 → 2028-09-18 (+322d) | 8d → 13.5d |  |  |
| 4249 | False ceiling | 2027-11-01 → 2028-09-18 (+322d) | 2027-11-09 → 2028-09-28 (+324d) | 8d → 11.25d |  |  |
| 4250 | **21st Floor** | 2026-05-24 → 2026-12-24 (+214d) | 2027-11-17 → 2028-10-30 (+348d) | 497d → 710.88d |  | constraint start no earlier than 2026-05-24 → start no earlier than 2026-12-24 |
| 4251 | Block Work | 2026-05-16 → 2026-12-24 (+222d) | 2026-05-24 → 2026-12-31 (+221d) | 8d → 9d | 4235FS+0.25d → 3913, 4235 |  |
| 4252 | Door Frame Fixing | 2026-06-04 → 2027-01-01 (+211d) | 2026-06-13 → 2027-01-09 (+210d) | 9d → 10.12d | 4236, 4267 → 4236, 4251 |  |
| 4253 | Internal Plumbing Works | 2026-06-04 → 2027-01-01 (+211d) | 2026-06-12 → 2027-01-10 (+212d) | 8d → 11.25d | 4237, 4267 → 4237, 4251 |  |
| 4254 | Waterproofing | 2026-08-31 → 2027-01-15 (+137d) | 2026-09-12 → 2027-01-26 (+136d) | 11.94d → 13.5d | 4238, 4317 → 4238, 4253 |  |
| 4255 | Internal Plaster | 2026-05-08 → 2027-01-27 (+264d) | 2026-05-16 → 2027-02-04 (+264d) | 8d → 10.12d | 4239FS+0.25d → 4239, 4252, 4253, 4254 |  |
| 4256 | IPS flooring work | 2026-07-30 → 2027-02-05 (+190d) | 2026-08-09 → 2027-02-13 (+188d) | 10d → 10.12d | 4240, 4252, 4190, 4303 → 4240, 4252, 4254, 4255 |  |
| 4257 | Toilet dado work | 2026-07-30 → 2027-07-01 (+336d) | 2026-08-07 → 2027-07-09 (+336d) | 8d → 9d | 4241, 4190, 4303 → 4241, 4254, 4255 |  |
| 4258 | Toilet flooring work | 2026-08-07 → 2027-07-09 (+336d) | 2026-08-15 → 2027-07-16 (+335d) | 8d → 7.88d |  |  |
| 4259 | Living dinning flooring | 2026-08-07 → 2027-09-06 (+395d) | 2026-08-14 → 2027-09-17 (+399d) | 7d → 13.5d | 4243FS+0.25d → 4243, 4252, 4258 |  |
| 4260 | Aluminium door-window fixing | 2026-10-11 → 2028-10-18 (+738d) | 2026-10-23 → 2028-10-30 (+738d) | 12d → 13.5d |  |  |
| 4261 | Putty primer coat | 2026-08-14 → 2027-09-18 (+400d) | 2026-08-20 → 2027-09-23 (+399d) | 6d → 6.75d |  |  |
| 4262 | Door shutter fixing | 2026-08-15 → 2028-05-24 (+648d) | 2026-08-23 → 2028-06-01 (+648d) | 8d → 9d |  |  |
| 4263 | Electrical wiring work | 2027-10-24 → 2028-09-05 (+317d) | 2027-11-01 → 2028-09-17 (+321d) | 8d → 13.5d |  |  |
| 4264 | Painting 1st coat | 2027-11-01 → 2028-09-18 (+322d) | 2027-11-09 → 2028-09-30 (+326d) | 8d → 13.5d |  |  |
| 4265 | False ceiling | 2027-11-09 → 2028-09-30 (+326d) | 2027-11-17 → 2028-10-10 (+328d) | 8d → 11.25d |  |  |
| 4266 | **22nd Floor** | 2026-06-01 → 2027-01-04 (+217d) | 2027-11-25 → 2028-11-11 (+352d) | 496.75d → 712d |  | constraint start no earlier than 2026-06-01 → start no earlier than 2027-01-04 |
| 4267 | Block Work | 2026-05-24 → 2027-01-04 (+225d) | 2026-06-01 → 2027-01-11 (+224d) | 8d → 9d | 4251FS+0.25d → 3914, 4251 |  |
| 4268 | Door Frame Fixing | 2026-06-13 → 2027-01-12 (+213d) | 2026-06-22 → 2027-01-20 (+212d) | 9d → 10.12d | 4252, 4283 → 4252, 4267 |  |
| 4269 | Internal Plumbing Works | 2026-06-12 → 2027-01-12 (+214d) | 2026-06-20 → 2027-01-21 (+215d) | 8d → 11.25d | 4253, 4283 → 4253, 4267 |  |
| 4270 | Waterproofing | 2026-09-25 → 2027-01-27 (+124d) | 2026-10-07 → 2027-02-07 (+123d) | 11.94d → 13.5d | 4254, 4333 → 4254, 4269 |  |
| 4271 | Internal Plaster | 2026-05-17 → 2027-02-08 (+267d) | 2026-05-24 → 2027-02-16 (+268d) | 8d → 10.12d | 4255FS+0.25d → 4255, 4268, 4269, 4270 |  |
| 4272 | IPS flooring work | 2026-08-09 → 2027-02-17 (+192d) | 2026-08-19 → 2027-02-25 (+190d) | 10d → 10.12d | 4256, 4268, 4206, 4319 → 4256, 4268, 4270, 4271 |  |
| 4273 | Toilet dado work | 2026-08-09 → 2027-07-09 (+334d) | 2026-08-17 → 2027-07-17 (+334d) | 8d → 9d | 4257, 4206, 4319 → 4257, 4270, 4271 |  |
| 4274 | Toilet flooring work | 2026-08-17 → 2027-07-17 (+334d) | 2026-08-25 → 2027-07-24 (+333d) | 8d → 7.88d |  |  |
| 4275 | Living dinning flooring | 2026-08-14 → 2027-09-18 (+400d) | 2026-08-22 → 2027-09-29 (+403d) | 8d → 13.5d | 4259FS+0.25d → 4259, 4268, 4274 |  |
| 4276 | Aluminium door-window fixing | 2026-10-23 → 2028-10-30 (+738d) | 2026-12-19 → 2028-11-11 (+693d) | 12d → 13.5d |  |  |
| 4277 | Putty primer coat | 2026-08-22 → 2027-09-30 (+404d) | 2026-08-28 → 2027-10-05 (+403d) | 6d → 6.75d |  |  |
| 4278 | Door shutter fixing | 2026-08-23 → 2028-06-01 (+648d) | 2026-08-31 → 2028-06-09 (+648d) | 8d → 9d |  |  |
| 4279 | Electrical wiring work | 2027-11-01 → 2028-09-17 (+321d) | 2027-11-09 → 2028-09-29 (+325d) | 8d → 13.5d |  |  |
| 4280 | Painting 1st coat | 2027-11-09 → 2028-09-30 (+326d) | 2027-11-17 → 2028-10-12 (+330d) | 8d → 13.5d |  |  |
| 4281 | False ceiling | 2027-11-17 → 2028-10-12 (+330d) | 2027-11-25 → 2028-10-22 (+332d) | 8d → 11.25d |  |  |
| 4282 | **23rd Floor** | 2026-06-10 → 2027-01-15 (+219d) | 2027-12-03 → 2028-11-26 (+359d) | 496.5d → 716.5d |  | constraint start no earlier than 2026-06-10 → start no earlier than 2027-01-15 |
| 4283 | Block Work | 2026-06-01 → 2027-01-15 (+228d) | 2026-06-09 → 2027-01-22 (+227d) | 8d → 9d | 4267FS+0.25d → 3915, 4267 |  |
| 4284 | Door Frame Fixing | 2026-06-22 → 2027-01-23 (+215d) | 2026-07-01 → 2027-01-31 (+214d) | 9d → 10.12d | 4268, 4299 → 4268, 4283 |  |
| 4285 | Internal Plumbing Works | 2026-06-20 → 2027-01-23 (+217d) | 2026-06-28 → 2027-02-01 (+218d) | 8d → 11.25d | 4269, 4299 → 4269, 4283 |  |
| 4286 | Waterproofing | 2026-10-10 → 2027-02-08 (+121d) | 2026-10-21 → 2027-02-19 (+121d) | 11.94d → 13.5d | 4270, 4349 → 4270, 4285 |  |
| 4287 | Internal Plaster | 2026-05-25 → 2027-02-20 (+271d) | 2026-06-02 → 2027-02-28 (+271d) | 8d → 10.12d | 4271FS+0.25d → 4271, 4284, 4285, 4286 |  |
| 4288 | IPS flooring work | 2026-08-19 → 2027-03-01 (+194d) | 2026-08-29 → 2027-03-09 (+192d) | 10d → 10.12d | 4272, 4284, 4222, 4335 → 4272, 4284, 4286, 4287 |  |
| 4289 | Toilet dado work | 2026-08-19 → 2027-07-17 (+332d) | 2026-08-27 → 2027-07-25 (+332d) | 8d → 9d | 4273, 4222, 4335 → 4273, 4286, 4287 |  |
| 4290 | Toilet flooring work | 2026-08-27 → 2027-07-25 (+332d) | 2026-09-04 → 2027-08-01 (+331d) | 8d → 7.88d |  |  |
| 4291 | Living dinning flooring | 2026-09-04 → 2027-09-30 (+391d) | 2026-09-16 → 2027-10-14 (+393d) | 12d → 16.88d |  |  |
| 4292 | Aluminium door-window fixing | 2026-12-19 → 2028-11-11 (+693d) | 2026-12-31 → 2028-11-26 (+696d) | 12d → 16.88d |  |  |
| 4293 | Putty primer coat | 2026-09-16 → 2027-10-15 (+394d) | 2026-09-22 → 2027-10-20 (+393d) | 6d → 6.75d |  |  |
| 4294 | Door shutter fixing | 2026-09-16 → 2028-06-09 (+632d) | 2026-09-24 → 2028-06-17 (+632d) | 8d → 9d |  |  |
| 4295 | Electrical wiring work | 2027-11-09 → 2028-09-29 (+325d) | 2027-11-17 → 2028-10-11 (+329d) | 8d → 13.5d |  |  |
| 4296 | Painting 1st coat | 2027-11-17 → 2028-10-12 (+330d) | 2027-11-25 → 2028-10-24 (+334d) | 8d → 13.5d |  |  |
| 4297 | False ceiling | 2027-11-25 → 2028-10-24 (+334d) | 2027-12-03 → 2028-11-03 (+336d) | 8d → 11.25d |  |  |

| ID | Task | Start | Finish | Duration | Predecessors | Other |
| --- | --- | --- | --- | --- | --- | --- |
| 4298 | **24th Floor** | 2026-06-18 → 2027-01-26 (+222d) | 2027-12-21 → 2028-12-11 (+356d) | 506.06d → 721d |  | constraint start no earlier than 2026-06-18 → start no earlier than 2027-01-26 |
| 4299 | Block Work | 2026-06-10 → 2027-01-26 (+230d) | 2026-06-17 → 2027-02-02 (+230d) | 8d → 9d | 4283FS+0.25d → 3916, 4283 |  |
| 4300 | Door Frame Fixing | 2026-07-01 → 2027-02-03 (+217d) | 2026-07-10 → 2027-02-11 (+216d) | 8.94d → 10.12d | 4284, 4315 → 4284, 4299 |  |
| 4301 | Internal Plumbing Works | 2026-06-28 → 2027-02-03 (+220d) | 2026-07-08 → 2027-02-12 (+219d) | 9.94d → 11.25d | 4285, 4315 → 4285, 4299 |  |
| 4302 | Waterproofing | 2026-10-26 → 2027-02-20 (+117d) | 2026-12-21 → 2027-03-03 (+72d) | 11.94d → 13.5d | 4286, 4365 → 4286, 4301 |  |
| 4303 | Internal Plaster | 2026-06-02 → 2027-03-04 (+275d) | 2026-06-10 → 2027-03-12 (+275d) | 8d → 10.12d | 4287FS+0.25d → 4287, 4300, 4301, 4302 |  |
| 4304 | IPS flooring work | 2026-08-31 → 2027-03-13 (+194d) | 2026-09-09 → 2027-03-21 (+193d) | 8.94d → 10.12d | 4288, 4300, 4238, 4351 → 4288, 4300, 4302, 4303 |  |
| 4305 | Toilet dado work | 2026-08-31 → 2027-07-25 (+328d) | 2026-09-08 → 2027-08-02 (+328d) | 7.94d → 9d | 4289, 4238, 4351 → 4289, 4302, 4303 |  |
| 4306 | Toilet flooring work | 2026-09-08 → 2027-08-02 (+328d) | 2026-09-15 → 2027-08-09 (+328d) | 6.94d → 7.88d |  |  |
| 4307 | Living dinning flooring | 2026-09-16 → 2027-10-15 (+394d) | 2026-10-01 → 2027-10-29 (+393d) | 14.94d → 16.88d |  |  |
| 4308 | Aluminium door-window fixing | 2026-12-31 → 2028-11-26 (+696d) | 2027-01-15 → 2028-12-11 (+696d) | 14.94d → 16.88d |  |  |
| 4309 | Putty primer coat | 2026-10-01 → 2027-10-30 (+394d) | 2026-10-07 → 2027-12-19 (+438d) | 5.94d → 6.75d |  |  |
| 4310 | Door shutter fixing | 2026-10-01 → 2028-06-17 (+625d) | 2026-10-09 → 2028-06-25 (+625d) | 7.94d → 9d |  |  |
| 4311 | Electrical wiring work | 2027-11-17 → 2028-10-11 (+329d) | 2027-11-29 → 2028-10-23 (+329d) | 11.94d → 13.5d |  |  |
| 4312 | Painting 1st coat | 2027-11-29 → 2028-10-24 (+330d) | 2027-12-11 → 2028-11-05 (+330d) | 11.94d → 13.5d |  |  |
| 4313 | False ceiling | 2027-12-11 → 2028-11-05 (+330d) | 2027-12-21 → 2028-11-15 (+330d) | 9.94d → 11.25d |  |  |
| 4314 | **25th Floor** | 2026-06-26 → 2027-02-06 (+225d) | 2028-01-02 → 2028-12-26 (+359d) | 509.81d → 725.5d |  | constraint start no earlier than 2026-06-26 → start no earlier than 2027-02-06 |
| 4315 | Block Work | 2026-06-18 → 2027-02-06 (+233d) | 2026-06-26 → 2027-02-13 (+232d) | 7.94d → 9d | 4299FS+0.25d → 3917, 4299 |  |
| 4316 | Door Frame Fixing | 2026-07-10 → 2027-02-14 (+219d) | 2026-07-19 → 2027-02-22 (+218d) | 8.94d → 10.12d | 4300, 4331 → 4300, 4315 |  |
| 4317 | Internal Plumbing Works | 2026-07-08 → 2027-02-14 (+221d) | 2026-07-18 → 2027-02-23 (+220d) | 9.94d → 11.25d | 4301, 4331 → 4301, 4315 |  |
| 4318 | Waterproofing | 2026-12-26 → 2027-03-04 (+68d) | 2027-01-06 → 2027-03-15 (+68d) | 11.94d → 13.5d | 4302, 4381 → 4302, 4317 |  |
| 4319 | Internal Plaster | 2026-06-10 → 2027-03-16 (+279d) | 2026-06-18 → 2027-03-24 (+279d) | 8d → 10.12d | 4303FS+0.25d → 4303, 4316, 4317, 4318 |  |
| 4320 | IPS flooring work | 2026-09-12 → 2027-03-25 (+194d) | 2026-09-21 → 2027-04-02 (+193d) | 8.94d → 10.12d | 4304, 4316, 4254, 4367 → 4304, 4316, 4318, 4319 |  |
| 4321 | Toilet dado work | 2026-09-12 → 2027-08-02 (+324d) | 2026-09-20 → 2027-08-10 (+324d) | 7.94d → 9d | 4305, 4254, 4367 → 4305, 4318, 4319 |  |
| 4322 | Toilet flooring work | 2026-09-20 → 2027-08-10 (+324d) | 2026-09-27 → 2027-08-17 (+324d) | 6.94d → 7.88d |  |  |
| 4323 | Living dinning flooring | 2026-10-01 → 2027-10-30 (+394d) | 2026-10-16 → 2027-12-28 (+438d) | 14.94d → 16.88d |  |  |
| 4324 | Aluminium door-window fixing | 2027-01-15 → 2028-12-11 (+696d) | 2027-01-30 → 2028-12-26 (+696d) | 14.94d → 16.88d |  |  |
| 4325 | Putty primer coat | 2026-10-16 → 2027-12-29 (+439d) | 2026-10-22 → 2028-01-03 (+438d) | 5.94d → 6.75d |  |  |
| 4326 | Door shutter fixing | 2026-10-16 → 2028-06-25 (+618d) | 2026-10-24 → 2028-07-03 (+618d) | 7.94d → 9d |  |  |
| 4327 | Electrical wiring work | 2027-11-29 → 2028-10-23 (+329d) | 2027-12-11 → 2028-11-04 (+329d) | 11.94d → 13.5d |  |  |
| 4328 | Painting 1st coat | 2027-12-11 → 2028-11-05 (+330d) | 2027-12-23 → 2028-11-17 (+330d) | 11.94d → 13.5d |  |  |
| 4329 | False ceiling | 2027-12-23 → 2028-11-17 (+330d) | 2028-01-02 → 2028-11-27 (+330d) | 9.94d → 11.25d |  |  |
| 4330 | **26th Floor** | 2026-07-15 → 2027-02-17 (+217d) | 2028-01-14 → 2029-01-10 (+362d) | 502.56d → 730d |  | constraint start no earlier than 2026-07-15 → start no earlier than 2027-02-17 |
| 4331 | Block Work | 2026-06-26 → 2027-02-17 (+236d) | 2026-07-04 → 2027-02-24 (+235d) | 7.94d → 9d | 4315FS+0.25d → 3918, 4315 |  |
| 4332 | Door Frame Fixing | 2026-09-15 → 2027-02-25 (+163d) | 2026-09-24 → 2027-03-05 (+162d) | 8.94d → 10.12d | 4316, 4347 → 4316, 4331 |  |
| 4333 | Internal Plumbing Works | 2026-09-15 → 2027-02-25 (+163d) | 2026-09-25 → 2027-03-06 (+162d) | 9.94d → 11.25d | 4317, 4347 → 4317, 4331 |  |
| 4334 | Waterproofing | 2027-02-02 → 2027-03-16 (+42d) | 2027-02-14 → 2027-03-27 (+41d) | 11.94d → 13.5d | 4318, 4397 → 4318, 4333 |  |
| 4335 | Internal Plaster | 2026-06-19 → 2027-03-28 (+282d) | 2026-06-26 → 2027-04-05 (+283d) | 8d → 10.12d | 4319FS+0.25d → 4319, 4332, 4333, 4334 |  |
| 4336 | IPS flooring work | 2026-10-07 → 2027-04-06 (+181d) | 2026-10-16 → 2027-04-14 (+180d) | 8.94d → 10.12d | 4320, 4332, 4270, 4383 → 4320, 4332, 4334, 4335 |  |
| 4337 | Toilet dado work | 2026-10-07 → 2027-08-10 (+307d) | 2026-10-15 → 2027-08-18 (+307d) | 7.94d → 9d | 4321, 4270, 4383 → 4321, 4334, 4335 |  |
| 4338 | Toilet flooring work | 2026-10-15 → 2027-08-18 (+307d) | 2026-10-22 → 2027-08-25 (+307d) | 6.94d → 7.88d |  |  |
| 4339 | Living dinning flooring | 2026-10-22 → 2027-12-29 (+433d) | 2026-12-20 → 2028-01-12 (+388d) | 14.94d → 16.88d |  |  |
| 4340 | Aluminium door-window fixing | 2027-01-30 → 2028-12-26 (+696d) | 2027-02-14 → 2029-01-10 (+696d) | 14.94d → 16.88d |  |  |
| 4341 | Putty primer coat | 2026-12-21 → 2028-01-13 (+388d) | 2026-12-26 → 2028-01-18 (+388d) | 5.94d → 6.75d |  |  |
| 4342 | Door shutter fixing | 2026-12-21 → 2028-07-03 (+560d) | 2026-12-28 → 2028-07-11 (+561d) | 7.94d → 9d |  |  |
| 4343 | Electrical wiring work | 2027-12-11 → 2028-11-04 (+329d) | 2027-12-23 → 2028-11-16 (+329d) | 11.94d → 13.5d |  |  |
| 4344 | Painting 1st coat | 2027-12-23 → 2028-11-17 (+330d) | 2028-01-04 → 2028-11-29 (+330d) | 11.94d → 13.5d |  |  |
| 4345 | False ceiling | 2028-01-04 → 2028-11-29 (+330d) | 2028-01-14 → 2028-12-09 (+330d) | 9.94d → 11.25d |  |  |
| 4346 | **27th Floor** | 2026-09-22 → 2027-02-28 (+159d) | 2028-01-26 → 2029-01-25 (+365d) | 446d → 734.5d |  | constraint start no earlier than 2026-09-22 → start no earlier than 2027-02-28 |
| 4347 | Block Work | 2026-09-07 → 2027-02-28 (+174d) | 2026-09-15 → 2027-03-07 (+173d) | 7.94d → 9d | 3918FS+0.25d, 4331FS+0.25d → 3919, 4331 |  |
| 4348 | Door Frame Fixing | 2026-09-30 → 2027-03-08 (+159d) | 2026-10-08 → 2027-03-16 (+159d) | 8.94d → 10.12d | 4332, 4363 → 4332, 4347 |  |
| 4349 | Internal Plumbing Works | 2026-09-30 → 2027-03-08 (+159d) | 2026-10-09 → 2027-03-17 (+159d) | 9.94d → 11.25d | 4333, 4363 → 4333, 4347 |  |
| 4350 | Waterproofing | 2027-02-14 → 2027-03-28 (+42d) | 2027-02-26 → 2027-04-08 (+41d) | 11.94d → 13.5d | 4334, 4413 → 4334, 4349 |  |
| 4351 | Internal Plaster | 2026-06-27 → 2027-04-09 (+286d) | 2026-07-06 → 2027-04-17 (+285d) | 8.94d → 10.12d | 4335FS+0.25d → 4335, 4348, 4349, 4350 |  |
| 4352 | IPS flooring work | 2026-10-30 → 2027-04-18 (+170d) | 2026-12-23 → 2027-04-26 (+124d) | 8.94d → 10.12d | 4336, 4348, 4286, 4399 → 4336, 4348, 4350, 4351 |  |
| 4353 | Toilet dado work | 2026-10-30 → 2027-08-18 (+292d) | 2026-12-22 → 2027-08-26 (+247d) | 7.94d → 9d | 4337, 4286, 4399 → 4337, 4350, 4351 |  |
| 4354 | Toilet flooring work | 2026-12-22 → 2027-08-26 (+247d) | 2026-12-29 → 2027-09-02 (+247d) | 6.94d → 7.88d |  |  |
| 4355 | Living dinning flooring | 2026-12-29 → 2028-01-13 (+380d) | 2027-01-13 → 2028-01-27 (+379d) | 14.94d → 16.88d |  |  |
| 4356 | Aluminium door-window fixing | 2027-02-14 → 2029-01-10 (+696d) | 2027-03-01 → 2029-01-25 (+696d) | 14.94d → 16.88d |  |  |
| 4357 | Putty primer coat | 2027-01-13 → 2028-01-28 (+380d) | 2027-01-19 → 2028-02-02 (+379d) | 5.94d → 6.75d |  |  |
| 4358 | Door shutter fixing | 2027-01-13 → 2028-07-11 (+545d) | 2027-01-21 → 2028-07-19 (+545d) | 7.94d → 9d |  |  |
| 4359 | Electrical wiring work | 2027-12-23 → 2028-11-16 (+329d) | 2028-01-04 → 2028-11-28 (+329d) | 11.94d → 13.5d |  |  |
| 4360 | Painting 1st coat | 2028-01-04 → 2028-11-29 (+330d) | 2028-01-16 → 2028-12-11 (+330d) | 11.94d → 13.5d |  |  |
| 4361 | False ceiling | 2028-01-16 → 2028-12-11 (+330d) | 2028-01-26 → 2028-12-21 (+330d) | 9.94d → 11.25d |  |  |
| 4362 | **28th Floor** | 2026-10-08 → 2027-03-11 (+154d) | 2028-02-07 → 2029-02-09 (+368d) | 441.94d → 739d |  | constraint start no earlier than 2026-10-08 → start no earlier than 2027-03-11 |
| 4363 | Block Work | 2026-09-22 → 2027-03-11 (+170d) | 2026-09-30 → 2027-03-18 (+169d) | 7.94d → 9d | 4534, 4347 → 3920, 4347 |  |
| 4364 | Door Frame Fixing | 2026-10-16 → 2027-03-19 (+154d) | 2026-10-24 → 2027-03-27 (+154d) | 8.94d → 10.12d | 4348, 4379 → 4348, 4363 |  |
| 4365 | Internal Plumbing Works | 2026-10-16 → 2027-03-19 (+154d) | 2026-10-25 → 2027-03-28 (+154d) | 9.94d → 11.25d | 4349, 4379 → 4349, 4363 |  |
| 4366 | Waterproofing | 2027-02-26 → 2027-04-09 (+42d) | 2027-03-10 → 2027-04-20 (+41d) | 11.94d → 13.5d | 4350, 4429 → 4350, 4365 |  |
| 4367 | Internal Plaster | 2026-07-06 → 2027-04-21 (+289d) | 2026-07-15 → 2027-04-29 (+288d) | 8.94d → 10.12d | 4351FS+0.25d → 4351, 4364, 4365, 4366 |  |

| ID | Task | Start | Finish | Duration | Predecessors | Other |
| --- | --- | --- | --- | --- | --- | --- |
| 4368 | IPS flooring work | 2026-12-30 → 2027-04-30 (+121d) | 2027-01-08 → 2027-05-08 (+120d) | 8.94d → 10.12d | 4352, 4364, 4302, 4415 → 4352, 4364, 4366, 4367 |  |
| 4369 | Toilet dado work | 2026-12-30 → 2027-08-26 (+239d) | 2027-01-07 → 2027-09-03 (+239d) | 7.94d → 9d | 4353, 4302, 4415 → 4353, 4366, 4367 |  |
| 4370 | Toilet flooring work | 2027-01-07 → 2027-09-03 (+239d) | 2027-01-14 → 2027-09-10 (+239d) | 6.94d → 7.88d |  |  |
| 4371 | Living dinning flooring | 2027-01-14 → 2028-01-28 (+379d) | 2027-01-29 → 2028-02-11 (+378d) | 14.94d → 16.88d |  |  |
| 4372 | Aluminium door-window fixing | 2027-03-01 → 2029-01-25 (+696d) | 2027-03-16 → 2029-02-09 (+696d) | 14.94d → 16.88d |  |  |
| 4373 | Putty primer coat | 2027-01-29 → 2028-02-12 (+379d) | 2027-02-04 → 2028-02-17 (+378d) | 5.94d → 6.75d |  |  |
| 4374 | Door shutter fixing | 2027-01-29 → 2028-07-19 (+537d) | 2027-02-06 → 2028-07-27 (+537d) | 7.94d → 9d |  |  |
| 4375 | Electrical wiring work | 2028-01-04 → 2028-11-28 (+329d) | 2028-01-16 → 2028-12-10 (+329d) | 11.94d → 13.5d |  |  |
| 4376 | Painting 1st coat | 2028-01-16 → 2028-12-11 (+330d) | 2028-01-28 → 2028-12-23 (+330d) | 11.94d → 13.5d |  |  |
| 4377 | False ceiling | 2028-01-28 → 2028-12-23 (+330d) | 2028-02-07 → 2029-01-02 (+330d) | 9.94d → 11.25d |  |  |
| 4378 | **29th Floor** | 2026-10-24 → 2027-03-22 (+149d) | 2028-02-18 → 2029-02-24 (+372d) | 437.88d → 743.5d |  | constraint start no earlier than 2026-10-24 → start no earlier than 2027-03-22 |
| 4379 | Block Work | 2026-10-08 → 2027-03-22 (+165d) | 2026-10-16 → 2027-03-29 (+164d) | 7.94d → 9d | 3920, 4363 → 3921, 4363 |  |
| 4380 | Door Frame Fixing | 2026-12-16 → 2027-03-30 (+104d) | 2026-12-24 → 2027-04-07 (+104d) | 8.94d → 10.12d | 4364, 4395 → 4364, 4379 |  |
| 4381 | Internal Plumbing Works | 2026-12-16 → 2027-03-30 (+104d) | 2026-12-25 → 2027-04-08 (+104d) | 9.94d → 11.25d | 4365, 4395 → 4365, 4379 |  |
| 4382 | Waterproofing | 2027-03-10 → 2027-04-21 (+42d) | 2027-03-22 → 2027-05-02 (+41d) | 11.94d → 13.5d | 4366, 4445 → 4366, 4381 |  |
| 4383 | Internal Plaster | 2026-07-15 → 2027-05-03 (+292d) | 2026-07-24 → 2027-05-11 (+291d) | 8.94d → 10.12d | 4367FS+0.25d → 4367, 4380, 4381, 4382 |  |
| 4384 | IPS flooring work | 2027-01-15 → 2027-05-12 (+117d) | 2027-01-24 → 2027-05-20 (+116d) | 8.94d → 10.12d | 4368, 4380, 4318, 4431 → 4368, 4380, 4382, 4383 |  |
| 4385 | Toilet dado work | 2027-01-15 → 2027-09-03 (+231d) | 2027-01-23 → 2027-09-11 (+231d) | 7.94d → 9d | 4369, 4318, 4431 → 4369, 4382, 4383 |  |
| 4386 | Toilet flooring work | 2027-01-23 → 2027-09-11 (+231d) | 2027-01-30 → 2027-09-18 (+231d) | 6.94d → 7.88d |  |  |
| 4387 | Living dinning flooring | 2027-01-30 → 2028-02-12 (+378d) | 2027-02-14 → 2028-02-26 (+377d) | 14.94d → 16.88d |  |  |
| 4388 | Aluminium door-window fixing | 2027-03-16 → 2029-02-09 (+696d) | 2027-03-31 → 2029-02-24 (+696d) | 14.94d → 16.88d |  |  |
| 4389 | Putty primer coat | 2027-02-14 → 2028-02-27 (+378d) | 2027-02-20 → 2028-03-03 (+377d) | 5.94d → 6.75d |  |  |
| 4390 | Door shutter fixing | 2027-02-14 → 2028-07-27 (+529d) | 2027-02-22 → 2028-08-04 (+529d) | 7.94d → 9d |  |  |
| 4391 | Electrical wiring work | 2028-01-16 → 2028-12-10 (+329d) | 2028-01-28 → 2028-12-22 (+329d) | 11.94d → 13.5d |  |  |
| 4392 | Painting 1st coat | 2028-01-28 → 2028-12-23 (+330d) | 2028-02-09 → 2029-01-04 (+330d) | 11.94d → 13.5d |  |  |
| 4393 | False ceiling | 2028-02-09 → 2029-01-04 (+330d) | 2028-02-18 → 2029-01-14 (+331d) | 9.94d → 11.25d |  |  |
| 4394 | **30th Floor** | 2027-01-16 → 2027-04-02 (+76d) | 2028-03-07 → 2029-03-11 (+369d) | 416.94d → 748d |  | constraint start no earlier than 2027-01-16 → start no earlier than 2027-04-02 |
| 4395 | Block Work | 2026-10-24 → 2027-04-02 (+160d) | 2026-12-16 → 2027-04-09 (+114d) | 7.94d → 9d | 4536, 4379 → 3922, 4379 |  |
| 4396 | Door Frame Fixing | 2027-01-23 → 2027-04-10 (+77d) | 2027-02-01 → 2027-04-18 (+76d) | 8.94d → 10.12d | 4380, 4411 → 4380, 4395 |  |
| 4397 | Internal Plumbing Works | 2027-01-23 → 2027-04-10 (+77d) | 2027-02-02 → 2027-04-19 (+76d) | 9.94d → 11.25d | 4381, 4411 → 4381, 4395 |  |
| 4398 | Waterproofing | 2027-03-22 → 2027-05-03 (+42d) | 2027-04-03 → 2027-05-14 (+41d) | 11.94d → 13.5d | 4382, 4461 → 4382, 4397 |  |
| 4399 | Internal Plaster | 2026-10-21 → 2027-05-15 (+206d) | 2026-10-30 → 2027-05-23 (+205d) | 8.94d → 10.12d | 4383, 4348, 4349, 4286 → 4383, 4396, 4397, 4398 |  |
| 4400 | IPS flooring work | 2027-02-23 → 2027-05-24 (+90d) | 2027-03-04 → 2027-06-01 (+89d) | 8.94d → 10.12d | 4384, 4396, 4334, 4447 → 4384, 4396, 4398, 4399 |  |
| 4401 | Toilet dado work | 2027-02-23 → 2027-09-11 (+200d) | 2027-03-03 → 2027-09-19 (+200d) | 7.94d → 9d | 4385, 4334, 4447 → 4385, 4398, 4399 |  |
| 4402 | Toilet flooring work | 2027-03-03 → 2027-09-19 (+200d) | 2027-03-10 → 2027-09-26 (+200d) | 6.94d → 7.88d |  |  |
| 4403 | Living dinning flooring | 2027-03-10 → 2028-02-27 (+354d) | 2027-03-25 → 2028-03-12 (+353d) | 14.94d → 16.88d |  |  |
| 4404 | Aluminium door-window fixing | 2027-03-31 → 2029-02-24 (+696d) | 2027-04-15 → 2029-03-11 (+696d) | 14.94d → 16.88d |  |  |
| 4405 | Putty primer coat | 2027-03-25 → 2028-03-13 (+354d) | 2027-03-31 → 2028-03-18 (+353d) | 5.94d → 6.75d |  |  |
| 4406 | Door shutter fixing | 2027-03-25 → 2028-08-04 (+498d) | 2027-04-02 → 2028-08-12 (+498d) | 7.94d → 9d |  |  |
| 4407 | Electrical wiring work | 2028-01-28 → 2028-12-22 (+329d) | 2028-02-12 → 2029-01-06 (+329d) | 14.94d → 16.88d |  |  |
| 4408 | Painting 1st coat | 2028-02-12 → 2029-01-06 (+329d) | 2028-02-26 → 2029-01-21 (+330d) | 14.94d → 16.88d |  |  |
| 4409 | False ceiling | 2028-02-27 → 2029-01-21 (+329d) | 2028-03-07 → 2029-01-31 (+330d) | 9.94d → 11.25d |  |  |
| 4410 | **31st Floor** | 2027-01-23 → 2027-04-10 (+77d) | 2028-03-22 → 2029-03-23 (+366d) | 423.94d → 752.5d |  | constraint start no earlier than 2027-01-23 → start no earlier than 2027-04-10 |
| 4411 | Block Work | 2027-01-16 → 2027-04-10 (+84d) | 2027-01-23 → 2027-04-17 (+84d) | 7.94d → 9d | 32nd Flood, 4395 → 3923, 4395 |  |
| 4412 | Door Frame Fixing | 2027-02-01 → 2027-04-19 (+77d) | 2027-02-10 → 2027-04-27 (+76d) | 8.94d → 10.12d | 4396, 4427 → 4396, 4411 |  |
| 4413 | Internal Plumbing Works | 2027-02-02 → 2027-04-20 (+77d) | 2027-02-12 → 2027-04-29 (+76d) | 9.94d → 11.25d | 4397, 4427 → 4397, 4411 |  |
| 4414 | Waterproofing | 2027-04-03 → 2027-05-15 (+42d) | 2027-04-15 → 2027-05-26 (+41d) | 11.94d → 13.5d | 4398, 4477 → 4398, 4413 |  |
| 4415 | Internal Plaster | 2026-12-21 → 2027-05-27 (+157d) | 2026-12-30 → 2027-06-04 (+156d) | 8.94d → 10.12d | 4399, 4364, 4365, 4302 → 4399, 4412, 4413, 4414 |  |
| 4416 | IPS flooring work | 2027-03-07 → 2027-06-05 (+90d) | 2027-03-16 → 2027-06-13 (+89d) | 8.94d → 10.12d | 4400, 4412, 4350, 4463 → 4400, 4412, 4414, 4415 |  |
| 4417 | Toilet dado work | 2027-03-07 → 2027-09-19 (+196d) | 2027-03-15 → 2027-09-27 (+196d) | 7.94d → 9d | 4401, 4350, 4463 → 4401, 4414, 4415 |  |
| 4418 | Toilet flooring work | 2027-03-15 → 2027-09-27 (+196d) | 2027-03-22 → 2027-10-04 (+196d) | 6.94d → 7.88d |  |  |
| 4419 | Living dinning flooring | 2027-03-25 → 2028-03-13 (+354d) | 2027-04-09 → 2028-03-27 (+353d) | 14.94d → 16.88d |  |  |
| 4420 | Aluminium door-window fixing | 2027-04-15 → 2029-03-11 (+696d) | 2027-04-26 → 2029-03-23 (+697d) | 11.94d → 13.5d |  |  |
| 4421 | Putty primer coat | 2027-04-09 → 2028-03-28 (+354d) | 2027-04-15 → 2028-04-02 (+353d) | 5.94d → 6.75d |  |  |
| 4422 | Door shutter fixing | 2027-04-09 → 2028-08-12 (+491d) | 2027-04-17 → 2028-08-20 (+491d) | 7.94d → 9d |  |  |
| 4423 | Electrical wiring work | 2028-02-12 → 2029-01-06 (+329d) | 2028-02-26 → 2029-01-21 (+330d) | 14.94d → 16.88d |  |  |
| 4424 | Painting 1st coat | 2028-02-27 → 2029-01-21 (+329d) | 2028-03-12 → 2029-02-05 (+330d) | 14.94d → 16.88d |  |  |
| 4425 | False ceiling | 2028-03-12 → 2029-02-05 (+330d) | 2028-03-22 → 2029-02-15 (+330d) | 9.94d → 11.25d |  |  |
| 4426 | **32nd Floor** | 2027-01-31 → 2027-04-18 (+77d) | 2028-04-06 → 2029-04-04 (+363d) | 430.94d → 757d |  | constraint start no earlier than 2027-01-31 → start no earlier than 2027-04-18 |
| 4427 | Block Work | 2027-01-23 → 2027-04-18 (+85d) | 2027-01-31 → 2027-04-25 (+84d) | 7.94d → 9d | 3923, 4411 → 3924, 4411 |  |
| 4428 | Door Frame Fixing | 2027-02-10 → 2027-04-28 (+77d) | 2027-02-19 → 2027-05-06 (+76d) | 8.94d → 10.12d | 4412, 4443 → 4412, 4427 |  |
| 4429 | Internal Plumbing Works | 2027-02-12 → 2027-04-30 (+77d) | 2027-02-22 → 2027-05-09 (+76d) | 9.94d → 11.25d | 4413, 4443 → 4413, 4427 |  |
| 4430 | Waterproofing | 2026-01-16 → 2027-05-27 (+496d) | 2026-06-15 → 2027-06-07 (+357d) | 150d → 13.5d | 4638SS+5d → 4414, 4429 |  |
| 4431 | Internal Plaster | 2027-01-06 → 2027-06-08 (+153d) | 2027-01-15 → 2027-06-16 (+152d) | 8.94d → 10.12d | 4415, 4380, 4381, 4318 → 4415, 4428, 4429, 4430 |  |
| 4432 | IPS flooring work | 2027-03-16 → 2027-06-17 (+93d) | 2027-03-25 → 2027-06-25 (+92d) | 8.94d → 10.12d | 4416, 4428, 4366, 4479 → 4416, 4428, 4430, 4431 |  |
| 4433 | Toilet dado work | 2027-03-16 → 2027-09-27 (+195d) | 2027-03-24 → 2027-10-05 (+195d) | 7.94d → 9d | 4417, 4366, 4479 → 4417, 4430, 4431 |  |
| 4434 | Toilet flooring work | 2027-03-24 → 2027-10-05 (+195d) | 2027-03-31 → 2027-10-12 (+195d) | 6.94d → 7.88d |  |  |
| 4435 | Living dinning flooring | 2027-04-09 → 2028-03-28 (+354d) | 2027-04-24 → 2028-04-11 (+353d) | 14.94d → 16.88d |  |  |
| 4436 | Aluminium door-window fixing | 2027-04-27 → 2029-03-23 (+696d) | 2027-05-08 → 2029-04-04 (+697d) | 11.94d → 13.5d |  |  |
| 4437 | Putty primer coat | 2027-04-24 → 2028-04-12 (+354d) | 2027-04-30 → 2028-04-17 (+353d) | 5.94d → 6.75d |  |  |

| ID | Task | Start | Finish | Duration | Predecessors | Other |
| --- | --- | --- | --- | --- | --- | --- |
| 4438 | Door shutter fixing | 2027-04-24 → 2028-08-20 (+484d) | 2027-05-02 → 2028-08-28 (+484d) | 7.94d → 9d |  |  |
| 4439 | Electrical wiring work | 2028-02-27 → 2029-01-21 (+329d) | 2028-03-12 → 2029-02-05 (+330d) | 14.94d → 16.88d |  |  |
| 4440 | Painting 1st coat | 2028-03-12 → 2029-02-05 (+330d) | 2028-03-27 → 2029-02-20 (+330d) | 14.94d → 16.88d |  |  |
| 4441 | False ceiling | 2028-03-27 → 2029-02-20 (+330d) | 2028-04-06 → 2029-03-02 (+330d) | 9.94d → 11.25d |  |  |
| 4442 | **33rd Floor** | 2027-02-08 → 2027-04-26 (+77d) | 2028-04-18 → 2029-04-19 (+366d) | 434.94d → 764.88d |  | constraint start no earlier than 2027-02-08 → start no earlier than 2027-04-26 |
| 4443 | Block Work | 2027-01-31 → 2027-04-26 (+85d) | 2027-02-08 → 2027-05-03 (+84d) | 7.94d → 9d | 3924, 4427 → 3925, 4427 |  |
| 4444 | Door Frame Fixing | 2027-02-19 → 2027-05-07 (+77d) | 2027-02-28 → 2027-05-15 (+76d) | 8.94d → 10.12d | 4428, 4459 → 4428, 4443 |  |
| 4445 | Internal Plumbing Works | 2027-02-22 → 2027-05-10 (+77d) | 2027-03-04 → 2027-05-19 (+76d) | 9.94d → 11.25d | 4429, 4459 → 4429, 4443 |  |
| 4447 | Internal Plaster | 2027-02-14 → 2027-06-20 (+126d) | 2027-02-23 → 2027-06-28 (+125d) | 8.94d → 10.12d | 4431, 4396, 4397, 4334 → 4431, 4444, 4445, 4446 |  |
| 4448 | IPS flooring work | 2027-03-26 → 2027-06-29 (+95d) | 2027-04-04 → 2027-07-07 (+94d) | 8.94d → 10.12d | 4432, 4444, 4382, Internal Plaster → 4432, 4444, 4446, 4447 |  |
| 4449 | Toilet dado work | 2027-03-26 → 2027-10-05 (+193d) | 2027-04-03 → 2027-10-13 (+193d) | 7.94d → 9d | 4433, 4382, Internal Plaster → 4433, 4446, 4447 |  |
| 4450 | Toilet flooring work | 2027-04-03 → 2027-10-13 (+193d) | 2027-04-10 → 2027-10-20 (+193d) | 6.94d → 7.88d |  |  |
| 4451 | Living dinning flooring | 2027-04-24 → 2028-04-12 (+354d) | 2027-05-02 → 2028-04-24 (+358d) | 8d → 14.62d |  |  |
| 4452 | Aluminium door-window fixing | 2027-05-08 → 2029-04-04 (+697d) | 2027-05-23 → 2029-04-19 (+697d) | 14.94d → 16.88d |  |  |
| 4453 | Putty primer coat | 2027-05-02 → 2028-04-25 (+359d) | 2027-05-08 → 2028-04-30 (+358d) | 5.94d → 6.75d |  |  |
| 4454 | Door shutter fixing | 2027-05-02 → 2028-08-28 (+484d) | 2027-05-10 → 2028-09-05 (+484d) | 7.94d → 9d |  |  |
| 4455 | Electrical wiring work | 2028-03-12 → 2029-02-05 (+330d) | 2028-03-24 → 2029-02-17 (+330d) | 11.94d → 13.5d |  |  |
| 4456 | Painting 1st coat | 2028-03-27 → 2029-02-20 (+330d) | 2028-04-08 → 2029-03-04 (+330d) | 11.94d → 13.5d |  |  |
| 4457 | False ceiling | 2028-04-08 → 2029-03-04 (+330d) | 2028-04-18 → 2029-03-14 (+330d) | 9.94d → 11.25d |  |  |
| 4458 | **34th Floor** | 2027-02-16 → 2027-05-04 (+77d) | 2028-04-30 → 2029-05-04 (+369d) | 438.94d → 772.75d |  | constraint start no earlier than 2027-02-16 → start no earlier than 2027-05-04 |
| 4459 | Block Work | 2027-02-08 → 2027-05-04 (+85d) | 2027-02-16 → 2027-05-11 (+84d) | 7.94d → 9d | 3925, 4443 → 3926, 4443 |  |
| 4460 | Door Frame Fixing | 2027-02-28 → 2027-05-16 (+77d) | 2027-03-09 → 2027-05-24 (+76d) | 8.94d → 10.12d | 4444, 4475 → 4444, 4459 |  |
| 4461 | Internal Plumbing Works | 2027-03-04 → 2027-05-20 (+77d) | 2027-03-14 → 2027-05-29 (+76d) | 9.94d → 11.25d | 4445, 4475 → 4445, 4459 |  |
| 4463 | Internal Plaster | 2027-02-26 → 2027-07-02 (+126d) | 2027-03-07 → 2027-07-10 (+125d) | 8.94d → 10.12d | 4447, 4412, 4413, 4350 → 4447, 4460, 4461, 4462 |  |
| 4464 | IPS flooring work | 2027-04-04 → 2027-07-11 (+98d) | 2027-04-13 → 2027-07-19 (+97d) | 8.94d → 10.12d | 4448, 4460, 4398, Internal Plaster → 4448, 4460, 4462, 4463 |  |
| 4465 | Toilet dado work | 2027-04-03 → 2027-10-13 (+193d) | 2027-04-11 → 2027-10-21 (+193d) | 7.94d → 9d | 4449, 4398, Internal Plaster → 4449, 4462, 4463 |  |
| 4466 | Toilet flooring work | 2027-04-11 → 2027-10-21 (+193d) | 2027-04-18 → 2027-10-28 (+193d) | 6.94d → 7.88d |  |  |
| 4467 | Living dinning flooring | 2027-05-02 → 2028-04-25 (+359d) | 2027-05-10 → 2028-05-06 (+362d) | 8d → 13.5d |  |  |
| 4468 | Aluminium door-window fixing | 2027-05-23 → 2029-04-19 (+697d) | 2027-06-07 → 2029-05-04 (+697d) | 14.94d → 16.88d |  |  |
| 4469 | Putty primer coat | 2027-05-10 → 2028-05-07 (+363d) | 2027-05-16 → 2028-05-12 (+362d) | 5.94d → 6.75d |  |  |
| 4470 | Door shutter fixing | 2027-05-10 → 2028-09-05 (+484d) | 2027-05-18 → 2028-09-13 (+484d) | 7.94d → 9d |  |  |
| 4471 | Electrical wiring work | 2028-03-24 → 2029-02-17 (+330d) | 2028-04-05 → 2029-03-01 (+330d) | 11.94d → 13.5d |  |  |
| 4472 | Painting 1st coat | 2028-04-08 → 2029-03-04 (+330d) | 2028-04-20 → 2029-03-16 (+330d) | 11.94d → 13.5d |  |  |
| 4473 | False ceiling | 2028-04-20 → 2029-03-16 (+330d) | 2028-04-30 → 2029-03-26 (+330d) | 9.94d → 11.25d |  |  |
| 4474 | **35th Floor** | 2027-02-24 → 2027-05-12 (+77d) | 2028-05-12 → 2029-05-19 (+372d) | 442.94d → 780.62d |  | constraint start no earlier than 2027-02-24 → start no earlier than 2027-05-12 |
| 4475 | Block Work | 2027-02-16 → 2027-05-12 (+85d) | 2027-02-24 → 2027-05-19 (+84d) | 7.94d → 9d | 3926, 4459 → 3927, 4459 |  |
| 4476 | Door Frame Fixing | 2027-03-09 → 2027-05-25 (+77d) | 2027-03-18 → 2027-06-02 (+76d) | 8.94d → 10.12d | 4460, 4494 → 4460, 4475 |  |
| 4477 | Internal Plumbing Works | 2027-03-14 → 2027-05-30 (+77d) | 2027-03-24 → 2027-06-08 (+76d) | 9.94d → 11.25d | 4461, 4494 → 4461, 4475 |  |
| 4479 | Internal Plaster | 2027-03-07 → 2027-07-24 (+139d) | 2027-03-16 → 2027-08-01 (+138d) | 8.94d → 10.12d | 4463FS+0.25d → 3884FF+135d, 4476FS+0.25d, 4477FS+0.25d, 4478FS+0.25d |  |
| 4480 | IPS flooring work | 2027-04-15 → 2027-08-02 (+109d) | 2027-04-24 → 2027-08-10 (+108d) | 8.94d → 10.12d | 4464, 4476, 4414, Internal Plaster → 4464, 4476, 4478, 4479 |  |
| 4481 | Toilet dado work | 2027-04-15 → 2027-10-21 (+189d) | 2027-04-23 → 2027-10-29 (+189d) | 7.94d → 9d | 4465, 4414, Internal Plaster → 4465, 4478, 4479 |  |
| 4482 | Toilet flooring work | 2027-04-23 → 2027-10-29 (+189d) | 2027-04-30 → 2027-12-20 (+234d) | 6.94d → 7.88d |  |  |
| 4483 | Living dinning flooring | 2027-05-10 → 2028-05-07 (+363d) | 2027-05-22 → 2028-05-20 (+364d) | 12d → 14.62d | 4467, 4476, 4482 → 3884FF+135d, 4467FS+0.25d, 4476FS+0.25d, 4482FS+0.25d |  |
| 4484 | Aluminium door-window fixing | 2027-06-07 → 2029-05-04 (+697d) | 2027-06-22 → 2029-05-19 (+697d) | 14.94d → 16.88d |  |  |
| 4485 | Putty primer coat | 2027-05-22 → 2028-05-20 (+364d) | 2027-05-28 → 2028-05-26 (+364d) | 5.94d → 6.75d |  |  |
| 4486 | Door shutter fixing | 2027-05-22 → 2028-09-13 (+480d) | 2027-05-30 → 2028-09-21 (+480d) | 7.94d → 9d |  |  |
| 4487 | Electrical wiring work | 2028-04-05 → 2029-03-01 (+330d) | 2028-04-17 → 2029-03-13 (+330d) | 11.94d → 13.5d |  |  |
| 4488 | Painting 1st coat | 2028-04-20 → 2029-03-16 (+330d) | 2028-05-02 → 2029-03-28 (+330d) | 11.94d → 13.5d |  |  |
| 4489 | False ceiling | 2028-05-02 → 2029-03-28 (+330d) | 2028-05-12 → 2029-04-07 (+330d) | 9.94d → 11.25d | 4473, 4488 → 4488FS+0.25d |  |
| 4490 | **Terrace Finishing** | 2026-10-17 → 2027-04-04 (+169d) | 2027-02-18 → 2027-06-22 (+124d) | 79.88d → 90d |  | constraint start no earlier than 2026-10-17 → start no earlier than 2027-04-04 |
| 4491 | Terrace waterproofing | 2026-10-17 → 2027-04-04 (+169d) | 2027-01-10 → 2027-05-13 (+123d) | 39.94d → 45d | 3889 → 3884 |  |
| 4492 | Terrace finishing | 2027-01-13 → 2027-05-14 (+121d) | 2027-02-22 → 2027-06-22 (+120d) | 39.94d → 45d | 3574 → 4491 |  |
| 4493 | **Common Area Finishing** | 2026-01-13 → 2027-05-14 (+486d) | 2028-11-16 → 2029-07-21 (+247d) | 993.44d → 849d |  | constraint start no earlier than 2026-01-13 → start no earlier than 2027-05-14 |
| 4494 | Block Work | 2027-02-24 → 2027-05-14 (+79d) | 2027-03-04 → 2027-07-27 (+145d) | 7.94d → 84.38d | 3927, 4475 → 3889 |  |
| 4496 | Staircase railing fixing | 2026-05-22 → 2027-10-16 (+512d) | 2026-10-19 → 2028-02-27 (+496d) | 149.94d → 101.25d | 4498SS+26.75d, 4497SS+26.75d → 4498SS+33.75d, 4497SS+33.75d |  |
| 4497 | Main staircase flooring | 2026-04-26 → 2027-09-16 (+508d) | 2026-09-23 → 2028-01-28 (+492d) | 149.94d → 101.25d | 4498SS+13.38d → 4498SS+16.88d |  |
| 4498 | Fire staircase flooring | 2026-04-12 → 2027-09-01 (+507d) | 2026-09-09 → 2028-01-13 (+491d) | 149.94d → 101.25d | Internal PlasterSS+13.38d, 4502SS+26.75d → 4495SS+16.88d, 4502SS+33.75d |  |
| 4499 | Fire door work | 2026-05-22 → 2027-10-16 (+512d) | 2026-07-21 → 2028-01-28 (+556d) | 59.94d → 67.5d | 4497SS+26.75d, 4498SS+26.75d → 4497SS+33.75d, 4498SS+33.75d |  |
| 4500 | Electrical wiring work | 2026-01-31 → 2027-06-03 (+488d) | 2026-05-31 → 2027-09-30 (+487d) | 119.94d → 135d | Block WorkSS+17.88d → 4494SS+22.5d |  |
| 4501 | Lobby flooring | 2026-02-03 → 2027-06-06 (+488d) | 2026-07-03 → 2027-10-04 (+458d) | 150d → 135d | 4500SS+3.38d → 4500SS+4.12d |  |
| 4502 | Ceiling & wall putty-primer | 2026-03-17 → 2027-08-02 (+503d) | 2026-07-04 → 2028-01-03 (+548d) | 109.94d → 123.75d | Internal PlasterSS+26.75d → 4495SS+33.75d |  |
| 4503 | Ceiling & wall painting | 2026-04-03 → 2029-04-07 (+1100d) | 2026-07-12 → 2029-07-16 (+1100d) | 99.94d → 112.5d | 4502SS+17.88d → 4502SS+22.5d, 4489 |  |
| 4504 | Light fixture supply & installation | 2028-10-03 → 2029-06-06 (+246d) | 2028-11-16 → 2029-07-21 (+247d) | 44.94d → 50.62d | 4587SS+90d → 4503SS+67.5d |  |
| 4505 | **Balcony Glass Railing** | 2027-08-20 → 2027-12-25 (+127d) | 2027-10-27 → 2028-03-03 (+128d) | 67.81d → 78.75d |  | constraint start no earlier than 2027-08-20 → start no earlier than 2027-12-25 |
| 4506 | 1st Floor | 2027-08-20 → 2027-12-25 (+127d) | 2027-08-22 → 2027-12-26 (+126d) | 1.94d → 2.25d |  |  |
| 4507 | 2nd Floor | 2025-12-16 → 2027-12-27 (+741d) | 2025-12-23 → 2027-12-28 (+735d) | 7d → 2.25d | 3891, 3689 → 4506 |  |
| 4508 | 3rd Floor | 2027-08-24 → 2027-12-29 (+127d) | 2027-08-26 → 2027-12-30 (+126d) | 1.94d → 2.25d | 2nd Floor → 4507 |  |
| 4509 | 4th Floor | 2027-08-26 → 2027-12-31 (+127d) | 2027-08-28 → 2028-01-01 (+126d) | 1.94d → 2.25d |  |  |
| 4510 | 5th Floor | 2027-08-28 → 2028-01-02 (+127d) | 2027-08-30 → 2028-01-03 (+126d) | 1.94d → 2.25d |  |  |
| 4511 | 6th Floor | 2027-08-30 → 2028-01-04 (+127d) | 2027-09-01 → 2028-01-05 (+126d) | 1.94d → 2.25d |  |  |

| ID | Task | Start | Finish | Duration | Complete | Predecessors | Other |
| --- | --- | --- | --- | --- | --- | --- | --- |
| 4512 | 7th Floor | 2027-09-01 → 2028-01-06 (+127d) | 2027-09-03 → 2028-01-07 (+126d) | 1.94d → 2.25d |  |  |  |
| 4513 | 8th Floor | 2027-09-03 → 2028-01-08 (+127d) | 2027-09-05 → 2028-01-09 (+126d) | 1.94d → 2.25d |  |  |  |
| 4514 | 9th Floor | 2027-09-05 → 2028-01-10 (+127d) | 2027-09-07 → 2028-01-11 (+126d) | 1.94d → 2.25d |  |  |  |
| 4515 | 10th Floor | 2027-09-07 → 2028-01-12 (+127d) | 2027-09-09 → 2028-01-13 (+126d) | 1.94d → 2.25d |  |  |  |
| 4516 | 11th Floor | 2027-09-09 → 2028-01-14 (+127d) | 2027-09-11 → 2028-01-15 (+126d) | 1.94d → 2.25d |  |  |  |
| 4517 | 12th Floor | 2027-09-11 → 2028-01-16 (+127d) | 2027-09-12 → 2028-01-17 (+127d) | 1.94d → 2.25d |  |  |  |
| 4518 | 13th Floor | 2027-09-13 → 2028-01-18 (+127d) | 2027-09-14 → 2028-01-19 (+127d) | 1.94d → 2.25d |  |  |  |
| 4519 | 14th Floor | 2027-09-14 → 2028-01-20 (+128d) | 2027-09-16 → 2028-01-21 (+127d) | 1.94d → 2.25d |  |  |  |
| 4520 | 15th Floor | 2027-09-16 → 2028-01-22 (+128d) | 2027-09-18 → 2028-01-23 (+127d) | 1.94d → 2.25d |  |  |  |
| 4521 | 16th Floor | 2027-09-18 → 2028-01-24 (+128d) | 2027-09-20 → 2028-01-25 (+127d) | 1.94d → 2.25d |  |  |  |
| 4522 | 17th Floor | 2027-09-20 → 2028-01-26 (+128d) | 2027-09-22 → 2028-01-27 (+127d) | 1.94d → 2.25d |  |  |  |
| 4523 | 18th Floor | 2027-09-22 → 2028-01-28 (+128d) | 2027-09-24 → 2028-01-29 (+127d) | 1.94d → 2.25d |  |  |  |
| 4524 | 19th Floor | 2027-09-24 → 2028-01-30 (+128d) | 2027-09-26 → 2028-01-31 (+127d) | 1.94d → 2.25d |  |  |  |
| 4525 | 20th Floor | 2027-09-26 → 2028-02-01 (+128d) | 2027-09-28 → 2028-02-02 (+127d) | 1.94d → 2.25d |  |  |  |
| 4526 | 21st Floor | 2027-09-28 → 2028-02-03 (+128d) | 2027-09-30 → 2028-02-04 (+127d) | 1.94d → 2.25d |  |  |  |
| 4527 | 22nd Floor | 2027-09-30 → 2028-02-05 (+128d) | 2027-10-02 → 2028-02-06 (+127d) | 1.94d → 2.25d |  |  |  |
| 4528 | 23rd Floor | 2027-10-02 → 2028-02-07 (+128d) | 2027-10-04 → 2028-02-08 (+127d) | 1.94d → 2.25d |  |  |  |
| 4529 | 24th Floor | 2027-10-04 → 2028-02-09 (+128d) | 2027-10-06 → 2028-02-10 (+127d) | 1.94d → 2.25d |  |  |  |
| 4530 | 25th Floor | 2027-10-06 → 2028-02-11 (+128d) | 2027-10-08 → 2028-02-12 (+127d) | 1.94d → 2.25d |  |  |  |
| 4531 | 26th Floor | 2027-10-08 → 2028-02-13 (+128d) | 2027-10-10 → 2028-02-14 (+127d) | 1.94d → 2.25d |  |  |  |
| 4532 | 27th Floor | 2027-10-10 → 2028-02-15 (+128d) | 2027-10-12 → 2028-02-16 (+127d) | 1.94d → 2.25d |  |  |  |
| 4533 | 28th Floor | 2027-10-12 → 2028-02-17 (+128d) | 2027-10-13 → 2028-02-18 (+128d) | 1.94d → 2.25d |  |  |  |
| 4534 | 29th Floor | 2026-09-15 → 2028-02-19 (+522d) | 2026-09-22 → 2028-02-20 (+516d) | 7d → 2.25d |  | 3918, 3879 → 4533 |  |
| 4535 | 30th Floor | 2027-10-15 → 2028-02-21 (+129d) | 2027-10-17 → 2028-02-22 (+128d) | 1.94d → 2.25d |  | 29th Floor → 4534 |  |
| 4536 | 31st Floor | 2026-10-17 → 2028-02-23 (+494d) | 2026-10-24 → 2028-02-24 (+488d) | 7d → 2.25d |  | 3920, 3889 → 4535 |  |
| 4538 | 33rd Floor | 2027-10-21 → 2028-02-27 (+129d) | 2027-10-23 → 2028-02-28 (+128d) | 1.94d → 2.25d |  | 3620 → 4537 |  |
| 4539 | 34th Floor | 2027-10-23 → 2028-02-29 (+129d) | 2027-10-25 → 2028-03-01 (+128d) | 1.94d → 2.25d |  |  |  |
| 4540 | 35th Floor | 2027-10-25 → 2028-03-02 (+129d) | 2027-10-27 → 2028-03-03 (+128d) | 1.94d → 2.25d |  |  |  |
| 4541 | **MEP work** | 2026-04-12 → 2027-05-14 (+397d) | 2029-01-21 → 2028-10-06 (-107d) | 970.25d → 524.5d |  |  | constraint start no earlier than 2026-04-12 → start no earlier than 2027-05-14 |
| 4542 | **Electrical work** | 2027-01-09 → 2027-05-14 (+125d) | 2027-08-30 → 2028-03-28 (+211d) | 233.25d → 309.38d |  |  | constraint start no earlier than 2027-01-09 → start no earlier than 2027-05-14 |
| 4543 | Cable Tray | 2027-01-09 → 2027-05-14 (+125d) | 2027-04-08 → 2027-08-11 (+125d) | 89.94d → 101.25d |  | 4619 → 3889 |  |
| 4544 | Cable, main & sub main | 2027-02-18 → 2027-06-28 (+130d) | 2027-05-08 → 2027-10-25 (+170d) | 79.94d → 135d |  | 4543SS+40d → 4543SS+50.62d |  |
| 4545 | LT panel & DB | 2027-04-08 → 2027-08-22 (+136d) | 2027-08-06 → 2028-02-02 (+180d) | 119.94d → 135d |  | 4543 → 4543FS+11.25d |  |
| 4546 | Rising main | 2027-06-01 → 2027-10-11 (+132d) | 2027-08-30 → 2028-03-23 (+206d) | 89.94d → 135d |  | 4543FS+53.38d → 4543FS+67.5d |  |
| 4547 | EARTHING Works | 2027-04-22 → 2027-08-27 (+127d) | 2027-06-21 → 2027-10-25 (+126d) | 59.94d → 67.5d |  | 4543FS+13.38d → 4543FS+16.88d |  |
| 4548 | Advance lightening protection | 2027-02-19 → 2027-06-23 (+124d) | 2027-04-19 → 2027-08-21 (+124d) | 59.94d → 67.5d |  | Terrace finishing → 4492 |  |
| 4549 | Inverter | 2027-06-21 → 2027-10-26 (+127d) | 2027-07-26 → 2028-01-13 (+171d) | 34.94d → 39.38d |  |  |  |
| 4550 | Energy meter | 2027-05-08 → 2027-10-26 (+171d) | 2027-07-07 → 2028-02-07 (+215d) | 59.94d → 67.5d |  |  |  |
| 4551 | Exhast fan | 2027-04-29 → 2027-10-31 (+185d) | 2027-06-28 → 2028-02-12 (+229d) | 59.94d → 67.5d |  | 3567FF+4.5d → 4550FF+5.62d |  |
| 4552 | FTTH | 2027-06-12 → 2027-10-16 (+126d) | 2027-08-11 → 2028-01-28 (+170d) | 59.94d → 67.5d |  | 4547FS-9d → 4547FS-11.25d |  |
| 4553 | Security System - FA & PA | 2027-06-17 → 2027-10-21 (+126d) | 2027-08-11 → 2028-01-28 (+170d) | 54.94d → 61.88d |  |  |  |
| 4554 | Solar water heater | 2027-02-19 → 2028-01-29 (+344d) | 2027-04-19 → 2028-03-28 (+344d) | 59.94d → 67.5d |  | Terrace finishing → 4553 |  |
| 4556 | Terrace looping | 2027-01-10 → 2027-05-14 (+124d) | 2027-02-23 → 2027-06-27 (+124d) | 44.94d → 50.62d |  |  |  |
| 4557 | Shaft Plumbing | 2027-02-24 → 2027-06-28 (+124d) | 2027-06-23 → 2027-10-25 (+124d) | 119.94d → 135d |  |  |  |
| 4558 | CP sanitary fixture supply | 2027-06-22 → 2028-02-18 (+241d) | 2027-09-05 → 2028-05-03 (+241d) | 74.94d → 84.38d |  | Internal Plaster, 4482FS+53.38d → 4479, 4482FS+67.5d |  |
| 4559 | Cold & flushing water supply | 2027-04-19 → 2027-10-01 (+165d) | 2027-07-18 → 2028-02-12 (+209d) | 89.94d → 101.25d |  | Internal PlasterSS+380d → 4495SS+101.25d |  |
| 4560 | Misc work | 2027-07-09 → 2028-02-03 (+209d) | 2027-08-08 → 2028-03-03 (+208d) | 29.94d → 33.75d |  | 4559FS-9d → 4559FS-11.25d |  |
| 4561 | **Fire fighting work** | 2026-04-12 → 2027-05-14 (+397d) | 2027-08-10 → 2028-01-23 (+166d) | 439.88d → 236.25d |  |  | constraint start no earlier than 2026-04-12 → start no earlier than 2027-05-14 |
| 4562 | Fire hydrant work | 2026-04-12 → 2027-07-13 (+457d) | 2026-07-11 → 2027-09-10 (+426d) | 89.94d → 67.5d |  | Internal PlasterSS+53.38d → 4495SS+11.25d |  |
| 4563 | Sprinkler & piping work | 2027-05-12 → 2027-10-11 (+152d) | 2027-08-10 → 2028-01-23 (+166d) | 89.94d → 67.5d |  | 4562FS+260d → 4562FS+33.75d |  |
| 4564 | Shaft Downtake works | 2027-01-10 → 2027-05-14 (+124d) | 2027-04-09 → 2027-08-11 (+124d) | 89.94d → 101.25d |  |  |  |
| 4565 | Connection to pump room | 2027-04-10 → 2027-08-12 (+124d) | 2027-05-09 → 2027-09-10 (+124d) | 29.94d → 33.75d |  |  |  |
| 4566 | **Lift work** | 2027-01-09 → 2027-05-14 (+125d) | 2027-11-09 → 2027-10-30 (-10d) | 304.88d → 191.25d |  |  | constraint start no earlier than 2027-01-09 → start no earlier than 2027-05-14 |
| 4567 | Lift Shaft Handover | 2027-01-09 → 2027-05-14 (+125d) | 2027-02-17 → 2027-06-22 (+125d) | 39.94d → 45d |  | 4619 → 3889 |  |
| 4568 | Lift installation work | 2027-02-17 → 2027-06-23 (+126d) | 2027-08-16 → 2027-08-06 (-10d) | 180d → 50.62d |  |  |  |
| 4569 | Lift testing and commissioning | 2027-08-16 → 2027-08-07 (-9d) | 2027-11-09 → 2027-10-30 (-10d) | 84.94d → 95.62d |  |  |  |
| 4570 | **AC work** | 2028-10-23 → 2028-06-28 (-117d) | 2029-01-21 → 2028-10-06 (-107d) | 89.94d → 112.5d |  |  | constraint start no earlier than 2028-10-23 → start no earlier than 2028-06-28 |
| 4571 | Split AC | 2028-10-23 → 2028-06-28 (-117d) | 2029-01-21 → 2028-10-06 (-107d) | 89.94d → 112.5d |  | 4587FS+110d → 4587FS-33.75d |  |
| 4572 | **Tower Completion** | 2027-02-21 → 2023-11-28 (-1181d) | 2027-11-15 → 2028-03-01 (+107d) | 266.88d → 1603.12d | 0% → 69% |  | constraint start no earlier than 2027-02-21 → start no earlier than 2023-11-28 |
| 4573 | SURFACE PREPARATION | 2027-02-21 → 2027-05-14 (+82d) | 2027-05-12 → 2027-08-01 (+81d) | 79.94d → 90d |  | 3927FS+1.88d → 3927FS+2.25d |  |
| 4574 | External Painting | 2027-05-12 → 2027-08-02 (+82d) | 2027-08-20 → 2027-12-24 (+126d) | 99.94d → 112.5d |  |  |  |
| 4576 | Misc. work | 2027-08-20 → 2027-12-25 (+127d) | 2027-10-19 → 2028-02-22 (+126d) | 59.94d → 67.5d |  |  |  |
| 4578 | Basement lobby | 2025-12-03 → 2027-10-04 (+670d) | 2026-08-19 → 2028-01-17 (+516d) | 250d → 67.5d |  | 4645SS-130d → 4501 | was named Electric conduiting and wiring work |
| 4579 | **Post OC activities** | 2028-04-17 → 2028-06-28 (+72d) | 2029-04-11 → 2029-10-19 (+191d) | 359.12d → 538.25d |  |  | constraint start no earlier than 2028-04-17 → start no earlier than 2028-06-28 |
| 4580 | Wooden Flooring | 2028-06-09 → 2028-06-28 (+19d) | 2028-11-26 → 2028-12-25 (+29d) | 169.94d → 202.5d |  | 4587FS-26.75d → 4587FS-33.75d |  |
| 4584 | Modular Kitchen | 2028-10-23 → 2028-06-28 (-117d) | 2029-04-11 → 2028-12-25 (-107d) | 169.94d → 202.5d |  | 4587FS+110d → 4580SS |  |
| 4586 | OC Application/Readiness | 2028-05-12 → 2028-03-29 (-44d) | 2028-05-12 → 2028-03-30 (-43d) | 0d → 1.12d |  | 4619, 4496FS+7.12d, 4558, 4612, 4611, 3701, 3702, Entrance lobby, Final coat of painting, 4576, 4569, 4565, 4563, 4560, 4557, 4554, 4553, Exhast fan, 4550, 4549, 4548, 4546, 4545, 4540, 4499, 4489 → 4540FS+0.25d, 4545FS+0.25d, 4546FS+0.25d, 4548FS+0.25d, 4549FS+0.25d, 4550FS+0.25d, 4551FS+0.25d, 4553FS+0.25d, 4554FS+0.25d, 4557FS+0.25d, 4560FS+0.25d, 4563FS+0.25d, 4565FS+0.25d, 4569FS+0.25d, 4576FS+0.25d, 4575FS+0.25d, 4578FS+0.25d |  |
| 4587 | OC Receipt | 2028-07-05 → 2028-05-29 (-37d) | 2028-07-05 → 2028-07-28 (+23d) | 0.94d → 67.5d |  | 4586FS+53.38d → 4586FS+67.5d |  |
| 4588 | Offer To Possession | 2029-04-11 → 2029-10-19 (+191d) | 2029-05-11 → 2029-10-30 (+172d) | 29.94d → 12.38d |  | Wardrobe installation, CP & SANITARYWARE, 4580, Electrical Fixtures And Fittings, 4584, External Elevation Façade, 4571 → 4660FF-33.75d, 4580, 4581, 4582, 4583, 4584, 4585, 4571 |  |
| 4589 | **External Infrastructure** | 2026-10-17 → 2027-04-04 (+169d) | 2029-02-02 → 2028-10-25 (-100d) | 794.88d → 591.75d |  |  | constraint start no earlier than 2026-10-17 → start no earlier than 2027-04-04 |

| ID | Task | Start | Finish | Duration | Complete | Predecessors | Other |
| --- | --- | --- | --- | --- | --- | --- | --- |
| 4590 | **External Firefightning Work** | 2027-02-01 → 2027-04-24 (+82d) | 2028-02-01 → 2028-01-03 (-29d) | 365d → 236.25d |  |  | constraint start no earlier than 2027-02-01 → start no earlier than 2027-04-24 |
| 4591 | Excavation, Pipe Laying, Hyderent errection , Fitting , Testing & Commissioning | 2027-08-20 → 2027-04-24 (-118d) | 2028-03-31 → 2028-01-03 (-88d) | 225d → 236.25d |  | Club Finishing → 4598FF | was named Club Finishing |
| 4592 | **External Plumbing** | 2026-10-17 → 2027-04-04 (+169d) | 2028-02-10 → 2028-01-13 (-28d) | 436.81d → 270d |  |  | constraint start no earlier than 2026-10-17 → start no earlier than 2027-04-04 |
| 4593 | **External Plumbing - Sewer** | 2026-10-17 → 2027-04-04 (+169d) | 2027-06-29 → 2027-10-30 (+123d) | 209.94d → 236.25d |  |  | constraint start no earlier than 2026-10-17 → start no earlier than 2027-04-04 |
| 4594 | Excavation, Pipe Laying, Filling , Testing & Commissioning | 2026-10-17 → 2027-04-04 (+169d) | 2027-06-29 → 2027-10-30 (+123d) | 209.94d → 236.25d |  | 3889 → 3884 |  |
| 4595 | **External Plumbing - Watersupply** | 2027-07-16 → 2027-05-04 (-73d) | 2028-02-10 → 2028-01-13 (-28d) | 209.94d → 236.25d |  |  | constraint start no earlier than 2027-07-16 → start no earlier than 2027-05-04 |
| 4596 | Excavation, Pipe Laying, Filling , Testing & Commissioning | 2027-07-16 → 2027-05-04 (-73d) | 2028-02-10 → 2028-01-13 (-28d) | 209.94d → 236.25d |  | Excavation, Pipe Laying, Hydrant errection , Fitting , Testing & CommissioningFF+9d → 4591FF+11.25d |  |
| 4597 | **External Plumbing - Storm Water** | 2026-12-19 → 2027-04-24 (+126d) | 2027-07-16 → 2028-01-03 (+171d) | 209.94d → 236.25d |  |  | constraint start no earlier than 2026-12-19 → start no earlier than 2027-04-24 |
| 4598 | Excavation, PCC, BBM , IPS, Cover fixing, Curing | 2026-12-19 → 2027-04-24 (+126d) | 2027-07-16 → 2028-01-03 (+171d) | 209.94d → 236.25d |  | 4594SS+17.88d → 4594SS+22.5d |  |
| 4599 | **Rain water Harvesting work** | 2026-12-19 → 2027-04-24 (+126d) | 2027-07-16 → 2028-01-03 (+171d) | 209.94d → 236.25d |  |  | constraint start no earlier than 2026-12-19 → start no earlier than 2027-04-24 |
| 4600 | Rain water Harvesting work | 2026-12-19 → 2027-04-24 (+126d) | 2027-07-16 → 2028-01-03 (+171d) | 209.94d → 236.25d |  |  |  |
| 4601 | **External Electrical Work** | 2027-06-25 → 2027-05-04 (-52d) | 2028-08-07 → 2028-10-25 (+79d) | 409.81d → 558d |  |  | constraint start no earlier than 2027-06-25 → start no earlier than 2027-05-04 |
| 4602 | HV INSTALLATION | 2027-06-25 → 2027-05-04 (-52d) | 2027-11-22 → 2027-08-01 (-113d) | 150d → 101.25d |  | 3889FS+206d → 3884FS+33.75d |  |
| 4603 | HT CABLES & LT CONTROL CABLES | 2027-11-22 → 2027-08-02 (-112d) | 2028-02-20 → 2028-01-13 (-38d) | 89.94d → 135d |  |  |  |
| 4604 | Street Light Fixing | 2027-12-01 → 2027-10-16 (-46d) | 2028-01-07 → 2028-06-26 (+171d) | 37.44d → 236.25d |  | 4603SS+9d → 4603SS+84.38d, 929, 1846, 2763 |  |
| 4605 | External Road | 2028-05-09 → 2028-07-27 (+79d) | 2028-08-06 → 2028-10-24 (+79d) | 89.94d → 101.25d |  | 4608FF, 12, 929, 1846 → 4608FF, 12 |  |
| 4606 | Completion of External Infrastructure | 2028-08-07 → 2028-10-25 (+79d) | 2028-08-07 → 2028-10-25 (+79d) | 0.94d → 1.12d |  | Soft Scape Work, 4605, 4596, 4600 → 4607, 4605, 4596, 4600 |  |
| 4607 | Soft Scape Work | 2027-04-02 → 2028-02-08 (+312d) | 2027-10-18 → 2028-09-24 (+342d) | 200d → 258.75d |  | none → 4604FF+101.25d | constraint start no earlier than 2027-04-02 → none |
| 4608 | Hard Scape Work | 2026-12-26 → 2028-02-13 (+414d) | 2028-08-06 → 2028-10-24 (+79d) | 590d → 286.88d |  | ConcretingFS+26.75d → 4607FF+33.75d | constraint start no earlier than 2026-12-26 → none |
| 4609 | **NTA works** | 2024-06-01 → 2024-12-26 (+208d) | 2028-05-05 → 2028-07-10 (+66d) | 1337.28d → 1307.25d | 37% → 15% |  | constraint start no earlier than 2024-06-01 → start no earlier than 2024-12-26 |
| 4610 | Excavation | 2024-06-01 → 2024-12-26 (+208d) | 2026-02-23 → 2025-12-30 (-55d) | 139.94d → 101.06d | 50% → 95% | none → 3677FS-108d | constraint start no earlier than 2024-06-01 → start no earlier than 2024-12-26 |
| 4611 | Backfilling | 2025-12-29 → 2025-12-27 (-2d) | 2026-02-27 → 2026-01-04 (-54d) | 59.94d → 10.12d |  | 3709, 3680 → 4624SS-67.5d |  |
| 4612 | Boundary Wall | 2026-02-20 → 2026-01-05 (-46d) | 2026-09-18 → 2026-01-11 (-250d) | 210d → 7.88d |  | BackfillingFS-30d → 4611 |  |
| 4613 | **RCC Works - Nontower area** | 2024-07-01 → 2025-01-25 (+208d) | 2027-08-25 → 2028-01-02 (+130d) | 1053.42d → 1059.75d | 68% → 14% |  | constraint start no earlier than 2024-07-01 → start no earlier than 2025-01-25 |
| 4614 | **NTA Raft/Footing** | 2024-07-01 → 2025-01-25 (+208d) | 2026-10-02 → 2026-08-13 (-50d) | 771.51d → 590.62d | 96% → 41% |  | constraint start no earlier than 2024-07-01 → start no earlier than 2025-01-25 |
| 4615 | Anti Termite | 2025-11-30 → 2026-07-30 (+242d) | 2025-12-24 → 2026-08-13 (+232d) | 14.94d → 16.88d |  | 4610FS-510.56d → 4619SS+500.62d |  |
| 4616 | PCC | 2024-07-01 → 2025-01-25 (+208d) | 2026-09-12 → 2026-01-23 (-232d) | 589.06d → 111.94d | 94% → 73% | 4610FS-602.26d → 4610FF+22.5d, 1851FS-22.5d | constraint start no earlier than 2024-07-01 → none |
| 4617 | Reinforcement | 2024-08-06 → 2025-03-21 (+227d) | 2026-09-30 → 2026-03-13 (-201d) | 693.06d → 135d | 98% → 36% | 4616SS+25d → 4616SS+61.88d | constraint start no earlier than 2024-08-06 → start no earlier than 2025-03-21 |
| 4618 | Shuttering | 2024-08-23 → 2025-03-31 (+220d) | 2026-10-02 → 2026-03-24 (-192d) | 685.85d → 135d | 96% → 31% | 4617SS+44.6d → 4617FF+11.25d | constraint start no earlier than 2024-08-23 → none |
| 4619 | Concreting | 2027-01-06 → 2025-03-31 (-646d) | 2027-01-08 → 2026-03-26 (-288d) | 2.94d → 99d | 0% → 30% | 3888 → 4618FF+2.25d |  |
| 4620 | **Retaining wall** | 2025-02-01 → 2025-03-14 (+41d) | 2026-09-20 → 2026-07-24 (-58d) | 575.06d → 514.12d | 51% → 14% |  | constraint start no earlier than 2025-02-01 → start no earlier than 2025-03-14 |
| 4621 | Reinforcement | 2025-02-01 → 2025-03-14 (+41d) | 2026-08-06 → 2026-05-24 (-74d) | 413.06d → 236.25d | 64% → 29% | 4616SS+30d → 4616SS+60d | constraint must start on 2025-07-22 → start no earlier than 2025-03-14 |
| 4622 | Shuttering | 2025-03-03 → 2025-09-11 (+192d) | 2026-06-11 → 2026-06-27 (+16d) | 363.06d → 236.25d | 66% → 14% | 4621SS+20d → 4621SS+5.62d | constraint must start on 2025-07-14 → start no earlier than 2025-09-11 |
| 4623 | Concreting | 2024-09-17 → 2025-09-12 (+360d) | 2026-04-04 → 2026-06-30 (+87d) | 501.88d → 236.25d | 96% → 13% | 4618SS+25d, 4623FS-511.84d → 4622FF+3.38d | constraint start no earlier than 2024-09-17 → none |
| 4624 | Retaining wall waterproofing | 2025-12-16 → 2025-12-27 (+11d) | 2026-09-20 → 2026-07-24 (-58d) | 278.94d → 236.25d | 1% → 0% | 4628SS+9d → 4623SS+7.88d | constraint start no earlier than 2025-12-16 → must start on 2025-10-03 |
| 4625 | **NTA Basement B2 slab** | 2024-09-30 → 2025-03-11 (+162d) | 2026-10-16 → 2026-08-01 (-76d) | 694.55d → 526.5d | 91% → 26% |  | constraint start no earlier than 2024-09-30 → start no earlier than 2025-03-11 |
| 4626 | Reinforcement | 2025-02-13 → 2025-03-11 (+26d) | 2026-04-03 → 2026-06-26 (+84d) | 251.06d → 303.75d | 100% → 32% | none → 4623SS-181.12d | constraint start no earlier than 2025-02-13 → must start on 2025-10-01 |
| 4627 | Shuttering | 2024-09-30 → 2025-09-16 (+351d) | 2026-07-23 → 2026-07-27 (+4d) | 391.06d → 303.75d | 100% → 21% | none → 4626FF-3.38d | constraint start no earlier than 2024-09-30 → must start on 2025-10-06 |
| 4628 | Concreting | 2025-03-10 → 2025-09-03 (+177d) | 2026-04-22 → 2026-08-01 (+101d) | 321.94d → 303.75d | 60% → 25% | 4616SS+20d, 4622SS+5d → 4627FF+5.62d | constraint start no earlier than 2025-03-10 → must start on 2025-10-03 |
| 4629 | **NTA Basement B1 slab** | 2025-07-01 → 2027-01-01 (+549d) | 2027-01-04 → 2027-07-14 (+191d) | 485.97d → 219.38d | 36% → 0% |  | constraint start no earlier than 2025-07-01 → start no earlier than 2027-01-01 |
| 4630 | Reinforcement | 2024-10-02 → 2027-01-04 (+824d) | 2026-06-12 → 2027-07-12 (+395d) | 77.25d → 213.75d | 70% → 0% | 4623SS-37.1d, 4628SS-474.38d, 4626 → 4628FF+337.5d |  |
| 4631 | Shuttering | 2026-07-23 → 2027-01-01 (+162d) | 2026-09-17 → 2027-07-09 (+295d) | 55.94d → 213.75d | 60% → 0% | 4626FF+26.75d, 4627 → 4630FF-3.38d |  |
| 4632 | Concreting | 2024-10-16 → 2027-01-06 (+812d) | 2026-09-04 → 2027-07-14 (+313d) | 101.4d → 213.75d | 100% → 0% | none → 4631FF+5.62d | constraint start no earlier than 2024-10-16 → none |
| 4633 | **NTA Podium slab** | 2025-06-18 → 2027-02-17 (+609d) | 2027-08-25 → 2028-01-02 (+130d) | 731.8d → 309.38d | 7% → 0% |  | constraint start no earlier than 2025-06-18 → start no earlier than 2027-02-17 |
| 4634 | Reinforcement | 2026-07-06 → 2027-02-20 (+229d) | 2026-07-11 → 2027-12-31 (+538d) | 5.2d → 303.75d | 100% → 0% | none → 4632SS+50.62d | constraint start no earlier than 2026-07-06 → none |
| 4635 | Shuttering | 2026-01-23 → 2027-02-17 (+390d) | 2026-12-24 → 2027-12-28 (+369d) | 210.94d → 303.75d | 40% → 0% | ReinforcementFF-1.88d → 4634FF-3.38d |  |
| 4636 | Concreting | 2025-07-15 → 2027-02-22 (+587d) | 2026-09-13 → 2028-01-02 (+476d) | 77.94d → 303.75d | 88% → 0% | 4632 → 4612FS+0.25d, 4635FF+5.62d, 221FF |  |
| 4637 | **Basement and Podium Block work and Plaster finishing** | 2025-11-30 → 2026-04-07 (+128d) | 2027-09-20 → 2027-06-25 (-87d) | 605.03d → 450d |  |  | constraint start no earlier than 2025-11-30 → start no earlier than 2026-04-07 |
| 4638 | Brick work/plaster | 2026-01-11 → 2026-04-07 (+86d) | 2026-04-21 → 2026-07-15 (+85d) | 100d → 112.5d |  | ConcretingSS+5.43d → 4632SS+33.75d | constraint none → must start on 2026-04-07 |
| 4639 | Finishing work-White Goods | 2027-07-22 → 2026-07-16 (-371d) | 2027-09-20 → 2026-09-13 (-372d) | 60d → 67.5d |  | 4640 → 4638 |  |
| 4640 | Painting (1st Coat) | 2027-05-23 → 2026-07-16 (-311d) | 2027-07-22 → 2026-09-13 (-312d) | 60d → 67.5d |  | 4641, Concreting → 4638 |  |
| 4641 | Vacuum Dewatered Flooring | 2025-11-30 → 2026-10-14 (+318d) | 2027-04-18 → 2027-06-25 (+68d) | 450d → 236.25d |  | ConcretingFS+26.75d → 4638FF+337.5d | constraint must start on 2025-07-01 → none |
| 4644 | Plumbing | 2026-01-21 → 2027-02-16 (+391d) | 2026-04-21 → 2027-09-13 (+510d) | 90d → 236.25d |  | 4638SS+10d → 4638SS+303.75d |  |
| 4645 | Fire fighting | 2026-04-21 → 2027-02-16 (+301d) | 2027-06-05 → 2027-09-13 (+100d) | 365d → 236.25d |  | 4638 → 4638SS+303.75d |  |
| 4646 | Ventilation | 2027-09-20 → 2027-02-16 (-216d) | 2027-12-19 → 2027-08-14 (-127d) | 90d → 202.5d |  | 4640SS+120d → 4638SS+303.75d |  |
| 4649 | Stack parking (no of car parks) | 2027-05-31 → 2028-03-12 (+286d) | 2028-01-26 → 2028-07-09 (+165d) | 240d → 135d |  | 4578FS+240d → 4647FS+50.62d |  |
| 4650 | Completion of NTA | 2028-01-26 → 2028-07-10 (+166d) | 2028-01-27 → 2028-07-10 (+165d) | 1d → 1.12d |  | 4639, 4430, 4644, 4646, Security system FA-PA, 4649 → 4639, 4643, 4644, 4646, 4648, 4649 |  |
| 4659 | **OC of Whole Project** | 2025-12-16 → 2028-06-06 (+903d) | 2029-06-09 → 2029-03-04 (-97d) | 1226.31d → 305.12d |  |  | constraint start no earlier than 2025-12-16 → start no earlier than 2028-06-06 |
| 4661 | Possession | 2029-03-11 → 2028-06-06 (-278d) | 2029-06-09 → 2028-06-17 (-357d) | 90d → 13.5d |  | OC RecieptFS+160d → none | constraint none → start no earlier than 2028-06-06 |
| 4662 | Escalation | 2025-11-30 → 2025-12-27 (+27d) | 2026-01-30 → 2026-01-05 (-25d) | 51.94d → 11.25d |  |  | constraint start no earlier than 2025-11-30 → start no earlier than 2025-12-27 |
| 4663 | Additional Pile | 2024-09-03 → 2024-11-22 (+80d) | 2026-01-28 → 2025-04-07 (-296d) | 99.81d → 146.62d | 49% → 100% | 4662SS-409.88d → none | constraint none → start no earlier than 2024-11-22 |
| 4668 | **Milestones** | 2025-12-01 → 2025-04-28 (-217d) | 2025-12-01 → 2029-10-30 (+1429d) | 1d → 1411.81d | 0% → 23% |  | constraint start no earlier than 2025-12-01 → start no earlier than 2025-04-28 |
| 4669 | On Completion of Tower Raft for Tower 1 | 2025-12-01 → 2025-05-16 (-199d) | 2025-12-01 → 2025-05-17 (-198d) | 1d → 2d | 0% → 100% | 17 → 3685FF | constraint none → start no earlier than 2025-05-16 |
| 4670 | On Completion of Tower Raft for Tower 2 | 2025-12-01 → 2025-06-07 (-177d) | 2025-12-01 → 2025-06-08 (-176d) |  | 0% → 100% | none → 2768FF | constraint start no earlier than 2025-12-01 → start no earlier than 2025-06-07 |
| 4671 | On Completion of Tower Raft for Tower 3 | 2025-12-01 → 2025-04-28 (-217d) | 2025-12-01 → 2025-04-29 (-216d) | 1d → 2d | 0% → 100% | none → 1851FF | constraint start no earlier than 2025-12-01 → start no earlier than 2025-04-28 |
| 4672 | On Completion of Tower Raft for Tower 4 | 2025-12-01 → 2025-05-22 (-193d) | 2025-12-01 → 2025-05-24 (-191d) | 1d → 3d | 0% → 100% | none → 934FF | constraint start no earlier than 2025-12-01 → start no earlier than 2025-05-22 |
| 4673 | On Completion of Tower Raft for Tower 5 | 2025-12-01 → 2025-06-14 (-170d) | 2025-12-01 → 2025-06-15 (-169d) |  | 0% → 100% | none → 17FF | constraint start no earlier than 2025-12-01 → start no earlier than 2025-06-14 |
| 4674 | On Completion of Ground Floor for Tower 1 | 2025-12-01 → 2025-08-25 (-98d) | 2025-12-01 → 2025-08-25 (-98d) |  | 0% → 100% | none → 3693FF | constraint start no earlier than 2025-12-01 → start no earlier than 2025-08-25 |
| 4675 | On Completion of Ground Floor for Tower 2 | 2025-12-01 → 2025-09-08 (-84d) | 2025-12-01 → 2025-09-08 (-84d) |  | 0% → 100% | none → 2776FF | constraint start no earlier than 2025-12-01 → start no earlier than 2025-09-08 |
| 4676 | On Completion of Ground Floor for Tower 3 | 2025-12-01 → 2025-08-18 (-105d) | 2025-12-01 → 2025-08-18 (-105d) |  | 0% → 100% | none → 1859FF | constraint start no earlier than 2025-12-01 → start no earlier than 2025-08-18 |

| ID | Task | Start | Finish | Complete | Predecessors | Other |
| --- | --- | --- | --- | --- | --- | --- |
| 4677 | On Completion of Ground Floor for Tower 4 | 2025-12-01 → 2025-09-04 (-88d) | 2025-12-01 → 2025-09-04 (-88d) | 0% → 100% | none → 942FF | constraint start no earlier than 2025-12-01 → start no earlier than 2025-09-04 |
| 4678 | On Completion of Ground Floor for Tower 5 | 2025-12-01 → 2025-09-10 (-82d) | 2025-12-01 → 2025-09-10 (-82d) | 0% → 100% | none → 25FF-1d | constraint start no earlier than 2025-12-01 → start no earlier than 2025-09-10 |
| 4679 | On Completion of 10th Floor Slab for Tower 1 | 2025-12-01 → 2026-05-01 (+151d) | 2025-12-01 → 2026-05-01 (+151d) |  | none → 3754FF | constraint start no earlier than 2025-12-01 → none |
| 4680 | On Completion of 10th Floor Slab for Tower 2 | 2025-12-01 → 2026-05-16 (+166d) | 2025-12-01 → 2026-05-18 (+168d) |  | none → 2837FF+0.95d | constraint start no earlier than 2025-12-01 → none |
| 4681 | On Completion of 10th Floor Slab for Tower 3 | 2025-12-01 → 2026-05-04 (+154d) | 2025-12-01 → 2026-05-04 (+154d) |  | none → 1920FF+1d | constraint start no earlier than 2025-12-01 → none |
| 4682 | On Completion of 10th Floor Slab for Tower 4 | 2025-12-01 → 2026-05-16 (+166d) | 2025-12-01 → 2026-05-16 (+166d) |  | none → 1003FF | constraint start no earlier than 2025-12-01 → none |
| 4683 | On Completion of 10th Floor Slab for Tower 5 | 2025-12-01 → 2026-05-16 (+166d) | 2025-12-01 → 2026-05-18 (+168d) |  | none → 86FF | constraint start no earlier than 2025-12-01 → none |
| 4684 | On Completion of 15th Floor slab for Tower 1 | 2025-12-01 → 2026-06-20 (+201d) | 2025-12-01 → 2026-06-20 (+201d) |  | none → 3779FF | constraint start no earlier than 2025-12-01 → none |
| 4685 | On Completion of 15th Floor slab for Tower 2 | 2025-12-01 → 2026-07-06 (+217d) | 2025-12-01 → 2026-07-06 (+217d) |  | none → 2862FF | constraint start no earlier than 2025-12-01 → none |
| 4686 | On Completion of 15th Floor slab for Tower 3 | 2025-12-01 → 2026-06-22 (+203d) | 2025-12-01 → 2026-06-22 (+203d) |  | none → 1945FF | constraint start no earlier than 2025-12-01 → none |
| 4687 | On Completion of 15th Floor slab for Tower 4 | 2025-12-01 → 2026-07-04 (+215d) | 2025-12-01 → 2026-07-06 (+217d) |  | none → 1028FF+0.95d | constraint start no earlier than 2025-12-01 → none |
| 4688 | On Completion of 15th Floor slab for Tower 5 | 2025-12-01 → 2026-07-06 (+217d) | 2025-12-01 → 2026-07-07 (+218d) |  | none → 111FF | constraint start no earlier than 2025-12-01 → none |
| 4689 | On Completion of 20th Floor slab for Tower 1 | 2025-12-01 → 2026-08-10 (+252d) | 2025-12-01 → 2026-08-10 (+252d) |  | none → 3804FF | constraint start no earlier than 2025-12-01 → none |
| 4690 | On Completion of 20th Floor slab for Tower 2 | 2025-12-01 → 2026-08-26 (+268d) | 2025-12-01 → 2026-08-26 (+268d) |  | none → 2887FF | constraint start no earlier than 2025-12-01 → none |
| 4691 | On Completion of 20th Floor slab for Tower 3 | 2025-12-01 → 2026-08-12 (+254d) | 2025-12-01 → 2026-08-12 (+254d) |  | none → 1970FF | constraint start no earlier than 2025-12-01 → none |
| 4692 | On Completion of 20th Floor slab for Tower 4 | 2025-12-01 → 2026-08-25 (+267d) | 2025-12-01 → 2026-08-25 (+267d) |  | none → 1053FF | constraint start no earlier than 2025-12-01 → none |
| 4693 | On Completion of 20th Floor slab for Tower 5 | 2025-12-01 → 2026-08-26 (+268d) | 2025-12-01 → 2026-08-27 (+269d) |  | none → 136FF | constraint start no earlier than 2025-12-01 → none |
| 4694 | On Completion of 25th Floor Slab for Tower 1 | 2025-12-01 → 2026-10-08 (+311d) | 2025-12-01 → 2026-10-08 (+311d) |  | none → 3829FF | constraint start no earlier than 2025-12-01 → none |
| 4695 | On Completion of 25th Floor Slab for Tower 2 | 2025-12-01 → 2026-10-24 (+327d) | 2025-12-01 → 2026-10-24 (+327d) |  | none → 2912FF | constraint start no earlier than 2025-12-01 → none |
| 4696 | On Completion of 25th Floor Slab for Tower 3 | 2025-12-01 → 2026-10-10 (+313d) | 2025-12-01 → 2026-10-10 (+313d) |  | none → 1995FF | constraint start no earlier than 2025-12-01 → none |
| 4697 | On Completion of 25th Floor Slab for Tower 4 | 2025-12-01 → 2026-10-23 (+326d) | 2025-12-01 → 2026-10-23 (+326d) |  | none → 1078FF | constraint start no earlier than 2025-12-01 → none |
| 4698 | On Completion of 25th Floor Slab for Tower 5 | 2025-12-01 → 2026-10-24 (+327d) | 2025-12-01 → 2026-10-26 (+329d) |  | none → 161FF+0.84d | constraint start no earlier than 2025-12-01 → none |
| 4699 | On Completion of Terrace Slab for Tower 1 | 2025-12-01 → 2027-04-03 (+488d) | 2025-12-01 → 2027-04-03 (+488d) |  | none → 3884FF | constraint start no earlier than 2025-12-01 → none |
| 4700 | On Completion of Terrace Slab for Tower 2 | 2025-12-01 → 2027-04-19 (+504d) | 2025-12-01 → 2027-04-19 (+504d) |  | none → 2967FF | constraint start no earlier than 2025-12-01 → none |
| 4701 | On Completion of Terrace Slab for Tower 3 | 2025-12-01 → 2027-04-05 (+490d) | 2025-12-01 → 2027-04-05 (+490d) |  | none → 2050FF | constraint start no earlier than 2025-12-01 → none |
| 4702 | On Completion of Terrace Slab for Tower 4 | 2025-12-01 → 2027-04-17 (+502d) | 2025-12-01 → 2027-04-19 (+504d) |  | none → 1133FF+0.95d | constraint start no earlier than 2025-12-01 → none |
| 4703 | On Completion of Terrace Slab for Tower 5 | 2025-12-01 → 2027-04-19 (+504d) | 2025-12-01 → 2027-04-20 (+505d) |  | none → 216FF | constraint start no earlier than 2025-12-01 → none |
| 4704 | On Completion of Unit Internal plaster for Tower 1 | 2025-12-01 → 2027-07-31 (+607d) | 2025-12-01 → 2027-07-31 (+607d) |  | none → 4479FF | constraint start no earlier than 2025-12-01 → none |
| 4705 | On Completion of Unit Internal plaster for Tower 2 | 2025-12-01 → 2027-08-17 (+624d) | 2025-12-01 → 2027-08-17 (+624d) |  | none → 3562FF | constraint start no earlier than 2025-12-01 → none |
| 4706 | On Completion of Unit Internal plaster for Tower 3 | 2025-12-01 → 2027-08-03 (+610d) | 2025-12-01 → 2027-08-03 (+610d) |  | none → 2645FF | constraint start no earlier than 2025-12-01 → none |
| 4707 | On Completion of Unit Internal plaster for Tower 4 | 2025-12-01 → 2027-08-16 (+623d) | 2025-12-01 → 2027-08-16 (+623d) |  | none → 1728FF | constraint start no earlier than 2025-12-01 → none |
| 4708 | On Completion of Unit Internal plaster for Tower 5 | 2025-12-01 → 2027-08-17 (+624d) | 2025-12-01 → 2027-08-18 (+625d) |  | none → 811FF | constraint start no earlier than 2025-12-01 → none |
| 4709 | On Completion of unit Flooring for Tower 1 | 2025-12-01 → 2028-05-19 (+900d) | 2025-12-01 → 2028-05-20 (+901d) |  | none → 4483FF | constraint start no earlier than 2025-12-01 → none |
| 4710 | On Completion of unit Flooring for Tower 2 | 2025-12-01 → 2028-06-22 (+934d) | 2025-12-01 → 2028-06-23 (+935d) |  | none → 3566FF | constraint start no earlier than 2025-12-01 → none |
| 4711 | On Completion of unit Flooring for Tower 3 | 2025-12-01 → 2028-05-18 (+899d) | 2025-12-01 → 2028-05-19 (+900d) |  | none → 2649FF | constraint start no earlier than 2025-12-01 → none |
| 4712 | On Completion of unit Flooring for Tower 4 | 2025-12-01 → 2028-05-30 (+911d) | 2025-12-01 → 2028-05-31 (+912d) |  | none → 1732FF | constraint start no earlier than 2025-12-01 → none |
| 4713 | On Completion of unit Flooring for Tower 5 | 2025-12-01 → 2028-06-26 (+938d) | 2025-12-01 → 2028-06-27 (+939d) |  | none → 815FF | constraint start no earlier than 2025-12-01 → none |
| 4714 | On Application of Occupancy Certificate for Tower 1 | 2025-12-01 → 2028-03-29 (+849d) | 2025-12-01 → 2028-03-30 (+850d) |  | none → 4586FF | constraint start no earlier than 2025-12-01 → none |
| 4715 | On Application of Occupancy Certificate for Tower 2 | 2025-12-01 → 2028-03-29 (+849d) | 2025-12-01 → 2028-03-29 (+849d) |  | none → 3669FF | constraint start no earlier than 2025-12-01 → none |
| 4716 | On Application of Occupancy Certificate for Tower 3 | 2025-12-01 → 2028-03-29 (+849d) | 2025-12-01 → 2028-03-30 (+850d) |  | none → 2752FF | constraint start no earlier than 2025-12-01 → none |
| 4717 | On Application of Occupancy Certificate for Tower 4 | 2025-12-01 → 2028-03-25 (+845d) | 2025-12-01 → 2028-03-27 (+847d) |  | none → 1835FF | constraint start no earlier than 2025-12-01 → none |
| 4718 | On Application of Occupancy Certificate for Tower 5 | 2025-12-01 → 2028-03-30 (+850d) | 2025-12-01 → 2028-03-31 (+851d) |  | none → 918FF | constraint start no earlier than 2025-12-01 → none |
| 4719 | On Offer of Possession for Tower 1 | 2025-12-01 → 2029-10-29 (+1428d) | 2025-12-01 → 2029-10-30 (+1429d) |  | none → 4588FF | constraint start no earlier than 2025-12-01 → none |
| 4720 | On Offer of Possession for Tower 2 | 2025-12-01 → 2028-04-29 (+880d) | 2025-12-01 → 2028-05-01 (+882d) |  | none → 3671FF | constraint start no earlier than 2025-12-01 → none |
| 4721 | On Offer of Possession for Tower 3 | 2025-12-01 → 2028-12-12 (+1107d) | 2025-12-01 → 2028-12-13 (+1108d) |  | none → 2754FF | constraint start no earlier than 2025-12-01 → none |
| 4722 | On Offer of Possession for Tower 4 | 2025-12-01 → 2028-12-29 (+1124d) | 2025-12-01 → 2028-12-30 (+1125d) |  | none → 1837FF | constraint start no earlier than 2025-12-01 → none |
| 4723 | On Offer of Possession for Tower 5 | 2025-12-01 → 2029-01-01 (+1127d) | 2025-12-01 → 2029-01-02 (+1128d) |  | none → 920FF | constraint start no earlier than 2025-12-01 → none |
