How a schedule from MS Project XML changed from version to version. A marks actual dates.

## Version 1 (saved 2025-12-11, file Tropical Isle 146.xml)

Note of the change: Integrate Sprint enrichment into main ETL pipeline

| ID | WBS | Task | Duration | Start | Finish | Predecessors | Complete | Constraint |
| --- | --- | --- | --- | --- | --- | --- | --- | --- |
| 1 | 37200 | **Tropical Isle 146** | 1773.65ed | 2023-09-29 | 2028-08-07 |  | 6% | start no earlier than 2023-09-29 |
| 2 | 37200.37300 | **Tropical Isle 146** | 1607.56d | 2023-09-29 | 2028-08-07 |  | 6% | start no earlier than 2023-09-29 |
| 3 | 37200.37300.37500 | **Phase-1** | 1485.31d | 2023-09-29 | 2028-04-06 |  | 6% | start no earlier than 2023-09-29 |
| 4 | 37200.37300.37500.37900 | **Tower 5** | 1410.69d | 2023-09-29 | 2028-01-23 |  | 3% | start no earlier than 2023-09-29 |
| 5 | 37200.37300.37500.37900.99900 | **Substructure** | 678.69d | 2023-09-29 | 2025-10-23 |  | 57% | start no earlier than 2023-09-29 |
| 6 | 37200.37300.37500.37900.99900.108500 | **Soil Bed Preparation** | 533.44d | 2023-09-29 | 2025-05-30 |  | 78% | start no earlier than 2023-09-29 |
| 7 |  | Test Piling | 24.94d | 2023-09-29 | 2023-10-24 |  | 100% | start no earlier than 2023-09-29 |
| 8 |  | Excavation | 29.94d | 2024-01-10 | 2024-02-08 | 7SS+15.74d | 100% | start no earlier than 2024-01-10 |
| 9 |  | Main Piling Work | 169.94d | 2024-04-12 | 2025-01-13 | 7FS-12.45d | 100% | start no earlier than 2024-04-12 |
| 10 |  | Anti-termite | 4.94d | 2025-04-01 | 2025-04-05 | 9FF+1.88d |  |  |
| 11 |  | PCC | 13.86d | 2024-10-15 | 2024-10-28 | 8FS-14.7d, 10SS+10.93d | 100% | start no earlier than 2024-10-15 |
| 12 |  | Backfilling | 59.94d | 2025-04-01 | 2025-05-30 | 26FS-4.38d, 17FS-1d, 21FS-2d |  |  |
| 13 | 37200.37300.37500.37900.99900.103100 | **RCC Structure** | 111d | 2024-12-17 | 2025-04-06 |  | 97% | start no earlier than 2024-12-17 |
| 14 | 37200.37300.37500.37900.99900.103100.130700 | **Raft Foundation** | 31d | 2024-12-17 | 2025-01-16 |  | 100% | start no earlier than 2024-12-17 |
| 15 |  | Reinforcement | 26d | 2024-12-17 | 2025-01-11 | 11FS-7.91d | 100% | must finish on 2025-01-13 |
| 16 |  | Formwork | 14d | 2024-12-31 | 2025-01-13 | 15FF-2d | 100% | start no earlier than 2024-12-31 |
| 17 |  | Concreting | 4d | 2025-01-13 | 2025-01-16 | 16FS-1d | 100% | start no earlier than 2025-01-13 |
| 18 | 37200.37300.37500.37900.99900.103100.130800 | **Basement 1 Slab** | 27d | 2025-01-16 | 2025-02-11 |  | 100% | start no earlier than 2025-01-16 |
| 19 |  | Reinforcement | 22d | 2025-01-16 | 2025-02-06 | 17FS-1d | 100% | start no earlier than 2025-01-16 |
| 20 |  | Formwork | 22d | 2025-01-19 | 2025-02-09 | 19SS+3d | 100% | start no earlier than 2025-01-19 |
| 21 |  | Concreting | 2d | 2025-02-09 | 2025-02-11 | 20FS-1d | 100% | start no earlier than 2025-02-09 |
| 22 | 37200.37300.37500.37900.99900.103100.130900 | **Basement 2 Slab/GF** | 24.38d | 2025-02-10 | 2025-03-06 |  | 100% | start no earlier than 2025-02-10 |
| 23 |  | Reinforcement | 18d | 2025-02-10 | 2025-03-01 | 21FS-2d | 100% | start no earlier than 2025-02-10 |
| 24 |  | Formwork | 13d | 2025-02-13 | 2025-03-01 | 23SS+3d | 100% | start no earlier than 2025-02-13 |
| 25 |  | Concreting | 3.5d | 2025-02-25 | 2025-03-05 | 24 | 100% | start no earlier than 2025-02-25 |
| 26 |  | Concreting | 3.5d | 2025-02-27 | 2025-03-06 | 25 | 100% |  |
| 27 | 37200.37300.37500.37900.99900.103100.187200 | **Podium /Ground Floor Slab** | 28d | 2025-03-10 | 2025-04-06 |  | 90% | start no earlier than 2025-03-10 |
| 28 |  | Reinforcement | 20d | 2025-03-10 | 2025-04-05 | 26FS+2.38d | 85% | start no earlier than 2025-03-10 |
| 29 |  | Formwork | 22d | 2025-03-10 | 2025-04-06 | 28FF | 100% | start no earlier than 2025-03-10 |
| 30 |  | Concreting | 1d | 2025-04-03 | 2025-04-04 | 29FF+3.62d |  |  |
| 31 | 37200.37300.37500.37900.99900.128200 | **Substructure Finishing** | 174.81d | 2025-05-01 | 2025-10-23 |  |  | start no earlier than 2025-05-01 |
| 32 |  | Masonary work | 89.94d | 2025-05-01 | 2025-07-30 | 30FS+26.75d |  |  |
| 33 |  | Plaster | 39.94d | 2025-07-30 | 2025-09-08 | 32 |  |  |
| 34 |  | Structural steel | 59.94d | 2025-05-28 | 2025-07-26 | 30FS+53.38d |  |  |
| 35 |  | White Wash | 44.94d | 2025-09-08 | 2025-10-23 | 33 |  |  |
| 36 | 37200.37300.37500.37900.39000 | **Superstructure** | 739.12d | 2025-04-06 | 2027-07-14 |  |  | start no earlier than 2025-04-06 |
| 37 | 37200.37300.37500.37900.39000.43300 | **RCC structure** | 447.56d | 2025-04-06 | 2026-08-12 |  |  | start no earlier than 2025-04-06 |
| 38 | 37200.37300.37500.37900.39000.43300.131000 | **1st floor slab** | 24d | 2025-04-06 | 2025-04-30 |  |  | start no earlier than 2025-04-06 |
| 39 |  | Reinforcement | 20d | 2025-04-06 | 2025-04-26 | 30FS+1.88d |  |  |
| 40 |  | Wall conduiting | 4d | 2025-04-09 | 2025-04-13 | 39SS+2.75d |  |  |
| 41 |  | Formwork | 20d | 2025-04-09 | 2025-04-29 | 39SS+3d |  |  |
| 42 |  | Concreting | 1d | 2025-04-29 | 2025-04-30 | 41 |  |  |
| 43 | 37200.37300.37500.37900.39000.43300.131100 | **2nd floor slab** | 21d | 2025-05-01 | 2025-05-22 |  |  | start no earlier than 2025-05-01 |
| 44 |  | Reinforcement | 18d | 2025-05-01 | 2025-05-19 | 42FS+1d |  |  |
| 45 |  | Wall conduiting | 4d | 2025-05-04 | 2025-05-08 | 40, 44SS+2.75d |  |  |
| 46 |  | Formwork | 17d | 2025-05-04 | 2025-05-21 | 44SS+3d |  |  |
| 47 |  | Concreting | 1d | 2025-05-21 | 2025-05-22 | 46 |  |  |
| 48 | 37200.37300.37500.37900.39000.43300.131200 | **3rd floor slab** | 15d | 2025-05-23 | 2025-06-07 |  |  | start no earlier than 2025-05-23 |
| 49 |  | Reinforcement | 11d | 2025-05-23 | 2025-06-03 | 47FS+1d |  |  |
| 50 |  | Wall conduiting | 3d | 2025-05-26 | 2025-05-29 | 45, 49SS+2.75d |  |  |
| 51 |  | Formwork | 11d | 2025-05-26 | 2025-06-06 | 49SS+3d |  |  |
| 52 |  | Concreting | 1d | 2025-06-06 | 2025-06-07 | 51 |  |  |
| 53 | 37200.37300.37500.37900.39000.43300.131300 | **4th floor slab** | 9d | 2025-06-08 | 2025-06-17 |  |  | start no earlier than 2025-06-08 |
| 54 |  | Reinforcement | 8d | 2025-06-08 | 2025-06-16 | 52FS+1d |  |  |
| 55 |  | Wall conduiting | 3d | 2025-06-09 | 2025-06-12 | 50, 54SS+1d |  |  |
| 56 |  | Formwork | 7d | 2025-06-09 | 2025-06-16 | 54SS+1d |  |  |
| 57 |  | Concreting | 1d | 2025-06-16 | 2025-06-17 | 56 |  |  |
| 58 | 37200.37300.37500.37900.39000.43300.131400 | **5th floor slab** | 9d | 2025-06-18 | 2025-06-27 |  |  | start no earlier than 2025-06-18 |
| 59 |  | Reinforcement | 8d | 2025-06-18 | 2025-06-26 | 57FS+1d |  |  |
| 60 |  | Wall conduiting | 3d | 2025-06-19 | 2025-06-22 | 55, 59SS+1d |  |  |
| 61 |  | Formwork | 7d | 2025-06-19 | 2025-06-26 | 59SS+1d |  |  |
| 62 |  | Concreting | 1d | 2025-06-26 | 2025-06-27 | 61 |  |  |
| 63 | 37200.37300.37500.37900.39000.43300.131500 | **6th floor slab** | 9d | 2025-06-28 | 2025-07-07 |  |  | start no earlier than 2025-06-28 |
| 64 |  | Reinforcement | 8d | 2025-06-28 | 2025-07-06 | 62FS+1d |  |  |
| 65 |  | Wall conduiting | 3d | 2025-06-29 | 2025-07-02 | 60, 64SS+1d |  |  |
| 66 |  | Formwork | 7d | 2025-06-29 | 2025-07-06 | 64SS+1d |  |  |
| 67 |  | Concreting | 1d | 2025-07-06 | 2025-07-07 | 66 |  |  |
| 68 | 37200.37300.37500.37900.39000.43300.131600 | **7th floor slab** | 9d | 2025-07-08 | 2025-07-17 |  |  | start no earlier than 2025-07-08 |
| 69 |  | Reinforcement | 8d | 2025-07-08 | 2025-07-16 | 67FS+1d |  |  |
| 70 |  | Wall conduiting | 3d | 2025-07-09 | 2025-07-12 | 65, 69SS+1d |  |  |

| ID | WBS | Task | Duration | Start | Finish | Predecessors | Constraint |
| --- | --- | --- | --- | --- | --- | --- | --- |
| 71 |  | Formwork | 7d | 2025-07-09 | 2025-07-16 | 69SS+1d |  |
| 72 |  | Concreting | 1d | 2025-07-16 | 2025-07-17 | 71 |  |
| 73 | 37200.37300.37500.37900.39000.43300.131700 | **8th floor slab** | 12d | 2025-07-18 | 2025-07-30 |  | start no earlier than 2025-07-18 |
| 74 |  | Reinforcement | 10d | 2025-07-18 | 2025-07-28 | 72FS+1d |  |
| 75 |  | Wall conduiting | 3d | 2025-07-19 | 2025-07-22 | 70, 74SS+1d |  |
| 76 |  | Formwork | 10d | 2025-07-19 | 2025-07-29 | 74SS+1d |  |
| 77 |  | Concreting | 1d | 2025-07-29 | 2025-07-30 | 76 |  |
| 78 | 37200.37300.37500.37900.39000.43300.131800 | **9th floor slab** | 9d | 2025-07-31 | 2025-08-09 |  | start no earlier than 2025-07-31 |
| 79 |  | Reinforcement | 8d | 2025-07-31 | 2025-08-08 | 77FS+1d |  |
| 80 |  | Wall conduiting | 3d | 2025-08-01 | 2025-08-04 | 75, 79SS+1d |  |
| 81 |  | Formwork | 7d | 2025-08-01 | 2025-08-08 | 79SS+1d |  |
| 82 |  | Concreting | 1d | 2025-08-08 | 2025-08-09 | 81 |  |
| 83 | 37200.37300.37500.37900.39000.43300.131900 | **10th floor slab** | 9d | 2025-08-10 | 2025-08-19 |  | start no earlier than 2025-08-10 |
| 84 |  | Reinforcement | 8d | 2025-08-10 | 2025-08-18 | 82FS+1d |  |
| 85 |  | Wall conduiting | 3d | 2025-08-11 | 2025-08-14 | 80, 84SS+1d |  |
| 86 |  | Formwork | 7d | 2025-08-11 | 2025-08-18 | 84SS+1d |  |
| 87 |  | Concreting | 1d | 2025-08-18 | 2025-08-19 | 86 |  |
| 88 | 37200.37300.37500.37900.39000.43300.132000 | **11th floor slab** | 9d | 2025-08-20 | 2025-08-29 |  | start no earlier than 2025-08-20 |
| 89 |  | Reinforcement | 8d | 2025-08-20 | 2025-08-28 | 87FS+1d |  |
| 90 |  | Wall conduiting | 3d | 2025-08-21 | 2025-08-24 | 85, 89SS+1d |  |
| 91 |  | Formwork | 7d | 2025-08-21 | 2025-08-28 | 89SS+1d |  |
| 92 |  | Concreting | 1d | 2025-08-28 | 2025-08-29 | 91 |  |
| 93 | 37200.37300.37500.37900.39000.43300.132100 | **12th floor slab** | 9d | 2025-08-30 | 2025-09-08 |  | start no earlier than 2025-08-30 |
| 94 |  | Reinforcement | 8d | 2025-08-30 | 2025-09-07 | 92FS+1d |  |
| 95 |  | Wall conduiting | 3d | 2025-08-31 | 2025-09-03 | 90, 94SS+1d |  |
| 96 |  | Formwork | 7d | 2025-08-31 | 2025-09-07 | 94SS+1d |  |
| 97 |  | Concreting | 1d | 2025-09-07 | 2025-09-08 | 96 |  |
| 98 | 37200.37300.37500.37900.39000.43300.132200 | **13th floor slab** | 9d | 2025-09-09 | 2025-09-18 |  | start no earlier than 2025-09-09 |
| 99 |  | Reinforcement | 8d | 2025-09-09 | 2025-09-17 | 97FS+1d |  |
| 100 |  | Wall conduiting | 3d | 2025-09-10 | 2025-09-13 | 95, 99SS+1d |  |
| 101 |  | Formwork | 7d | 2025-09-10 | 2025-09-17 | 99SS+1d |  |
| 102 |  | Concreting | 1d | 2025-09-17 | 2025-09-18 | 101 |  |
| 103 | 37200.37300.37500.37900.39000.43300.132300 | **14th floor slab** | 9d | 2025-09-19 | 2025-09-28 |  | start no earlier than 2025-09-19 |
| 104 |  | Reinforcement | 8d | 2025-09-19 | 2025-09-27 | 102FS+1d |  |
| 105 |  | Wall conduiting | 3d | 2025-09-20 | 2025-09-23 | 100, 104SS+1d |  |
| 106 |  | Formwork | 7d | 2025-09-20 | 2025-09-27 | 104SS+1d |  |
| 107 |  | Concreting | 1d | 2025-09-27 | 2025-09-28 | 106 |  |
| 108 | 37200.37300.37500.37900.39000.43300.132400 | **15th floor slab** | 9d | 2025-09-29 | 2025-10-08 |  | start no earlier than 2025-09-29 |
| 109 |  | Reinforcement | 8d | 2025-09-29 | 2025-10-07 | 107FS+1d |  |
| 110 |  | Wall conduiting | 3d | 2025-09-30 | 2025-10-03 | 105, 109SS+1d |  |
| 111 |  | Formwork | 7d | 2025-09-30 | 2025-10-07 | 109SS+1d |  |
| 112 |  | Concreting | 1d | 2025-10-07 | 2025-10-08 | 111 |  |
| 113 | 37200.37300.37500.37900.39000.43300.132500 | **16th floor slab** | 12d | 2025-10-09 | 2025-10-21 |  | start no earlier than 2025-10-09 |
| 114 |  | Reinforcement | 10d | 2025-10-09 | 2025-10-19 | 112FS+1d |  |
| 115 |  | Wall conduiting | 3d | 2025-10-10 | 2025-10-13 | 110, 114SS+1d |  |
| 116 |  | Formwork | 10d | 2025-10-10 | 2025-10-20 | 114SS+1d |  |
| 117 |  | Concreting | 1d | 2025-10-20 | 2025-10-21 | 116 |  |
| 118 | 37200.37300.37500.37900.39000.43300.132600 | **17th floor slab** | 9d | 2025-10-22 | 2025-10-31 |  | start no earlier than 2025-10-22 |
| 119 |  | Reinforcement | 8d | 2025-10-22 | 2025-10-30 | 117FS+1d |  |
| 120 |  | Wall conduiting | 3d | 2025-10-23 | 2025-10-26 | 115, 119SS+1d |  |
| 121 |  | Formwork | 7d | 2025-10-23 | 2025-10-30 | 119SS+1d |  |
| 122 |  | Concreting | 1d | 2025-10-30 | 2025-10-31 | 121 |  |
| 123 | 37200.37300.37500.37900.39000.43300.132700 | **18th floor slab** | 9d | 2025-12-16 | 2025-12-25 |  | start no earlier than 2025-12-16 |
| 124 |  | Reinforcement | 8d | 2025-12-16 | 2025-12-24 | 122FS+1d |  |
| 125 |  | Wall conduiting | 3d | 2025-12-17 | 2025-12-20 | 120, 124SS+1d |  |
| 126 |  | Formwork | 7d | 2025-12-17 | 2025-12-24 | 124SS+1d |  |
| 127 |  | Concreting | 1d | 2025-12-24 | 2025-12-25 | 126 |  |
| 128 | 37200.37300.37500.37900.39000.43300.132800 | **19th floor slab** | 8d | 2025-12-26 | 2026-01-03 |  | start no earlier than 2025-12-26 |
| 129 |  | Reinforcement | 7d | 2025-12-26 | 2026-01-02 | 127FS+1d |  |
| 130 |  | Wall conduiting | 3d | 2025-12-27 | 2025-12-30 | 125, 129SS+1d |  |
| 131 |  | Formwork | 6d | 2025-12-27 | 2026-01-02 | 129SS+1d |  |
| 132 |  | Concreting | 1d | 2026-01-02 | 2026-01-03 | 131 |  |
| 133 | 37200.37300.37500.37900.39000.43300.132900 | **20th floor slab** | 8d | 2026-01-04 | 2026-01-12 |  | start no earlier than 2026-01-04 |
| 134 |  | Reinforcement | 7d | 2026-01-04 | 2026-01-11 | 132FS+1d |  |
| 135 |  | Wall conduiting | 3d | 2026-01-05 | 2026-01-08 | 130, 134SS+1d |  |
| 136 |  | Formwork | 6d | 2026-01-05 | 2026-01-11 | 134SS+1d |  |
| 137 |  | Concreting | 1d | 2026-01-11 | 2026-01-12 | 136 |  |
| 138 | 37200.37300.37500.37900.39000.43300.133000 | **21st floor slab** | 8d | 2026-01-13 | 2026-01-21 |  | start no earlier than 2026-01-13 |
| 139 |  | Reinforcement | 7d | 2026-01-13 | 2026-01-20 | 137FS+1d |  |
| 140 |  | Wall conduiting | 3d | 2026-01-14 | 2026-01-17 | 135, 139SS+1d |  |

| ID | WBS | Task | Duration | Start | Finish | Predecessors | Constraint |
| --- | --- | --- | --- | --- | --- | --- | --- |
| 141 |  | Formwork | 6d | 2026-01-14 | 2026-01-20 | 139SS+1d |  |
| 142 |  | Concreting | 1d | 2026-01-20 | 2026-01-21 | 141 |  |
| 143 | 37200.37300.37500.37900.39000.43300.133100 | **22nd floor slab** | 8d | 2026-01-22 | 2026-01-30 |  | start no earlier than 2026-01-22 |
| 144 |  | Reinforcement | 7d | 2026-01-22 | 2026-01-29 | 142FS+1d |  |
| 145 |  | Wall conduiting | 3d | 2026-01-23 | 2026-01-26 | 140, 144SS+1d |  |
| 146 |  | Formwork | 6d | 2026-01-23 | 2026-01-29 | 144SS+1d |  |
| 147 |  | Concreting | 1d | 2026-01-29 | 2026-01-30 | 146 |  |
| 148 | 37200.37300.37500.37900.39000.43300.133200 | **23rd floor slab** | 8d | 2026-01-31 | 2026-02-08 |  | start no earlier than 2026-01-31 |
| 149 |  | Reinforcement | 7d | 2026-01-31 | 2026-02-07 | 147FS+1d |  |
| 150 |  | Wall conduiting | 3d | 2026-02-01 | 2026-02-04 | 145, 149SS+1d |  |
| 151 |  | Formwork | 6d | 2026-02-01 | 2026-02-07 | 149SS+1d |  |
| 152 |  | Concreting | 1d | 2026-02-07 | 2026-02-08 | 151 |  |
| 153 | 37200.37300.37500.37900.39000.43300.133300 | **24th floor slab** | 12d | 2026-02-09 | 2026-02-21 |  | start no earlier than 2026-02-09 |
| 154 |  | Reinforcement | 10d | 2026-02-09 | 2026-02-19 | 152FS+1d |  |
| 155 |  | Wall conduiting | 3d | 2026-02-10 | 2026-02-13 | 150, 154SS+1d |  |
| 156 |  | Formwork | 10d | 2026-02-10 | 2026-02-20 | 154SS+1d |  |
| 157 |  | Concreting | 1d | 2026-02-20 | 2026-02-21 | 156 |  |
| 158 | 37200.37300.37500.37900.39000.43300.133400 | **25th floor slab** | 12d | 2026-02-22 | 2026-03-06 |  | start no earlier than 2026-02-22 |
| 159 |  | Reinforcement | 10d | 2026-02-22 | 2026-03-04 | 157FS+1d |  |
| 160 |  | Wall conduiting | 3d | 2026-02-23 | 2026-02-26 | 155, 159SS+1d |  |
| 161 |  | Formwork | 10d | 2026-02-23 | 2026-03-05 | 159SS+1d |  |
| 162 |  | Concreting | 1d | 2026-03-05 | 2026-03-06 | 161 |  |
| 163 | 37200.37300.37500.37900.39000.43300.133500 | **26th floor slab** | 8d | 2026-03-07 | 2026-03-15 |  | start no earlier than 2026-03-07 |
| 164 |  | Reinforcement | 7d | 2026-03-07 | 2026-03-14 | 162FS+1d |  |
| 165 |  | Wall conduiting | 3d | 2026-03-08 | 2026-03-11 | 160, 164SS+1d |  |
| 166 |  | Formwork | 6d | 2026-03-08 | 2026-03-14 | 164SS+1d |  |
| 167 |  | Concreting | 1d | 2026-03-14 | 2026-03-15 | 166 |  |
| 168 | 37200.37300.37500.37900.39000.43300.133600 | **27th floor slab** | 8d | 2026-03-16 | 2026-03-24 |  | start no earlier than 2026-03-16 |
| 169 |  | Reinforcement | 7d | 2026-03-16 | 2026-03-23 | 167FS+1d |  |
| 170 |  | Wall conduiting | 3d | 2026-03-17 | 2026-03-20 | 165, 169SS+1d |  |
| 171 |  | Formwork | 6d | 2026-03-17 | 2026-03-23 | 169SS+1d |  |
| 172 |  | Concreting | 1d | 2026-03-23 | 2026-03-24 | 171 |  |
| 173 | 37200.37300.37500.37900.39000.43300.133700 | **28th floor slab** | 8d | 2026-03-25 | 2026-04-02 |  | start no earlier than 2026-03-25 |
| 174 |  | Reinforcement | 7d | 2026-03-25 | 2026-04-01 | 172FS+1d |  |
| 175 |  | Wall conduiting | 3d | 2026-03-26 | 2026-03-29 | 170, 174SS+1d |  |
| 176 |  | Formwork | 6d | 2026-03-26 | 2026-04-01 | 174SS+1d |  |
| 177 |  | Concreting | 1d | 2026-04-01 | 2026-04-02 | 176 |  |
| 178 | 37200.37300.37500.37900.39000.43300.133800 | **29th floor slab** | 8d | 2026-04-02 | 2026-04-10 |  | start no earlier than 2026-04-02 |
| 179 |  | Reinforcement | 7d | 2026-04-02 | 2026-04-09 | 177 |  |
| 180 |  | Wall conduiting | 3d | 2026-04-03 | 2026-04-06 | 175, 179SS+1d |  |
| 181 |  | Formwork | 6d | 2026-04-03 | 2026-04-09 | 179SS+1d |  |
| 182 |  | Concreting | 1d | 2026-04-09 | 2026-04-10 | 181 |  |
| 183 | 37200.37300.37500.37900.39000.43300.133900 | **30th floor slab** | 8d | 2026-04-10 | 2026-04-18 |  | start no earlier than 2026-04-10 |
| 184 |  | Reinforcement | 7d | 2026-04-10 | 2026-04-17 | 182 |  |
| 185 |  | Wall conduiting | 3d | 2026-04-11 | 2026-04-14 | 180, 184SS+1d |  |
| 186 |  | Formwork | 6d | 2026-04-11 | 2026-04-17 | 184SS+1d |  |
| 187 |  | Concreting | 1d | 2026-04-17 | 2026-04-18 | 186 |  |
| 188 | 37200.37300.37500.37900.39000.43300.134000 | **31st floor slab** | 10d | 2026-04-18 | 2026-04-28 |  | start no earlier than 2026-04-18 |
| 189 |  | Reinforcement | 7d | 2026-04-18 | 2026-04-25 | 187 |  |
| 190 |  | Wall conduiting | 3d | 2026-04-19 | 2026-04-22 | 185, 189SS+1d |  |
| 191 |  | Formwork | 8d | 2026-04-19 | 2026-04-27 | 189SS+1d |  |
| 192 |  | Concreting | 1d | 2026-04-27 | 2026-04-28 | 191 |  |
| 193 | 37200.37300.37500.37900.39000.43300.134100 | **32nd floor slab** | 12.75d | 2026-04-28 | 2026-05-11 |  | start no earlier than 2026-04-28 |
| 194 |  | Reinforcement | 9.94d | 2026-04-28 | 2026-05-08 | 192 |  |
| 195 |  | Wall conduiting | 1.94d | 2026-04-29 | 2026-05-01 | 190, 194SS+1d |  |
| 196 |  | Formwork | 9.94d | 2026-04-30 | 2026-05-10 | 194SS+1.88d |  |
| 197 |  | Concreting | 0.94d | 2026-05-10 | 2026-05-11 | 196 |  |
| 198 | 37200.37300.37500.37900.39000.43300.134200 | **33rd floor slab** | 11.75d | 2026-05-11 | 2026-05-22 |  | start no earlier than 2026-05-11 |
| 199 |  | Reinforcement | 8.94d | 2026-05-11 | 2026-05-20 | 197 |  |
| 200 |  | Wall conduiting | 1.94d | 2026-05-12 | 2026-05-14 | 195, 199SS+1d |  |
| 201 |  | Formwork | 8.94d | 2026-05-13 | 2026-05-22 | 199SS+1.88d |  |
| 202 |  | Concreting | 0.94d | 2026-05-22 | 2026-05-22 | 201 |  |
| 203 | 37200.37300.37500.37900.39000.43300.134300 | **34th floor slab** | 12.75d | 2026-05-23 | 2026-06-04 |  | start no earlier than 2026-05-23 |
| 204 |  | Reinforcement | 9.94d | 2026-05-23 | 2026-06-01 | 202 |  |
| 205 |  | Wall conduiting | 1.94d | 2026-05-24 | 2026-05-25 | 200, 204SS+1d |  |
| 206 |  | Formwork | 9.94d | 2026-05-24 | 2026-06-03 | 204SS+1.88d |  |
| 207 |  | Concreting | 0.94d | 2026-06-03 | 2026-06-04 | 206 |  |
| 208 | 37200.37300.37500.37900.39000.43300.134400 | **35th floor slab** | 11.75d | 2026-06-04 | 2026-06-16 |  | start no earlier than 2026-06-04 |
| 209 |  | Reinforcement | 8.94d | 2026-06-04 | 2026-06-13 | 207 |  |
| 210 |  | Wall conduiting | 1.94d | 2026-06-05 | 2026-06-07 | 205, 209SS+1d |  |

| ID | WBS | Task | Duration | Start | Finish | Predecessors | Constraint |
| --- | --- | --- | --- | --- | --- | --- | --- |
| 211 |  | Formwork | 7.94d | 2026-06-07 | 2026-06-15 | 210SS+1.88d |  |
| 212 |  | Concreting | 0.94d | 2026-06-15 | 2026-06-16 | 211 |  |
| 213 | 37200.37300.37500.37900.39000.43300.134500 | **Terrace floor slab** | 14.75d | 2026-06-16 | 2026-07-01 |  | start no earlier than 2026-06-16 |
| 214 |  | Reinforcement | 10.94d | 2026-06-16 | 2026-06-27 | 212 |  |
| 215 |  | Wall conduiting | 1.94d | 2026-06-17 | 2026-06-19 | 210, 214SS+1d |  |
| 216 |  | Formwork | 11.94d | 2026-06-18 | 2026-06-30 | 214SS+1.88d |  |
| 217 |  | Concreting | 0.94d | 2026-06-30 | 2026-07-01 | 216 |  |
| 218 | 37200.37300.37500.37900.39000.43300.134600 | **OHT & Mumty** | 41.81d | 2026-07-01 | 2026-08-12 |  | start no earlier than 2026-07-01 |
| 219 |  | Reinforcement | 29.94d | 2026-07-01 | 2026-07-31 | 217 |  |
| 220 |  | Wall conduiting | 4.94d | 2026-07-02 | 2026-07-07 | 215, 219SS+1d |  |
| 221 |  | Formwork | 32.94d | 2026-07-07 | 2026-08-09 | 219SS+3.62d, 220 |  |
| 222 |  | Concreting | 2.94d | 2026-08-09 | 2026-08-12 | 221 |  |
| 223 | 37200.37300.37500.37900.39000.44800 | **Post Pour Activities** | 427.31d | 2025-06-07 | 2026-09-23 |  | start no earlier than 2025-06-07 |
| 224 |  | 1st Floor | 7d | 2025-06-07 | 2025-06-14 | 52FS+0.25d |  |
| 225 |  | 2nd Floor | 7d | 2025-06-17 | 2025-06-24 | 224FS+0.25d, 57FS+0.25d |  |
| 226 |  | 3rd Floor | 7d | 2025-06-27 | 2025-07-04 | 225FS+0.25d, 62FS+0.25d |  |
| 227 |  | 4th Floor | 7d | 2025-07-07 | 2025-07-14 | 226FS+0.25d, 67FS+0.25d |  |
| 228 |  | 5th Floor | 7d | 2025-07-17 | 2025-07-24 | 227FS+0.25d, 72FS+0.25d |  |
| 229 |  | 6th Floor | 7d | 2025-07-30 | 2025-08-06 | 228FS+0.25d, 77FS+0.25d |  |
| 230 |  | 7th Floor | 7d | 2025-08-09 | 2025-08-16 | 229FS+0.25d, 82FS+0.25d |  |
| 231 |  | 8th Floor | 7d | 2025-08-19 | 2025-08-26 | 230FS+0.25d, 87FS+0.25d |  |
| 232 |  | 9th Floor | 7d | 2025-08-29 | 2025-09-05 | 231FS+0.25d, 92FS+0.25d |  |
| 233 |  | 10th Floor | 7d | 2025-09-08 | 2025-09-15 | 232FS+0.25d, 97FS+0.25d |  |
| 234 |  | 11th Floor | 7d | 2025-09-18 | 2025-09-25 | 233FS+0.25d, 102FS+0.25d |  |
| 235 |  | 12th Floor | 7d | 2025-09-28 | 2025-10-05 | 234FS+0.25d, 107FS+0.25d |  |
| 236 |  | 13th Floor | 7d | 2025-10-08 | 2025-10-15 | 235FS+0.25d, 112FS+0.25d |  |
| 237 |  | 14th Floor | 7d | 2026-01-03 | 2026-01-10 | 236, 132 |  |
| 238 |  | 15th Floor | 7d | 2026-01-12 | 2026-01-19 | 237, 137 |  |
| 239 |  | 16th Floor | 7d | 2026-01-21 | 2026-01-28 | 238, 142 |  |
| 240 |  | 17th Floor | 7d | 2026-01-30 | 2026-02-06 | 239, 147 |  |
| 241 |  | 18th Floor | 7d | 2026-02-08 | 2026-02-15 | 240, 152 |  |
| 242 |  | 19th Floor | 7d | 2026-02-21 | 2026-02-28 | 241, 157 |  |
| 243 |  | 20th Floor | 7d | 2026-03-06 | 2026-03-13 | 242, 162 |  |
| 244 |  | 21st Floor | 7d | 2026-03-15 | 2026-03-22 | 243, 167 |  |
| 245 |  | 22nd Floor | 7d | 2026-03-24 | 2026-03-31 | 244, 172 |  |
| 246 |  | 23rd Floor | 7d | 2026-04-02 | 2026-04-09 | 245, 177 |  |
| 247 |  | 24th Floor | 7d | 2026-04-10 | 2026-04-17 | 246, 182 |  |
| 248 |  | 25th Floor | 7d | 2026-04-18 | 2026-04-25 | 247, 187 |  |
| 249 |  | 26th Floor | 7d | 2026-04-28 | 2026-05-05 | 248, 192 |  |
| 250 |  | 27th Floor | 7d | 2026-05-11 | 2026-05-18 | 249, 197 |  |
| 251 |  | 28th Floor | 7d | 2026-05-23 | 2026-05-29 | 250, 202 |  |
| 252 |  | 29th Floor | 7d | 2026-06-04 | 2026-06-11 | 251, 207 |  |
| 253 |  | 30th Floor | 7d | 2026-06-16 | 2026-06-23 | 252, 212 |  |
| 254 |  | 31st Floor | 7d | 2026-07-01 | 2026-07-08 | 253, 217 |  |
| 255 |  | 32nd Flood | 7d | 2026-08-12 | 2026-08-19 | 254, 222 |  |
| 256 |  | 33rd Floor | 7d | 2026-08-19 | 2026-08-26 | 255 |  |
| 257 |  | 34th Floor | 7d | 2026-08-26 | 2026-09-02 | 256 |  |
| 258 |  | 35th Floor | 7d | 2026-09-02 | 2026-09-09 | 257 |  |
| 259 |  | Terrace | 7d | 2026-09-09 | 2026-09-16 | 258 |  |
| 260 |  | Mumty & Machine Room | 7d | 2026-09-16 | 2026-09-23 | 259 |  |
| 261 | 37200.37300.37500.37900.39000.40300 | **Finishing work** | 669.88d | 2025-06-14 | 2027-07-14 |  | start no earlier than 2025-06-14 |
| 262 | 37200.37300.37500.37900.39000.40300.41300 | **Flat finishing** | 515.31d | 2025-06-14 | 2027-02-10 |  | start no earlier than 2025-06-14 |
| 263 | 37200.37300.37500.37900.39000.40300.41300.87600 | **1st Floor** | 78.25d | 2025-06-14 | 2025-08-31 |  | start no earlier than 2025-06-14 |
| 264 |  | Block Work | 5d | 2025-06-14 | 2025-06-19 | 224 |  |
| 265 |  | Door Frame Fixing | 9d | 2025-06-19 | 2025-06-28 | 264 |  |
| 266 |  | Internal Plumbing Works | 8d | 2025-06-19 | 2025-06-27 | 264 |  |
| 267 |  | Waterproofing | 10d | 2025-06-27 | 2025-07-07 | 266 |  |
| 268 |  | Internal Plaster | 5d | 2025-06-15 | 2025-06-19 | 264SS+0.25d |  |
| 269 |  | IPS flooring work | 10d | 2025-07-07 | 2025-07-17 | 265, 266, 267 |  |
| 270 |  | Toilet dado work | 8d | 2025-07-07 | 2025-07-15 | 267, 268 |  |
| 271 |  | Toilet flooring work | 8d | 2025-07-16 | 2025-07-23 | 270FS+0.25d |  |
| 272 |  | Living dinning flooring | 7d | 2025-07-24 | 2025-07-30 | 265, 271 |  |
| 273 |  | Aluminium door-window fixing | 7d | 2025-07-31 | 2025-08-06 | 269, 272 |  |
| 274 |  | Putty primer coat | 6d | 2025-07-31 | 2025-08-05 | 272 |  |
| 275 |  | Door shutter fixing | 8d | 2025-07-31 | 2025-08-07 | 272 |  |
| 276 |  | Electrical wiring work | 8d | 2025-08-08 | 2025-08-15 | 275 |  |
| 277 |  | Painting 1st coat | 8d | 2025-08-16 | 2025-08-23 | 274, 275, 276 |  |
| 278 |  | False Cieling panel fixing | 8d | 2025-08-24 | 2025-08-31 | 277 |  |
| 279 | 37200.37300.37500.37900.39000.40300.41300.87500 | **2nd Floor** | 81.75d | 2025-06-21 | 2025-09-10 |  | start no earlier than 2025-06-21 |
| 280 |  | Block Work | 5d | 2025-06-24 | 2025-06-29 | 225, 264 |  |

| ID | WBS | Task | Duration | Start | Finish | Predecessors | Constraint |
| --- | --- | --- | --- | --- | --- | --- | --- |
| 281 |  | Door Frame Fixing | 9d | 2025-06-29 | 2025-07-08 | 265, 280 |  |
| 282 |  | Internal Plumbing Works | 8d | 2025-06-29 | 2025-07-07 | 266, 280 |  |
| 283 |  | Waterproofing | 10d | 2025-07-07 | 2025-07-17 | 267, 282 |  |
| 284 |  | Internal Plaster | 5d | 2025-06-21 | 2025-06-25 | 268FS+1d |  |
| 285 |  | IPS flooring work | 10d | 2025-07-17 | 2025-07-27 | 269, 281, 282, 283 |  |
| 286 |  | Toilet dado work | 8d | 2025-07-17 | 2025-07-25 | 270, 283, 284 |  |
| 287 |  | Toilet flooring work | 8d | 2025-07-25 | 2025-08-02 | 271, 286 |  |
| 288 |  | Living dinning flooring | 7d | 2025-08-02 | 2025-08-09 | 272, 281, 287 |  |
| 289 |  | Aluminium door-window fixing | 7d | 2025-08-09 | 2025-08-16 | 273, 285, 288 |  |
| 290 |  | Putty primer coat | 6d | 2025-08-09 | 2025-08-15 | 274, 288 |  |
| 291 |  | Door shutter fixing | 8d | 2025-08-09 | 2025-08-17 | 275, 288 |  |
| 292 |  | Electrical wiring work | 8d | 2025-08-17 | 2025-08-25 | 276, 291 |  |
| 293 |  | Painting 1st coat | 8d | 2025-08-25 | 2025-09-02 | 277, 290, 291, 292 |  |
| 294 |  | False ceiling | 8d | 2025-09-02 | 2025-09-10 | 278, 293 |  |
| 295 | 37200.37300.37500.37900.39000.40300.41300.87400 | **3rd Floor** | 84.75d | 2025-06-26 | 2025-09-18 |  | start no earlier than 2025-06-26 |
| 296 |  | Block Work | 5d | 2025-06-30 | 2025-07-04 | 280FS+0.25d |  |
| 297 |  | Door Frame Fixing | 9d | 2025-07-08 | 2025-07-17 | 281, 296 |  |
| 298 |  | Internal Plumbing Works | 8d | 2025-07-07 | 2025-07-15 | 282, 296 |  |
| 299 |  | Waterproofing | 10d | 2025-07-17 | 2025-07-27 | 283, 298 |  |
| 300 |  | Internal Plaster | 5d | 2025-06-26 | 2025-07-01 | 284FS+0.25d |  |
| 301 |  | IPS flooring work | 10d | 2025-07-27 | 2025-08-06 | 285, 297, 299, 300 |  |
| 302 |  | Toilet dado work | 8d | 2025-07-26 | 2025-08-02 | 286FS+0.25d |  |
| 303 |  | Toilet flooring work | 8d | 2025-08-03 | 2025-08-10 | 287, 302 |  |
| 304 |  | Living dinning flooring | 7d | 2025-08-11 | 2025-08-17 | 288, 297, 303 |  |
| 305 |  | Aluminium door-window fixing | 7d | 2025-08-18 | 2025-08-24 | 289, 301, 304 |  |
| 306 |  | Putty primer coat | 6d | 2025-08-18 | 2025-08-23 | 290, 304 |  |
| 307 |  | Door shutter fixing | 8d | 2025-08-18 | 2025-08-25 | 291, 304 |  |
| 308 |  | Electrical wiring work | 8d | 2025-08-26 | 2025-09-02 | 292, 307 |  |
| 309 |  | Painting 1st coat | 8d | 2025-09-03 | 2025-09-10 | 293, 306, 307, 308 |  |
| 310 |  | False ceiling | 8d | 2025-09-11 | 2025-09-18 | 294, 309 |  |
| 311 | 37200.37300.37500.37900.39000.40300.41300.87300 | **4th Floor** | 74.25d | 2025-07-14 | 2025-09-26 |  | start no earlier than 2025-07-14 |
| 312 |  | Block Work | 5d | 2025-07-14 | 2025-07-19 | 227, 296 |  |
| 313 |  | Door Frame Fixing | 9d | 2025-07-19 | 2025-07-28 | 297, 312 |  |
| 314 |  | Internal Plumbing Works | 8d | 2025-07-19 | 2025-07-27 | 298, 312 |  |
| 315 |  | Waterproofing | 10d | 2025-07-27 | 2025-08-06 | 299, 314 |  |
| 316 |  | Internal Plaster | 5d | 2025-08-06 | 2025-08-11 | 300, 313, 314, 315 |  |
| 317 |  | IPS flooring work | 10d | 2025-08-11 | 2025-08-21 | 301, 313, 315, 316 |  |
| 318 |  | Toilet dado work | 8d | 2025-08-11 | 2025-08-19 | 302, 315, 316 |  |
| 319 |  | Toilet flooring work | 8d | 2025-08-19 | 2025-08-27 | 303, 318 |  |
| 320 |  | Living dinning flooring | 7d | 2025-08-18 | 2025-08-25 | 304FS+0.25d |  |
| 321 |  | Aluminium door-window fixing | 7d | 2025-08-25 | 2025-09-01 | 305, 317, 320 |  |
| 322 |  | Putty primer coat | 6d | 2025-08-25 | 2025-08-31 | 306, 320 |  |
| 323 |  | Door shutter fixing | 8d | 2025-08-26 | 2025-09-02 | 307, 320 |  |
| 324 |  | Electrical wiring work | 8d | 2025-09-03 | 2025-09-10 | 308, 323 |  |
| 325 |  | Painting 1st coat | 8d | 2025-09-11 | 2025-09-18 | 309, 322, 323, 324 |  |
| 326 |  | False ceiling | 8d | 2025-09-19 | 2025-09-26 | 310, 325 |  |
| 327 | 37200.37300.37500.37900.39000.40300.41300.87200 | **5th Floor** | 83d | 2025-07-24 | 2025-10-15 |  | start no earlier than 2025-07-24 |
| 328 |  | Block Work | 5d | 2025-07-24 | 2025-07-29 | 228, 312 |  |
| 329 |  | Door Frame Fixing | 9d | 2025-07-29 | 2025-08-07 | 313, 328 |  |
| 330 |  | Internal Plumbing Works | 8d | 2025-07-29 | 2025-08-06 | 314, 328 |  |
| 331 |  | Waterproofing | 10d | 2025-08-06 | 2025-08-16 | 315, 330 |  |
| 332 |  | Internal Plaster | 5d | 2025-08-16 | 2025-08-21 | 316, 329, 330, 331 |  |
| 333 |  | IPS flooring work | 10d | 2025-08-21 | 2025-08-31 | 317, 329, 331, 332 |  |
| 334 |  | Toilet dado work | 8d | 2025-08-21 | 2025-08-29 | 318, 331, 332 |  |
| 335 |  | Toilet flooring work | 8d | 2025-08-29 | 2025-09-06 | 319, 334 |  |
| 336 |  | Living dinning flooring | 7d | 2025-09-06 | 2025-09-13 | 320, 329, 335 |  |
| 337 |  | Aluminium door-window fixing | 7d | 2025-09-13 | 2025-09-20 | 321, 333, 336 |  |
| 338 |  | Putty primer coat | 6d | 2025-09-13 | 2025-09-19 | 322, 336 |  |
| 339 |  | Door shutter fixing | 8d | 2025-09-13 | 2025-09-21 | 323, 336 |  |
| 340 |  | Electrical wiring work | 8d | 2025-09-21 | 2025-09-29 | 324, 339 |  |
| 341 |  | Painting 1st coat | 8d | 2025-09-29 | 2025-10-07 | 325, 338, 339, 340 |  |
| 342 |  | False ceiling | 8d | 2025-10-07 | 2025-10-15 | 326, 341 |  |
| 343 | 37200.37300.37500.37900.39000.40300.41300.87100 | **6th Floor** | 83d | 2025-08-06 | 2025-10-28 |  | start no earlier than 2025-08-06 |
| 344 |  | Block Work | 5d | 2025-08-06 | 2025-08-11 | 229, 328 |  |
| 345 |  | Door Frame Fixing | 9d | 2025-08-07 | 2025-08-16 | 77, 329 |  |
| 346 |  | Internal Plumbing Works | 8d | 2025-08-11 | 2025-08-19 | 330, 344 |  |
| 347 |  | Waterproofing | 10d | 2025-08-19 | 2025-08-29 | 331, 346 |  |
| 348 |  | Internal Plaster | 5d | 2025-08-29 | 2025-09-03 | 332, 345, 346, 347 |  |
| 349 |  | IPS flooring work | 10d | 2025-09-03 | 2025-09-13 | 333, 345, 347, 348 |  |
| 350 |  | Toilet dado work | 8d | 2025-09-03 | 2025-09-11 | 334, 347, 348 |  |

| ID | WBS | Task | Duration | Start | Finish | Predecessors | Constraint |
| --- | --- | --- | --- | --- | --- | --- | --- |
| 351 |  | Toilet flooring work | 8d | 2025-09-11 | 2025-09-19 | 335, 350 |  |
| 352 |  | Living dinning flooring | 7d | 2025-09-19 | 2025-09-26 | 336, 345, 351 |  |
| 353 |  | Aluminium door-window fixing | 7d | 2025-09-26 | 2025-10-03 | 337, 349, 352 |  |
| 354 |  | Putty primer coat | 6d | 2025-09-26 | 2025-10-02 | 338, 352 |  |
| 355 |  | Door shutter fixing | 8d | 2025-09-26 | 2025-10-04 | 339, 352 |  |
| 356 |  | Electrical wiring work | 8d | 2025-10-04 | 2025-10-12 | 340, 355 |  |
| 357 |  | Painting 1st coat | 8d | 2025-10-12 | 2025-10-20 | 341, 354, 355, 356 |  |
| 358 |  | False ceiling | 8d | 2025-10-20 | 2025-10-28 | 342, 357 |  |
| 359 | 37200.37300.37500.37900.39000.40300.41300.87000 | **7th Floor** | 83d | 2025-08-16 | 2025-12-22 |  | start no earlier than 2025-08-16 |
| 360 |  | Block Work | 5d | 2025-08-16 | 2025-08-21 | 230, 344 |  |
| 361 |  | Door Frame Fixing | 9d | 2025-08-21 | 2025-08-30 | 345, 360 |  |
| 362 |  | Internal Plumbing Works | 8d | 2025-08-21 | 2025-08-29 | 346, 360 |  |
| 363 |  | Waterproofing | 10d | 2025-08-29 | 2025-09-08 | 347, 362 |  |
| 364 |  | Internal Plaster | 5d | 2025-09-08 | 2025-09-13 | 348, 361, 362, 363 |  |
| 365 |  | IPS flooring work | 10d | 2025-09-13 | 2025-09-23 | 349, 361, 363, 364 |  |
| 366 |  | Toilet dado work | 8d | 2025-09-13 | 2025-09-21 | 350, 363, 364 |  |
| 367 |  | Toilet flooring work | 8d | 2025-09-21 | 2025-09-29 | 351, 366 |  |
| 368 |  | Living dinning flooring | 7d | 2025-09-29 | 2025-10-06 | 352, 361, 367 |  |
| 369 |  | Aluminium door-window fixing | 7d | 2025-10-06 | 2025-10-13 | 353, 365, 368 |  |
| 370 |  | Putty primer coat | 6d | 2025-10-06 | 2025-10-12 | 354, 368 |  |
| 371 |  | Door shutter fixing | 8d | 2025-10-06 | 2025-10-14 | 355, 368 |  |
| 372 |  | Electrical wiring work | 8d | 2025-10-14 | 2025-10-22 | 356, 371 |  |
| 373 |  | Painting 1st coat | 8d | 2025-10-22 | 2025-10-30 | 357, 370, 371, 372 |  |
| 374 |  | False ceiling | 8d | 2025-10-30 | 2025-12-22 | 358, 373 |  |
| 375 | 37200.37300.37500.37900.39000.40300.41300.86900 | **8th Floor** | 86d | 2025-08-26 | 2026-01-04 |  | start no earlier than 2025-08-26 |
| 376 |  | Block Work | 8d | 2025-08-26 | 2025-09-03 | 231, 360 |  |
| 377 |  | Door Frame Fixing | 9d | 2025-09-03 | 2025-09-12 | 361, 376 |  |
| 378 |  | Internal Plumbing Works | 8d | 2025-09-03 | 2025-09-11 | 362, 376 |  |
| 379 |  | Waterproofing | 10d | 2025-09-11 | 2025-09-21 | 363, 378 |  |
| 380 |  | Internal Plaster | 5d | 2025-09-21 | 2025-09-26 | 364, 377, 378, 379 |  |
| 381 |  | IPS flooring work | 10d | 2025-09-26 | 2025-10-06 | 365, 377, 379, 380 |  |
| 382 |  | Toilet dado work | 8d | 2025-09-26 | 2025-10-04 | 366, 379, 380 |  |
| 383 |  | Toilet flooring work | 8d | 2025-10-04 | 2025-10-12 | 367, 382 |  |
| 384 |  | Living dinning flooring | 7d | 2025-10-12 | 2025-10-19 | 368, 377, 383 |  |
| 385 |  | Aluminium door-window fixing | 10d | 2025-10-19 | 2025-10-29 | 369, 381, 384 |  |
| 386 |  | Putty primer coat | 6d | 2025-10-19 | 2025-10-25 | 370, 384 |  |
| 387 |  | Door shutter fixing | 8d | 2025-10-19 | 2025-10-27 | 371, 384 |  |
| 388 |  | Electrical wiring work | 8d | 2025-10-27 | 2025-12-19 | 372, 387 |  |
| 389 |  | Painting 1st coat | 8d | 2025-12-19 | 2025-12-27 | 373, 386, 387, 388 |  |
| 390 |  | False ceiling | 8d | 2025-12-27 | 2026-01-04 | 374, 389 |  |
| 391 | 37200.37300.37500.37900.39000.40300.41300.86800 | **9th Floor** | 86d | 2025-09-05 | 2026-01-14 |  | start no earlier than 2025-09-05 |
| 392 |  | Block Work | 8d | 2025-09-05 | 2025-09-13 | 232, 376 |  |
| 393 |  | Door Frame Fixing | 9d | 2025-09-13 | 2025-09-22 | 377, 392 |  |
| 394 |  | Internal Plumbing Works | 8d | 2025-09-13 | 2025-09-21 | 378, 392 |  |
| 395 |  | Waterproofing | 10d | 2025-09-21 | 2025-10-01 | 379, 394 |  |
| 396 |  | Internal Plaster | 5d | 2025-10-01 | 2025-10-06 | 380, 393, 394, 395 |  |
| 397 |  | IPS flooring work | 10d | 2025-10-06 | 2025-10-16 | 381, 393, 395, 396 |  |
| 398 |  | Toilet dado work | 8d | 2025-10-06 | 2025-10-14 | 382, 395, 396 |  |
| 399 |  | Toilet flooring work | 8d | 2025-10-14 | 2025-10-22 | 383, 398 |  |
| 400 |  | Living dinning flooring | 7d | 2025-10-22 | 2025-10-29 | 384, 393, 399 |  |
| 401 |  | Aluminium door-window fixing | 10d | 2025-10-29 | 2025-12-23 | 385, 397, 400 |  |
| 402 |  | Putty primer coat | 6d | 2025-10-29 | 2025-12-19 | 386, 400 |  |
| 403 |  | Door shutter fixing | 8d | 2025-10-29 | 2025-12-21 | 387, 400 |  |
| 404 |  | Electrical wiring work | 8d | 2025-12-21 | 2025-12-29 | 388, 403 |  |
| 405 |  | Painting 1st coat | 8d | 2025-12-29 | 2026-01-06 | 389, 402, 403, 404 |  |
| 406 |  | False ceiling | 8d | 2026-01-06 | 2026-01-14 | 390, 405 |  |
| 407 | 37200.37300.37500.37900.39000.40300.41300.86700 | **10th Floor** | 86d | 2025-09-15 | 2026-01-24 |  | start no earlier than 2025-09-15 |
| 408 |  | Block Work | 8d | 2025-09-15 | 2025-09-23 | 233, 392 |  |
| 409 |  | Door Frame Fixing | 9d | 2025-09-23 | 2025-10-02 | 393, 408 |  |
| 410 |  | Internal Plumbing Works | 8d | 2025-09-23 | 2025-10-01 | 394, 408 |  |
| 411 |  | Waterproofing | 10d | 2025-10-01 | 2025-10-11 | 395, 410 |  |
| 412 |  | Internal Plaster | 5d | 2025-10-11 | 2025-10-16 | 396, 409, 410, 411 |  |
| 413 |  | IPS flooring work | 10d | 2025-10-16 | 2025-10-26 | 397, 409, 411, 412 |  |
| 414 |  | Toilet dado work | 8d | 2025-10-16 | 2025-10-24 | 398, 411, 412 |  |
| 415 |  | Toilet flooring work | 8d | 2025-10-24 | 2025-12-16 | 399, 414 |  |
| 416 |  | Living dinning flooring | 7d | 2025-12-16 | 2025-12-23 | 400, 409, 415 |  |
| 417 |  | Aluminium door-window fixing | 10d | 2025-12-23 | 2026-01-02 | 401, 413, 416 |  |
| 418 |  | Putty primer coat | 6d | 2025-12-23 | 2025-12-29 | 402, 416 |  |
| 419 |  | Door shutter fixing | 8d | 2025-12-23 | 2025-12-31 | 403, 416 |  |
| 420 |  | Electrical wiring work | 8d | 2025-12-31 | 2026-01-08 | 404, 419 |  |

| ID | WBS | Task | Duration | Start | Finish | Predecessors | Constraint |
| --- | --- | --- | --- | --- | --- | --- | --- |
| 421 |  | Painting 1st coat | 8d | 2026-01-08 | 2026-01-16 | 405, 418, 419, 420 |  |
| 422 |  | False ceiling | 8d | 2026-01-16 | 2026-01-24 | 406, 421 |  |
| 423 | 37200.37300.37500.37900.39000.40300.41300.86600 | **11th Floor** | 86d | 2025-09-25 | 2026-02-03 |  | start no earlier than 2025-09-25 |
| 424 |  | Block Work | 8d | 2025-09-25 | 2025-10-03 | 234, 408 |  |
| 425 |  | Door Frame Fixing | 9d | 2025-10-03 | 2025-10-12 | 409, 424 |  |
| 426 |  | Internal Plumbing Works | 8d | 2025-10-03 | 2025-10-11 | 410, 424 |  |
| 427 |  | Waterproofing | 10d | 2025-10-11 | 2025-10-21 | 411, 426 |  |
| 428 |  | Internal Plaster | 5d | 2025-10-21 | 2025-10-26 | 412, 425, 426, 427 |  |
| 429 |  | IPS flooring work | 10d | 2025-10-26 | 2025-12-20 | 413, 425, 426, 427 |  |
| 430 |  | Toilet dado work | 8d | 2025-10-26 | 2025-12-18 | 414, 427, 428 |  |
| 431 |  | Toilet flooring work | 8d | 2025-12-18 | 2025-12-26 | 415, 430 |  |
| 432 |  | Living dinning flooring | 7d | 2025-12-26 | 2026-01-02 | 416, 425, 431 |  |
| 433 |  | Aluminium door-window fixing | 10d | 2026-01-02 | 2026-01-12 | 417, 429, 432 |  |
| 434 |  | Putty primer coat | 6d | 2026-01-02 | 2026-01-08 | 418, 432 |  |
| 435 |  | Door shutter fixing | 8d | 2026-01-02 | 2026-01-10 | 419, 432 |  |
| 436 |  | Electrical wiring work | 8d | 2026-01-10 | 2026-01-18 | 420, 435 |  |
| 437 |  | Painting 1st coat | 8d | 2026-01-18 | 2026-01-26 | 421, 434, 435, 436 |  |
| 438 |  | False ceiling | 8d | 2026-01-26 | 2026-02-03 | 422, 437 |  |
| 439 | 37200.37300.37500.37900.39000.40300.41300.86500 | **12th Floor** | 86d | 2025-10-05 | 2026-02-13 |  | start no earlier than 2025-10-05 |
| 440 |  | Block Work | 8d | 2025-10-05 | 2025-10-13 | 235, 424 |  |
| 441 |  | Door Frame Fixing | 9d | 2025-10-13 | 2025-10-22 | 425, 440 |  |
| 442 |  | Internal Plumbing Works | 8d | 2025-10-13 | 2025-10-21 | 426, 440 |  |
| 443 |  | Waterproofing | 10d | 2025-10-21 | 2025-10-31 | 427, 442 |  |
| 444 |  | Internal Plaster | 5d | 2025-10-31 | 2025-12-20 | 428, 441, 442, 443 |  |
| 445 |  | IPS flooring work | 10d | 2025-12-20 | 2025-12-30 | 429, 441, 442, 443 |  |
| 446 |  | Toilet dado work | 8d | 2025-12-20 | 2025-12-28 | 430, 443, 444 |  |
| 447 |  | Toilet flooring work | 8d | 2025-12-28 | 2026-01-05 | 431, 446 |  |
| 448 |  | Living dinning flooring | 7d | 2026-01-05 | 2026-01-12 | 432, 441, 447 |  |
| 449 |  | Aluminium door-window fixing | 10d | 2026-01-12 | 2026-01-22 | 433, 445, 448 |  |
| 450 |  | Putty primer coat | 6d | 2026-01-12 | 2026-01-18 | 434, 448 |  |
| 451 |  | Door shutter fixing | 8d | 2026-01-12 | 2026-01-20 | 435, 448 |  |
| 452 |  | Electrical wiring work | 8d | 2026-01-20 | 2026-01-28 | 436, 451 |  |
| 453 |  | Painting 1st coat | 8d | 2026-01-28 | 2026-02-05 | 437, 450, 451, 452 |  |
| 454 |  | False ceiling | 8d | 2026-02-05 | 2026-02-13 | 438, 453 |  |
| 455 | 37200.37300.37500.37900.39000.40300.41300.86400 | **13th Floor** | 86d | 2025-10-15 | 2026-02-23 |  | start no earlier than 2025-10-15 |
| 456 |  | Block Work | 8d | 2025-10-15 | 2025-10-23 | 236, 440 |  |
| 457 |  | Door Frame Fixing | 9d | 2025-10-23 | 2025-12-16 | 441, 456 |  |
| 458 |  | Internal Plumbing Works | 8d | 2025-10-23 | 2025-10-31 | 442, 456 |  |
| 459 |  | Waterproofing | 10d | 2025-10-31 | 2025-12-25 | 443, 458 |  |
| 460 |  | Internal Plaster | 5d | 2025-12-25 | 2025-12-30 | 444, 457, 458, 459 |  |
| 461 |  | IPS flooring work | 10d | 2025-12-30 | 2026-01-09 | 445, 457, 459, 460 |  |
| 462 |  | Toilet dado work | 8d | 2025-12-30 | 2026-01-07 | 446, 459, 460 |  |
| 463 |  | Toilet flooring work | 8d | 2026-01-07 | 2026-01-15 | 447, 462 |  |
| 464 |  | Living dinning flooring | 7d | 2026-01-15 | 2026-01-22 | 448, 457, 463 |  |
| 465 |  | Aluminium door-window fixing | 12d | 2026-01-22 | 2026-02-03 | 449, 461, 464 |  |
| 466 |  | Putty primer coat | 6d | 2026-01-22 | 2026-01-28 | 450, 464 |  |
| 467 |  | Door shutter fixing | 8d | 2026-01-22 | 2026-01-30 | 451, 464 |  |
| 468 |  | Electrical wiring work | 8d | 2026-01-30 | 2026-02-07 | 452, 467 |  |
| 469 |  | Painting 1st coat | 8d | 2026-02-07 | 2026-02-15 | 453, 466, 467, 468 |  |
| 470 |  | False ceiling | 8d | 2026-02-15 | 2026-02-23 | 454, 469 |  |
| 471 | 37200.37300.37500.37900.39000.40300.41300.86300 | **14th Floor** | 85.75d | 2025-10-24 | 2026-03-03 |  | start no earlier than 2025-10-24 |
| 472 |  | Block Work | 5d | 2025-10-24 | 2025-10-28 | 456FS+0.25d |  |
| 473 |  | Door Frame Fixing | 9d | 2025-12-16 | 2025-12-25 | 457, 472 |  |
| 474 |  | Internal Plumbing Works | 8d | 2025-10-31 | 2025-12-23 | 458, 472 |  |
| 475 |  | Waterproofing | 10d | 2025-12-25 | 2026-01-04 | 459, 474 |  |
| 476 |  | Internal Plaster | 5d | 2025-12-31 | 2026-01-04 | 460FS+0.25d |  |
| 477 |  | IPS flooring work | 10d | 2026-01-10 | 2026-01-19 | 461FS+0.25d |  |
| 478 |  | Toilet dado work | 8d | 2026-01-07 | 2026-01-15 | 462, 475, 476 |  |
| 479 |  | Toilet flooring work | 8d | 2026-01-15 | 2026-01-23 | 463, 478 |  |
| 480 |  | Living dinning flooring | 7d | 2026-01-23 | 2026-01-29 | 464FS+0.25d |  |
| 481 |  | Aluminium door-window fixing | 10d | 2026-02-04 | 2026-02-13 | 465FS+0.25d |  |
| 482 |  | Putty primer coat | 6d | 2026-01-30 | 2026-02-04 | 466, 480 |  |
| 483 |  | Door shutter fixing | 8d | 2026-01-30 | 2026-02-07 | 467, 480 |  |
| 484 |  | Electrical wiring work | 8d | 2026-02-07 | 2026-02-15 | 468, 483 |  |
| 485 |  | Painting 1st coat | 8d | 2026-02-15 | 2026-02-23 | 469, 482, 483, 484 |  |
| 486 |  | False ceiling | 8d | 2026-02-23 | 2026-03-03 | 470, 485 |  |
| 487 | 37200.37300.37500.37900.39000.40300.41300.86200 | **15th Floor** | 92.81d | 2025-10-29 | 2026-03-16 |  | start no earlier than 2025-10-29 |
| 488 |  | Block Work | 8d | 2025-10-29 | 2025-12-21 | 472FS+0.25d |  |
| 489 |  | Door Frame Fixing | 9d | 2025-12-25 | 2026-01-03 | 473, 488 |  |
| 490 |  | Internal Plumbing Works | 8d | 2025-12-23 | 2025-12-31 | 474, 488 |  |

| ID | WBS | Task | Duration | Start | Finish | Predecessors | Constraint |
| --- | --- | --- | --- | --- | --- | --- | --- |
| 491 |  | Waterproofing | 10d | 2026-01-04 | 2026-01-14 | 475, 490 |  |
| 492 |  | Internal Plaster | 53.81d | 2026-01-05 | 2026-02-28 | 476FS+0.25d |  |
| 493 |  | IPS flooring work | 10d | 2026-01-20 | 2026-01-29 | 477, 489, 490, 491 |  |
| 494 |  | Toilet dado work | 8d | 2026-02-28 | 2026-03-08 | 478, 491, 492 |  |
| 495 |  | Toilet flooring work | 8d | 2026-03-08 | 2026-03-16 | 479, 494 |  |
| 496 |  | Living dinning flooring | 7d | 2026-01-30 | 2026-02-06 | 480FS+0.25d |  |
| 497 |  | Aluminium door-window fixing | 10d | 2026-02-14 | 2026-02-24 | 481FS+0.25d |  |
| 498 |  | Putty primer coat | 6d | 2026-02-06 | 2026-02-12 | 482, 496 |  |
| 499 |  | Door shutter fixing | 8d | 2026-02-07 | 2026-02-15 | 483, 496 |  |
| 500 |  | Electrical wiring work | 8d | 2026-02-15 | 2026-02-23 | 484, 499 |  |
| 501 |  | Painting 1st coat | 8d | 2026-02-23 | 2026-03-03 | 485, 498, 499, 500 |  |
| 502 |  | False ceiling | 8d | 2026-03-03 | 2026-03-11 | 486, 501 |  |
| 503 | 37200.37300.37500.37900.39000.40300.41300.86100 | **16th Floor** | 92.56d | 2025-12-21 | 2026-03-24 |  | start no earlier than 2025-12-21 |
| 504 |  | Block Work | 8d | 2025-12-21 | 2025-12-29 | 488FS+0.25d |  |
| 505 |  | Door Frame Fixing | 9d | 2026-01-03 | 2026-01-12 | 489, 504 |  |
| 506 |  | Internal Plumbing Works | 8d | 2025-12-31 | 2026-01-08 | 490, 504 |  |
| 507 |  | Waterproofing | 10d | 2026-01-14 | 2026-01-24 | 491, 506 |  |
| 508 |  | Internal Plaster | 5d | 2026-02-28 | 2026-03-05 | 492FS+0.25d |  |
| 509 |  | IPS flooring work | 10d | 2026-01-30 | 2026-02-08 | 493, 505, 506, 507 |  |
| 510 |  | Toilet dado work | 8d | 2026-03-08 | 2026-03-16 | 494, 507, 508 |  |
| 511 |  | Toilet flooring work | 8d | 2026-03-16 | 2026-03-24 | 495, 510 |  |
| 512 |  | Living dinning flooring | 7d | 2026-02-06 | 2026-02-13 | 496FS+0.25d |  |
| 513 |  | Aluminium door-window fixing | 10d | 2026-02-24 | 2026-03-06 | 497FS+0.25d |  |
| 514 |  | Putty primer coat | 6d | 2026-02-13 | 2026-02-19 | 498, 512 |  |
| 515 |  | Door shutter fixing | 8d | 2026-02-15 | 2026-02-23 | 499, 512 |  |
| 516 |  | Electrical wiring work | 8d | 2026-02-23 | 2026-03-03 | 500, 515 |  |
| 517 |  | Painting 1st coat | 8d | 2026-03-03 | 2026-03-11 | 501, 514, 515, 516 |  |
| 518 |  | False ceiling | 8d | 2026-03-11 | 2026-03-19 | 502, 517 |  |
| 519 | 37200.37300.37500.37900.39000.40300.41300.86000 | **17th Floor** | 92.31d | 2025-12-29 | 2026-04-01 |  | start no earlier than 2025-12-29 |
| 520 |  | Block Work | 8d | 2025-12-29 | 2026-01-06 | 504FS+0.25d |  |
| 521 |  | Door Frame Fixing | 9d | 2026-01-12 | 2026-01-21 | 505, 520 |  |
| 522 |  | Internal Plumbing Works | 8d | 2026-01-08 | 2026-01-16 | 506, 520 |  |
| 523 |  | Waterproofing | 10d | 2026-01-24 | 2026-02-03 | 507, 522 |  |
| 524 |  | Internal Plaster | 5d | 2026-03-05 | 2026-03-10 | 508FS+0.25d |  |
| 525 |  | IPS flooring work | 10d | 2026-02-09 | 2026-02-18 | 509, 521, 522, 523 |  |
| 526 |  | Toilet dado work | 8d | 2026-03-16 | 2026-03-24 | 510, 523, 524 |  |
| 527 |  | Toilet flooring work | 8d | 2026-03-24 | 2026-04-01 | 511, 526 |  |
| 528 |  | Living dinning flooring | 7d | 2026-02-13 | 2026-02-20 | 512FS+0.25d |  |
| 529 |  | Aluminium door-window fixing | 10d | 2026-03-06 | 2026-03-16 | 513FS+0.25d |  |
| 530 |  | Putty primer coat | 6d | 2026-02-20 | 2026-02-26 | 514, 528 |  |
| 531 |  | Door shutter fixing | 8d | 2026-02-23 | 2026-03-03 | 515, 528 |  |
| 532 |  | Electrical wiring work | 8d | 2026-03-03 | 2026-03-11 | 516, 531 |  |
| 533 |  | Painting 1st coat | 8d | 2026-03-11 | 2026-03-19 | 517, 530, 531, 532 |  |
| 534 |  | False ceiling | 8d | 2026-03-19 | 2026-03-27 | 518, 533 |  |
| 535 | 37200.37300.37500.37900.39000.40300.41300.85900 | **18th Floor** | 92.06d | 2026-01-07 | 2026-04-09 |  | start no earlier than 2026-01-07 |
| 536 |  | Block Work | 8d | 2026-01-07 | 2026-01-14 | 520FS+0.25d |  |
| 537 |  | Door Frame Fixing | 9d | 2026-01-21 | 2026-01-30 | 521, 536 |  |
| 538 |  | Internal Plumbing Works | 8d | 2026-01-16 | 2026-01-24 | 522, 536 |  |
| 539 |  | Waterproofing | 10d | 2026-02-03 | 2026-02-13 | 523, 538 |  |
| 540 |  | Internal Plaster | 5d | 2026-03-10 | 2026-03-15 | 524FS+0.25d |  |
| 541 |  | IPS flooring work | 10d | 2026-02-19 | 2026-02-28 | 525, 537, 538, 539 |  |
| 542 |  | Toilet dado work | 8d | 2026-03-24 | 2026-04-01 | 526, 539, 540 |  |
| 543 |  | Toilet flooring work | 8d | 2026-04-01 | 2026-04-09 | 527, 542 |  |
| 544 |  | Living dinning flooring | 7d | 2026-02-21 | 2026-02-27 | 528FS+0.25d |  |
| 545 |  | Aluminium door-window fixing | 7d | 2026-03-16 | 2026-03-23 | 529, 541, 544 |  |
| 546 |  | Putty primer coat | 6d | 2026-02-28 | 2026-03-05 | 530, 544 |  |
| 547 |  | Door shutter fixing | 8d | 2026-03-03 | 2026-03-11 | 531, 544 |  |
| 548 |  | Electrical wiring work | 8d | 2026-03-11 | 2026-03-19 | 532, 547 |  |
| 549 |  | Painting 1st coat | 8d | 2026-03-19 | 2026-03-27 | 533, 546, 547, 548 |  |
| 550 |  | False ceiling | 8d | 2026-03-27 | 2026-04-04 | 534, 549 |  |
| 551 | 37200.37300.37500.37900.39000.40300.41300.85800 | **19th Floor** | 96.81d | 2026-01-15 | 2026-04-22 |  | start no earlier than 2026-01-15 |
| 552 |  | Block Work | 8d | 2026-01-15 | 2026-01-23 | 536FS+0.25d |  |
| 553 |  | Door Frame Fixing | 9d | 2026-01-30 | 2026-02-08 | 537, 552 |  |
| 554 |  | Internal Plumbing Works | 8d | 2026-01-24 | 2026-02-01 | 538, 552 |  |
| 555 |  | Waterproofing | 10d | 2026-02-13 | 2026-02-23 | 539, 554 |  |
| 556 |  | Internal Plaster | 8d | 2026-03-16 | 2026-03-24 | 540FS+0.25d |  |
| 557 |  | Internal Plaster | 9d | 2026-03-24 | 2026-04-02 | 540, 553, 554, 555, 556 |  |
| 558 |  | IPS flooring work | 10d | 2026-04-02 | 2026-04-12 | 541, 553, 555, 557 |  |
| 559 |  | Toilet dado work | 8d | 2026-04-02 | 2026-04-10 | 542, 555, 557 |  |
| 560 |  | Toilet flooring work | 8d | 2026-04-10 | 2026-04-18 | 543, 559 |  |

| ID | WBS | Task | Duration | Start | Finish | Predecessors | Constraint |
| --- | --- | --- | --- | --- | --- | --- | --- |
| 561 |  | Living dinning flooring | 7d | 2026-02-28 | 2026-03-07 | 544FS+0.25d |  |
| 562 |  | Aluminium door-window fixing | 10d | 2026-04-12 | 2026-04-22 | 545, 558, 561 |  |
| 563 |  | Putty primer coat | 6d | 2026-03-07 | 2026-03-13 | 546, 561 |  |
| 564 |  | Door shutter fixing | 8d | 2026-03-11 | 2026-03-19 | 547, 561 |  |
| 565 |  | Electrical wiring work | 8d | 2026-03-19 | 2026-03-27 | 548, 564 |  |
| 566 |  | Painting 1st coat | 8d | 2026-03-27 | 2026-04-04 | 549, 563, 564, 565 |  |
| 567 |  | False ceiling | 8d | 2026-04-04 | 2026-04-12 | 550, 566 |  |
| 568 | 37200.37300.37500.37900.39000.40300.41300.85700 | **20th Floor** | 95.56d | 2026-01-23 | 2026-04-29 |  | start no earlier than 2026-01-23 |
| 569 |  | Block Work | 8d | 2026-01-23 | 2026-01-31 | 552FS+0.25d |  |
| 570 |  | Door Frame Fixing | 9d | 2026-02-08 | 2026-02-17 | 553, 569 |  |
| 571 |  | Internal Plumbing Works | 8d | 2026-02-01 | 2026-02-09 | 554, 569 |  |
| 572 |  | Waterproofing | 10d | 2026-02-23 | 2026-03-05 | 555, 571 |  |
| 573 |  | Internal Plaster | 5d | 2026-04-02 | 2026-04-07 | 557FS+0.25d |  |
| 574 |  | IPS flooring work | 10d | 2026-04-12 | 2026-04-22 | 558, 570, 572, 573 |  |
| 575 |  | Toilet dado work | 8d | 2026-04-10 | 2026-04-18 | 559, 572, 573 |  |
| 576 |  | Toilet flooring work | 8d | 2026-04-18 | 2026-04-26 | 560, 575 |  |
| 577 |  | Living dinning flooring | 7d | 2026-03-07 | 2026-03-14 | 561FS+0.25d |  |
| 578 |  | Aluminium door-window fixing | 7d | 2026-04-22 | 2026-04-29 | 562, 574, 577 |  |
| 579 |  | Putty primer coat | 6d | 2026-03-14 | 2026-03-20 | 563, 577 |  |
| 580 |  | Door shutter fixing | 8d | 2026-03-19 | 2026-03-27 | 564, 577 |  |
| 581 |  | Electrical wiring work | 8d | 2026-03-27 | 2026-04-04 | 565, 580 |  |
| 582 |  | Painting 1st coat | 8d | 2026-04-04 | 2026-04-12 | 566, 579, 580, 581 |  |
| 583 |  | False ceiling | 8d | 2026-04-12 | 2026-04-20 | 567, 582 |  |
| 584 | 37200.37300.37500.37900.39000.40300.41300.85600 | **21st Floor** | 102.56d | 2026-01-31 | 2026-05-14 |  | start no earlier than 2026-01-31 |
| 585 |  | Block Work | 8d | 2026-01-31 | 2026-02-08 | 569FS+0.25d |  |
| 586 |  | Door Frame Fixing | 9d | 2026-02-17 | 2026-02-26 | 570, 585 |  |
| 587 |  | Internal Plumbing Works | 8d | 2026-02-10 | 2026-02-17 | 571FS+0.25d |  |
| 588 |  | Waterproofing | 10d | 2026-03-05 | 2026-03-15 | 572, 587 |  |
| 589 |  | Internal Plaster | 8d | 2026-02-09 | 2026-02-16 | 585FS+0.25d |  |
| 590 |  | IPS flooring work | 10d | 2026-04-22 | 2026-05-02 | 574FS+0.25d |  |
| 591 |  | Toilet dado work | 8d | 2026-04-18 | 2026-04-26 | 575, 588, 589 |  |
| 592 |  | Toilet flooring work | 8d | 2026-04-26 | 2026-05-04 | 576, 591 |  |
| 593 |  | Living dinning flooring | 12d | 2026-03-14 | 2026-03-26 | 577FS+0.25d |  |
| 594 |  | Aluminium door-window fixing | 12d | 2026-05-02 | 2026-05-14 | 578, 590, 593 |  |
| 595 |  | Putty primer coat | 6d | 2026-03-26 | 2026-04-01 | 579, 593 |  |
| 596 |  | Door shutter fixing | 8d | 2026-03-27 | 2026-04-04 | 580, 593 |  |
| 597 |  | Electrical wiring work | 8d | 2026-04-04 | 2026-04-12 | 581, 596 |  |
| 598 |  | Painting 1st coat | 8d | 2026-04-12 | 2026-04-20 | 582, 595, 596, 597 |  |
| 599 |  | False ceiling | 8d | 2026-04-20 | 2026-04-28 | 583, 598 |  |
| 600 | 37200.37300.37500.37900.39000.40300.41300.85500 | **22nd Floor** | 131.06d | 2026-02-09 | 2026-06-20 |  | start no earlier than 2026-02-09 |
| 601 |  | Block Work | 8d | 2026-02-09 | 2026-02-16 | 585FS+0.25d |  |
| 602 |  | Door Frame Fixing | 9d | 2026-02-26 | 2026-03-07 | 586, 601 |  |
| 603 |  | Internal Plumbing Works | 8d | 2026-02-18 | 2026-02-25 | 587, 601 |  |
| 604 |  | Waterproofing | 10d | 2026-03-15 | 2026-03-25 | 588, 603 |  |
| 605 |  | Internal Plaster | 5d | 2026-02-17 | 2026-02-22 | 589FS+0.25d |  |
| 606 |  | IPS flooring work | 10d | 2026-05-02 | 2026-05-12 | 590, 602, 604, 605 |  |
| 607 |  | Toilet dado work | 8d | 2026-04-26 | 2026-05-04 | 591, 604, 605 |  |
| 608 |  | Toilet flooring work | 8d | 2026-05-04 | 2026-05-12 | 592, 607 |  |
| 609 |  | Living dinning flooring | 7d | 2026-05-12 | 2026-05-19 | 593, 602, 608 |  |
| 610 |  | Aluminium door-window fixing | 7d | 2026-05-19 | 2026-05-26 | 594, 606, 609 |  |
| 611 |  | Putty primer coat | 6d | 2026-05-19 | 2026-05-25 | 595, 609 |  |
| 612 |  | Door shutter fixing | 8d | 2026-05-19 | 2026-05-27 | 596, 609 |  |
| 613 |  | Electrical wiring work | 8d | 2026-05-27 | 2026-06-04 | 597, 612 |  |
| 614 |  | Painting 1st coat | 8d | 2026-06-04 | 2026-06-12 | 598, 611, 612, 613 |  |
| 615 |  | False ceiling | 8d | 2026-06-12 | 2026-06-20 | 599, 614 |  |
| 616 | 37200.37300.37500.37900.39000.40300.41300.85400 | **23rd Floor** | 130.81d | 2026-02-17 | 2026-06-28 |  | start no earlier than 2026-02-17 |
| 617 |  | Block Work | 8d | 2026-02-17 | 2026-02-25 | 601FS+0.25d |  |
| 618 |  | Door Frame Fixing | 9d | 2026-03-07 | 2026-03-16 | 602, 617 |  |
| 619 |  | Internal Plumbing Works | 8d | 2026-02-26 | 2026-03-05 | 603, 617 |  |
| 620 |  | Waterproofing | 10d | 2026-03-25 | 2026-04-04 | 604, 619 |  |
| 621 |  | Internal Plaster | 5d | 2026-02-22 | 2026-02-27 | 605FS+0.25d |  |
| 622 |  | IPS flooring work | 10d | 2026-05-12 | 2026-05-22 | 606, 618, 620, 621 |  |
| 623 |  | Toilet dado work | 8d | 2026-05-04 | 2026-05-12 | 607, 620, 621 |  |
| 624 |  | Toilet flooring work | 8d | 2026-05-12 | 2026-05-20 | 608, 623 |  |
| 625 |  | Living dinning flooring | 7d | 2026-05-20 | 2026-05-27 | 609, 618, 624 |  |
| 626 |  | Aluminium door-window fixing | 7d | 2026-05-27 | 2026-06-03 | 610, 622, 625 |  |
| 627 |  | Putty primer coat | 6d | 2026-05-27 | 2026-06-02 | 611, 625 |  |
| 628 |  | Door shutter fixing | 8d | 2026-05-27 | 2026-06-04 | 612, 625 |  |
| 629 |  | Electrical wiring work | 8d | 2026-06-04 | 2026-06-12 | 613, 628 |  |
| 630 |  | Painting 1st coat | 8d | 2026-06-12 | 2026-06-20 | 614, 627, 628, 629 |  |

| ID | WBS | Task | Duration | Start | Finish | Predecessors | Constraint |
| --- | --- | --- | --- | --- | --- | --- | --- |
| 631 |  | False ceiling | 8d | 2026-06-20 | 2026-06-28 | 615, 630 |  |
| 632 | 37200.37300.37500.37900.39000.40300.41300.85300 | **24th Floor** | 135.56d | 2026-02-25 | 2026-07-11 |  | start no earlier than 2026-02-25 |
| 633 |  | Block Work | 8d | 2026-02-25 | 2026-03-05 | 617FS+0.25d |  |
| 634 |  | Door Frame Fixing | 9d | 2026-03-16 | 2026-03-25 | 618, 633 |  |
| 635 |  | Internal Plumbing Works | 8d | 2026-03-06 | 2026-03-13 | 619, 633 |  |
| 636 |  | Waterproofing | 10d | 2026-04-04 | 2026-04-14 | 620, 635 |  |
| 637 |  | Internal Plaster | 8d | 2026-04-14 | 2026-04-22 | 621, 634, 635, 636 |  |
| 638 |  | IPS flooring work | 10d | 2026-05-22 | 2026-06-01 | 622, 634, 636, 637 |  |
| 639 |  | Toilet dado work | 8d | 2026-05-12 | 2026-05-20 | 623, 636, 637 |  |
| 640 |  | Toilet flooring work | 8d | 2026-05-20 | 2026-05-28 | 624, 639 |  |
| 641 |  | Living dinning flooring | 12d | 2026-05-28 | 2026-06-09 | 625, 634, 640 |  |
| 642 |  | Aluminium door-window fixing | 12d | 2026-06-09 | 2026-06-21 | 626, 638, 641 |  |
| 643 |  | Putty primer coat | 6d | 2026-06-09 | 2026-06-15 | 627, 641 |  |
| 644 |  | Door shutter fixing | 8d | 2026-06-09 | 2026-06-17 | 628, 641 |  |
| 645 |  | Electrical wiring work | 8d | 2026-06-17 | 2026-06-25 | 629, 644 |  |
| 646 |  | Painting 1st coat | 8d | 2026-06-25 | 2026-07-03 | 630, 643, 644, 645 |  |
| 647 |  | False ceiling | 8d | 2026-07-03 | 2026-07-11 | 631, 646 |  |
| 648 | 37200.37300.37500.37900.39000.40300.41300.85200 | **25th Floor** | 94d | 2026-04-25 | 2026-07-28 |  | start no earlier than 2026-04-25 |
| 649 |  | Block Work | 8d | 2026-04-25 | 2026-05-03 | 248, 633 |  |
| 650 |  | Door Frame Fixing | 9d | 2026-05-03 | 2026-05-12 | 634, 649 |  |
| 651 |  | Internal Plumbing Works | 8d | 2026-05-03 | 2026-05-11 | 635, 649 |  |
| 652 |  | Waterproofing | 10d | 2026-05-11 | 2026-05-21 | 636, 651 |  |
| 653 |  | Internal Plaster | 8d | 2026-05-21 | 2026-05-29 | 637, 650, 651, 652 |  |
| 654 |  | IPS flooring work | 10d | 2026-06-01 | 2026-06-11 | 638, 650, 652, 653 |  |
| 655 |  | Toilet dado work | 8d | 2026-05-29 | 2026-06-06 | 639, 652, 653 |  |
| 656 |  | Toilet flooring work | 8d | 2026-06-06 | 2026-06-14 | 640, 655 |  |
| 657 |  | Living dinning flooring | 12d | 2026-06-14 | 2026-06-26 | 641, 650, 656 |  |
| 658 |  | Aluminium door-window fixing | 12d | 2026-06-26 | 2026-07-08 | 642, 654, 657 |  |
| 659 |  | Putty primer coat | 6d | 2026-06-26 | 2026-07-02 | 643, 657 |  |
| 660 |  | Door shutter fixing | 8d | 2026-06-26 | 2026-07-04 | 644, 657 |  |
| 661 |  | Electrical wiring work | 8d | 2026-07-04 | 2026-07-12 | 645, 660 |  |
| 662 |  | Painting 1st coat | 8d | 2026-07-12 | 2026-07-20 | 646, 659, 660, 661 |  |
| 663 |  | False ceiling | 8d | 2026-07-20 | 2026-07-28 | 647, 662 |  |
| 664 | 37200.37300.37500.37900.39000.40300.41300.85100 | **26th Floor** | 96d | 2026-05-05 | 2026-08-09 |  | start no earlier than 2026-05-05 |
| 665 |  | Block Work | 8d | 2026-05-05 | 2026-05-13 | 249, 649 |  |
| 666 |  | Door Frame Fixing | 9d | 2026-05-13 | 2026-05-22 | 650, 665 |  |
| 667 |  | Internal Plumbing Works | 8d | 2026-05-13 | 2026-05-21 | 651, 665 |  |
| 668 |  | Waterproofing | 10d | 2026-05-21 | 2026-05-31 | 652, 667 |  |
| 669 |  | Internal Plaster | 8d | 2026-05-31 | 2026-06-08 | 653, 666, 667, 668 |  |
| 670 |  | IPS flooring work | 10d | 2026-06-11 | 2026-06-21 | 654, 666, 668, 669 |  |
| 671 |  | Toilet dado work | 8d | 2026-06-08 | 2026-06-16 | 655, 668, 669 |  |
| 672 |  | Toilet flooring work | 8d | 2026-06-16 | 2026-06-24 | 656, 671 |  |
| 673 |  | Living dinning flooring | 12d | 2026-06-26 | 2026-07-08 | 657, 666, 672 |  |
| 674 |  | Aluminium door-window fixing | 12d | 2026-07-08 | 2026-07-20 | 658, 670, 673 |  |
| 675 |  | Putty primer coat | 6d | 2026-07-08 | 2026-07-14 | 659, 673 |  |
| 676 |  | Door shutter fixing | 8d | 2026-07-08 | 2026-07-16 | 660, 673 |  |
| 677 |  | Electrical wiring work | 8d | 2026-07-16 | 2026-07-24 | 661, 676 |  |
| 678 |  | Painting 1st coat | 8d | 2026-07-24 | 2026-08-01 | 662, 675, 676, 677 |  |
| 679 |  | False ceiling | 8d | 2026-08-01 | 2026-08-09 | 663, 678 |  |
| 680 | 37200.37300.37500.37900.39000.40300.41300.85000 | **27th Floor** | 95.25d | 2026-05-18 | 2026-08-21 |  | start no earlier than 2026-05-18 |
| 681 |  | Block Work | 8d | 2026-05-18 | 2026-05-26 | 250, 665 |  |
| 682 |  | Door Frame Fixing | 9d | 2026-05-26 | 2026-06-04 | 666, 681 |  |
| 683 |  | Internal Plumbing Works | 8d | 2026-05-26 | 2026-06-03 | 667, 681 |  |
| 684 |  | Waterproofing | 10d | 2026-06-03 | 2026-06-13 | 668, 683 |  |
| 685 |  | Internal Plaster | 8d | 2026-06-13 | 2026-06-21 | 669, 682, 683, 684 |  |
| 686 |  | IPS flooring work | 10d | 2026-06-21 | 2026-07-01 | 670, 682, 684, 685 |  |
| 687 |  | Toilet dado work | 8d | 2026-06-21 | 2026-06-29 | 671, 684, 685 |  |
| 688 |  | Toilet flooring work | 8d | 2026-06-29 | 2026-07-07 | 672, 687 |  |
| 689 |  | Living dinning flooring | 12d | 2026-07-08 | 2026-07-20 | 673, 682, 688 |  |
| 690 |  | Aluminium door-window fixing | 12d | 2026-07-20 | 2026-08-01 | 674, 686, 689 |  |
| 691 |  | Putty primer coat | 6d | 2026-07-20 | 2026-07-26 | 675, 689 |  |
| 692 |  | Door shutter fixing | 8d | 2026-07-20 | 2026-07-28 | 676, 689 |  |
| 693 |  | Electrical wiring work | 8d | 2026-07-28 | 2026-08-05 | 677, 692 |  |
| 694 |  | Painting 1st coat | 8d | 2026-08-05 | 2026-08-13 | 678, 691, 692, 693 |  |
| 695 |  | False ceiling | 8d | 2026-08-13 | 2026-08-21 | 679, 694 |  |
| 696 | 37200.37300.37500.37900.39000.40300.41300.84900 | **28th Floor** | 95.5d | 2026-05-30 | 2026-09-02 |  | start no earlier than 2026-05-30 |
| 697 |  | Block Work | 8d | 2026-05-30 | 2026-06-06 | 251, 681 |  |
| 698 |  | Door Frame Fixing | 9d | 2026-06-07 | 2026-06-15 | 682, 697 |  |
| 699 |  | Internal Plumbing Works | 8d | 2026-06-07 | 2026-06-14 | 683, 697 |  |
| 700 |  | Waterproofing | 10d | 2026-06-15 | 2026-06-24 | 684, 699 |  |

| ID | WBS | Task | Duration | Start | Finish | Predecessors | Constraint |
| --- | --- | --- | --- | --- | --- | --- | --- |
| 701 |  | Internal Plaster | 8d | 2026-06-25 | 2026-07-02 | 685, 698, 699, 700 |  |
| 702 |  | IPS flooring work | 10d | 2026-07-03 | 2026-07-12 | 686, 698, 700, 701 |  |
| 703 |  | Toilet dado work | 8d | 2026-07-03 | 2026-07-10 | 687, 700, 701 |  |
| 704 |  | Toilet flooring work | 8d | 2026-07-11 | 2026-07-18 | 688, 703 |  |
| 705 |  | Living dinning flooring | 12d | 2026-07-20 | 2026-08-01 | 689, 698, 704 |  |
| 706 |  | Aluminium door-window fixing | 12d | 2026-08-01 | 2026-08-13 | 690, 702, 705 |  |
| 707 |  | Putty primer coat | 6d | 2026-08-01 | 2026-08-07 | 691, 705 |  |
| 708 |  | Door shutter fixing | 8d | 2026-08-01 | 2026-08-09 | 692, 705 |  |
| 709 |  | Electrical wiring work | 8d | 2026-08-09 | 2026-08-17 | 693, 708 |  |
| 710 |  | Painting 1st coat | 8d | 2026-08-17 | 2026-08-25 | 694, 707, 708, 709 |  |
| 711 |  | False ceiling | 8d | 2026-08-25 | 2026-09-02 | 695, 710 |  |
| 712 | 37200.37300.37500.37900.39000.40300.41300.84800 | **29th Floor** | 94.75d | 2026-06-11 | 2026-09-14 |  | start no earlier than 2026-06-11 |
| 713 |  | Block Work | 8d | 2026-06-11 | 2026-06-19 | 252, 697 |  |
| 714 |  | Door Frame Fixing | 9d | 2026-06-19 | 2026-06-28 | 698, 713 |  |
| 715 |  | Internal Plumbing Works | 8d | 2026-06-19 | 2026-06-27 | 699, 713 |  |
| 716 |  | Waterproofing | 10d | 2026-06-27 | 2026-07-07 | 700, 715 |  |
| 717 |  | Internal Plaster | 8d | 2026-07-07 | 2026-07-15 | 701, 714, 715, 716 |  |
| 718 |  | IPS flooring work | 10d | 2026-07-15 | 2026-07-25 | 702, 714, 716, 717 |  |
| 719 |  | Toilet dado work | 8d | 2026-07-15 | 2026-07-23 | 703, 716, 717 |  |
| 720 |  | Toilet flooring work | 8d | 2026-07-23 | 2026-07-31 | 704, 719 |  |
| 721 |  | Living dinning flooring | 12d | 2026-08-01 | 2026-08-13 | 705, 714, 720 |  |
| 722 |  | Aluminium door-window fixing | 12d | 2026-08-13 | 2026-08-25 | 706, 718, 721 |  |
| 723 |  | Putty primer coat | 6d | 2026-08-13 | 2026-08-19 | 707, 721 |  |
| 724 |  | Door shutter fixing | 8d | 2026-08-13 | 2026-08-21 | 708, 721 |  |
| 725 |  | Electrical wiring work | 8d | 2026-08-21 | 2026-08-29 | 709, 724 |  |
| 726 |  | Painting 1st coat | 8d | 2026-08-29 | 2026-09-06 | 710, 723, 724, 725 |  |
| 727 |  | False ceiling | 8d | 2026-09-06 | 2026-09-14 | 711, 726 |  |
| 728 | 37200.37300.37500.37900.39000.40300.41300.84700 | **30th Floor** | 95d | 2026-06-23 | 2026-09-26 |  | start no earlier than 2026-06-23 |
| 729 |  | Block Work | 8d | 2026-06-23 | 2026-07-01 | 253, 713 |  |
| 730 |  | Door Frame Fixing | 9d | 2026-07-01 | 2026-07-10 | 714, 729 |  |
| 731 |  | Internal Plumbing Works | 8d | 2026-07-01 | 2026-07-09 | 715, 729 |  |
| 732 |  | Waterproofing | 10d | 2026-07-09 | 2026-07-19 | 716, 731 |  |
| 733 |  | Internal Plaster | 8d | 2026-07-19 | 2026-07-27 | 717, 730, 731, 732 |  |
| 734 |  | IPS flooring work | 10d | 2026-07-27 | 2026-08-06 | 718, 730, 732, 733 |  |
| 735 |  | Toilet dado work | 8d | 2026-07-27 | 2026-08-04 | 719, 732, 733 |  |
| 736 |  | Toilet flooring work | 8d | 2026-08-04 | 2026-08-12 | 720, 735 |  |
| 737 |  | Living dinning flooring | 12d | 2026-08-13 | 2026-08-25 | 721, 730, 736 |  |
| 738 |  | Aluminium door-window fixing | 12d | 2026-08-25 | 2026-09-06 | 722, 734, 737 |  |
| 739 |  | Putty primer coat | 6d | 2026-08-25 | 2026-08-31 | 723, 737 |  |
| 740 |  | Door shutter fixing | 8d | 2026-08-25 | 2026-09-02 | 724, 737 |  |
| 741 |  | Electrical wiring work | 8d | 2026-09-02 | 2026-09-10 | 725, 740 |  |
| 742 |  | Painting 1st coat | 8d | 2026-09-10 | 2026-09-18 | 726, 739, 740, 741 |  |
| 743 |  | False ceiling | 8d | 2026-09-18 | 2026-09-26 | 727, 742 |  |
| 744 | 37200.37300.37500.37900.39000.40300.41300.84600 | **31st Floor** | 94d | 2026-07-08 | 2026-10-10 |  | start no earlier than 2026-07-08 |
| 745 |  | Block Work | 8d | 2026-07-08 | 2026-07-16 | 254, 729 |  |
| 746 |  | Door Frame Fixing | 9d | 2026-07-16 | 2026-07-25 | 730, 745 |  |
| 747 |  | Internal Plumbing Works | 8d | 2026-07-16 | 2026-07-24 | 731, 745 |  |
| 748 |  | Waterproofing | 10d | 2026-07-24 | 2026-08-03 | 732, 747 |  |
| 749 |  | Internal Plaster | 8d | 2026-08-03 | 2026-08-11 | 733, 746, 747, 748 |  |
| 750 |  | IPS flooring work | 10d | 2026-08-11 | 2026-08-21 | 734, 746, 748, 749 |  |
| 751 |  | Toilet dado work | 8d | 2026-08-11 | 2026-08-19 | 735, 748, 749 |  |
| 752 |  | Toilet flooring work | 8d | 2026-08-19 | 2026-08-27 | 736, 751 |  |
| 753 |  | Living dinning flooring | 12d | 2026-08-27 | 2026-09-08 | 737, 746, 752 |  |
| 754 |  | Aluminium door-window fixing | 12d | 2026-09-08 | 2026-09-20 | 738, 750, 753 |  |
| 755 |  | Putty primer coat | 6d | 2026-09-08 | 2026-09-14 | 739, 753 |  |
| 756 |  | Door shutter fixing | 8d | 2026-09-08 | 2026-09-16 | 740, 753 |  |
| 757 |  | Electrical wiring work | 8d | 2026-09-16 | 2026-09-24 | 741, 756 |  |
| 758 |  | Painting 1st coat | 8d | 2026-09-24 | 2026-10-02 | 742, 755, 756, 757 |  |
| 759 |  | False ceiling | 8d | 2026-10-02 | 2026-10-10 | 743, 758 |  |
| 760 | 37200.37300.37500.37900.39000.40300.41300.84500 | **32nd Floor** | 94d | 2026-08-19 | 2027-01-05 |  | start no earlier than 2026-08-19 |
| 761 |  | Block Work | 8d | 2026-08-19 | 2026-08-27 | 255, 745 |  |
| 762 |  | Door Frame Fixing | 9d | 2026-08-27 | 2026-09-05 | 746, 761 |  |
| 763 |  | Internal Plumbing Works | 8d | 2026-08-27 | 2026-09-04 | 747, 761 |  |
| 764 |  | Waterproofing | 10d | 2026-09-04 | 2026-09-14 | 748, 763 |  |
| 765 |  | Internal Plaster | 8d | 2026-09-14 | 2026-09-22 | 749, 762, 763, 764 |  |
| 766 |  | IPS flooring work | 10d | 2026-09-22 | 2026-10-02 | 750, 762, 764, 765 |  |
| 767 |  | Toilet dado work | 8d | 2026-09-22 | 2026-09-30 | 751, 764, 765 |  |
| 768 |  | Toilet flooring work | 8d | 2026-09-30 | 2026-10-08 | 752, 767 |  |
| 769 |  | Living dinning flooring | 12d | 2026-10-08 | 2026-10-20 | 753, 762, 768 |  |
| 770 |  | Aluminium door-window fixing | 12d | 2026-10-20 | 2026-12-16 | 754, 766, 769 |  |

| ID | WBS | Task | Duration | Start | Finish | Predecessors | Constraint |
| --- | --- | --- | --- | --- | --- | --- | --- |
| 771 |  | Putty primer coat | 6d | 2026-10-20 | 2026-10-26 | 755, 769 |  |
| 772 |  | Door shutter fixing | 8d | 2026-10-20 | 2026-10-28 | 756, 769 |  |
| 773 |  | Electrical wiring work | 8d | 2026-10-28 | 2026-12-20 | 757, 772 |  |
| 774 |  | Painting 1st coat | 8d | 2026-12-20 | 2026-12-28 | 758, 771, 772, 773 |  |
| 775 |  | False ceiling | 8d | 2026-12-28 | 2027-01-05 | 759, 774 |  |
| 776 | 37200.37300.37500.37900.39000.40300.41300.84400 | **33rd Floor** | 98d | 2026-08-27 | 2027-01-17 |  | start no earlier than 2026-08-27 |
| 777 |  | Block Work | 8d | 2026-08-27 | 2026-09-04 | 256, 761 |  |
| 778 |  | Door Frame Fixing | 9d | 2026-09-05 | 2026-09-14 | 762, 777 |  |
| 779 |  | Internal Plumbing Works | 8d | 2026-09-04 | 2026-09-12 | 763, 777 |  |
| 780 |  | Waterproofing | 10d | 2026-09-14 | 2026-09-24 | 764, 779 |  |
| 781 |  | Internal Plaster | 8d | 2026-09-24 | 2026-10-02 | 765, 778, 779, 780 |  |
| 782 |  | IPS flooring work | 10d | 2026-10-02 | 2026-10-12 | 766, 778, 780, 781 |  |
| 783 |  | Toilet dado work | 8d | 2026-10-02 | 2026-10-10 | 767, 780, 781 |  |
| 784 |  | Toilet flooring work | 8d | 2026-10-10 | 2026-10-18 | 768, 783 |  |
| 785 |  | Living dinning flooring | 12d | 2026-10-20 | 2026-12-16 | 769, 778, 784 |  |
| 786 |  | Aluminium door-window fixing | 12d | 2026-12-16 | 2026-12-28 | 770, 782, 785 |  |
| 787 |  | Putty primer coat | 6d | 2026-12-16 | 2026-12-22 | 771, 785 |  |
| 788 |  | Door shutter fixing | 8d | 2026-12-16 | 2026-12-24 | 772, 785 |  |
| 789 |  | Electrical wiring work | 8d | 2026-12-24 | 2027-01-01 | 773, 788 |  |
| 790 |  | Painting 1st coat | 8d | 2027-01-01 | 2027-01-09 | 774, 787, 788, 789 |  |
| 791 |  | False ceiling | 8d | 2027-01-09 | 2027-01-17 | 775, 790 |  |
| 792 | 37200.37300.37500.37900.39000.40300.41300.84300 | **34th Floor** | 102d | 2026-09-04 | 2027-01-29 |  | start no earlier than 2026-09-04 |
| 793 |  | Block Work | 8d | 2026-09-04 | 2026-09-12 | 257, 777 |  |
| 794 |  | Door Frame Fixing | 9d | 2026-09-14 | 2026-09-23 | 778, 793 |  |
| 795 |  | Internal Plumbing Works | 8d | 2026-09-12 | 2026-09-20 | 779, 793 |  |
| 796 |  | Waterproofing | 10d | 2026-09-24 | 2026-10-04 | 780, 795 |  |
| 797 |  | Internal Plaster | 8d | 2026-10-04 | 2026-10-12 | 781, 794, 795, 796 |  |
| 798 |  | IPS flooring work | 10d | 2026-10-12 | 2026-10-22 | 782, 794, 796, 797 |  |
| 799 |  | Toilet dado work | 8d | 2026-10-12 | 2026-10-20 | 783, 796, 797 |  |
| 800 |  | Toilet flooring work | 8d | 2026-10-20 | 2026-10-28 | 784, 799 |  |
| 801 |  | Living dinning flooring | 12d | 2026-12-16 | 2026-12-28 | 785, 794, 800 |  |
| 802 |  | Aluminium door-window fixing | 12d | 2026-12-28 | 2027-01-09 | 786, 798, 801 |  |
| 803 |  | Putty primer coat | 6d | 2026-12-28 | 2027-01-03 | 787, 801 |  |
| 804 |  | Door shutter fixing | 8d | 2026-12-28 | 2027-01-05 | 788, 801 |  |
| 805 |  | Electrical wiring work | 8d | 2027-01-05 | 2027-01-13 | 789, 804 |  |
| 806 |  | Painting 1st coat | 8d | 2027-01-13 | 2027-01-21 | 790, 803, 804, 805 |  |
| 807 |  | False ceiling | 8d | 2027-01-21 | 2027-01-29 | 791, 806 |  |
| 808 | 37200.37300.37500.37900.39000.40300.41300.84200 | **35th Floor** | 106d | 2026-09-12 | 2027-02-10 |  | start no earlier than 2026-09-12 |
| 809 |  | Block Work | 8d | 2026-09-12 | 2026-09-20 | 258, 793 |  |
| 810 |  | Door Frame Fixing | 9d | 2026-09-23 | 2026-10-02 | 794, 809 |  |
| 811 |  | Internal Plumbing Works | 8d | 2026-09-20 | 2026-09-28 | 795, 809 |  |
| 812 |  | Waterproofing | 10d | 2026-10-04 | 2026-10-14 | 796, 811 |  |
| 813 |  | Internal Plaster | 8d | 2026-10-14 | 2026-10-22 | 797, 810, 811, 812 |  |
| 814 |  | IPS flooring work | 10d | 2026-10-22 | 2026-12-16 | 798, 810, 812, 813 |  |
| 815 |  | Toilet dado work | 8d | 2026-10-22 | 2026-10-30 | 799, 812, 813 |  |
| 816 |  | Toilet flooring work | 8d | 2026-10-30 | 2026-12-22 | 800, 815 |  |
| 817 |  | Living dinning flooring | 12d | 2026-12-28 | 2027-01-09 | 801, 810, 816 |  |
| 818 |  | Aluminium door-window fixing | 12d | 2027-01-09 | 2027-01-21 | 802, 814, 817 |  |
| 819 |  | Putty primer coat | 6d | 2027-01-09 | 2027-01-15 | 803, 817 |  |
| 820 |  | Door shutter fixing | 8d | 2027-01-09 | 2027-01-17 | 804, 817 |  |
| 821 |  | Electrical wiring work | 8d | 2027-01-17 | 2027-01-25 | 805, 820 |  |
| 822 |  | Painting 1st coat | 8d | 2027-01-25 | 2027-02-02 | 806, 819, 820, 821 |  |
| 823 |  | False ceiling | 8d | 2027-02-02 | 2027-02-10 | 807, 822 |  |
| 824 | 37200.37300.37500.37900.39000.40300.191800 | **Terrace Finishing** | 79.88d | 2026-07-01 | 2026-09-19 |  | start no earlier than 2026-07-01 |
| 825 |  | Terrace waterproofing | 39.94d | 2026-07-01 | 2026-08-10 | 217 |  |
| 826 |  | Terrace finishing | 39.94d | 2026-08-10 | 2026-09-19 | 825 |  |
| 827 | 37200.37300.37500.37900.39000.40300.99700 | **Common Area Finishing** | 279.31d | 2025-07-25 | 2026-06-14 |  | start no earlier than 2025-07-25 |
| 828 |  | Block Work | 39.94d | 2025-07-25 | 2025-09-02 | 228FS+0.25d |  |
| 829 |  | Internal Plaster | 119.94d | 2025-08-29 | 2026-02-10 | 834SS+17.88d |  |
| 830 |  | Staircase railing fixing | 149.94d | 2026-01-15 | 2026-06-14 | 832SS+26.75d, 831SS+26.75d |  |
| 831 |  | Main staircase flooring | 149.94d | 2025-12-19 | 2026-05-18 | 832SS+13.38d |  |
| 832 |  | Fire staircase flooring | 149.94d | 2025-10-22 | 2026-05-05 | 829SS+13.38d, 836SS+26.75d |  |
| 833 |  | Fire door work | 59.94d | 2026-01-15 | 2026-03-16 | 831SS+26.75d, 832SS+26.75d |  |
| 834 |  | Electrical wiring work | 119.94d | 2025-08-11 | 2026-01-23 | 828SS+17.88d |  |
| 835 |  | Lobby flooring | 150d | 2025-08-15 | 2026-02-26 | 834SS+3.38d |  |
| 836 |  | Ceiling & wall putty-primer | 109.94d | 2025-09-25 | 2026-02-27 | 829SS+26.75d |  |
| 837 |  | Ceiling & wall painting | 99.94d | 2025-10-13 | 2026-03-07 | 836SS+17.88d |  |
| 838 |  | Light fixture supply & installation | 44.94d | 2026-01-19 | 2026-03-05 | 837SS+53.38d |  |
| 839 | 37200.37300.37500.37900.39000.40300.47000 | **Balcony Glass Railing** | 67.81d | 2027-05-07 | 2027-07-14 |  | start no earlier than 2027-05-07 |
| 840 |  | 1st Floor | 1.94d | 2027-05-07 | 2027-05-09 | 908 |  |

| ID | WBS | Task | Duration | Start | Finish | Predecessors | Constraint |
| --- | --- | --- | --- | --- | --- | --- | --- |
| 841 |  | 2nd Floor | 1.94d | 2027-05-09 | 2027-05-11 | 840 |  |
| 842 |  | 3rd Floor | 1.94d | 2027-05-11 | 2027-05-13 | 841 |  |
| 843 |  | 4th Floor | 1.94d | 2027-05-13 | 2027-05-15 | 842 |  |
| 844 |  | 5th Floor | 1.94d | 2027-05-15 | 2027-05-17 | 843 |  |
| 845 |  | 6th Floor | 1.94d | 2027-05-17 | 2027-05-19 | 844 |  |
| 846 |  | 7th Floor | 1.94d | 2027-05-19 | 2027-05-21 | 845 |  |
| 847 |  | 8th Floor | 1.94d | 2027-05-21 | 2027-05-23 | 846 |  |
| 848 |  | 9th Floor | 1.94d | 2027-05-23 | 2027-05-25 | 847 |  |
| 849 |  | 10th Floor | 1.94d | 2027-05-25 | 2027-05-27 | 848 |  |
| 850 |  | 11th Floor | 1.94d | 2027-05-27 | 2027-05-29 | 849 |  |
| 851 |  | 12th Floor | 1.94d | 2027-05-29 | 2027-05-31 | 850 |  |
| 852 |  | 13th Floor | 1.94d | 2027-05-31 | 2027-06-01 | 851 |  |
| 853 |  | 14th Floor | 1.94d | 2027-06-02 | 2027-06-03 | 852 |  |
| 854 |  | 15th Floor | 1.94d | 2027-06-03 | 2027-06-05 | 853 |  |
| 855 |  | 16th Floor | 1.94d | 2027-06-05 | 2027-06-07 | 854 |  |
| 856 |  | 17th Floor | 1.94d | 2027-06-07 | 2027-06-09 | 855 |  |
| 857 |  | 18th Floor | 1.94d | 2027-06-09 | 2027-06-11 | 856 |  |
| 858 |  | 19th Floor | 1.94d | 2027-06-11 | 2027-06-13 | 857 |  |
| 859 |  | 20th Floor | 1.94d | 2027-06-13 | 2027-06-15 | 858 |  |
| 860 |  | 21st Floor | 1.94d | 2027-06-15 | 2027-06-17 | 859 |  |
| 861 |  | 22nd Floor | 1.94d | 2027-06-17 | 2027-06-19 | 860 |  |
| 862 |  | 23rd Floor | 1.94d | 2027-06-19 | 2027-06-21 | 861 |  |
| 863 |  | 24th Floor | 1.94d | 2027-06-21 | 2027-06-23 | 862 |  |
| 864 |  | 25th Floor | 1.94d | 2027-06-23 | 2027-06-25 | 863 |  |
| 865 |  | 26th Floor | 1.94d | 2027-06-25 | 2027-06-27 | 864 |  |
| 866 |  | 27th Floor | 1.94d | 2027-06-27 | 2027-06-29 | 865 |  |
| 867 |  | 28th Floor | 1.94d | 2027-06-29 | 2027-07-01 | 866 |  |
| 868 |  | 29th Floor | 1.94d | 2027-07-01 | 2027-07-02 | 867 |  |
| 869 |  | 30th Floor | 1.94d | 2027-07-03 | 2027-07-04 | 868 |  |
| 870 |  | 31st Floor | 1.94d | 2027-07-04 | 2027-07-06 | 869 |  |
| 871 |  | 32nd Floor | 1.94d | 2027-07-06 | 2027-07-08 | 870 |  |
| 872 |  | 33rd Floor | 1.94d | 2027-07-08 | 2027-07-10 | 871 |  |
| 873 |  | 34th Floor | 1.94d | 2027-07-10 | 2027-07-12 | 872 |  |
| 874 |  | 35th Floor | 1.94d | 2027-07-12 | 2027-07-14 | 873 |  |
| 875 | 37200.37300.37500.37900.95100 | **MEP work** | 623.12d | 2025-10-22 | 2027-10-05 |  | start no earlier than 2025-10-22 |
| 876 | 37200.37300.37500.37900.95100.97200 | **Electrical work** | 268.19d | 2026-08-12 | 2027-06-21 |  | start no earlier than 2026-08-12 |
| 877 |  | Cable Tray | 89.94d | 2026-08-12 | 2026-12-24 | 222 |  |
| 878 |  | Cable, main & sub main | 79.94d | 2026-09-21 | 2027-01-23 | 877SS+40d |  |
| 879 |  | LT panel & DB | 119.94d | 2026-12-25 | 2027-04-23 | 877 |  |
| 880 |  | Rising main | 89.94d | 2027-02-16 | 2027-05-17 | 877FS+53.38d |  |
| 881 |  | EARTHING Works | 59.94d | 2027-01-07 | 2027-03-08 | 877FS+13.38d |  |
| 882 |  | Advance lightening protection | 59.94d | 2026-09-19 | 2027-01-02 | 826 |  |
| 883 |  | Inverter | 34.94d | 2027-05-17 | 2027-06-21 | 880, 881, 884 |  |
| 884 |  | Energy meter | 59.94d | 2027-01-24 | 2027-03-24 | 878 |  |
| 885 |  | Exhast fan | 60d | 2026-10-12 | 2027-01-25 | 818FF+4.5d |  |
| 886 |  | FTTH | 59.94d | 2027-02-27 | 2027-04-28 | 881FS-9d |  |
| 887 |  | Security System - FA & PA | 54.94d | 2027-04-23 | 2027-06-17 | 879, 886FF |  |
| 888 |  | Solar water heater | 59.94d | 2026-09-19 | 2027-01-02 | 826 |  |
| 889 | 37200.37300.37500.37900.95100.123900 | **Plumbing wrok** | 437.69d | 2026-01-01 | 2027-04-29 |  | start no earlier than 2026-01-01 |
| 890 |  | Terrace looping | 44.94d | 2026-08-10 | 2026-09-24 | 825 |  |
| 891 |  | Shaft Plumbing | 119.94d | 2026-09-24 | 2027-03-08 | 35, 890 |  |
| 892 |  | CP sanitary fixture supply | 75d | 2027-02-13 | 2027-04-29 | 813, 816FS+53.38d |  |
| 893 |  | Cold & flushing water supply | 89.94d | 2026-01-01 | 2026-04-01 | 829SS+80d |  |
| 894 |  | Misc work | 29.94d | 2026-03-23 | 2026-04-22 | 893FS-9d |  |
| 895 | 37200.37300.37500.37900.95100.128300 | **Fire fighting work** | 366.94d | 2025-10-22 | 2027-01-22 |  | start no earlier than 2025-10-22 |
| 896 |  | Fire hydrant work | 89.94d | 2025-10-22 | 2026-03-06 | 829SS+53.38d |  |
| 897 |  | Sprinkler & piping work | 89.94d | 2026-04-01 | 2026-06-30 | 896FS+26.75d |  |
| 898 |  | Shaft Downtake works | 89.94d | 2026-08-10 | 2026-12-23 | 825 |  |
| 899 |  | Connection to pump room | 29.94d | 2026-12-23 | 2027-01-22 | 898 |  |
| 900 | 37200.37300.37500.37900.95100.182400 | **Lift work** | 169.81d | 2026-08-12 | 2027-03-14 |  | start no earlier than 2026-08-12 |
| 901 |  | Lift Shaft Handover | 39.94d | 2026-08-12 | 2026-09-20 | 222 |  |
| 902 |  | Lift installation work | 44.94d | 2026-09-21 | 2026-12-19 | 901 |  |
| 903 |  | Lift testing and commissioning | 84.94d | 2026-12-19 | 2027-03-14 | 902 |  |
| 904 | 37200.37300.37500.37900.95100.193500 | **AC work** | 62.94d | 2027-08-03 | 2027-10-05 |  | start no earlier than 2027-08-03 |
| 905 |  | Split AC | 62.94d | 2027-08-03 | 2027-10-05 | 921FS-26.75d |  |
| 906 | 37200.37300.37500.37900.125800 | **Tower Completion** | 265.88d | 2026-09-24 | 2027-08-01 |  | start no earlier than 2026-09-24 |
| 907 |  | SURFACE PREPARATION | 79.94d | 2026-09-24 | 2027-01-27 | 260FS+1.88d |  |
| 908 |  | External Painting | 99.94d | 2027-01-27 | 2027-05-07 | 907 |  |
| 909 |  | Final coat of painting | 86d | 2027-05-07 | 2027-08-01 | 908 |  |
| 910 |  | Misc. work | 59.94d | 2027-05-07 | 2027-07-06 | 908 |  |

| ID | WBS | Task | Duration | Start | Finish | Predecessors | Complete | Constraint |
| --- | --- | --- | --- | --- | --- | --- | --- | --- |
| 911 | 37200.37300.37500.37900.193200 | **Basement lobby** | 60d | 2026-02-26 | 2026-04-27 |  |  | start no earlier than 2026-02-26 |
| 912 |  | Basement lobby | 60d | 2026-02-26 | 2026-04-27 | 835 |  |  |
| 913 | 37200.37300.37500.37900.114800 | **Post OC activities** | 333.19d | 2027-01-25 | 2027-12-24 |  |  | start no earlier than 2027-01-25 |
| 914 |  | Wardrobe installation | 142.94d | 2027-08-03 | 2027-12-24 | 921FS-26.75d |  |  |
| 915 |  | CP & SANITARYWARE | 82.94d | 2027-08-03 | 2027-10-25 | 921FS-26.75d, 892 |  |  |
| 916 |  | Wooden Flooring | 142.94d | 2027-08-03 | 2027-12-24 | 921FS-26.75d |  |  |
| 917 |  | Electrical Fixtures And Fittings | 79.94d | 2027-01-25 | 2027-04-14 | 821 |  |  |
| 918 |  | Modular Kitchen | 142.94d | 2027-08-03 | 2027-12-24 | 914SS |  |  |
| 919 |  | Final Coat Paint | 67.94d | 2027-08-16 | 2027-10-23 | 921FS-13.38d, 838 |  |  |
| 920 |  | OC Application/Readiness | 0.94d | 2027-07-06 | 2027-07-07 | 222, 830FS+7.12d, 903, 823, 885, 887, 888, 883, 882, 874FS-44.5d, 34, 833, 891, 894, 897, 899, 910 |  |  |
| 921 |  | OC Receipt | 0d | 2027-08-30 | 2027-08-30 | 920FS+53.38d, 909, 912 |  |  |
| 922 |  | Offer To Possession | 29.94d | 2027-12-24 | 2028-01-23 | 914, 915, 916, 917, 918, 919, 905 |  |  |
| 923 | 37200.37300.37500.38000 | **Tower 4** | 1386.94d | 2023-09-30 | 2027-12-30 |  | 3% | start no earlier than 2023-09-30 |
| 924 | 37200.37300.37500.38000.100000 | **Substructure** | 638.06d | 2023-09-30 | 2025-09-12 |  | 58% | start no earlier than 2023-09-30 |
| 925 | 37200.37300.37500.38000.100000.111500 | **Soil Bed Preparation** | 533.44d | 2023-09-30 | 2025-05-30 |  | 77% | start no earlier than 2023-09-30 |
| 926 |  | Test Piling | 24.94d | 2023-09-30 | 2023-10-24 |  | 100% | start no earlier than 2023-09-30 |
| 927 |  | Excavation | 29.94d | 2024-01-10 | 2024-02-08 | 7SS+36.74d | 100% | start no earlier than 2024-01-10 |
| 928 |  | Main Piling Work | 168.94d | 2024-04-12 | 2024-12-23 | 7FS-7.45d | 100% | start no earlier than 2024-04-12 |
| 929 |  | Anti-termite | 5d | 2025-04-01 | 2025-04-05 | 928FS+13.38d |  |  |
| 930 |  | PCC | 3.01d | 2024-10-25 | 2024-10-28 | 927FS-14.7d, 929SS+2.98d | 100% | start no earlier than 2024-10-25 |
| 931 |  | Backfilling | 59.94d | 2025-04-01 | 2025-05-30 | 944FS-0.94d |  |  |
| 932 | 37200.37300.37500.38000.100000.102600 | **RCC Structure** | 108.5d | 2024-12-21 | 2025-04-08 |  | 92% | start no earlier than 2024-12-21 |
| 933 | 37200.37300.37500.38000.100000.102600.134700 | **Raft Foundation** | 36.5d | 2024-12-21 | 2025-01-26 |  | 100% | start no earlier than 2024-12-21 |
| 934 |  | Reinforcement | 23d | 2024-12-21 | 2025-01-22 | 930FS-31.15d | 100% | start no earlier than 2024-12-21 |
| 935 |  | Formwork | 24d | 2024-12-31 | 2025-01-23 | 934FF+2d | 100% | start no earlier than 2024-12-31 |
| 936 |  | Concreting | 4d | 2025-01-23 | 2025-01-26 | 935FS-1d | 100% | start no earlier than 2025-01-23 |
| 937 | 37200.37300.37500.38000.100000.102600.134800 | **Basement 1 Slab** | 26d | 2025-01-25 | 2025-02-19 |  | 100% | start no earlier than 2025-01-25 |
| 938 |  | Reinforcement | 22d | 2025-01-25 | 2025-02-15 | 936 | 100% | start no earlier than 2025-01-25 |
| 939 |  | Formwork | 19d | 2025-01-31 | 2025-02-18 | 938SS+3d | 100% | start no earlier than 2025-01-31 |
| 940 |  | Concreting | 4d | 2025-02-16 | 2025-02-19 | 939FS+6.4d | 100% | start no earlier than 2025-02-16 |
| 941 | 37200.37300.37500.38000.100000.102600.134900 | **Basement 2 Slab/GF** | 21.94d | 2025-02-17 | 2025-03-10 |  | 100% | start no earlier than 2025-02-17 |
| 942 |  | Reinforcement | 19d | 2025-02-17 | 2025-03-09 | 940FS-1d | 100% | start no earlier than 2025-02-17 |
| 943 |  | Formwork | 18d | 2025-02-20 | 2025-03-09 | 942SS+3d | 100% | start no earlier than 2025-02-20 |
| 944 |  | Concreting | 1.94d | 2025-03-09 | 2025-03-10 | 943FS-1d | 100% | start no earlier than 2025-03-09 |
| 945 | 37200.37300.37500.38000.100000.102600.186100 | **Podium** | 29d | 2025-03-11 | 2025-04-08 |  | 58% | start no earlier than 2025-03-11 |
| 946 |  | Reinforcement | 15d | 2025-03-11 | 2025-04-05 | 944FS+0.06d | 66% | start no earlier than 2025-03-11 |
| 947 |  | Formwork | 15d | 2025-03-17 | 2025-04-07 | 946SS+1d | 53% | start no earlier than 2025-03-17 |
| 948 |  | Concreting | 1d | 2025-04-08 | 2025-04-08 | 947 |  |  |
| 949 | 37200.37300.37500.38000.100000.128400 | **Substructure Finishing** | 129.81d | 2025-05-05 | 2025-09-12 |  |  | start no earlier than 2025-05-05 |
| 950 |  | Masonary work | 44.94d | 2025-05-05 | 2025-06-19 | 948FS+26.75d |  |  |
| 951 |  | Plaster | 39.94d | 2025-06-19 | 2025-07-29 | 950 |  |  |
| 952 |  | Structural steel | 59.94d | 2025-06-01 | 2025-07-31 | 948FS+53.38d |  |  |
| 953 |  | White Wash | 44.94d | 2025-07-29 | 2025-09-12 | 951 |  |  |
| 954 | 37200.37300.37500.38000.39200 | **Superstructure** | 737.44d | 2025-04-11 | 2027-07-18 |  |  | start no earlier than 2025-04-11 |
| 955 | 37200.37300.37500.38000.39200.43400 | **RCC structure** | 445.88d | 2025-04-11 | 2026-08-15 |  |  | start no earlier than 2025-04-11 |
| 956 | 37200.37300.37500.38000.39200.43400.135000 | **1st floor slab** | 24d | 2025-04-11 | 2025-05-05 |  |  | start no earlier than 2025-04-11 |
| 957 |  | Reinforcement | 20d | 2025-04-11 | 2025-05-01 | 948FS+2.75d |  |  |
| 958 |  | Wall conduiting | 4d | 2025-04-14 | 2025-04-18 | 957SS+2.75d |  |  |
| 959 |  | Formwork | 20d | 2025-04-14 | 2025-05-04 | 957SS+3d |  |  |
| 960 |  | Concreting | 1d | 2025-05-04 | 2025-05-05 | 959 |  |  |
| 961 | 37200.37300.37500.38000.39200.43400.135100 | **2nd floor slab** | 21d | 2025-05-06 | 2025-05-27 |  |  | start no earlier than 2025-05-06 |
| 962 |  | Reinforcement | 20d | 2025-05-06 | 2025-05-26 | 960FS+1d |  |  |
| 963 |  | Wall conduiting | 4d | 2025-05-09 | 2025-05-13 | 958, 962SS+2.75d |  |  |
| 964 |  | Formwork | 17d | 2025-05-09 | 2025-05-26 | 962SS+3d |  |  |
| 965 |  | Concreting | 1d | 2025-05-26 | 2025-05-27 | 964 |  |  |
| 966 | 37200.37300.37500.38000.39200.43400.135200 | **3rd floor slab** | 15d | 2025-05-28 | 2025-06-12 |  |  | start no earlier than 2025-05-28 |
| 967 |  | Reinforcement | 11d | 2025-05-28 | 2025-06-08 | 965FS+1d |  |  |
| 968 |  | Wall conduiting | 3d | 2025-05-31 | 2025-06-03 | 963, 967SS+2.75d |  |  |
| 969 |  | Formwork | 11d | 2025-05-31 | 2025-06-11 | 967SS+3d |  |  |
| 970 |  | Concreting | 1d | 2025-06-11 | 2025-06-12 | 969 |  |  |
| 971 | 37200.37300.37500.38000.39200.43400.135300 | **4th floor slab** | 9d | 2025-06-13 | 2025-06-22 |  |  | start no earlier than 2025-06-13 |
| 972 |  | Reinforcement | 8d | 2025-06-13 | 2025-06-21 | 970FS+1d |  |  |
| 973 |  | Wall conduiting | 3d | 2025-06-14 | 2025-06-17 | 968, 972SS+1d |  |  |
| 974 |  | Formwork | 7d | 2025-06-14 | 2025-06-21 | 972SS+1d |  |  |
| 975 |  | Concreting | 1d | 2025-06-21 | 2025-06-22 | 974 |  |  |
| 976 | 37200.37300.37500.38000.39200.43400.135400 | **5th floor slab** | 9d | 2025-06-23 | 2025-07-02 |  |  | start no earlier than 2025-06-23 |
| 977 |  | Reinforcement | 8d | 2025-06-23 | 2025-07-01 | 975FS+1d |  |  |
| 978 |  | Wall conduiting | 3d | 2025-06-24 | 2025-06-27 | 973, 977SS+1d |  |  |
| 979 |  | Formwork | 7d | 2025-06-24 | 2025-07-01 | 977SS+1d |  |  |
| 980 |  | Concreting | 1d | 2025-07-01 | 2025-07-02 | 979 |  |  |

| ID | WBS | Task | Duration | Start | Finish | Predecessors | Constraint |
| --- | --- | --- | --- | --- | --- | --- | --- |
| 981 | 37200.37300.37500.38000.39200.43400.135500 | **6th floor slab** | 9d | 2025-07-03 | 2025-07-12 |  | start no earlier than 2025-07-03 |
| 982 |  | Reinforcement | 8d | 2025-07-03 | 2025-07-11 | 980FS+1d |  |
| 983 |  | Wall conduiting | 3d | 2025-07-04 | 2025-07-07 | 978, 982SS+1d |  |
| 984 |  | Formwork | 7d | 2025-07-04 | 2025-07-11 | 982SS+1d |  |
| 985 |  | Concreting | 1d | 2025-07-11 | 2025-07-12 | 984 |  |
| 986 | 37200.37300.37500.38000.39200.43400.135600 | **7th floor slab** | 9d | 2025-07-13 | 2025-07-22 |  | start no earlier than 2025-07-13 |
| 987 |  | Reinforcement | 8d | 2025-07-13 | 2025-07-21 | 985FS+1d |  |
| 988 |  | Wall conduiting | 3d | 2025-07-14 | 2025-07-17 | 983, 987SS+1d |  |
| 989 |  | Formwork | 7d | 2025-07-14 | 2025-07-21 | 987SS+1d |  |
| 990 |  | Concreting | 1d | 2025-07-21 | 2025-07-22 | 989 |  |
| 991 | 37200.37300.37500.38000.39200.43400.135700 | **8th floor slab** | 12d | 2025-07-23 | 2025-08-04 |  | start no earlier than 2025-07-23 |
| 992 |  | Reinforcement | 10d | 2025-07-23 | 2025-08-02 | 990FS+1d |  |
| 993 |  | Wall conduiting | 3d | 2025-07-24 | 2025-07-27 | 988, 992SS+1d |  |
| 994 |  | Formwork | 10d | 2025-07-24 | 2025-08-03 | 992SS+1d |  |
| 995 |  | Concreting | 1d | 2025-08-03 | 2025-08-04 | 994 |  |
| 996 | 37200.37300.37500.38000.39200.43400.135800 | **9th floor slab** | 9d | 2025-08-05 | 2025-08-14 |  | start no earlier than 2025-08-05 |
| 997 |  | Reinforcement | 8d | 2025-08-05 | 2025-08-13 | 995FS+1d |  |
| 998 |  | Wall conduiting | 3d | 2025-08-06 | 2025-08-09 | 993, 997SS+1d |  |
| 999 |  | Formwork | 7d | 2025-08-06 | 2025-08-13 | 997SS+1d |  |
| 1000 |  | Concreting | 1d | 2025-08-13 | 2025-08-14 | 999 |  |
| 1001 | 37200.37300.37500.38000.39200.43400.135900 | **10th floor slab** | 9d | 2025-08-11 | 2025-08-20 |  | start no earlier than 2025-08-11 |
| 1002 |  | Reinforcement | 8d | 2025-08-11 | 2025-08-19 | 997SS+6d |  |
| 1003 |  | Wall conduiting | 3d | 2025-08-12 | 2025-08-15 | 998, 1002SS+1d |  |
| 1004 |  | Formwork | 7d | 2025-08-12 | 2025-08-19 | 1002SS+1d |  |
| 1005 |  | Concreting | 1d | 2025-08-19 | 2025-08-20 | 1004 |  |
| 1006 | 37200.37300.37500.38000.39200.43400.136000 | **11th floor slab** | 9d | 2025-08-21 | 2025-08-30 |  | start no earlier than 2025-08-21 |
| 1007 |  | Reinforcement | 8d | 2025-08-21 | 2025-08-29 | 1005FS+1d |  |
| 1008 |  | Wall conduiting | 3d | 2025-08-22 | 2025-08-25 | 1003, 1007SS+1d |  |
| 1009 |  | Formwork | 7d | 2025-08-22 | 2025-08-29 | 1007SS+1d |  |
| 1010 |  | Concreting | 1d | 2025-08-29 | 2025-08-30 | 1009 |  |
| 1011 | 37200.37300.37500.38000.39200.43400.136100 | **12th floor slab** | 9d | 2025-08-31 | 2025-09-09 |  | start no earlier than 2025-08-31 |
| 1012 |  | Reinforcement | 8d | 2025-08-31 | 2025-09-08 | 1010FS+1d |  |
| 1013 |  | Wall conduiting | 3d | 2025-09-01 | 2025-09-04 | 1008, 1012SS+1d |  |
| 1014 |  | Formwork | 7d | 2025-09-01 | 2025-09-08 | 1012SS+1d |  |
| 1015 |  | Concreting | 1d | 2025-09-08 | 2025-09-09 | 1014 |  |
| 1016 | 37200.37300.37500.38000.39200.43400.136200 | **13th floor slab** | 9d | 2025-09-10 | 2025-09-19 |  | start no earlier than 2025-09-10 |
| 1017 |  | Reinforcement | 8d | 2025-09-10 | 2025-09-18 | 1015FS+1d |  |
| 1018 |  | Wall conduiting | 3d | 2025-09-11 | 2025-09-14 | 1013, 1017SS+1d |  |
| 1019 |  | Formwork | 7d | 2025-09-11 | 2025-09-18 | 1017SS+1d |  |
| 1020 |  | Concreting | 1d | 2025-09-18 | 2025-09-19 | 1019 |  |
| 1021 | 37200.37300.37500.38000.39200.43400.136300 | **14th floor slab** | 9d | 2025-09-20 | 2025-09-29 |  | start no earlier than 2025-09-20 |
| 1022 |  | Reinforcement | 8d | 2025-09-20 | 2025-09-28 | 1020FS+1d |  |
| 1023 |  | Wall conduiting | 3d | 2025-09-21 | 2025-09-24 | 1018, 1022SS+1d |  |
| 1024 |  | Formwork | 7d | 2025-09-21 | 2025-09-28 | 1022SS+1d |  |
| 1025 |  | Concreting | 1d | 2025-09-28 | 2025-09-29 | 1024 |  |
| 1026 | 37200.37300.37500.38000.39200.43400.136400 | **15th floor slab** | 9d | 2025-09-30 | 2025-10-09 |  | start no earlier than 2025-09-30 |
| 1027 |  | Reinforcement | 8d | 2025-09-30 | 2025-10-08 | 1025FS+1d |  |
| 1028 |  | Wall conduiting | 3d | 2025-10-01 | 2025-10-04 | 1023, 1027SS+1d |  |
| 1029 |  | Formwork | 7d | 2025-10-01 | 2025-10-08 | 1027SS+1d |  |
| 1030 |  | Concreting | 1d | 2025-10-08 | 2025-10-09 | 1029 |  |
| 1031 | 37200.37300.37500.38000.39200.43400.136500 | **16th floor slab** | 12d | 2025-10-10 | 2025-10-22 |  | start no earlier than 2025-10-10 |
| 1032 |  | Reinforcement | 10d | 2025-10-10 | 2025-10-20 | 1030FS+1d |  |
| 1033 |  | Wall conduiting | 3d | 2025-10-11 | 2025-10-14 | 1028, 1032SS+1d |  |
| 1034 |  | Formwork | 10d | 2025-10-11 | 2025-10-21 | 1032SS+1d |  |
| 1035 |  | Concreting | 1d | 2025-10-21 | 2025-10-22 | 1034 |  |
| 1036 | 37200.37300.37500.38000.39200.43400.136600 | **17th floor slab** | 9d | 2025-10-23 | 2025-12-16 |  | start no earlier than 2025-10-23 |
| 1037 |  | Reinforcement | 8d | 2025-10-23 | 2025-10-31 | 1035FS+1d |  |
| 1038 |  | Wall conduiting | 3d | 2025-10-24 | 2025-10-27 | 1033, 1037SS+1d |  |
| 1039 |  | Formwork | 7d | 2025-10-24 | 2025-10-31 | 1037SS+1d |  |
| 1040 |  | Concreting | 1d | 2025-10-31 | 2025-12-16 | 1039 |  |
| 1041 | 37200.37300.37500.38000.39200.43400.136700 | **18th floor slab** | 9d | 2025-12-17 | 2025-12-26 |  | start no earlier than 2025-12-17 |
| 1042 |  | Reinforcement | 8d | 2025-12-17 | 2025-12-25 | 1040FS+1d |  |
| 1043 |  | Wall conduiting | 3d | 2025-12-18 | 2025-12-21 | 1038, 1042SS+1d |  |
| 1044 |  | Formwork | 7d | 2025-12-18 | 2025-12-25 | 1042SS+1d |  |
| 1045 |  | Concreting | 1d | 2025-12-25 | 2025-12-26 | 1044 |  |
| 1046 | 37200.37300.37500.38000.39200.43400.136800 | **19th floor slab** | 8d | 2025-12-29 | 2026-01-06 |  | start no earlier than 2025-12-29 |
| 1047 |  | Reinforcement | 7d | 2025-12-29 | 2026-01-05 | 1045FS+3d |  |
| 1048 |  | Wall conduiting | 3d | 2025-12-30 | 2026-01-02 | 1043, 1047SS+1d |  |
| 1049 |  | Formwork | 6d | 2025-12-30 | 2026-01-05 | 1047SS+1d |  |
| 1050 |  | Concreting | 1d | 2026-01-05 | 2026-01-06 | 1049 |  |

| ID | WBS | Task | Duration | Start | Finish | Predecessors | Constraint |
| --- | --- | --- | --- | --- | --- | --- | --- |
| 1051 | 37200.37300.37500.38000.39200.43400.136900 | **20th floor slab** | 8d | 2026-01-07 | 2026-01-15 |  | start no earlier than 2026-01-07 |
| 1052 |  | Reinforcement | 7d | 2026-01-07 | 2026-01-14 | 1050FS+1d |  |
| 1053 |  | Wall conduiting | 3d | 2026-01-08 | 2026-01-11 | 1048, 1052SS+1d |  |
| 1054 |  | Formwork | 6d | 2026-01-08 | 2026-01-14 | 1052SS+1d |  |
| 1055 |  | Concreting | 1d | 2026-01-14 | 2026-01-15 | 1054 |  |
| 1056 | 37200.37300.37500.38000.39200.43400.137000 | **21st floor slab** | 8d | 2026-01-16 | 2026-01-24 |  | start no earlier than 2026-01-16 |
| 1057 |  | Reinforcement | 7d | 2026-01-16 | 2026-01-23 | 1055FS+1d |  |
| 1058 |  | Wall conduiting | 3d | 2026-01-17 | 2026-01-20 | 1053, 1057SS+1d |  |
| 1059 |  | Formwork | 6d | 2026-01-17 | 2026-01-23 | 1057SS+1d |  |
| 1060 |  | Concreting | 1d | 2026-01-23 | 2026-01-24 | 1059 |  |
| 1061 | 37200.37300.37500.38000.39200.43400.137100 | **22nd floor slab** | 8d | 2026-01-25 | 2026-02-02 |  | start no earlier than 2026-01-25 |
| 1062 |  | Reinforcement | 7d | 2026-01-25 | 2026-02-01 | 1060FS+1d |  |
| 1063 |  | Wall conduiting | 3d | 2026-01-26 | 2026-01-29 | 1058, 1062SS+1d |  |
| 1064 |  | Formwork | 6d | 2026-01-26 | 2026-02-01 | 1062SS+1d |  |
| 1065 |  | Concreting | 1d | 2026-02-01 | 2026-02-02 | 1064 |  |
| 1066 | 37200.37300.37500.38000.39200.43400.137200 | **23rd floor slab** | 8d | 2026-02-04 | 2026-02-12 |  | start no earlier than 2026-02-04 |
| 1067 |  | Reinforcement | 7d | 2026-02-04 | 2026-02-11 | 1065FS+1.88d |  |
| 1068 |  | Wall conduiting | 3d | 2026-02-05 | 2026-02-08 | 1063, 1067SS+1d |  |
| 1069 |  | Formwork | 6d | 2026-02-05 | 2026-02-11 | 1067SS+1d |  |
| 1070 |  | Concreting | 1d | 2026-02-11 | 2026-02-12 | 1069 |  |
| 1071 | 37200.37300.37500.38000.39200.43400.137300 | **24th floor slab** | 12d | 2026-02-13 | 2026-02-25 |  | start no earlier than 2026-02-13 |
| 1072 |  | Reinforcement | 10d | 2026-02-13 | 2026-02-23 | 1070FS+1d |  |
| 1073 |  | Wall conduiting | 3d | 2026-02-14 | 2026-02-17 | 1068, 1072SS+1d |  |
| 1074 |  | Formwork | 10d | 2026-02-14 | 2026-02-24 | 1072SS+1d |  |
| 1075 |  | Concreting | 1d | 2026-02-24 | 2026-02-25 | 1074 |  |
| 1076 | 37200.37300.37500.38000.39200.43400.137400 | **25th floor slab** | 12d | 2026-02-26 | 2026-03-10 |  | start no earlier than 2026-02-26 |
| 1077 |  | Reinforcement | 10d | 2026-02-26 | 2026-03-08 | 1075FS+1d |  |
| 1078 |  | Wall conduiting | 3d | 2026-02-27 | 2026-03-02 | 1073, 1077SS+1d |  |
| 1079 |  | Formwork | 10d | 2026-02-27 | 2026-03-09 | 1077SS+1d |  |
| 1080 |  | Concreting | 1d | 2026-03-09 | 2026-03-10 | 1079 |  |
| 1081 | 37200.37300.37500.38000.39200.43400.137500 | **26th floor slab** | 8d | 2026-03-11 | 2026-03-19 |  | start no earlier than 2026-03-11 |
| 1082 |  | Reinforcement | 7d | 2026-03-11 | 2026-03-18 | 1080FS+1d |  |
| 1083 |  | Wall conduiting | 3d | 2026-03-12 | 2026-03-15 | 1078, 1082SS+1d |  |
| 1084 |  | Formwork | 6d | 2026-03-12 | 2026-03-18 | 1082SS+1d |  |
| 1085 |  | Concreting | 1d | 2026-03-18 | 2026-03-19 | 1084 |  |
| 1086 | 37200.37300.37500.38000.39200.43400.137600 | **27th floor slab** | 8d | 2026-03-20 | 2026-03-28 |  | start no earlier than 2026-03-20 |
| 1087 |  | Reinforcement | 7d | 2026-03-20 | 2026-03-27 | 1085FS+1d |  |
| 1088 |  | Wall conduiting | 3d | 2026-03-21 | 2026-03-24 | 1083, 1087SS+1d |  |
| 1089 |  | Formwork | 6d | 2026-03-21 | 2026-03-27 | 1087SS+1d |  |
| 1090 |  | Concreting | 1d | 2026-03-27 | 2026-03-28 | 1089 |  |
| 1091 | 37200.37300.37500.38000.39200.43400.137700 | **28th floor slab** | 8d | 2026-03-29 | 2026-04-06 |  | start no earlier than 2026-03-29 |
| 1092 |  | Reinforcement | 7d | 2026-03-29 | 2026-04-05 | 1090FS+1d |  |
| 1093 |  | Wall conduiting | 3d | 2026-03-30 | 2026-04-02 | 1088, 1092SS+1d |  |
| 1094 |  | Formwork | 6d | 2026-03-30 | 2026-04-05 | 1092SS+1d |  |
| 1095 |  | Concreting | 1d | 2026-04-05 | 2026-04-06 | 1094 |  |
| 1096 | 37200.37300.37500.38000.39200.43400.137800 | **29th floor slab** | 8d | 2026-04-06 | 2026-04-14 |  | start no earlier than 2026-04-06 |
| 1097 |  | Reinforcement | 7d | 2026-04-06 | 2026-04-13 | 1095 |  |
| 1098 |  | Wall conduiting | 3d | 2026-04-07 | 2026-04-10 | 1093, 1097SS+1d |  |
| 1099 |  | Formwork | 6d | 2026-04-07 | 2026-04-13 | 1097SS+1d |  |
| 1100 |  | Concreting | 1d | 2026-04-13 | 2026-04-14 | 1099 |  |
| 1101 | 37200.37300.37500.38000.39200.43400.137900 | **30th floor slab** | 8d | 2026-04-14 | 2026-04-22 |  | start no earlier than 2026-04-14 |
| 1102 |  | Reinforcement | 7d | 2026-04-14 | 2026-04-21 | 1100 |  |
| 1103 |  | Wall conduiting | 3d | 2026-04-15 | 2026-04-18 | 1098, 1102SS+1d |  |
| 1104 |  | Formwork | 6d | 2026-04-15 | 2026-04-21 | 1102SS+1d |  |
| 1105 |  | Concreting | 1d | 2026-04-21 | 2026-04-22 | 1104 |  |
| 1106 | 37200.37300.37500.38000.39200.43400.138000 | **31st floor slab** | 11.75d | 2026-04-22 | 2026-05-04 |  | start no earlier than 2026-04-22 |
| 1107 |  | Reinforcement | 8.94d | 2026-04-22 | 2026-05-01 | 1105 |  |
| 1108 |  | Wall conduiting | 1.94d | 2026-04-23 | 2026-04-25 | 1103, 1107SS+1d |  |
| 1109 |  | Formwork | 8.94d | 2026-04-24 | 2026-05-03 | 1107SS+1.88d |  |
| 1110 |  | Concreting | 0.94d | 2026-05-03 | 2026-05-04 | 1109 |  |
| 1111 | 37200.37300.37500.38000.39200.43400.138100 | **32nd floor slab** | 12.75d | 2026-05-04 | 2026-05-17 |  | start no earlier than 2026-05-04 |
| 1112 |  | Reinforcement | 9.94d | 2026-05-04 | 2026-05-14 | 1110 |  |
| 1113 |  | Wall conduiting | 1.94d | 2026-05-05 | 2026-05-07 | 1108, 1112SS+1d |  |
| 1114 |  | Formwork | 9.94d | 2026-05-06 | 2026-05-16 | 1112SS+1.88d |  |
| 1115 |  | Concreting | 0.94d | 2026-05-16 | 2026-05-17 | 1114 |  |
| 1116 | 37200.37300.37500.38000.39200.43400.138200 | **33rd floor slab** | 11.75d | 2026-05-17 | 2026-05-28 |  | start no earlier than 2026-05-17 |
| 1117 |  | Reinforcement | 8.94d | 2026-05-17 | 2026-05-26 | 1115 |  |
| 1118 |  | Wall conduiting | 1.94d | 2026-05-18 | 2026-05-20 | 1113, 1117SS+1d |  |
| 1119 |  | Formwork | 8.94d | 2026-05-19 | 2026-05-27 | 1117SS+1.88d |  |
| 1120 |  | Concreting | 0.94d | 2026-05-27 | 2026-05-28 | 1119 |  |

| ID | WBS | Task | Duration | Start | Finish | Predecessors | Constraint |
| --- | --- | --- | --- | --- | --- | --- | --- |
| 1121 | 37200.37300.37500.38000.39200.43400.138300 | **34th floor slab** | 12.75d | 2026-05-28 | 2026-06-10 |  | start no earlier than 2026-05-28 |
| 1122 |  | Reinforcement | 9.94d | 2026-05-28 | 2026-06-07 | 1120 |  |
| 1123 |  | Wall conduiting | 1.94d | 2026-05-29 | 2026-05-31 | 1118, 1122SS+1d |  |
| 1124 |  | Formwork | 9.94d | 2026-05-30 | 2026-06-09 | 1122SS+1.88d |  |
| 1125 |  | Concreting | 0.94d | 2026-06-09 | 2026-06-10 | 1124 |  |
| 1126 | 37200.37300.37500.38000.39200.43400.138400 | **35th floor slab** | 11.75d | 2026-06-10 | 2026-06-22 |  | start no earlier than 2026-06-10 |
| 1127 |  | Reinforcement | 8.94d | 2026-06-10 | 2026-06-19 | 1125 |  |
| 1128 |  | Wall conduiting | 1.94d | 2026-06-11 | 2026-06-13 | 1123, 1127SS+1d |  |
| 1129 |  | Formwork | 7.94d | 2026-06-13 | 2026-06-21 | 1128SS+1.88d |  |
| 1130 |  | Concreting | 0.94d | 2026-06-21 | 2026-06-22 | 1129 |  |
| 1131 | 37200.37300.37500.38000.39200.43400.138500 | **Terrace floor slab** | 14.75d | 2026-06-22 | 2026-07-07 |  | start no earlier than 2026-06-22 |
| 1132 |  | Reinforcement | 10.94d | 2026-06-22 | 2026-07-03 | 1130 |  |
| 1133 |  | Wall conduiting | 1.94d | 2026-06-23 | 2026-06-25 | 1128, 1132SS+1d |  |
| 1134 |  | Formwork | 11.94d | 2026-06-24 | 2026-07-06 | 1132SS+1.88d |  |
| 1135 |  | Concreting | 0.94d | 2026-07-06 | 2026-07-07 | 1134 |  |
| 1136 | 37200.37300.37500.38000.39200.43400.138600 | **OHT & Mumty** | 39.5d | 2026-07-07 | 2026-08-15 |  | start no earlier than 2026-07-07 |
| 1137 |  | Reinforcement | 29.94d | 2026-07-07 | 2026-08-06 | 1135 |  |
| 1138 |  | Wall conduiting | 4.94d | 2026-07-08 | 2026-07-13 | 1133, 1137SS+1d |  |
| 1139 |  | Formwork | 32.94d | 2026-07-10 | 2026-08-12 | 1137SS+3.62d |  |
| 1140 |  | Concreting | 2.94d | 2026-08-12 | 2026-08-15 | 1139 |  |
| 1141 | 37200.37300.37500.38000.39200.44900 | **Post Pour Activities** | 425.62d | 2025-06-13 | 2026-09-26 |  | start no earlier than 2025-06-13 |
| 1142 |  | 1st Floor | 7d | 2025-06-13 | 2025-06-19 | 970FS+0.25d |  |
| 1143 |  | 2nd Floor | 7d | 2025-06-23 | 2025-06-29 | 1142FS+0.25d, 975FS+0.25d |  |
| 1144 |  | 3rd Floor | 7d | 2025-07-23 | 2025-07-29 | 1143FS+0.25d, 990FS+0.25d |  |
| 1145 |  | 4th Floor | 7d | 2025-08-05 | 2025-08-11 | 1144FS+0.25d, 995FS+0.25d |  |
| 1146 |  | 5th Floor | 7d | 2025-08-15 | 2025-08-21 | 1145FS+0.25d, 1000FS+0.25d |  |
| 1147 |  | 6th Floor | 7d | 2025-08-22 | 2025-08-29 | 1146FS+0.25d, 1005FS+0.25d |  |
| 1148 |  | 7th Floor | 7d | 2025-08-31 | 2025-09-06 | 1147FS+0.25d, 1010FS+0.25d |  |
| 1149 |  | 8th Floor | 7d | 2025-09-10 | 2025-09-16 | 1148FS+0.25d, 1015FS+0.25d |  |
| 1150 |  | 9th Floor | 7d | 2025-09-20 | 2025-09-26 | 1149FS+0.25d, 1020FS+0.25d |  |
| 1151 |  | 10th Floor | 7d | 2025-09-30 | 2025-10-06 | 1150FS+0.25d, 1025FS+0.25d |  |
| 1152 |  | 11th Floor | 7d | 2025-10-22 | 2025-10-29 | 1151, 1035 |  |
| 1153 |  | 12th Floor | 7d | 2025-12-16 | 2025-12-23 | 1152, 1040 |  |
| 1154 |  | 13th Floor | 7d | 2025-12-26 | 2026-01-02 | 1153, 1045 |  |
| 1155 |  | 14th Floor | 7d | 2026-01-06 | 2026-01-13 | 1154, 1050 |  |
| 1156 |  | 15th Floor | 7d | 2026-01-15 | 2026-01-22 | 1155, 1055 |  |
| 1157 |  | 16th Floor | 7d | 2026-01-24 | 2026-01-31 | 1156, 1060 |  |
| 1158 |  | 17th Floor | 7d | 2026-02-02 | 2026-02-09 | 1157, 1065 |  |
| 1159 |  | 18th Floor | 7d | 2026-02-12 | 2026-02-19 | 1158, 1070 |  |
| 1160 |  | 19th Floor | 7d | 2026-02-25 | 2026-03-04 | 1159, 1075 |  |
| 1161 |  | 20th Floor | 7d | 2026-03-10 | 2026-03-17 | 1160, 1080 |  |
| 1162 |  | 21st Floor | 7d | 2026-03-19 | 2026-03-26 | 1161, 1085 |  |
| 1163 |  | 22nd Floor | 7d | 2026-03-28 | 2026-04-04 | 1162, 1090 |  |
| 1164 |  | 23rd Floor | 7d | 2026-04-06 | 2026-04-13 | 1163, 1095 |  |
| 1165 |  | 24th Floor | 7d | 2026-04-14 | 2026-04-21 | 1164, 1100 |  |
| 1166 |  | 25th Floor | 7d | 2026-04-22 | 2026-04-29 | 1165, 1105 |  |
| 1167 |  | 26th Floor | 7d | 2026-05-04 | 2026-05-11 | 1166, 1110 |  |
| 1168 |  | 27th Floor | 7d | 2026-05-17 | 2026-05-24 | 1167, 1115 |  |
| 1169 |  | 28th Floor | 7d | 2026-05-28 | 2026-06-04 | 1168, 1120 |  |
| 1170 |  | 29th Floor | 7d | 2026-06-10 | 2026-06-17 | 1169, 1125 |  |
| 1171 |  | 30th Floor | 7d | 2026-06-22 | 2026-06-29 | 1170, 1130 |  |
| 1172 |  | 31st Floor | 7d | 2026-07-07 | 2026-07-14 | 1171, 1135 |  |
| 1173 |  | 32nd Flood | 7d | 2026-08-15 | 2026-08-22 | 1172, 1140 |  |
| 1174 |  | 33rd Floor | 7d | 2026-08-22 | 2026-08-29 | 1173 |  |
| 1175 |  | 34th Floor | 7d | 2026-08-29 | 2026-09-05 | 1174 |  |
| 1176 |  | 35th Floor | 7d | 2026-09-05 | 2026-09-12 | 1175 |  |
| 1177 |  | Terrace | 7d | 2026-09-12 | 2026-09-19 | 1176 |  |
| 1178 |  | Mumty & Machine Room | 7d | 2026-09-19 | 2026-09-26 | 1177 |  |
| 1179 | 37200.37300.37500.38000.39200.40400 | **Finishing work** | 667.94d | 2025-06-20 | 2027-07-18 |  | start no earlier than 2025-06-20 |
| 1180 | 37200.37300.37500.38000.39200.40400.41400 | **Flat finishing** | 571.25d | 2025-06-20 | 2027-04-12 |  | start no earlier than 2025-06-20 |
| 1181 | 37200.37300.37500.38000.39200.40400.41400.80500 | **1st Floor** | 68d | 2025-06-20 | 2025-08-27 |  | start no earlier than 2025-06-20 |
| 1182 |  | Block Work | 5d | 2025-06-20 | 2025-06-25 | 1142FS+0.25d |  |
| 1183 |  | Door Frame Fixing | 5d | 2025-06-25 | 2025-06-30 | 1182 |  |
| 1184 |  | Internal Plumbing Works | 5d | 2025-06-21 | 2025-06-26 | 1182SS+1d |  |
| 1185 |  | Waterproofing | 8d | 2025-06-26 | 2025-07-04 | 1184 |  |
| 1186 |  | Internal Plaster | 7d | 2025-06-26 | 2025-07-03 | 1182FS+1d |  |
| 1187 |  | IPS flooring work | 7d | 2025-07-04 | 2025-07-11 | 1183, 1184, 1185 |  |
| 1188 |  | Toilet dado work | 7d | 2025-07-04 | 2025-07-11 | 1185, 1186 |  |
| 1189 |  | Toilet flooring work | 7d | 2025-07-11 | 2025-07-18 | 1188 |  |
| 1190 |  | Living dinning flooring | 8d | 2025-07-18 | 2025-07-26 | 1183, 1189 |  |

| ID | WBS | Task | Duration | Start | Finish | Predecessors | Constraint |
| --- | --- | --- | --- | --- | --- | --- | --- |
| 1191 |  | Aluminium door-window fixing | 7d | 2025-07-26 | 2025-08-02 | 1187, 1190 |  |
| 1192 |  | Putty primer coat | 6d | 2025-07-26 | 2025-08-01 | 1190 |  |
| 1193 |  | Door shutter fixing | 8d | 2025-07-26 | 2025-08-03 | 1190 |  |
| 1194 |  | Electrical wiring work | 8d | 2025-08-03 | 2025-08-11 | 1193 |  |
| 1195 |  | Painting 1st coat | 8d | 2025-08-11 | 2025-08-19 | 1192, 1193, 1194 |  |
| 1196 |  | False ceiling | 8d | 2025-08-19 | 2025-08-27 | 1195 |  |
| 1197 | 37200.37300.37500.38000.39200.40400.41400.80400 | **2nd Floor** | 75d | 2025-06-25 | 2025-09-08 |  | start no earlier than 2025-06-25 |
| 1198 |  | Block Work | 8d | 2025-06-25 | 2025-07-03 | 1182FS+0.25d |  |
| 1199 |  | Door Frame Fixing | 9d | 2025-07-03 | 2025-07-12 | 1183, 1198 |  |
| 1200 |  | Internal Plumbing Works | 8d | 2025-07-03 | 2025-07-11 | 1184, 1198 |  |
| 1201 |  | Waterproofing | 10d | 2025-07-11 | 2025-07-21 | 1185, 1200 |  |
| 1202 |  | Internal Plaster | 8d | 2025-07-03 | 2025-07-11 | 1186FS+0.25d |  |
| 1203 |  | IPS flooring work | 10d | 2025-07-21 | 2025-07-31 | 1187, 1199, 1200, 1201 |  |
| 1204 |  | Toilet dado work | 8d | 2025-07-21 | 2025-07-29 | 1188, 1201, 1202 |  |
| 1205 |  | Toilet flooring work | 8d | 2025-07-29 | 2025-08-06 | 1189, 1204 |  |
| 1206 |  | Living dinning flooring | 12d | 2025-07-26 | 2025-08-07 | 1190FS+0.25d |  |
| 1207 |  | Aluminium door-window fixing | 12d | 2025-08-02 | 2025-08-14 | 1191FS+0.25d |  |
| 1208 |  | Putty primer coat | 6d | 2025-08-07 | 2025-08-13 | 1192, 1206 |  |
| 1209 |  | Door shutter fixing | 8d | 2025-08-07 | 2025-08-15 | 1193, 1206 |  |
| 1210 |  | Electrical wiring work | 8d | 2025-08-15 | 2025-08-23 | 1194, 1209 |  |
| 1211 |  | Painting 1st coat | 8d | 2025-08-23 | 2025-08-31 | 1195, 1208, 1209, 1210 |  |
| 1212 |  | False ceiling | 8d | 2025-08-31 | 2025-09-08 | 1196, 1211 |  |
| 1213 | 37200.37300.37500.38000.39200.40400.41400.80300 | **3rd Floor** | 79d | 2025-07-03 | 2025-09-20 |  | start no earlier than 2025-07-03 |
| 1214 |  | Block Work | 8d | 2025-07-03 | 2025-07-11 | 1198FS+0.25d |  |
| 1215 |  | Door Frame Fixing | 9d | 2025-07-12 | 2025-07-21 | 1199, 1214 |  |
| 1216 |  | Internal Plumbing Works | 8d | 2025-07-11 | 2025-07-19 | 1200, 1214 |  |
| 1217 |  | Waterproofing | 10d | 2025-07-21 | 2025-07-31 | 1201, 1216 |  |
| 1218 |  | Internal Plaster | 8d | 2025-07-11 | 2025-07-19 | 1202FS+0.25d |  |
| 1219 |  | IPS flooring work | 10d | 2025-07-31 | 2025-08-10 | 1203, 1215, 1217, 1218 |  |
| 1220 |  | Toilet dado work | 8d | 2025-07-31 | 2025-08-08 | 1204, 1217, 1218 |  |
| 1221 |  | Toilet flooring work | 8d | 2025-08-06 | 2025-08-14 | 1205FS+0.25d |  |
| 1222 |  | Living dinning flooring | 12d | 2025-08-07 | 2025-08-19 | 1206FS+0.25d |  |
| 1223 |  | Aluminium door-window fixing | 12d | 2025-08-14 | 2025-08-26 | 1207FS+0.25d |  |
| 1224 |  | Putty primer coat | 6d | 2025-08-19 | 2025-08-25 | 1208, 1222 |  |
| 1225 |  | Door shutter fixing | 8d | 2025-08-19 | 2025-08-27 | 1209, 1222 |  |
| 1226 |  | Electrical wiring work | 8d | 2025-08-27 | 2025-09-04 | 1210, 1225 |  |
| 1227 |  | Painting 1st coat | 8d | 2025-09-04 | 2025-09-12 | 1211, 1224, 1225, 1226 |  |
| 1228 |  | False ceiling | 8d | 2025-09-12 | 2025-09-20 | 1212, 1227 |  |
| 1229 | 37200.37300.37500.38000.39200.40400.41400.80200 | **4th Floor** | 59.25d | 2025-08-20 | 2025-10-18 |  | start no earlier than 2025-08-20 |
| 1230 |  | Block Work | 8d | 2025-08-29 | 2025-09-06 | 1147, 1214 |  |
| 1231 |  | Door Frame Fixing | 9d | 2025-09-06 | 2025-09-15 | 1215, 1230 |  |
| 1232 |  | Internal Plumbing Works | 8d | 2025-09-06 | 2025-09-14 | 1216, 1230 |  |
| 1233 |  | Waterproofing | 10d | 2025-09-14 | 2025-09-24 | 1217, 1232 |  |
| 1234 |  | Internal Plaster | 8d | 2025-09-24 | 2025-10-02 | 1218, 1231, 1232, 1233 |  |
| 1235 |  | IPS flooring work | 10d | 2025-10-02 | 2025-10-12 | 1219, 1231, 1233, 1234 |  |
| 1236 |  | Toilet dado work | 8d | 2025-10-02 | 2025-10-10 | 1220, 1233, 1234 |  |
| 1237 |  | Toilet flooring work | 8d | 2025-10-10 | 2025-10-18 | 1221, 1236 |  |
| 1238 |  | Living dinning flooring | 12d | 2025-08-20 | 2025-08-31 | 1222FS+0.25d |  |
| 1239 |  | Aluminium door-window fixing | 12d | 2025-08-27 | 2025-09-07 | 1223FS+0.25d |  |
| 1240 |  | Putty primer coat | 6d | 2025-09-01 | 2025-09-06 | 1224, 1238 |  |
| 1241 |  | Door shutter fixing | 8d | 2025-09-01 | 2025-09-08 | 1225, 1238 |  |
| 1242 |  | Electrical wiring work | 8d | 2025-09-09 | 2025-09-16 | 1226, 1241 |  |
| 1243 |  | Painting 1st coat | 8d | 2025-09-17 | 2025-09-24 | 1227, 1240, 1241, 1242 |  |
| 1244 |  | False ceiling | 8d | 2025-09-25 | 2025-10-02 | 1228, 1243 |  |
| 1245 | 37200.37300.37500.38000.39200.40400.41400.80100 | **5th Floor** | 57.75d | 2025-09-01 | 2025-10-28 |  | start no earlier than 2025-09-01 |
| 1246 |  | Block Work | 8d | 2025-09-06 | 2025-09-14 | 1230FS+0.25d |  |
| 1247 |  | Door Frame Fixing | 9d | 2025-09-15 | 2025-09-24 | 1231, 1246 |  |
| 1248 |  | Internal Plumbing Works | 8d | 2025-09-14 | 2025-09-22 | 1232, 1246 |  |
| 1249 |  | Waterproofing | 10d | 2025-09-24 | 2025-10-04 | 1233, 1248 |  |
| 1250 |  | Internal Plaster | 8d | 2025-10-05 | 2025-10-12 | 1234FS+2.75d |  |
| 1251 |  | IPS flooring work | 10d | 2025-10-13 | 2025-10-22 | 1235, 1247, 1249, 1250 |  |
| 1252 |  | Toilet dado work | 8d | 2025-10-13 | 2025-10-20 | 1236, 1249, 1250 |  |
| 1253 |  | Toilet flooring work | 8d | 2025-10-21 | 2025-10-28 | 1237, 1252 |  |
| 1254 |  | Living dinning flooring | 12d | 2025-09-01 | 2025-09-13 | 1238FS+0.25d |  |
| 1255 |  | Aluminium door-window fixing | 12d | 2025-09-08 | 2025-09-20 | 1239FS+0.25d |  |
| 1256 |  | Putty primer coat | 6d | 2025-09-13 | 2025-09-19 | 1240, 1254 |  |
| 1257 |  | Door shutter fixing | 8d | 2025-09-13 | 2025-09-21 | 1241, 1254 |  |
| 1258 |  | Electrical wiring work | 8d | 2025-09-21 | 2025-09-29 | 1242, 1257 |  |
| 1259 |  | Painting 1st coat | 8d | 2025-09-29 | 2025-10-07 | 1243, 1256, 1257, 1258 |  |
| 1260 |  | False ceiling | 8d | 2025-10-07 | 2025-10-15 | 1244, 1259 |  |

| ID | WBS | Task | Duration | Start | Finish | Predecessors | Constraint |
| --- | --- | --- | --- | --- | --- | --- | --- |
| 1261 | 37200.37300.37500.38000.39200.40400.41400.80000 | **6th Floor** | 52.5d | 2025-09-13 | 2025-12-19 |  | start no earlier than 2025-09-13 |
| 1262 |  | Block Work | 5d | 2025-09-14 | 2025-09-19 | 1246FS+0.25d |  |
| 1263 |  | Door Frame Fixing | 5d | 2025-09-24 | 2025-09-29 | 995, 1247 |  |
| 1264 |  | Internal Plumbing Works | 5d | 2025-09-22 | 2025-09-27 | 1248, 1262 |  |
| 1265 |  | Waterproofing | 8d | 2025-10-04 | 2025-10-12 | 1249, 1264 |  |
| 1266 |  | Internal Plaster | 7d | 2025-10-13 | 2025-10-20 | 1250FS+0.25d |  |
| 1267 |  | IPS flooring work | 7d | 2025-10-23 | 2025-10-29 | 1251, 1263, 1265, 1266 |  |
| 1268 |  | Toilet dado work | 7d | 2025-10-21 | 2025-10-27 | 1252, 1265, 1266 |  |
| 1269 |  | Toilet flooring work | 7d | 2025-10-29 | 2025-12-19 | 1253, 1268 |  |
| 1270 |  | Living dinning flooring | 8d | 2025-09-13 | 2025-09-21 | 1254FS+0.25d |  |
| 1271 |  | Aluminium door-window fixing | 7d | 2025-09-20 | 2025-09-27 | 1255FS+0.25d |  |
| 1272 |  | Putty primer coat | 6d | 2025-09-21 | 2025-09-27 | 1256, 1270 |  |
| 1273 |  | Door shutter fixing | 8d | 2025-09-21 | 2025-09-29 | 1257, 1270 |  |
| 1274 |  | Electrical wiring work | 8d | 2025-09-29 | 2025-10-07 | 1258, 1273 |  |
| 1275 |  | Painting 1st coat | 8d | 2025-10-07 | 2025-10-15 | 1259, 1272, 1273, 1274 |  |
| 1276 |  | False ceiling | 8d | 2025-10-15 | 2025-10-23 | 1260, 1275 |  |
| 1277 | 37200.37300.37500.38000.39200.40400.41400.79900 | **7th Floor** | 53d | 2025-09-20 | 2025-12-26 |  | start no earlier than 2025-09-20 |
| 1278 |  | Block Work | 5d | 2025-09-20 | 2025-09-24 | 1262FS+0.25d |  |
| 1279 |  | Door Frame Fixing | 5d | 2025-09-29 | 2025-10-04 | 1263, 1278 |  |
| 1280 |  | Internal Plumbing Works | 5d | 2025-09-27 | 2025-10-02 | 1264, 1278 |  |
| 1281 |  | Waterproofing | 8d | 2025-10-12 | 2025-10-20 | 1265, 1280 |  |
| 1282 |  | Internal Plaster | 7d | 2025-10-20 | 2025-10-27 | 1266FS+0.25d |  |
| 1283 |  | IPS flooring work | 7d | 2025-10-30 | 2025-12-20 | 1267, 1279, 1281, 1282 |  |
| 1284 |  | Toilet dado work | 7d | 2025-10-28 | 2025-12-18 | 1268, 1281, 1282 |  |
| 1285 |  | Toilet flooring work | 7d | 2025-12-20 | 2025-12-26 | 1269, 1284 |  |
| 1286 |  | Living dinning flooring | 8d | 2025-09-21 | 2025-09-29 | 1270FS+0.25d |  |
| 1287 |  | Aluminium door-window fixing | 7d | 2025-09-27 | 2025-10-04 | 1271FS+0.25d |  |
| 1288 |  | Putty primer coat | 6d | 2025-09-29 | 2025-10-05 | 1272, 1286 |  |
| 1289 |  | Door shutter fixing | 8d | 2025-09-29 | 2025-10-07 | 1273, 1286 |  |
| 1290 |  | Electrical wiring work | 8d | 2025-10-07 | 2025-10-15 | 1274, 1289 |  |
| 1291 |  | Painting 1st coat | 8d | 2025-10-15 | 2025-10-23 | 1275, 1288, 1289, 1290 |  |
| 1292 |  | False ceiling | 8d | 2025-10-23 | 2025-10-31 | 1276, 1291 |  |
| 1293 | 37200.37300.37500.38000.39200.40400.41400.79800 | **8th Floor** | 54.75d | 2025-09-25 | 2026-01-02 |  | start no earlier than 2025-09-25 |
| 1294 |  | Block Work | 5d | 2025-09-25 | 2025-09-30 | 1278FS+0.25d |  |
| 1295 |  | Door Frame Fixing | 5d | 2025-10-04 | 2025-10-09 | 1279, 1294 |  |
| 1296 |  | Internal Plumbing Works | 5d | 2025-10-02 | 2025-10-07 | 1280, 1294 |  |
| 1297 |  | Waterproofing | 8d | 2025-10-20 | 2025-10-28 | 1281, 1296 |  |
| 1298 |  | Internal Plaster | 7d | 2025-10-27 | 2025-12-18 | 1282FS+0.25d |  |
| 1299 |  | IPS flooring work | 7d | 2025-12-21 | 2025-12-27 | 1283, 1295, 1297, 1298 |  |
| 1300 |  | Toilet dado work | 7d | 2025-12-19 | 2025-12-25 | 1284, 1297, 1298 |  |
| 1301 |  | Toilet flooring work | 7d | 2025-12-27 | 2026-01-02 | 1285, 1300 |  |
| 1302 |  | Living dinning flooring | 8d | 2025-09-30 | 2025-10-07 | 1286FS+0.25d |  |
| 1303 |  | Aluminium door-window fixing | 7d | 2025-10-05 | 2025-10-11 | 1287FS+0.25d |  |
| 1304 |  | Putty primer coat | 6d | 2025-10-08 | 2025-10-13 | 1288, 1302 |  |
| 1305 |  | Door shutter fixing | 8d | 2025-10-08 | 2025-10-15 | 1289, 1302 |  |
| 1306 |  | Electrical wiring work | 8d | 2025-10-16 | 2025-10-23 | 1290, 1305 |  |
| 1307 |  | Painting 1st coat | 8d | 2025-10-24 | 2025-10-31 | 1291, 1304, 1305, 1306 |  |
| 1308 |  | False ceiling | 8d | 2025-12-16 | 2025-12-23 | 1292, 1307 |  |
| 1309 | 37200.37300.37500.38000.39200.40400.41400.79700 | **9th Floor** | 53.5d | 2025-10-08 | 2026-01-14 |  | start no earlier than 2025-10-08 |
| 1310 |  | Block Work | 5d | 2025-10-29 | 2025-12-18 | 1152, 1294 |  |
| 1311 |  | Door Frame Fixing | 5d | 2025-12-18 | 2025-12-23 | 1295, 1310 |  |
| 1312 |  | Internal Plumbing Works | 5d | 2025-12-18 | 2025-12-23 | 1296, 1310 |  |
| 1313 |  | Waterproofing | 8d | 2025-12-23 | 2025-12-31 | 1297, 1312 |  |
| 1314 |  | Internal Plaster | 7d | 2025-12-19 | 2025-12-25 | 1298FS+0.25d |  |
| 1315 |  | IPS flooring work | 7d | 2025-12-31 | 2026-01-07 | 1299, 1311, 1313, 1314 |  |
| 1316 |  | Toilet dado work | 7d | 2025-12-31 | 2026-01-07 | 1300, 1313, 1314 |  |
| 1317 |  | Toilet flooring work | 7d | 2026-01-07 | 2026-01-14 | 1301, 1316 |  |
| 1318 |  | Living dinning flooring | 8d | 2025-10-08 | 2025-10-16 | 1302FS+0.25d |  |
| 1319 |  | Aluminium door-window fixing | 7d | 2025-10-12 | 2025-10-19 | 1303FS+0.25d |  |
| 1320 |  | Putty primer coat | 6d | 2025-10-16 | 2025-10-22 | 1304, 1318 |  |
| 1321 |  | Door shutter fixing | 8d | 2025-10-16 | 2025-10-24 | 1305, 1318 |  |
| 1322 |  | Electrical wiring work | 12d | 2025-10-24 | 2025-12-20 | 1306, 1321 |  |
| 1323 |  | Painting 1st coat | 12d | 2025-12-20 | 2026-01-01 | 1307, 1320, 1321, 1322 |  |
| 1324 |  | False ceiling | 10d | 2026-01-01 | 2026-01-11 | 1308, 1323 |  |
| 1325 | 37200.37300.37500.38000.39200.40400.41400.79600 | **10th Floor** | 53.75d | 2025-10-16 | 2026-01-23 |  | start no earlier than 2025-10-16 |
| 1326 |  | Block Work | 5d | 2025-12-19 | 2025-12-23 | 1310FS+0.25d |  |
| 1327 |  | Door Frame Fixing | 5d | 2025-12-24 | 2025-12-28 | 1311, 1326 |  |
| 1328 |  | Internal Plumbing Works | 5d | 2025-12-24 | 2025-12-28 | 1312, 1326 |  |
| 1329 |  | Waterproofing | 8d | 2025-12-31 | 2026-01-08 | 1313, 1328 |  |
| 1330 |  | Internal Plaster | 7d | 2025-12-26 | 2026-01-02 | 1314FS+0.25d |  |

| ID | WBS | Task | Duration | Start | Finish | Predecessors | Constraint |
| --- | --- | --- | --- | --- | --- | --- | --- |
| 1331 |  | IPS flooring work | 7d | 2026-01-08 | 2026-01-15 | 1315, 1327, 1329, 1330 |  |
| 1332 |  | Toilet dado work | 7d | 2026-01-08 | 2026-01-15 | 1316, 1329, 1330 |  |
| 1333 |  | Toilet flooring work | 7d | 2026-01-15 | 2026-01-22 | 1317, 1332 |  |
| 1334 |  | Living dinning flooring | 8d | 2025-10-16 | 2025-10-24 | 1318FS+0.25d |  |
| 1335 |  | Aluminium door-window fixing | 7d | 2025-10-19 | 2025-10-26 | 1319FS+0.25d |  |
| 1336 |  | Putty primer coat | 6d | 2025-10-24 | 2025-10-30 | 1320, 1334 |  |
| 1337 |  | Door shutter fixing | 8d | 2025-10-24 | 2025-12-16 | 1321, 1334 |  |
| 1338 |  | Electrical wiring work | 12d | 2025-12-20 | 2026-01-01 | 1322, 1337 |  |
| 1339 |  | Painting 1st coat | 12d | 2026-01-01 | 2026-01-13 | 1323, 1336, 1337, 1338 |  |
| 1340 |  | False ceiling | 10d | 2026-01-13 | 2026-01-23 | 1324, 1339 |  |
| 1341 | 37200.37300.37500.38000.39200.40400.41400.79500 | **11th Floor** | 57.5d | 2025-10-24 | 2026-02-04 |  | start no earlier than 2025-10-24 |
| 1342 |  | Block Work | 5d | 2025-12-24 | 2025-12-29 | 1326FS+0.25d |  |
| 1343 |  | Door Frame Fixing | 5d | 2025-12-29 | 2026-01-03 | 1327, 1342 |  |
| 1344 |  | Internal Plumbing Works | 5d | 2025-12-29 | 2026-01-03 | 1328, 1342 |  |
| 1345 |  | Waterproofing | 8d | 2026-01-08 | 2026-01-16 | 1329, 1344 |  |
| 1346 |  | Internal Plaster | 7d | 2026-01-02 | 2026-01-09 | 1330FS+0.25d |  |
| 1347 |  | IPS flooring work | 7d | 2026-01-16 | 2026-01-23 | 1331, 1343, 1344, 1345 |  |
| 1348 |  | Toilet dado work | 7d | 2026-01-16 | 2026-01-23 | 1332, 1345, 1346 |  |
| 1349 |  | Toilet flooring work | 7d | 2026-01-23 | 2026-01-30 | 1333, 1348 |  |
| 1350 |  | Living dinning flooring | 8d | 2025-10-24 | 2025-12-16 | 1334FS+0.25d |  |
| 1351 |  | Aluminium door-window fixing | 7d | 2025-10-26 | 2025-12-17 | 1335FS+0.25d |  |
| 1352 |  | Putty primer coat | 6d | 2025-12-16 | 2025-12-22 | 1336, 1350 |  |
| 1353 |  | Door shutter fixing | 8d | 2025-12-16 | 2025-12-24 | 1337, 1350 |  |
| 1354 |  | Electrical wiring work | 12d | 2026-01-01 | 2026-01-13 | 1338, 1353 |  |
| 1355 |  | Painting 1st coat | 12d | 2026-01-13 | 2026-01-25 | 1339, 1352, 1353, 1354 |  |
| 1356 |  | False ceiling | 10d | 2026-01-25 | 2026-02-04 | 1340, 1355 |  |
| 1357 | 37200.37300.37500.38000.39200.40400.41400.79400 | **12th Floor** | 71.5d | 2025-12-17 | 2026-02-26 |  | start no earlier than 2025-12-17 |
| 1358 |  | Block Work | 5d | 2025-12-29 | 2026-01-03 | 1342FS+0.25d |  |
| 1359 |  | Door Frame Fixing | 9d | 2026-01-03 | 2026-01-12 | 1343, 1358 |  |
| 1360 |  | Internal Plumbing Works | 15d | 2026-01-03 | 2026-01-18 | 1344, 1358 |  |
| 1361 |  | Waterproofing | 15d | 2026-01-18 | 2026-02-02 | 1345, 1360 |  |
| 1362 |  | Internal Plaster | 8d | 2026-01-09 | 2026-01-17 | 1346FS+0.25d |  |
| 1363 |  | IPS flooring work | 12d | 2026-02-02 | 2026-02-14 | 1347, 1359, 1360, 1361 |  |
| 1364 |  | Toilet dado work | 12d | 2026-02-02 | 2026-02-14 | 1348, 1361, 1362 |  |
| 1365 |  | Toilet flooring work | 12d | 2026-02-14 | 2026-02-26 | 1349, 1364 |  |
| 1366 |  | Living dinning flooring | 7d | 2025-12-17 | 2025-12-23 | 1350FS+0.25d |  |
| 1367 |  | Aluminium door-window fixing | 8d | 2025-12-18 | 2025-12-25 | 1351FS+0.25d |  |
| 1368 |  | Putty primer coat | 6d | 2025-12-24 | 2025-12-29 | 1352, 1366 |  |
| 1369 |  | Door shutter fixing | 8d | 2025-12-24 | 2026-01-01 | 1353, 1366 |  |
| 1370 |  | Electrical wiring work | 12d | 2026-01-13 | 2026-01-25 | 1354, 1369 |  |
| 1371 |  | Painting 1st coat | 12d | 2026-01-25 | 2026-02-06 | 1355, 1368, 1369, 1370 |  |
| 1372 |  | False ceiling | 10d | 2026-02-06 | 2026-02-16 | 1356, 1371 |  |
| 1373 | 37200.37300.37500.38000.39200.40400.41400.79300 | **13th Floor** | 71.25d | 2025-12-24 | 2026-03-05 |  | start no earlier than 2025-12-24 |
| 1374 |  | Block Work | 5d | 2026-01-03 | 2026-01-08 | 1358FS+0.25d |  |
| 1375 |  | Door Frame Fixing | 5d | 2026-01-12 | 2026-01-17 | 1359, 1374 |  |
| 1376 |  | Internal Plumbing Works | 5d | 2026-01-18 | 2026-01-23 | 1360, 1374 |  |
| 1377 |  | Waterproofing | 8d | 2026-02-02 | 2026-02-10 | 1361, 1376 |  |
| 1378 |  | Internal Plaster | 7d | 2026-01-20 | 2026-01-27 | 1362FS+2.75d |  |
| 1379 |  | IPS flooring work | 7d | 2026-02-14 | 2026-02-21 | 1363, 1375, 1377, 1378 |  |
| 1380 |  | Toilet dado work | 7d | 2026-02-14 | 2026-02-21 | 1364, 1377, 1378 |  |
| 1381 |  | Toilet flooring work | 7d | 2026-02-26 | 2026-03-05 | 1365, 1380 |  |
| 1382 |  | Living dinning flooring | 8d | 2025-12-24 | 2026-01-01 | 1366FS+0.25d |  |
| 1383 |  | Aluminium door-window fixing | 7d | 2025-12-26 | 2026-01-02 | 1367FS+0.25d |  |
| 1384 |  | Putty primer coat | 6d | 2026-01-01 | 2026-01-07 | 1368, 1382 |  |
| 1385 |  | Door shutter fixing | 8d | 2026-01-01 | 2026-01-09 | 1369, 1382 |  |
| 1386 |  | Electrical wiring work | 12d | 2026-01-25 | 2026-02-06 | 1370, 1385 |  |
| 1387 |  | Painting 1st coat | 12d | 2026-02-06 | 2026-02-18 | 1371, 1384, 1385, 1386 |  |
| 1388 |  | False ceiling | 10d | 2026-02-18 | 2026-02-28 | 1372, 1387 |  |
| 1389 | 37200.37300.37500.38000.39200.40400.41400.79200 | **14th Floor** | 79d | 2026-01-01 | 2026-03-21 |  | start no earlier than 2026-01-01 |
| 1390 |  | Block Work | 5d | 2026-01-09 | 2026-01-13 | 1374FS+0.25d |  |
| 1391 |  | Door Frame Fixing | 9d | 2026-01-17 | 2026-01-26 | 1375, 1390 |  |
| 1392 |  | Internal Plumbing Works | 15d | 2026-01-23 | 2026-02-07 | 1376, 1390 |  |
| 1393 |  | Waterproofing | 15d | 2026-02-10 | 2026-02-25 | 1377, 1392 |  |
| 1394 |  | Internal Plaster | 8d | 2026-01-27 | 2026-02-04 | 1378FS+0.25d |  |
| 1395 |  | IPS flooring work | 12d | 2026-02-25 | 2026-03-09 | 1379, 1391, 1392, 1393 |  |
| 1396 |  | Toilet dado work | 12d | 2026-02-25 | 2026-03-09 | 1380, 1393, 1394 |  |
| 1397 |  | Toilet flooring work | 12d | 2026-03-09 | 2026-03-21 | 1381, 1396 |  |
| 1398 |  | Living dinning flooring | 7d | 2026-01-01 | 2026-01-08 | 1382FS+0.25d |  |
| 1399 |  | Aluminium door-window fixing | 8d | 2026-01-02 | 2026-01-10 | 1383FS+0.25d |  |
| 1400 |  | Putty primer coat | 6d | 2026-01-08 | 2026-01-14 | 1384, 1398 |  |

| ID | WBS | Task | Duration | Start | Finish | Predecessors | Constraint |
| --- | --- | --- | --- | --- | --- | --- | --- |
| 1401 |  | Door shutter fixing | 8d | 2026-01-09 | 2026-01-17 | 1385, 1398 |  |
| 1402 |  | Electrical wiring work | 12d | 2026-02-06 | 2026-02-18 | 1386, 1401 |  |
| 1403 |  | Painting 1st coat | 12d | 2026-02-18 | 2026-03-02 | 1387, 1400, 1401, 1402 |  |
| 1404 |  | False ceiling | 10d | 2026-03-02 | 2026-03-12 | 1388, 1403 |  |
| 1405 | 37200.37300.37500.38000.39200.40400.41400.79100 | **15th Floor** | 78.75d | 2026-01-08 | 2026-03-28 |  | start no earlier than 2026-01-08 |
| 1406 |  | Block Work | 8d | 2026-01-14 | 2026-01-22 | 1390FS+0.25d |  |
| 1407 |  | Door Frame Fixing | 9d | 2026-01-26 | 2026-02-04 | 1391, 1406 |  |
| 1408 |  | Internal Plumbing Works | 10d | 2026-02-07 | 2026-02-17 | 1392, 1406 |  |
| 1409 |  | Waterproofing | 12d | 2026-02-25 | 2026-03-09 | 1393, 1408 |  |
| 1410 |  | Internal Plaster | 5d | 2026-02-05 | 2026-02-09 | 1394FS+0.25d |  |
| 1411 |  | IPS flooring work | 9d | 2026-03-09 | 2026-03-18 | 1395, 1407, 1408, 1409 |  |
| 1412 |  | Toilet dado work | 8d | 2026-03-09 | 2026-03-17 | 1396, 1409, 1410 |  |
| 1413 |  | Toilet flooring work | 7d | 2026-03-21 | 2026-03-28 | 1397, 1412 |  |
| 1414 |  | Living dinning flooring | 12d | 2026-01-08 | 2026-01-20 | 1398FS+0.25d |  |
| 1415 |  | Aluminium door-window fixing | 12d | 2026-01-10 | 2026-01-22 | 1399FS+0.25d |  |
| 1416 |  | Putty primer coat | 6d | 2026-01-20 | 2026-01-26 | 1400, 1414 |  |
| 1417 |  | Door shutter fixing | 8d | 2026-01-20 | 2026-01-28 | 1401, 1414 |  |
| 1418 |  | Electrical wiring work | 12d | 2026-02-18 | 2026-03-02 | 1402, 1417 |  |
| 1419 |  | Painting 1st coat | 12d | 2026-03-02 | 2026-03-14 | 1403, 1416, 1417, 1418 |  |
| 1420 |  | False ceiling | 10d | 2026-03-14 | 2026-03-24 | 1404, 1419 |  |
| 1421 | 37200.37300.37500.38000.39200.40400.41400.79000 | **16th Floor** | 74.5d | 2026-01-21 | 2026-04-05 |  | start no earlier than 2026-01-21 |
| 1422 |  | Block Work | 8d | 2026-01-22 | 2026-01-30 | 1406FS+0.25d |  |
| 1423 |  | Door Frame Fixing | 9d | 2026-02-04 | 2026-02-13 | 1407, 1422 |  |
| 1424 |  | Internal Plumbing Works | 10d | 2026-02-17 | 2026-02-27 | 1408, 1422 |  |
| 1425 |  | Waterproofing | 12d | 2026-03-09 | 2026-03-21 | 1409, 1424 |  |
| 1426 |  | Internal Plaster | 5d | 2026-02-10 | 2026-02-15 | 1410FS+0.25d |  |
| 1427 |  | IPS flooring work | 9d | 2026-03-21 | 2026-03-30 | 1411, 1423, 1424, 1425 |  |
| 1428 |  | Toilet dado work | 8d | 2026-03-21 | 2026-03-29 | 1412, 1425, 1426 |  |
| 1429 |  | Toilet flooring work | 7d | 2026-03-29 | 2026-04-05 | 1413, 1428 |  |
| 1430 |  | Living dinning flooring | 12d | 2026-01-21 | 2026-02-01 | 1414FS+0.25d |  |
| 1431 |  | Aluminium door-window fixing | 12d | 2026-01-23 | 2026-02-03 | 1415FS+0.25d |  |
| 1432 |  | Putty primer coat | 6d | 2026-02-02 | 2026-02-07 | 1416, 1430 |  |
| 1433 |  | Door shutter fixing | 8d | 2026-02-02 | 2026-02-09 | 1417, 1430 |  |
| 1434 |  | Electrical wiring work | 12d | 2026-03-02 | 2026-03-14 | 1418, 1433 |  |
| 1435 |  | Painting 1st coat | 12d | 2026-03-14 | 2026-03-26 | 1419, 1432, 1433, 1434 |  |
| 1436 |  | False ceiling | 10d | 2026-03-26 | 2026-04-05 | 1420, 1435 |  |
| 1437 | 37200.37300.37500.38000.39200.40400.41400.78900 | **17th Floor** | 82.75d | 2026-01-30 | 2026-04-23 |  | start no earlier than 2026-01-30 |
| 1438 |  | Block Work | 8d | 2026-01-30 | 2026-02-07 | 1422FS+0.25d |  |
| 1439 |  | Door Frame Fixing | 9d | 2026-02-13 | 2026-02-22 | 1423, 1438 |  |
| 1440 |  | Internal Plumbing Works | 10d | 2026-02-27 | 2026-03-09 | 1424, 1438 |  |
| 1441 |  | Waterproofing | 12d | 2026-03-21 | 2026-04-02 | 1425, 1440 |  |
| 1442 |  | Internal Plaster | 5d | 2026-02-15 | 2026-02-20 | 1426FS+0.25d |  |
| 1443 |  | IPS flooring work | 9d | 2026-04-02 | 2026-04-11 | 1427, 1439, 1440, 1441 |  |
| 1444 |  | Toilet dado work | 8d | 2026-04-02 | 2026-04-10 | 1428, 1441, 1442 |  |
| 1445 |  | Toilet flooring work | 7d | 2026-04-10 | 2026-04-17 | 1429, 1444 |  |
| 1446 |  | Living dinning flooring | 12d | 2026-02-02 | 2026-02-14 | 1430FS+0.25d |  |
| 1447 |  | Aluminium door-window fixing | 12d | 2026-04-11 | 2026-04-23 | 1431, 1443, 1446 |  |
| 1448 |  | Putty primer coat | 6d | 2026-02-14 | 2026-02-20 | 1432, 1446 |  |
| 1449 |  | Door shutter fixing | 8d | 2026-02-14 | 2026-02-22 | 1433, 1446 |  |
| 1450 |  | Electrical wiring work | 12d | 2026-03-14 | 2026-03-26 | 1434, 1449 |  |
| 1451 |  | Painting 1st coat | 12d | 2026-03-26 | 2026-04-07 | 1435, 1448, 1449, 1450 |  |
| 1452 |  | False ceiling | 10d | 2026-04-07 | 2026-04-17 | 1436, 1451 |  |
| 1453 | 37200.37300.37500.38000.39200.40400.41400.78800 | **18th Floor** | 86.75d | 2026-02-08 | 2026-05-05 |  | start no earlier than 2026-02-08 |
| 1454 |  | Block Work | 8d | 2026-02-08 | 2026-02-15 | 1438FS+0.25d |  |
| 1455 |  | Door Frame Fixing | 9d | 2026-02-22 | 2026-03-03 | 1439, 1454 |  |
| 1456 |  | Internal Plumbing Works | 10d | 2026-03-09 | 2026-03-19 | 1440, 1454 |  |
| 1457 |  | Waterproofing | 12d | 2026-04-02 | 2026-04-14 | 1441, 1456 |  |
| 1458 |  | Internal Plaster | 9d | 2026-02-20 | 2026-03-01 | 1442 |  |
| 1459 |  | IPS flooring work | 9d | 2026-04-14 | 2026-04-23 | 1443, 1455, 1456, 1457 |  |
| 1460 |  | Toilet dado work | 8d | 2026-04-14 | 2026-04-22 | 1444, 1457, 1458 |  |
| 1461 |  | Toilet flooring work | 7d | 2026-04-22 | 2026-04-29 | 1445, 1460 |  |
| 1462 |  | Living dinning flooring | 12d | 2026-02-14 | 2026-02-26 | 1446FS+0.25d |  |
| 1463 |  | Aluminium door-window fixing | 12d | 2026-04-23 | 2026-05-05 | 1447FS+0.25d |  |
| 1464 |  | Putty primer coat | 6d | 2026-02-26 | 2026-03-04 | 1448, 1462 |  |
| 1465 |  | Door shutter fixing | 8d | 2026-02-26 | 2026-03-06 | 1449, 1462 |  |
| 1466 |  | Electrical wiring work | 12d | 2026-03-26 | 2026-04-07 | 1450, 1465 |  |
| 1467 |  | Painting 1st coat | 12d | 2026-04-07 | 2026-04-19 | 1451, 1464, 1465, 1466 |  |
| 1468 |  | False ceiling | 10d | 2026-04-19 | 2026-04-29 | 1452, 1467 |  |
| 1469 | 37200.37300.37500.38000.39200.40400.41400.78700 | **19th Floor** | 90.75d | 2026-02-16 | 2026-05-17 |  | start no earlier than 2026-02-16 |
| 1470 |  | Block Work | 8d | 2026-02-16 | 2026-02-24 | 1454FS+0.25d |  |

| ID | WBS | Task | Duration | Start | Finish | Predecessors | Constraint |
| --- | --- | --- | --- | --- | --- | --- | --- |
| 1471 |  | Door Frame Fixing | 9d | 2026-03-03 | 2026-03-12 | 1455, 1470 |  |
| 1472 |  | Internal Plumbing Works | 10d | 2026-03-19 | 2026-03-29 | 1456, 1470 |  |
| 1473 |  | Waterproofing | 12d | 2026-04-14 | 2026-04-26 | 1457, 1472 |  |
| 1474 |  | Internal Plaster | 5d | 2026-03-01 | 2026-03-06 | 1458FS+0.25d |  |
| 1475 |  | IPS flooring work | 9d | 2026-04-26 | 2026-05-05 | 1459, 1471, 1473, 1474 |  |
| 1476 |  | Toilet dado work | 8d | 2026-04-26 | 2026-05-04 | 1460, 1473, 1474 |  |
| 1477 |  | Toilet flooring work | 7d | 2026-05-04 | 2026-05-11 | 1461, 1476 |  |
| 1478 |  | Living dinning flooring | 12d | 2026-02-26 | 2026-03-10 | 1462FS+0.25d |  |
| 1479 |  | Aluminium door-window fixing | 12d | 2026-05-06 | 2026-05-17 | 1463FS+0.25d |  |
| 1480 |  | Putty primer coat | 6d | 2026-03-10 | 2026-03-16 | 1464, 1478 |  |
| 1481 |  | Door shutter fixing | 8d | 2026-03-10 | 2026-03-18 | 1465, 1478 |  |
| 1482 |  | Electrical wiring work | 12d | 2026-04-07 | 2026-04-19 | 1466, 1481 |  |
| 1483 |  | Painting 1st coat | 12d | 2026-04-19 | 2026-05-01 | 1467, 1480, 1481, 1482 |  |
| 1484 |  | False ceiling | 10d | 2026-05-01 | 2026-05-11 | 1468, 1483 |  |
| 1485 | 37200.37300.37500.38000.39200.40400.41400.78600 | **20th Floor** | 94.5d | 2026-02-24 | 2026-05-29 |  | start no earlier than 2026-02-24 |
| 1486 |  | Block Work | 8d | 2026-02-24 | 2026-03-04 | 1470FS+0.25d |  |
| 1487 |  | Door Frame Fixing | 9d | 2026-03-12 | 2026-03-21 | 1471, 1486 |  |
| 1488 |  | Internal Plumbing Works | 10d | 2026-03-29 | 2026-04-08 | 1472, 1486 |  |
| 1489 |  | Waterproofing | 12d | 2026-04-26 | 2026-05-08 | 1473, 1488 |  |
| 1490 |  | Internal Plaster | 5d | 2026-03-07 | 2026-03-11 | 1474FS+0.25d |  |
| 1491 |  | IPS flooring work | 9d | 2026-05-08 | 2026-05-17 | 1475, 1487, 1489, 1490 |  |
| 1492 |  | Toilet dado work | 8d | 2026-05-08 | 2026-05-16 | 1476, 1489, 1490 |  |
| 1493 |  | Toilet flooring work | 7d | 2026-05-16 | 2026-05-23 | 1477, 1492 |  |
| 1494 |  | Living dinning flooring | 12d | 2026-03-11 | 2026-03-22 | 1478FS+0.25d |  |
| 1495 |  | Aluminium door-window fixing | 12d | 2026-05-18 | 2026-05-29 | 1479, 1491, 1494 |  |
| 1496 |  | Putty primer coat | 6d | 2026-03-23 | 2026-03-28 | 1480, 1494 |  |
| 1497 |  | Door shutter fixing | 8d | 2026-03-23 | 2026-03-30 | 1481, 1494 |  |
| 1498 |  | Electrical wiring work | 12d | 2026-04-19 | 2026-05-01 | 1482, 1497 |  |
| 1499 |  | Painting 1st coat | 12d | 2026-05-01 | 2026-05-13 | 1483, 1496, 1497, 1498 |  |
| 1500 |  | False ceiling | 10d | 2026-05-13 | 2026-05-23 | 1484, 1499 |  |
| 1501 | 37200.37300.37500.38000.39200.40400.41400.78500 | **21st Floor** | 145.75d | 2026-03-04 | 2026-07-28 |  | start no earlier than 2026-03-04 |
| 1502 |  | Block Work | 8d | 2026-03-04 | 2026-03-12 | 1486FS+0.25d |  |
| 1503 |  | Door Frame Fixing | 9d | 2026-03-21 | 2026-03-30 | 1487, 1502 |  |
| 1504 |  | Internal Plumbing Works | 10d | 2026-04-08 | 2026-04-18 | 1488, 1502 |  |
| 1505 |  | Waterproofing | 12d | 2026-05-08 | 2026-05-20 | 1489, 1504 |  |
| 1506 |  | Internal Plaster | 8d | 2026-03-12 | 2026-03-20 | 1490FS+0.25d |  |
| 1507 |  | IPS flooring work | 9d | 2026-05-20 | 2026-05-29 | 1491, 1503, 1505, 1506 |  |
| 1508 |  | Toilet dado work | 8d | 2026-05-20 | 2026-05-28 | 1492, 1505, 1506 |  |
| 1509 |  | Toilet flooring work | 7d | 2026-05-28 | 2026-06-04 | 1493, 1508 |  |
| 1510 |  | Living dinning flooring | 12d | 2026-06-04 | 2026-06-16 | 1494, 1503, 1509 |  |
| 1511 |  | Aluminium door-window fixing | 12d | 2026-06-16 | 2026-06-28 | 1495, 1507, 1510 |  |
| 1512 |  | Putty primer coat | 6d | 2026-06-16 | 2026-06-22 | 1496, 1510 |  |
| 1513 |  | Door shutter fixing | 8d | 2026-06-16 | 2026-06-24 | 1497, 1510 |  |
| 1514 |  | Electrical wiring work | 12d | 2026-06-24 | 2026-07-06 | 1498, 1513 |  |
| 1515 |  | Painting 1st coat | 12d | 2026-07-06 | 2026-07-18 | 1499, 1512, 1513, 1514 |  |
| 1516 |  | False ceiling | 10d | 2026-07-18 | 2026-07-28 | 1500, 1515 |  |
| 1517 | 37200.37300.37500.38000.39200.40400.41400.78400 | **22nd Floor** | 149.5d | 2026-03-13 | 2026-08-09 |  | start no earlier than 2026-03-13 |
| 1518 |  | Block Work | 5d | 2026-03-13 | 2026-03-17 | 1502FS+0.25d |  |
| 1519 |  | Door Frame Fixing | 9d | 2026-03-30 | 2026-04-08 | 1503, 1518 |  |
| 1520 |  | Internal Plumbing Works | 10d | 2026-04-18 | 2026-04-28 | 1504, 1518 |  |
| 1521 |  | Waterproofing | 12d | 2026-05-20 | 2026-06-01 | 1505, 1520 |  |
| 1522 |  | Internal Plaster | 10d | 2026-03-20 | 2026-03-30 | 1506FS+0.25d |  |
| 1523 |  | IPS flooring work | 9d | 2026-06-01 | 2026-06-10 | 1507, 1519, 1521, 1522 |  |
| 1524 |  | Toilet dado work | 8d | 2026-06-01 | 2026-06-09 | 1508, 1521, 1522 |  |
| 1525 |  | Toilet flooring work | 7d | 2026-06-09 | 2026-06-16 | 1509, 1524 |  |
| 1526 |  | Living dinning flooring | 12d | 2026-06-16 | 2026-06-28 | 1510, 1519, 1525 |  |
| 1527 |  | Aluminium door-window fixing | 12d | 2026-06-28 | 2026-07-10 | 1511, 1523, 1526 |  |
| 1528 |  | Putty primer coat | 6d | 2026-06-28 | 2026-07-04 | 1512, 1526 |  |
| 1529 |  | Door shutter fixing | 8d | 2026-06-28 | 2026-07-06 | 1513, 1526 |  |
| 1530 |  | Electrical wiring work | 12d | 2026-07-06 | 2026-07-18 | 1514, 1529 |  |
| 1531 |  | Painting 1st coat | 12d | 2026-07-18 | 2026-07-30 | 1515, 1528, 1529, 1530 |  |
| 1532 |  | False ceiling | 10d | 2026-07-30 | 2026-08-09 | 1516, 1531 |  |
| 1533 | 37200.37300.37500.38000.39200.40400.41400.78300 | **23rd Floor** | 159.25d | 2026-03-18 | 2026-08-24 |  | start no earlier than 2026-03-18 |
| 1534 |  | Block Work | 7.94d | 2026-03-18 | 2026-03-26 | 1518FS+0.25d |  |
| 1535 |  | Door Frame Fixing | 9d | 2026-04-08 | 2026-04-17 | 1519, 1534 |  |
| 1536 |  | Internal Plumbing Works | 10d | 2026-04-28 | 2026-05-08 | 1520, 1534 |  |
| 1537 |  | Waterproofing | 12d | 2026-06-01 | 2026-06-13 | 1521, 1536 |  |
| 1538 |  | Internal Plaster | 10d | 2026-03-30 | 2026-04-09 | 1522FS+0.25d |  |
| 1539 |  | IPS flooring work | 9d | 2026-06-13 | 2026-06-22 | 1523, 1535, 1537, 1538 |  |
| 1540 |  | Toilet dado work | 8d | 2026-06-13 | 2026-06-21 | 1524, 1537, 1538 |  |

| ID | WBS | Task | Duration | Start | Finish | Predecessors | Constraint |
| --- | --- | --- | --- | --- | --- | --- | --- |
| 1541 |  | Toilet flooring work | 7d | 2026-06-21 | 2026-06-28 | 1525, 1540 |  |
| 1542 |  | Living dinning flooring | 15d | 2026-06-28 | 2026-07-13 | 1526, 1535, 1541 |  |
| 1543 |  | Aluminium door-window fixing | 15d | 2026-07-13 | 2026-07-28 | 1527, 1539, 1542 |  |
| 1544 |  | Putty primer coat | 6d | 2026-07-13 | 2026-07-19 | 1528, 1542 |  |
| 1545 |  | Door shutter fixing | 8d | 2026-07-13 | 2026-07-21 | 1529, 1542 |  |
| 1546 |  | Electrical wiring work | 12d | 2026-07-21 | 2026-08-02 | 1530, 1545 |  |
| 1547 |  | Painting 1st coat | 12d | 2026-08-02 | 2026-08-14 | 1531, 1544, 1545, 1546 |  |
| 1548 |  | False ceiling | 10d | 2026-08-14 | 2026-08-24 | 1532, 1547 |  |
| 1549 | 37200.37300.37500.38000.39200.40400.41400.78200 | **24th Floor** | 172.06d | 2026-03-26 | 2026-09-14 |  | start no earlier than 2026-03-26 |
| 1550 |  | Block Work | 4d | 2026-03-26 | 2026-03-30 | 1534FS+0.25d |  |
| 1551 |  | Door Frame Fixing | 9d | 2026-04-17 | 2026-04-26 | 1535, 1550 |  |
| 1552 |  | Internal Plumbing Works | 10d | 2026-05-08 | 2026-05-18 | 1536, 1550 |  |
| 1553 |  | Waterproofing | 12d | 2026-06-13 | 2026-06-25 | 1537, 1552 |  |
| 1554 |  | Internal Plaster | 9d | 2026-06-25 | 2026-07-04 | 1538, 1551, 1552, 1553 |  |
| 1555 |  | IPS flooring work | 9d | 2026-07-04 | 2026-07-13 | 1539, 1551, 1553, 1554 |  |
| 1556 |  | Toilet dado work | 8d | 2026-07-04 | 2026-07-12 | 1540, 1553, 1554 |  |
| 1557 |  | Toilet flooring work | 7d | 2026-07-12 | 2026-07-19 | 1541, 1556 |  |
| 1558 |  | Living dinning flooring | 15d | 2026-07-19 | 2026-08-03 | 1542, 1551, 1557 |  |
| 1559 |  | Aluminium door-window fixing | 15d | 2026-08-03 | 2026-08-18 | 1543, 1555, 1558 |  |
| 1560 |  | Putty primer coat | 6d | 2026-08-03 | 2026-08-09 | 1544, 1558 |  |
| 1561 |  | Door shutter fixing | 8d | 2026-08-03 | 2026-08-11 | 1545, 1558 |  |
| 1562 |  | Electrical wiring work | 12d | 2026-08-11 | 2026-08-23 | 1546, 1561 |  |
| 1563 |  | Painting 1st coat | 12d | 2026-08-23 | 2026-09-04 | 1547, 1560, 1561, 1562 |  |
| 1564 |  | False ceiling | 10d | 2026-09-04 | 2026-09-14 | 1548, 1563 |  |
| 1565 | 37200.37300.37500.38000.39200.40400.41400.78100 | **25th Floor** | 128.38d | 2026-05-24 | 2026-09-29 |  | start no earlier than 2026-05-24 |
| 1566 |  | Block Work | 7.94d | 2026-05-24 | 2026-06-01 | 1168, 1550 |  |
| 1567 |  | Door Frame Fixing | 9d | 2026-06-01 | 2026-06-10 | 1551, 1566 |  |
| 1568 |  | Internal Plumbing Works | 10d | 2026-06-01 | 2026-06-11 | 1552, 1566 |  |
| 1569 |  | Waterproofing | 12d | 2026-06-25 | 2026-07-07 | 1553, 1568 |  |
| 1570 |  | Internal Plaster | 9d | 2026-07-07 | 2026-07-16 | 1554, 1567, 1568, 1569 |  |
| 1571 |  | IPS flooring work | 9d | 2026-07-16 | 2026-07-25 | 1555, 1567, 1569, 1570 |  |
| 1572 |  | Toilet dado work | 8d | 2026-07-16 | 2026-07-24 | 1556, 1569, 1570 |  |
| 1573 |  | Toilet flooring work | 7d | 2026-07-24 | 2026-07-31 | 1557, 1572 |  |
| 1574 |  | Living dinning flooring | 15d | 2026-08-03 | 2026-08-18 | 1558, 1567, 1573 |  |
| 1575 |  | Aluminium door-window fixing | 15d | 2026-08-18 | 2026-09-02 | 1559, 1571, 1574 |  |
| 1576 |  | Putty primer coat | 6d | 2026-08-18 | 2026-08-24 | 1560, 1574 |  |
| 1577 |  | Door shutter fixing | 8d | 2026-08-18 | 2026-08-26 | 1561, 1574 |  |
| 1578 |  | Electrical wiring work | 12d | 2026-08-26 | 2026-09-07 | 1562, 1577 |  |
| 1579 |  | Painting 1st coat | 12d | 2026-09-07 | 2026-09-19 | 1563, 1576, 1577, 1578 |  |
| 1580 |  | False ceiling | 10d | 2026-09-19 | 2026-09-29 | 1564, 1579 |  |
| 1581 | 37200.37300.37500.38000.39200.40400.41400.78000 | **26th Floor** | 131.62d | 2026-06-04 | 2026-10-14 |  | start no earlier than 2026-06-04 |
| 1582 |  | Block Work | 7.94d | 2026-06-04 | 2026-06-12 | 1169, 1566 |  |
| 1583 |  | Door Frame Fixing | 9d | 2026-06-12 | 2026-06-21 | 1567, 1582 |  |
| 1584 |  | Internal Plumbing Works | 10d | 2026-06-12 | 2026-06-22 | 1568, 1582 |  |
| 1585 |  | Waterproofing | 12d | 2026-07-07 | 2026-07-19 | 1569, 1584 |  |
| 1586 |  | Internal Plaster | 9d | 2026-07-19 | 2026-07-28 | 1570, 1583, 1584, 1585 |  |
| 1587 |  | IPS flooring work | 9d | 2026-07-28 | 2026-08-06 | 1571, 1583, 1585, 1586 |  |
| 1588 |  | Toilet dado work | 8d | 2026-07-28 | 2026-08-05 | 1572, 1585, 1586 |  |
| 1589 |  | Toilet flooring work | 7d | 2026-08-05 | 2026-08-12 | 1573, 1588 |  |
| 1590 |  | Living dinning flooring | 15d | 2026-08-18 | 2026-09-02 | 1574, 1583, 1589 |  |
| 1591 |  | Aluminium door-window fixing | 15d | 2026-09-02 | 2026-09-17 | 1575, 1587, 1590 |  |
| 1592 |  | Putty primer coat | 6d | 2026-09-02 | 2026-09-08 | 1576, 1590 |  |
| 1593 |  | Door shutter fixing | 8d | 2026-09-02 | 2026-09-10 | 1577, 1590 |  |
| 1594 |  | Electrical wiring work | 12d | 2026-09-10 | 2026-09-22 | 1578, 1593 |  |
| 1595 |  | Painting 1st coat | 12d | 2026-09-22 | 2026-10-04 | 1579, 1592, 1593, 1594 |  |
| 1596 |  | False ceiling | 10d | 2026-10-04 | 2026-10-14 | 1580, 1595 |  |
| 1597 | 37200.37300.37500.38000.39200.40400.41400.77900 | **27th Floor** | 133.88d | 2026-06-17 | 2026-10-29 |  | start no earlier than 2026-06-17 |
| 1598 |  | Block Work | 7.94d | 2026-06-17 | 2026-06-25 | 1170, 1582 |  |
| 1599 |  | Door Frame Fixing | 8.94d | 2026-06-25 | 2026-07-04 | 1583, 1598 |  |
| 1600 |  | Internal Plumbing Works | 10d | 2026-06-25 | 2026-07-05 | 1584, 1598 |  |
| 1601 |  | Waterproofing | 12d | 2026-07-19 | 2026-07-31 | 1585, 1600 |  |
| 1602 |  | Internal Plaster | 9d | 2026-07-31 | 2026-08-09 | 1586, 1599, 1600, 1601 |  |
| 1603 |  | IPS flooring work | 9d | 2026-08-09 | 2026-08-18 | 1587, 1599, 1601, 1602 |  |
| 1604 |  | Toilet dado work | 8d | 2026-08-09 | 2026-08-17 | 1588, 1601, 1602 |  |
| 1605 |  | Toilet flooring work | 7d | 2026-08-17 | 2026-08-24 | 1589, 1604 |  |
| 1606 |  | Living dinning flooring | 15d | 2026-09-02 | 2026-09-17 | 1590, 1599, 1605 |  |
| 1607 |  | Aluminium door-window fixing | 15d | 2026-09-17 | 2026-10-02 | 1591, 1603, 1606 |  |
| 1608 |  | Putty primer coat | 6d | 2026-09-17 | 2026-09-23 | 1592, 1606 |  |
| 1609 |  | Door shutter fixing | 8d | 2026-09-17 | 2026-09-25 | 1593, 1606 |  |
| 1610 |  | Electrical wiring work | 12d | 2026-09-25 | 2026-10-07 | 1594, 1609 |  |

| ID | WBS | Task | Duration | Start | Finish | Predecessors | Constraint |
| --- | --- | --- | --- | --- | --- | --- | --- |
| 1611 |  | Painting 1st coat | 12d | 2026-10-07 | 2026-10-19 | 1595, 1608, 1609, 1610 |  |
| 1612 |  | False ceiling | 10d | 2026-10-19 | 2026-10-29 | 1596, 1611 |  |
| 1613 | 37200.37300.37500.38000.39200.40400.41400.77800 | **28th Floor** | 137.12d | 2026-06-29 | 2026-12-28 |  | start no earlier than 2026-06-29 |
| 1614 |  | Block Work | 7.94d | 2026-06-29 | 2026-07-07 | 1171, 1598 |  |
| 1615 |  | Door Frame Fixing | 8.94d | 2026-07-07 | 2026-07-16 | 1599, 1614 |  |
| 1616 |  | Internal Plumbing Works | 10d | 2026-07-07 | 2026-07-17 | 1600, 1614 |  |
| 1617 |  | Waterproofing | 12d | 2026-07-31 | 2026-08-12 | 1601, 1616 |  |
| 1618 |  | Internal Plaster | 9d | 2026-08-12 | 2026-08-21 | 1602, 1615, 1616, 1617 |  |
| 1619 |  | IPS flooring work | 9d | 2026-08-21 | 2026-08-30 | 1603, 1615, 1617, 1618 |  |
| 1620 |  | Toilet dado work | 8d | 2026-08-21 | 2026-08-29 | 1604, 1617, 1618 |  |
| 1621 |  | Toilet flooring work | 7d | 2026-08-29 | 2026-09-05 | 1605, 1620 |  |
| 1622 |  | Living dinning flooring | 15d | 2026-09-17 | 2026-10-02 | 1606, 1615, 1621 |  |
| 1623 |  | Aluminium door-window fixing | 15d | 2026-10-02 | 2026-10-17 | 1607, 1619, 1622 |  |
| 1624 |  | Putty primer coat | 6d | 2026-10-02 | 2026-10-08 | 1608, 1622 |  |
| 1625 |  | Door shutter fixing | 8d | 2026-10-02 | 2026-10-10 | 1609, 1622 |  |
| 1626 |  | Electrical wiring work | 12d | 2026-10-10 | 2026-10-22 | 1610, 1625 |  |
| 1627 |  | Painting 1st coat | 12d | 2026-10-22 | 2026-12-18 | 1611, 1624, 1625, 1626 |  |
| 1628 |  | False ceiling | 10d | 2026-12-18 | 2026-12-28 | 1612, 1627 |  |
| 1629 | 37200.37300.37500.38000.39200.40400.41400.77700 | **29th Floor** | 137.38d | 2026-07-14 | 2027-01-12 |  | start no earlier than 2026-07-14 |
| 1630 |  | Block Work | 7.94d | 2026-07-14 | 2026-07-22 | 1172, 1614 |  |
| 1631 |  | Door Frame Fixing | 8.94d | 2026-07-22 | 2026-07-30 | 1615, 1630 |  |
| 1632 |  | Internal Plumbing Works | 10d | 2026-07-22 | 2026-08-01 | 1616, 1630 |  |
| 1633 |  | Waterproofing | 12d | 2026-08-12 | 2026-08-24 | 1617, 1632 |  |
| 1634 |  | Internal Plaster | 9d | 2026-08-24 | 2026-09-02 | 1618, 1631, 1632, 1633 |  |
| 1635 |  | IPS flooring work | 9d | 2026-09-02 | 2026-09-11 | 1619, 1631, 1633, 1634 |  |
| 1636 |  | Toilet dado work | 8d | 2026-09-02 | 2026-09-10 | 1620, 1633, 1634 |  |
| 1637 |  | Toilet flooring work | 7d | 2026-09-10 | 2026-09-17 | 1621, 1636 |  |
| 1638 |  | Living dinning flooring | 15d | 2026-10-02 | 2026-10-17 | 1622, 1631, 1637 |  |
| 1639 |  | Aluminium door-window fixing | 15d | 2026-10-17 | 2026-12-16 | 1623, 1635, 1638 |  |
| 1640 |  | Putty primer coat | 6d | 2026-10-17 | 2026-10-23 | 1624, 1638 |  |
| 1641 |  | Door shutter fixing | 8d | 2026-10-17 | 2026-10-25 | 1625, 1638 |  |
| 1642 |  | Electrical wiring work | 12d | 2026-10-25 | 2026-12-21 | 1626, 1641 |  |
| 1643 |  | Painting 1st coat | 12d | 2026-12-21 | 2027-01-02 | 1627, 1640, 1641, 1642 |  |
| 1644 |  | False ceiling | 10d | 2027-01-02 | 2027-01-12 | 1628, 1643 |  |
| 1645 | 37200.37300.37500.38000.39200.40400.41400.77600 | **30th Floor** | 118.88d | 2026-08-22 | 2027-02-02 |  | start no earlier than 2026-08-22 |
| 1646 |  | Block Work | 7.94d | 2026-08-22 | 2026-08-30 | 1173, 1630 |  |
| 1647 |  | Door Frame Fixing | 8.94d | 2026-08-30 | 2026-09-08 | 1631, 1646 |  |
| 1648 |  | Internal Plumbing Works | 9.94d | 2026-08-30 | 2026-09-09 | 1632, 1646 |  |
| 1649 |  | Waterproofing | 12d | 2026-09-09 | 2026-09-21 | 1633, 1648 |  |
| 1650 |  | Internal Plaster | 9d | 2026-09-21 | 2026-09-30 | 1634, 1647, 1648, 1649 |  |
| 1651 |  | IPS flooring work | 9d | 2026-09-30 | 2026-10-09 | 1635, 1647, 1649, 1650 |  |
| 1652 |  | Toilet dado work | 8d | 2026-09-30 | 2026-10-08 | 1636, 1649, 1650 |  |
| 1653 |  | Toilet flooring work | 7d | 2026-10-08 | 2026-10-15 | 1637, 1652 |  |
| 1654 |  | Living dinning flooring | 15d | 2026-10-17 | 2026-12-16 | 1638, 1647, 1653 |  |
| 1655 |  | Aluminium door-window fixing | 15d | 2026-12-16 | 2026-12-31 | 1639, 1651, 1654 |  |
| 1656 |  | Putty primer coat | 6d | 2026-12-16 | 2026-12-22 | 1640, 1654 |  |
| 1657 |  | Door shutter fixing | 8d | 2026-12-16 | 2026-12-24 | 1641, 1654 |  |
| 1658 |  | Electrical wiring work | 15d | 2026-12-24 | 2027-01-08 | 1642, 1657 |  |
| 1659 |  | Painting 1st coat | 15d | 2027-01-08 | 2027-01-23 | 1643, 1656, 1657, 1658 |  |
| 1660 |  | False ceiling | 10d | 2027-01-23 | 2027-02-02 | 1644, 1659 |  |
| 1661 | 37200.37300.37500.38000.39200.40400.41400.77500 | **31st Floor** | 125.94d | 2026-08-30 | 2027-02-17 |  | start no earlier than 2026-08-30 |
| 1662 |  | Block Work | 7.94d | 2026-08-30 | 2026-09-07 | 1174, 1646 |  |
| 1663 |  | Door Frame Fixing | 8.94d | 2026-09-08 | 2026-09-17 | 1647, 1662 |  |
| 1664 |  | Internal Plumbing Works | 9.94d | 2026-09-09 | 2026-09-19 | 1648, 1662 |  |
| 1665 |  | Waterproofing | 12d | 2026-09-21 | 2026-10-03 | 1649, 1664 |  |
| 1666 |  | Internal Plaster | 9d | 2026-10-03 | 2026-10-12 | 1650, 1663, 1664, 1665 |  |
| 1667 |  | IPS flooring work | 9d | 2026-10-12 | 2026-10-21 | 1651, 1663, 1665, 1666 |  |
| 1668 |  | Toilet dado work | 8d | 2026-10-12 | 2026-10-20 | 1652, 1665, 1666 |  |
| 1669 |  | Toilet flooring work | 7d | 2026-10-20 | 2026-10-27 | 1653, 1668 |  |
| 1670 |  | Living dinning flooring | 15d | 2026-12-16 | 2026-12-31 | 1654, 1663, 1669 |  |
| 1671 |  | Aluminium door-window fixing | 12d | 2026-12-31 | 2027-01-12 | 1655, 1667, 1670 |  |
| 1672 |  | Putty primer coat | 6d | 2026-12-31 | 2027-01-06 | 1656, 1670 |  |
| 1673 |  | Door shutter fixing | 8d | 2026-12-31 | 2027-01-08 | 1657, 1670 |  |
| 1674 |  | Electrical wiring work | 15d | 2027-01-08 | 2027-01-23 | 1658, 1673 |  |
| 1675 |  | Painting 1st coat | 15d | 2027-01-23 | 2027-02-07 | 1659, 1672, 1673, 1674 |  |
| 1676 |  | False ceiling | 10d | 2027-02-07 | 2027-02-17 | 1660, 1675 |  |
| 1677 | 37200.37300.37500.38000.39200.40400.41400.77400 | **32nd Floor** | 133d | 2026-09-07 | 2027-03-04 |  | start no earlier than 2026-09-07 |
| 1678 |  | Block Work | 7.94d | 2026-09-07 | 2026-09-15 | 1175, 1662 |  |
| 1679 |  | Door Frame Fixing | 8.94d | 2026-09-17 | 2026-09-26 | 1663, 1678 |  |
| 1680 |  | Internal Plumbing Works | 9.94d | 2026-09-19 | 2026-09-29 | 1664, 1678 |  |

| ID | WBS | Task | Duration | Start | Finish | Predecessors | Constraint |
| --- | --- | --- | --- | --- | --- | --- | --- |
| 1681 |  | Waterproofing | 12d | 2026-10-03 | 2026-10-15 | 1665, 1680 |  |
| 1682 |  | Internal Plaster | 9d | 2026-10-15 | 2026-10-24 | 1666, 1679, 1680, 1681 |  |
| 1683 |  | IPS flooring work | 9d | 2026-10-24 | 2026-12-17 | 1667, 1679, 1681, 1682 |  |
| 1684 |  | Toilet dado work | 8d | 2026-10-24 | 2026-12-16 | 1668, 1681, 1682 |  |
| 1685 |  | Toilet flooring work | 7d | 2026-12-16 | 2026-12-23 | 1669, 1684 |  |
| 1686 |  | Living dinning flooring | 15d | 2026-12-31 | 2027-01-15 | 1670, 1679, 1685 |  |
| 1687 |  | Aluminium door-window fixing | 12d | 2027-01-15 | 2027-01-27 | 1671, 1683, 1686 |  |
| 1688 |  | Putty primer coat | 6d | 2027-01-15 | 2027-01-21 | 1672, 1686 |  |
| 1689 |  | Door shutter fixing | 8d | 2027-01-15 | 2027-01-23 | 1673, 1686 |  |
| 1690 |  | Electrical wiring work | 15d | 2027-01-23 | 2027-02-07 | 1674, 1689 |  |
| 1691 |  | Painting 1st coat | 15d | 2027-02-07 | 2027-02-22 | 1675, 1688, 1689, 1690 |  |
| 1692 |  | False ceiling | 10d | 2027-02-22 | 2027-03-04 | 1676, 1691 |  |
| 1693 | 37200.37300.37500.38000.39200.40400.41400.77300 | **33rd Floor** | 137.06d | 2026-09-15 | 2027-03-16 |  | start no earlier than 2026-09-15 |
| 1694 |  | Block Work | 7.94d | 2026-09-15 | 2026-09-23 | 1176, 1678 |  |
| 1695 |  | Door Frame Fixing | 8.94d | 2026-09-26 | 2026-10-05 | 1679, 1694 |  |
| 1696 |  | Internal Plumbing Works | 9.94d | 2026-09-29 | 2026-10-09 | 1680, 1694 |  |
| 1697 |  | Waterproofing | 12d | 2026-10-15 | 2026-10-27 | 1681, 1696 |  |
| 1698 |  | Internal Plaster | 9d | 2026-10-27 | 2026-12-20 | 1682, 1695, 1696, 1697 |  |
| 1699 |  | IPS flooring work | 9d | 2026-12-20 | 2026-12-29 | 1683, 1695, 1697, 1698 |  |
| 1700 |  | Toilet dado work | 8d | 2026-12-20 | 2026-12-28 | 1684, 1697, 1698 |  |
| 1701 |  | Toilet flooring work | 7d | 2026-12-28 | 2027-01-04 | 1685, 1700 |  |
| 1702 |  | Living dinning flooring | 15d | 2027-01-15 | 2027-01-30 | 1686, 1695, 1701 |  |
| 1703 |  | Aluminium door-window fixing | 15d | 2027-01-30 | 2027-02-14 | 1687, 1699, 1702 |  |
| 1704 |  | Putty primer coat | 6d | 2027-01-30 | 2027-02-05 | 1688, 1702 |  |
| 1705 |  | Door shutter fixing | 8d | 2027-01-30 | 2027-02-07 | 1689, 1702 |  |
| 1706 |  | Electrical wiring work | 12d | 2027-02-07 | 2027-02-19 | 1690, 1705 |  |
| 1707 |  | Painting 1st coat | 12d | 2027-02-22 | 2027-03-06 | 1691, 1704, 1705, 1706 |  |
| 1708 |  | False ceiling | 10d | 2027-03-06 | 2027-03-16 | 1692, 1707 |  |
| 1709 | 37200.37300.37500.38000.39200.40400.41400.77200 | **34th Floor** | 141.12d | 2026-09-23 | 2027-03-28 |  | start no earlier than 2026-09-23 |
| 1710 |  | Block Work | 7.94d | 2026-09-23 | 2026-10-01 | 1177, 1694 |  |
| 1711 |  | Door Frame Fixing | 8.94d | 2026-10-05 | 2026-10-14 | 1695, 1710 |  |
| 1712 |  | Internal Plumbing Works | 9.94d | 2026-10-09 | 2026-10-19 | 1696, 1710 |  |
| 1713 |  | Waterproofing | 12d | 2026-10-27 | 2026-12-23 | 1697, 1712 |  |
| 1714 |  | Internal Plaster | 9d | 2026-12-23 | 2027-01-01 | 1698, 1711, 1712, 1713 |  |
| 1715 |  | IPS flooring work | 9d | 2027-01-01 | 2027-01-10 | 1699, 1711, 1713, 1714 |  |
| 1716 |  | Toilet dado work | 8d | 2027-01-01 | 2027-01-09 | 1700, 1713, 1714 |  |
| 1717 |  | Toilet flooring work | 7d | 2027-01-09 | 2027-01-16 | 1701, 1716 |  |
| 1718 |  | Living dinning flooring | 15d | 2027-01-30 | 2027-02-14 | 1702, 1711, 1717 |  |
| 1719 |  | Aluminium door-window fixing | 15d | 2027-02-14 | 2027-03-01 | 1703, 1715, 1718 |  |
| 1720 |  | Putty primer coat | 6d | 2027-02-14 | 2027-02-20 | 1704, 1718 |  |
| 1721 |  | Door shutter fixing | 8d | 2027-02-14 | 2027-02-22 | 1705, 1718 |  |
| 1722 |  | Electrical wiring work | 12d | 2027-02-22 | 2027-03-06 | 1706, 1721 |  |
| 1723 |  | Painting 1st coat | 12d | 2027-03-06 | 2027-03-18 | 1707, 1720, 1721, 1722 |  |
| 1724 |  | False ceiling | 10d | 2027-03-18 | 2027-03-28 | 1708, 1723 |  |
| 1725 | 37200.37300.37500.38000.39200.40400.41400.77100 | **35th Floor** | 148.19d | 2026-10-01 | 2027-04-12 |  | start no earlier than 2026-10-01 |
| 1726 |  | Block Work | 7.94d | 2026-10-01 | 2026-10-09 | 1178, 1710 |  |
| 1727 |  | Door Frame Fixing | 8.94d | 2026-10-14 | 2026-10-23 | 1711, 1726 |  |
| 1728 |  | Internal Plumbing Works | 9.94d | 2026-10-19 | 2026-10-29 | 1712, 1726 |  |
| 1729 |  | Waterproofing | 12d | 2026-12-23 | 2027-01-04 | 1713, 1728 |  |
| 1730 |  | Internal Plaster | 9d | 2027-01-04 | 2027-01-13 | 1714, 1727, 1728, 1729 |  |
| 1731 |  | IPS flooring work | 9d | 2027-01-13 | 2027-01-22 | 1715, 1727, 1729, 1730 |  |
| 1732 |  | Toilet dado work | 8d | 2027-01-13 | 2027-01-21 | 1716, 1729, 1730 |  |
| 1733 |  | Toilet flooring work | 7d | 2027-01-21 | 2027-01-28 | 1717, 1732 |  |
| 1734 |  | Living dinning flooring | 15d | 2027-02-14 | 2027-03-01 | 1718, 1727, 1733 |  |
| 1735 |  | Aluminium door-window fixing | 15d | 2027-03-01 | 2027-03-16 | 1719, 1731, 1734 |  |
| 1736 |  | Putty primer coat | 6d | 2027-03-01 | 2027-03-07 | 1720, 1734 |  |
| 1737 |  | Door shutter fixing | 8d | 2027-03-01 | 2027-03-09 | 1721, 1734 |  |
| 1738 |  | Electrical wiring work | 12d | 2027-03-09 | 2027-03-21 | 1722, 1737 |  |
| 1739 |  | Painting 1st coat | 12d | 2027-03-21 | 2027-04-02 | 1723, 1736, 1737, 1738 |  |
| 1740 |  | False ceiling | 10d | 2027-04-02 | 2027-04-12 | 1724, 1739 |  |
| 1741 | 37200.37300.37500.38000.39200.40400.191600 | **Terrace Finishing** | 79.88d | 2026-08-15 | 2026-12-18 |  | start no earlier than 2026-08-15 |
| 1742 |  | Terrace waterproofing | 39.94d | 2026-08-15 | 2026-09-24 | 1140 |  |
| 1743 |  | Terrace finishing | 39.94d | 2026-09-24 | 2026-12-18 | 1742 |  |
| 1744 | 37200.37300.37500.38000.39200.40400.99600 | **Common Area Finishing** | 279.31d | 2025-08-22 | 2026-07-12 |  | start no earlier than 2025-08-22 |
| 1745 |  | Block Work | 39.94d | 2025-08-22 | 2025-10-01 | 1146FS+0.25d |  |
| 1746 |  | Internal Plaster | 119.94d | 2025-09-27 | 2026-03-10 | 1751SS+17.88d |  |
| 1747 |  | Staircase railing fixing | 149.94d | 2026-02-12 | 2026-07-12 | 1749SS+26.75d, 1748SS+26.75d |  |
| 1748 |  | Main staircase flooring | 149.94d | 2026-01-16 | 2026-06-15 | 1749SS+13.38d |  |
| 1749 |  | Fire staircase flooring | 149.94d | 2026-01-03 | 2026-06-02 | 1746SS+13.38d, 1753SS+26.75d |  |
| 1750 |  | Fire door work | 59.94d | 2026-02-12 | 2026-04-13 | 1748SS+26.75d, 1749SS+26.75d |  |

| ID | WBS | Task | Duration | Start | Finish | Predecessors | Constraint |
| --- | --- | --- | --- | --- | --- | --- | --- |
| 1751 |  | Electrical wiring work | 119.94d | 2025-09-09 | 2026-02-21 | 1745SS+17.88d |  |
| 1752 |  | Lobby flooring | 150d | 2025-09-12 | 2026-03-26 | 1751SS+3.38d |  |
| 1753 |  | Ceiling & wall putty-primer | 109.94d | 2025-10-23 | 2026-03-27 | 1746SS+26.75d |  |
| 1754 |  | Ceiling & wall painting | 99.94d | 2025-12-25 | 2026-04-04 | 1753SS+17.88d |  |
| 1755 |  | Light fixture supply & installation | 44.94d | 2026-02-17 | 2026-04-02 | 1754SS+53.38d |  |
| 1756 | 37200.37300.37500.38000.39200.40400.46900 | **Balcony Glass Railing** | 67.81d | 2027-05-11 | 2027-07-18 |  | start no earlier than 2027-05-11 |
| 1757 |  | 1st Floor | 1.94d | 2027-05-11 | 2027-05-13 | 1825 |  |
| 1758 |  | 2nd Floor | 1.94d | 2027-05-13 | 2027-05-15 | 1757 |  |
| 1759 |  | 3rd Floor | 1.94d | 2027-05-15 | 2027-05-17 | 1758 |  |
| 1760 |  | 4th Floor | 1.94d | 2027-05-17 | 2027-05-19 | 1759 |  |
| 1761 |  | 5th Floor | 1.94d | 2027-05-19 | 2027-05-21 | 1760 |  |
| 1762 |  | 6th Floor | 1.94d | 2027-05-21 | 2027-05-22 | 1761 |  |
| 1763 |  | 7th Floor | 1.94d | 2027-05-23 | 2027-05-24 | 1762 |  |
| 1764 |  | 8th Floor | 1.94d | 2027-05-24 | 2027-05-26 | 1763 |  |
| 1765 |  | 9th Floor | 1.94d | 2027-05-26 | 2027-05-28 | 1764 |  |
| 1766 |  | 10th Floor | 1.94d | 2027-05-28 | 2027-05-30 | 1765 |  |
| 1767 |  | 11th Floor | 1.94d | 2027-05-30 | 2027-06-01 | 1766 |  |
| 1768 |  | 12th Floor | 1.94d | 2027-06-01 | 2027-06-03 | 1767 |  |
| 1769 |  | 13th Floor | 1.94d | 2027-06-03 | 2027-06-05 | 1768 |  |
| 1770 |  | 14th Floor | 1.94d | 2027-06-05 | 2027-06-07 | 1769 |  |
| 1771 |  | 15th Floor | 1.94d | 2027-06-07 | 2027-06-09 | 1770 |  |
| 1772 |  | 16th Floor | 1.94d | 2027-06-09 | 2027-06-11 | 1771 |  |
| 1773 |  | 17th Floor | 1.94d | 2027-06-11 | 2027-06-13 | 1772 |  |
| 1774 |  | 18th Floor | 1.94d | 2027-06-13 | 2027-06-15 | 1773 |  |
| 1775 |  | 19th Floor | 1.94d | 2027-06-15 | 2027-06-17 | 1774 |  |
| 1776 |  | 20th Floor | 1.94d | 2027-06-17 | 2027-06-19 | 1775 |  |
| 1777 |  | 21st Floor | 1.94d | 2027-06-19 | 2027-06-21 | 1776 |  |
| 1778 |  | 22nd Floor | 1.94d | 2027-06-21 | 2027-06-22 | 1777 |  |
| 1779 |  | 23rd Floor | 1.94d | 2027-06-23 | 2027-06-24 | 1778 |  |
| 1780 |  | 24th Floor | 1.94d | 2027-06-24 | 2027-06-26 | 1779 |  |
| 1781 |  | 25th Floor | 1.94d | 2027-06-26 | 2027-06-28 | 1780 |  |
| 1782 |  | 26th Floor | 1.94d | 2027-06-28 | 2027-06-30 | 1781 |  |
| 1783 |  | 27th Floor | 1.94d | 2027-06-30 | 2027-07-02 | 1782 |  |
| 1784 |  | 28th Floor | 1.94d | 2027-07-02 | 2027-07-04 | 1783 |  |
| 1785 |  | 29th Floor | 1.94d | 2027-07-04 | 2027-07-06 | 1784 |  |
| 1786 |  | 30th Floor | 1.94d | 2027-07-06 | 2027-07-08 | 1785 |  |
| 1787 |  | 31st Floor | 1.94d | 2027-07-08 | 2027-07-10 | 1786 |  |
| 1788 |  | 32nd Floor | 1.94d | 2027-07-10 | 2027-07-12 | 1787 |  |
| 1789 |  | 33rd Floor | 1.94d | 2027-07-12 | 2027-07-14 | 1788 |  |
| 1790 |  | 34th Floor | 1.94d | 2027-07-14 | 2027-07-16 | 1789 |  |
| 1791 |  | 35th Floor | 1.94d | 2027-07-16 | 2027-07-18 | 1790 |  |
| 1792 | 37200.37300.37500.38000.95200 | **MEP work** | 571.12d | 2026-01-03 | 2027-09-11 |  | start no earlier than 2026-01-03 |
| 1793 | 37200.37300.37500.38000.95200.97300 | **Electrical work** | 233.25d | 2026-08-15 | 2027-05-20 |  | start no earlier than 2026-08-15 |
| 1794 |  | Cable Tray | 89.94d | 2026-08-15 | 2026-12-28 | 1140 |  |
| 1795 |  | Cable, main & sub main | 79.94d | 2026-09-24 | 2027-01-27 | 1794SS+40d |  |
| 1796 |  | LT panel & DB | 119.94d | 2026-12-28 | 2027-04-27 | 1794 |  |
| 1797 |  | Rising main | 89.94d | 2027-02-19 | 2027-05-20 | 1794FS+53.38d |  |
| 1798 |  | EARTHING Works | 59.94d | 2027-01-10 | 2027-03-11 | 1794FS+13.38d |  |
| 1799 |  | Advance lightening protection | 59.94d | 2026-12-18 | 2027-02-16 | 1743 |  |
| 1800 |  | Inverter | 34.94d | 2027-03-11 | 2027-04-15 | 1798 |  |
| 1801 |  | Energy meter | 59.94d | 2027-01-27 | 2027-03-28 | 1795 |  |
| 1802 |  | Exhast fan | 60d | 2027-01-20 | 2027-03-20 | 1735FF+4.5d |  |
| 1803 |  | FTTH | 59.94d | 2027-03-02 | 2027-05-01 | 1798FS-9d |  |
| 1804 |  | Security System - FA & PA | 54.94d | 2027-03-07 | 2027-05-01 | 1803FF |  |
| 1805 |  | Solar water heater | 59.94d | 2026-12-18 | 2027-02-16 | 1743 |  |
| 1806 | 37200.37300.37500.38000.95200.121900 | **Plumbing wrok** | 446.88d | 2026-01-30 | 2027-06-05 |  | start no earlier than 2026-01-30 |
| 1807 |  | Terrace looping | 44.94d | 2026-09-24 | 2026-12-23 | 1742 |  |
| 1808 |  | Shaft Plumbing | 119.94d | 2026-12-23 | 2027-04-22 | 1807 |  |
| 1809 |  | CP sanitary fixture supply | 75d | 2027-03-22 | 2027-06-05 | 1730, 1733FS+53.38d |  |
| 1810 |  | Cold & flushing water supply | 89.94d | 2026-01-30 | 2026-04-29 | 1746SS+80d |  |
| 1811 |  | Misc work | 29.94d | 2026-04-20 | 2026-05-20 | 1810FS-9d |  |
| 1812 | 37200.37300.37500.38000.95200.128500 | **Fire fighting work** | 384.06d | 2026-01-03 | 2027-03-08 |  | start no earlier than 2026-01-03 |
| 1813 |  | Fire hydrant work | 89.94d | 2026-01-03 | 2026-04-03 | 1746SS+53.38d |  |
| 1814 |  | Sprinkler & piping work | 89.94d | 2026-04-30 | 2026-07-28 | 1813FS+26.75d |  |
| 1815 |  | Shaft Downtake works | 89.94d | 2026-09-24 | 2027-02-06 | 1742 |  |
| 1816 |  | Connection to pump room | 29.94d | 2027-02-06 | 2027-03-08 | 1815 |  |
| 1817 | 37200.37300.37500.38000.95200.183600 | **Lift work** | 169.81d | 2026-08-15 | 2027-03-18 |  | start no earlier than 2026-08-15 |
| 1818 |  | Lift Shaft Handover | 39.94d | 2026-08-15 | 2026-09-24 | 1140 |  |
| 1819 |  | Lift installation work | 44.94d | 2026-09-24 | 2026-12-23 | 1818 |  |
| 1820 |  | Lift testing and commissioning | 84.94d | 2026-12-23 | 2027-03-18 | 1819 |  |

| ID | WBS | Task | Duration | Start | Finish | Predecessors | Complete | Constraint |
| --- | --- | --- | --- | --- | --- | --- | --- | --- |
| 1821 | 37200.37300.37500.38000.95200.193600 | **AC work** | 77.94d | 2027-06-25 | 2027-09-11 |  |  | start no earlier than 2027-06-25 |
| 1822 |  | Split AC | 77.94d | 2027-06-25 | 2027-09-11 | 1838FS-26.75d |  |  |
| 1823 | 37200.37300.37500.38000.125900 | **Tower Completion** | 250.88d | 2026-09-28 | 2027-07-21 |  |  | start no earlier than 2026-09-28 |
| 1824 |  | SURFACE PREPARATION | 79.94d | 2026-09-28 | 2027-01-31 | 1178FS+1.88d |  |  |
| 1825 |  | External Painting | 99.94d | 2027-01-31 | 2027-05-11 | 1824 |  |  |
| 1826 |  | Final coat of painting | 71d | 2027-05-11 | 2027-07-21 | 1825 |  |  |
| 1827 |  | Misc. work | 59.94d | 2027-05-11 | 2027-07-10 | 1825 |  |  |
| 1828 | 37200.37300.37500.38000.193100 | **Basement lobby** | 60d | 2026-03-26 | 2026-05-25 |  |  | start no earlier than 2026-03-26 |
| 1829 |  | Basement lobby | 60d | 2026-03-26 | 2026-05-25 | 1752 |  |  |
| 1830 | 37200.37300.37500.38000.114700 | **Post OC activities** | 254d | 2027-03-21 | 2027-11-30 |  |  | start no earlier than 2027-03-21 |
| 1831 |  | Wardrobe installation | 157.94d | 2027-06-25 | 2027-11-30 | 1838FS-26.75d |  |  |
| 1832 |  | CP & SANITARYWARE | 97.94d | 2027-06-25 | 2027-10-01 | 1838FS-26.75d, 1809 |  |  |
| 1833 |  | Wooden Flooring | 157.94d | 2027-06-25 | 2027-11-30 | 1838FS-26.75d |  |  |
| 1834 |  | Electrical Fixtures And Fittings | 75d | 2027-03-21 | 2027-06-04 | 1738 |  |  |
| 1835 |  | Modular Kitchen | 157.94d | 2027-06-25 | 2027-11-30 | 1831SS |  |  |
| 1836 |  | Final Coat Paint | 82.94d | 2027-07-08 | 2027-09-29 | 1838FS-13.38d, 1740 |  |  |
| 1837 |  | OC Application/Readiness | 0.94d | 2027-05-20 | 2027-05-21 | 1140, 1747FS+7.12d, 1755, 1138, 952, 953, 1750, 1820, 1816, 1814, 1811, 1808, 1796, 1797, 1799, 1800, 1801, 1802, 1804, 1805, 1829 |  |  |
| 1838 |  | OC Receipt | 0.94d | 2027-07-21 | 2027-07-22 | 1837FS+53.38d, 1791, 1826, 1827 |  |  |
| 1839 |  | Offer To Possession | 29.94d | 2027-11-30 | 2027-12-30 | 1831, 1832, 1833, 1834, 1835, 1836 |  |  |
| 1840 | 37200.37300.37500.38100 | **Tower 3** | 1476.62d | 2023-09-30 | 2028-03-29 |  | 3% | start no earlier than 2023-09-30 |
| 1841 | 37200.37300.37500.38100.100100 | **Substructure** | 656d | 2023-09-30 | 2025-09-30 |  | 59% | start no earlier than 2023-09-30 |
| 1842 | 37200.37300.37500.38100.100100.112800 | **Soil Bed Preparation** | 533.44d | 2023-09-30 | 2025-05-30 |  | 80% | start no earlier than 2023-09-30 |
| 1843 |  | Test Piling | 74.94d | 2023-09-30 | 2024-01-27 |  | 100% | start no earlier than 2023-09-30 |
| 1844 |  | Excavation | 29.94d | 2024-01-10 | 2024-02-08 | 7SS+61.74d | 100% | start no earlier than 2024-01-10 |
| 1845 |  | Main Piling Work | 184.12d | 2024-04-12 | 2024-10-13 | 7FS-5.45d | 100% | start no earlier than 2024-04-12 |
| 1846 |  | Anti-termite | 4.94d | 2025-04-01 | 2025-04-05 | 1845FS-81d |  |  |
| 1847 |  | PCC | 3.94d | 2025-04-01 | 2025-04-04 | 1844FS-14.7d |  |  |
| 1848 |  | Backfilling | 59.94d | 2025-04-01 | 2025-05-30 | 1861FS+4d |  |  |
| 1849 | 37200.37300.37500.38100.100100.103600 | **RCC Structure** | 113.94d | 2025-01-03 | 2025-04-26 |  | 80% | start no earlier than 2025-01-03 |
| 1850 | 37200.37300.37500.38100.100100.103600.138700 | **Raft Foundation** | 35d | 2025-01-03 | 2025-02-06 |  | 100% | start no earlier than 2025-01-03 |
| 1851 |  | Reinforcement | 30d | 2025-01-03 | 2025-02-02 | 1847FS-30.94d | 100% | start no earlier than 2025-01-03 |
| 1852 |  | Formwork | 18d | 2025-01-17 | 2025-02-03 | 1851FF+1.06d | 100% | start no earlier than 2025-01-17 |
| 1853 |  | Concreting | 4d | 2025-02-03 | 2025-02-06 | 1852FS-1d | 100% | start no earlier than 2025-02-03 |
| 1854 | 37200.37300.37500.38100.100100.103600.138800 | **Basement 1 Slab** | 27d | 2025-02-08 | 2025-03-06 |  | 100% | start no earlier than 2025-02-08 |
| 1855 |  | Reinforcement | 21d | 2025-02-08 | 2025-03-06 | 1853FS+1d | 100% | start no earlier than 2025-02-08 |
| 1856 |  | Formwork | 15d | 2025-02-11 | 2025-03-06 | 1855SS+3d | 100% | start no earlier than 2025-02-11 |
| 1857 |  | Concreting | 2d | 2025-03-03 | 2025-03-06 | 1856FF+3.25d | 100% | start no earlier than 2025-03-03 |
| 1858 | 37200.37300.37500.38100.100100.103600.138900 | **Basement 2 Slab/GF** | 18d | 2025-03-04 | 2025-03-21 |  | 100% | start no earlier than 2025-03-04 |
| 1859 |  | Reinforcement | 15d | 2025-03-04 | 2025-03-21 | 1857FS-2d | 100% | start no earlier than 2025-03-04 |
| 1860 |  | Formwork | 15d | 2025-03-05 | 2025-03-21 | 1859SS+1d | 100% | start no earlier than 2025-03-05 |
| 1861 |  | Concreting | 3d | 2025-03-09 | 2025-03-11 | 1860FS-1d | 100% | start no earlier than 2025-03-09 |
| 1862 | 37200.37300.37500.38100.100100.103600.183300 | **Podium** | 39.94d | 2025-03-18 | 2025-04-26 |  | 39% | start no earlier than 2025-03-18 |
| 1863 |  | Reinforcement | 22.94d | 2025-03-18 | 2025-04-10 | 1861FS+5d | 56% | start no earlier than 2025-03-18 |
| 1864 |  | Formwork | 30.94d | 2025-03-21 | 2025-04-21 | 1863SS+2.75d | 32% | start no earlier than 2025-03-21 |
| 1865 |  | Concreting | 5d | 2025-04-21 | 2025-04-26 | 1864 |  |  |
| 1866 | 37200.37300.37500.38100.100100.128600 | **Substructure Finishing** | 129.81d | 2025-05-23 | 2025-09-30 |  |  | start no earlier than 2025-05-23 |
| 1867 |  | Masonary work | 44.94d | 2025-05-23 | 2025-07-07 | 1865FS+26.75d |  |  |
| 1868 |  | Plaster | 39.94d | 2025-07-07 | 2025-08-16 | 1867 |  |  |
| 1869 |  | Structural steel | 59.94d | 2025-06-19 | 2025-08-18 | 1865FS+53.38d |  |  |
| 1870 |  | White Wash | 44.94d | 2025-08-16 | 2025-09-30 | 1868 |  |  |
| 1871 | 37200.37300.37500.38100.39300 | **Superstructure** | 740d | 2025-04-29 | 2027-08-07 |  |  | start no earlier than 2025-04-29 |
| 1872 | 37200.37300.37500.38100.39300.43500 | **RCC structure** | 458.12d | 2025-04-29 | 2026-09-14 |  |  | start no earlier than 2025-04-29 |
| 1873 | 37200.37300.37500.38100.39300.43500.139000 | **1st floor slab** | 24d | 2025-04-29 | 2025-05-23 |  |  | start no earlier than 2025-04-29 |
| 1874 |  | Reinforcement | 20d | 2025-04-29 | 2025-05-19 | 1865FS+2.75d |  |  |
| 1875 |  | Wall conduiting | 4d | 2025-05-02 | 2025-05-06 | 1874SS+2.75d |  |  |
| 1876 |  | Formwork | 20d | 2025-05-02 | 2025-05-22 | 1874SS+3d |  |  |
| 1877 |  | Concreting | 1d | 2025-05-22 | 2025-05-23 | 1876 |  |  |
| 1878 | 37200.37300.37500.38100.39300.43500.139100 | **2nd floor slab** | 21d | 2025-05-24 | 2025-06-14 |  |  | start no earlier than 2025-05-24 |
| 1879 |  | Reinforcement | 20d | 2025-05-24 | 2025-06-13 | 1877FS+1d |  |  |
| 1880 |  | Wall conduiting | 4d | 2025-05-27 | 2025-05-31 | 1875, 1879SS+2.75d |  |  |
| 1881 |  | Formwork | 20d | 2025-05-24 | 2025-06-13 | 1879SS |  |  |
| 1882 |  | Concreting | 1d | 2025-06-13 | 2025-06-14 | 1881 |  |  |
| 1883 | 37200.37300.37500.38100.39300.43500.139200 | **3rd floor slab** | 15d | 2025-06-15 | 2025-06-30 |  |  | start no earlier than 2025-06-15 |
| 1884 |  | Reinforcement | 11d | 2025-06-15 | 2025-06-26 | 1882FS+1d |  |  |
| 1885 |  | Wall conduiting | 3d | 2025-06-18 | 2025-06-21 | 1880, 1884SS+2.75d |  |  |
| 1886 |  | Formwork | 11d | 2025-06-18 | 2025-06-29 | 1884SS+3d |  |  |
| 1887 |  | Concreting | 1d | 2025-06-29 | 2025-06-30 | 1886 |  |  |
| 1888 | 37200.37300.37500.38100.39300.43500.139300 | **4th floor slab** | 9d | 2025-07-01 | 2025-07-10 |  |  | start no earlier than 2025-07-01 |
| 1889 |  | Reinforcement | 8d | 2025-07-01 | 2025-07-09 | 1887FS+1d |  |  |
| 1890 |  | Wall conduiting | 3d | 2025-07-02 | 2025-07-05 | 1885, 1889SS+1d |  |  |

| ID | WBS | Task | Duration | Start | Finish | Predecessors | Constraint |
| --- | --- | --- | --- | --- | --- | --- | --- |
| 1891 |  | Formwork | 7d | 2025-07-02 | 2025-07-09 | 1889SS+1d |  |
| 1892 |  | Concreting | 1d | 2025-07-09 | 2025-07-10 | 1891 |  |
| 1893 | 37200.37300.37500.38100.39300.43500.139400 | **5th floor slab** | 9d | 2025-07-11 | 2025-07-20 |  | start no earlier than 2025-07-11 |
| 1894 |  | Reinforcement | 8d | 2025-07-11 | 2025-07-19 | 1892FS+1d |  |
| 1895 |  | Wall conduiting | 3d | 2025-07-12 | 2025-07-15 | 1890, 1894SS+1d |  |
| 1896 |  | Formwork | 7d | 2025-07-12 | 2025-07-19 | 1894SS+1d |  |
| 1897 |  | Concreting | 1d | 2025-07-19 | 2025-07-20 | 1896 |  |
| 1898 | 37200.37300.37500.38100.39300.43500.139500 | **6th floor slab** | 9d | 2025-07-21 | 2025-07-30 |  | start no earlier than 2025-07-21 |
| 1899 |  | Reinforcement | 8d | 2025-07-21 | 2025-07-29 | 1897FS+1d |  |
| 1900 |  | Wall conduiting | 3d | 2025-07-22 | 2025-07-25 | 1895, 1899SS+1d |  |
| 1901 |  | Formwork | 7d | 2025-07-22 | 2025-07-29 | 1899SS+1d |  |
| 1902 |  | Concreting | 1d | 2025-07-29 | 2025-07-30 | 1901 |  |
| 1903 | 37200.37300.37500.38100.39300.43500.139600 | **7th floor slab** | 9d | 2025-07-31 | 2025-08-09 |  | start no earlier than 2025-07-31 |
| 1904 |  | Reinforcement | 8d | 2025-07-31 | 2025-08-08 | 1902FS+1d |  |
| 1905 |  | Wall conduiting | 3d | 2025-08-01 | 2025-08-04 | 1900, 1904SS+1d |  |
| 1906 |  | Formwork | 7d | 2025-08-01 | 2025-08-08 | 1904SS+1d |  |
| 1907 |  | Concreting | 1d | 2025-08-08 | 2025-08-09 | 1906 |  |
| 1908 | 37200.37300.37500.38100.39300.43500.139700 | **8th floor slab** | 12d | 2025-08-10 | 2025-08-22 |  | start no earlier than 2025-08-10 |
| 1909 |  | Reinforcement | 10d | 2025-08-10 | 2025-08-20 | 1907FS+1d |  |
| 1910 |  | Wall conduiting | 3d | 2025-08-11 | 2025-08-14 | 1905, 1909SS+1d |  |
| 1911 |  | Formwork | 10d | 2025-08-11 | 2025-08-21 | 1909SS+1d |  |
| 1912 |  | Concreting | 1d | 2025-08-21 | 2025-08-22 | 1911 |  |
| 1913 | 37200.37300.37500.38100.39300.43500.139800 | **9th floor slab** | 9d | 2025-08-23 | 2025-09-01 |  | start no earlier than 2025-08-23 |
| 1914 |  | Reinforcement | 8d | 2025-08-23 | 2025-08-31 | 1912FS+1d |  |
| 1915 |  | Wall conduiting | 3d | 2025-08-24 | 2025-08-27 | 1910, 1914SS+1d |  |
| 1916 |  | Formwork | 7d | 2025-08-24 | 2025-08-31 | 1914SS+1d |  |
| 1917 |  | Concreting | 1d | 2025-08-31 | 2025-09-01 | 1916 |  |
| 1918 | 37200.37300.37500.38100.39300.43500.139900 | **10th floor slab** | 9d | 2025-09-02 | 2025-09-11 |  | start no earlier than 2025-09-02 |
| 1919 |  | Reinforcement | 8d | 2025-09-02 | 2025-09-10 | 1917FS+1d |  |
| 1920 |  | Wall conduiting | 3d | 2025-09-03 | 2025-09-06 | 1915, 1919SS+1d |  |
| 1921 |  | Formwork | 7d | 2025-09-03 | 2025-09-10 | 1919SS+1d |  |
| 1922 |  | Concreting | 1d | 2025-09-10 | 2025-09-11 | 1921 |  |
| 1923 | 37200.37300.37500.38100.39300.43500.140000 | **11th floor slab** | 9d | 2025-09-12 | 2025-09-21 |  | start no earlier than 2025-09-12 |
| 1924 |  | Reinforcement | 8d | 2025-09-12 | 2025-09-20 | 1922FS+1d |  |
| 1925 |  | Wall conduiting | 3d | 2025-09-13 | 2025-09-16 | 1920, 1924SS+1d |  |
| 1926 |  | Formwork | 7d | 2025-09-13 | 2025-09-20 | 1924SS+1d |  |
| 1927 |  | Concreting | 1d | 2025-09-20 | 2025-09-21 | 1926 |  |
| 1928 | 37200.37300.37500.38100.39300.43500.140100 | **12th floor slab** | 9d | 2025-09-22 | 2025-10-01 |  | start no earlier than 2025-09-22 |
| 1929 |  | Reinforcement | 8d | 2025-09-22 | 2025-09-30 | 1927FS+1d |  |
| 1930 |  | Wall conduiting | 3d | 2025-09-23 | 2025-09-26 | 1925, 1929SS+1d |  |
| 1931 |  | Formwork | 7d | 2025-09-23 | 2025-09-30 | 1929SS+1d |  |
| 1932 |  | Concreting | 1d | 2025-09-30 | 2025-10-01 | 1931 |  |
| 1933 | 37200.37300.37500.38100.39300.43500.140200 | **13th floor slab** | 9d | 2025-10-03 | 2025-10-12 |  | start no earlier than 2025-10-03 |
| 1934 |  | Reinforcement | 8d | 2025-10-03 | 2025-10-11 | 1932FS+2d |  |
| 1935 |  | Wall conduiting | 3d | 2025-10-04 | 2025-10-07 | 1930, 1934SS+1d |  |
| 1936 |  | Formwork | 7d | 2025-10-04 | 2025-10-11 | 1934SS+1d |  |
| 1937 |  | Concreting | 1d | 2025-10-11 | 2025-10-12 | 1936 |  |
| 1938 | 37200.37300.37500.38100.39300.43500.140300 | **14th floor slab** | 9d | 2025-10-13 | 2025-10-22 |  | start no earlier than 2025-10-13 |
| 1939 |  | Reinforcement | 8d | 2025-10-13 | 2025-10-21 | 1937FS+1d |  |
| 1940 |  | Wall conduiting | 3d | 2025-10-14 | 2025-10-17 | 1935, 1939SS+1d |  |
| 1941 |  | Formwork | 7d | 2025-10-14 | 2025-10-21 | 1939SS+1d |  |
| 1942 |  | Concreting | 1d | 2025-10-21 | 2025-10-22 | 1941 |  |
| 1943 | 37200.37300.37500.38100.39300.43500.140400 | **15th floor slab** | 9d | 2025-10-24 | 2025-12-17 |  | start no earlier than 2025-10-24 |
| 1944 |  | Reinforcement | 8d | 2025-10-24 | 2025-12-16 | 1942FS+1.88d |  |
| 1945 |  | Wall conduiting | 3d | 2025-10-25 | 2025-10-28 | 1940, 1944SS+1d |  |
| 1946 |  | Formwork | 7d | 2025-10-25 | 2025-12-16 | 1944SS+1d |  |
| 1947 |  | Concreting | 1d | 2025-12-16 | 2025-12-17 | 1946 |  |
| 1948 | 37200.37300.37500.38100.39300.43500.140500 | **16th floor slab** | 12d | 2025-12-18 | 2025-12-30 |  | start no earlier than 2025-12-18 |
| 1949 |  | Reinforcement | 10d | 2025-12-18 | 2025-12-28 | 1947FS+1d |  |
| 1950 |  | Wall conduiting | 3d | 2025-12-19 | 2025-12-22 | 1945, 1949SS+1d |  |
| 1951 |  | Formwork | 10d | 2025-12-19 | 2025-12-29 | 1949SS+1d |  |
| 1952 |  | Concreting | 1d | 2025-12-29 | 2025-12-30 | 1951 |  |
| 1953 | 37200.37300.37500.38100.39300.43500.140600 | **17th floor slab** | 9d | 2025-12-31 | 2026-01-09 |  | start no earlier than 2025-12-31 |
| 1954 |  | Reinforcement | 8d | 2025-12-31 | 2026-01-08 | 1952FS+1d |  |
| 1955 |  | Wall conduiting | 3d | 2026-01-01 | 2026-01-04 | 1950, 1954SS+1d |  |
| 1956 |  | Formwork | 7d | 2026-01-01 | 2026-01-08 | 1954SS+1d |  |
| 1957 |  | Concreting | 1d | 2026-01-08 | 2026-01-09 | 1956 |  |
| 1958 | 37200.37300.37500.38100.39300.43500.140700 | **18th floor slab** | 9d | 2026-01-10 | 2026-01-19 |  | start no earlier than 2026-01-10 |
| 1959 |  | Reinforcement | 8d | 2026-01-10 | 2026-01-18 | 1957FS+1d |  |
| 1960 |  | Wall conduiting | 3d | 2026-01-11 | 2026-01-14 | 1955, 1959SS+1d |  |

| ID | WBS | Task | Duration | Start | Finish | Predecessors | Constraint |
| --- | --- | --- | --- | --- | --- | --- | --- |
| 1961 |  | Formwork | 7d | 2026-01-11 | 2026-01-18 | 1959SS+1d |  |
| 1962 |  | Concreting | 1d | 2026-01-18 | 2026-01-19 | 1961 |  |
| 1963 | 37200.37300.37500.38100.39300.43500.140800 | **19th floor slab** | 8d | 2026-01-20 | 2026-01-28 |  | start no earlier than 2026-01-20 |
| 1964 |  | Reinforcement | 7d | 2026-01-20 | 2026-01-27 | 1962FS+1d |  |
| 1965 |  | Wall conduiting | 3d | 2026-01-21 | 2026-01-24 | 1960, 1964SS+1d |  |
| 1966 |  | Formwork | 6d | 2026-01-21 | 2026-01-27 | 1964SS+1d |  |
| 1967 |  | Concreting | 1d | 2026-01-27 | 2026-01-28 | 1966 |  |
| 1968 | 37200.37300.37500.38100.39300.43500.140900 | **20th floor slab** | 8d | 2026-01-29 | 2026-02-06 |  | start no earlier than 2026-01-29 |
| 1969 |  | Reinforcement | 7d | 2026-01-29 | 2026-02-05 | 1967FS+1d |  |
| 1970 |  | Wall conduiting | 3d | 2026-01-30 | 2026-02-02 | 1965, 1969SS+1d |  |
| 1971 |  | Formwork | 6d | 2026-01-30 | 2026-02-05 | 1969SS+1d |  |
| 1972 |  | Concreting | 1d | 2026-02-05 | 2026-02-06 | 1971 |  |
| 1973 | 37200.37300.37500.38100.39300.43500.141000 | **21st floor slab** | 8d | 2026-02-08 | 2026-02-16 |  | start no earlier than 2026-02-08 |
| 1974 |  | Reinforcement | 7d | 2026-02-08 | 2026-02-15 | 1972FS+1.88d |  |
| 1975 |  | Wall conduiting | 3d | 2026-02-09 | 2026-02-12 | 1970, 1974SS+1d |  |
| 1976 |  | Formwork | 6d | 2026-02-09 | 2026-02-15 | 1974SS+1d |  |
| 1977 |  | Concreting | 1d | 2026-02-15 | 2026-02-16 | 1976 |  |
| 1978 | 37200.37300.37500.38100.39300.43500.141100 | **22nd floor slab** | 8d | 2026-02-17 | 2026-02-25 |  | start no earlier than 2026-02-17 |
| 1979 |  | Reinforcement | 7d | 2026-02-17 | 2026-02-24 | 1977FS+1d |  |
| 1980 |  | Wall conduiting | 3d | 2026-02-18 | 2026-02-21 | 1975, 1979SS+1d |  |
| 1981 |  | Formwork | 6d | 2026-02-18 | 2026-02-24 | 1979SS+1d |  |
| 1982 |  | Concreting | 1d | 2026-02-24 | 2026-02-25 | 1981 |  |
| 1983 | 37200.37300.37500.38100.39300.43500.141200 | **23rd floor slab** | 8d | 2026-02-26 | 2026-03-06 |  | start no earlier than 2026-02-26 |
| 1984 |  | Reinforcement | 7d | 2026-02-26 | 2026-03-05 | 1982FS+1d |  |
| 1985 |  | Wall conduiting | 3d | 2026-02-27 | 2026-03-02 | 1980, 1984SS+1d |  |
| 1986 |  | Formwork | 6d | 2026-02-27 | 2026-03-05 | 1984SS+1d |  |
| 1987 |  | Concreting | 1d | 2026-03-05 | 2026-03-06 | 1986 |  |
| 1988 | 37200.37300.37500.38100.39300.43500.141300 | **24th floor slab** | 12d | 2026-03-07 | 2026-03-19 |  | start no earlier than 2026-03-07 |
| 1989 |  | Reinforcement | 10d | 2026-03-07 | 2026-03-17 | 1987FS+1d |  |
| 1990 |  | Wall conduiting | 3d | 2026-03-08 | 2026-03-11 | 1985, 1989SS+1d |  |
| 1991 |  | Formwork | 10d | 2026-03-08 | 2026-03-18 | 1989SS+1d |  |
| 1992 |  | Concreting | 1d | 2026-03-18 | 2026-03-19 | 1991 |  |
| 1993 | 37200.37300.37500.38100.39300.43500.141400 | **25th floor slab** | 12d | 2026-03-20 | 2026-04-01 |  | start no earlier than 2026-03-20 |
| 1994 |  | Reinforcement | 10d | 2026-03-20 | 2026-03-30 | 1992FS+1d |  |
| 1995 |  | Wall conduiting | 3d | 2026-03-21 | 2026-03-24 | 1990, 1994SS+1d |  |
| 1996 |  | Formwork | 10d | 2026-03-21 | 2026-03-31 | 1994SS+1d |  |
| 1997 |  | Concreting | 1d | 2026-03-31 | 2026-04-01 | 1996 |  |
| 1998 | 37200.37300.37500.38100.39300.43500.141500 | **26th floor slab** | 8d | 2026-04-02 | 2026-04-10 |  | start no earlier than 2026-04-02 |
| 1999 |  | Reinforcement | 7d | 2026-04-02 | 2026-04-09 | 1997FS+1d |  |
| 2000 |  | Wall conduiting | 3d | 2026-04-03 | 2026-04-06 | 1995, 1999SS+1d |  |
| 2001 |  | Formwork | 6d | 2026-04-03 | 2026-04-09 | 1999SS+1d |  |
| 2002 |  | Concreting | 1d | 2026-04-09 | 2026-04-10 | 2001 |  |
| 2003 | 37200.37300.37500.38100.39300.43500.141600 | **27th floor slab** | 8d | 2026-04-11 | 2026-04-19 |  | start no earlier than 2026-04-11 |
| 2004 |  | Reinforcement | 7d | 2026-04-11 | 2026-04-18 | 2002FS+1d |  |
| 2005 |  | Wall conduiting | 3d | 2026-04-12 | 2026-04-15 | 2000, 2004SS+1d |  |
| 2006 |  | Formwork | 6d | 2026-04-12 | 2026-04-18 | 2004SS+1d |  |
| 2007 |  | Concreting | 1d | 2026-04-18 | 2026-04-19 | 2006 |  |
| 2008 | 37200.37300.37500.38100.39300.43500.141700 | **28th floor slab** | 8d | 2026-04-20 | 2026-04-28 |  | start no earlier than 2026-04-20 |
| 2009 |  | Reinforcement | 7d | 2026-04-20 | 2026-04-27 | 2007FS+1d |  |
| 2010 |  | Wall conduiting | 3d | 2026-04-21 | 2026-04-24 | 2005, 2009SS+1d |  |
| 2011 |  | Formwork | 6d | 2026-04-21 | 2026-04-27 | 2009SS+1d |  |
| 2012 |  | Concreting | 1d | 2026-04-27 | 2026-04-28 | 2011 |  |
| 2013 | 37200.37300.37500.38100.39300.43500.141800 | **29th floor slab** | 8d | 2026-04-29 | 2026-05-07 |  | start no earlier than 2026-04-29 |
| 2014 |  | Reinforcement | 7d | 2026-04-29 | 2026-05-06 | 2012FS+1d |  |
| 2015 |  | Wall conduiting | 3d | 2026-04-30 | 2026-05-03 | 2010, 2014SS+1d |  |
| 2016 |  | Formwork | 6d | 2026-04-30 | 2026-05-06 | 2014SS+1d |  |
| 2017 |  | Concreting | 1d | 2026-05-06 | 2026-05-07 | 2016 |  |
| 2018 | 37200.37300.37500.38100.39300.43500.141900 | **30th floor slab** | 8d | 2026-05-08 | 2026-05-16 |  | start no earlier than 2026-05-08 |
| 2019 |  | Reinforcement | 7d | 2026-05-08 | 2026-05-15 | 2017FS+1d |  |
| 2020 |  | Wall conduiting | 3d | 2026-05-09 | 2026-05-12 | 2015, 2019SS+1d |  |
| 2021 |  | Formwork | 6d | 2026-05-09 | 2026-05-15 | 2019SS+1d |  |
| 2022 |  | Concreting | 1d | 2026-05-15 | 2026-05-16 | 2021 |  |
| 2023 | 37200.37300.37500.38100.39300.43500.142000 | **31st floor slab** | 10.88d | 2026-05-16 | 2026-05-27 |  | start no earlier than 2026-05-16 |
| 2024 |  | Reinforcement | 8.94d | 2026-05-16 | 2026-05-25 | 2022FS+0.25d |  |
| 2025 |  | Wall conduiting | 1.94d | 2026-05-17 | 2026-05-19 | 2020, 2024SS+1d |  |
| 2026 |  | Formwork | 8.94d | 2026-05-17 | 2026-05-26 | 2024SS+1d |  |
| 2027 |  | Concreting | 0.94d | 2026-05-26 | 2026-05-27 | 2026 |  |
| 2028 | 37200.37300.37500.38100.39300.43500.142100 | **32nd floor slab** | 12.75d | 2026-05-28 | 2026-06-10 |  | start no earlier than 2026-05-28 |
| 2029 |  | Reinforcement | 9.94d | 2026-05-28 | 2026-06-07 | 2027FS+1d |  |
| 2030 |  | Wall conduiting | 1.94d | 2026-05-29 | 2026-05-31 | 2025, 2029SS+1d |  |

| ID | WBS | Task | Duration | Start | Finish | Predecessors | Constraint |
| --- | --- | --- | --- | --- | --- | --- | --- |
| 2031 |  | Formwork | 9.94d | 2026-05-30 | 2026-06-09 | 2029SS+1.88d |  |
| 2032 |  | Concreting | 0.94d | 2026-06-09 | 2026-06-10 | 2031 |  |
| 2033 | 37200.37300.37500.38100.39300.43500.142200 | **33rd floor slab** | 11.75d | 2026-06-11 | 2026-06-23 |  | start no earlier than 2026-06-11 |
| 2034 |  | Reinforcement | 8.94d | 2026-06-11 | 2026-06-20 | 2032FS+1d |  |
| 2035 |  | Wall conduiting | 1.94d | 2026-06-12 | 2026-06-14 | 2030, 2034SS+1d |  |
| 2036 |  | Formwork | 8.94d | 2026-06-13 | 2026-06-22 | 2034SS+1.88d |  |
| 2037 |  | Concreting | 0.94d | 2026-06-22 | 2026-06-23 | 2036 |  |
| 2038 | 37200.37300.37500.38100.39300.43500.142300 | **34th floor slab** | 12.75d | 2026-06-24 | 2026-07-06 |  | start no earlier than 2026-06-24 |
| 2039 |  | Reinforcement | 9.94d | 2026-06-24 | 2026-07-03 | 2037FS+1d |  |
| 2040 |  | Wall conduiting | 1.94d | 2026-06-25 | 2026-06-26 | 2035, 2039SS+1d |  |
| 2041 |  | Formwork | 9.94d | 2026-06-25 | 2026-07-05 | 2039SS+1.88d |  |
| 2042 |  | Concreting | 0.94d | 2026-07-05 | 2026-07-06 | 2041 |  |
| 2043 | 37200.37300.37500.38100.39300.43500.142400 | **35th floor slab** | 11.75d | 2026-07-07 | 2026-07-19 |  | start no earlier than 2026-07-07 |
| 2044 |  | Reinforcement | 8.94d | 2026-07-07 | 2026-07-16 | 2042FS+1d |  |
| 2045 |  | Wall conduiting | 1.94d | 2026-07-08 | 2026-07-10 | 2040, 2044SS+1d |  |
| 2046 |  | Formwork | 7.94d | 2026-07-10 | 2026-07-18 | 2045SS+1.88d |  |
| 2047 |  | Concreting | 0.94d | 2026-07-18 | 2026-07-19 | 2046 |  |
| 2048 | 37200.37300.37500.38100.39300.43500.142500 | **Terrace floor slab** | 14.75d | 2026-07-20 | 2026-08-04 |  | start no earlier than 2026-07-20 |
| 2049 |  | Reinforcement | 10.94d | 2026-07-20 | 2026-07-31 | 2047FS+1d |  |
| 2050 |  | Wall conduiting | 1.94d | 2026-07-21 | 2026-07-23 | 2045, 2049SS+1d |  |
| 2051 |  | Formwork | 11.94d | 2026-07-22 | 2026-08-03 | 2049SS+1.88d |  |
| 2052 |  | Concreting | 0.94d | 2026-08-03 | 2026-08-04 | 2051 |  |
| 2053 | 37200.37300.37500.38100.39300.43500.142600 | **OHT & Mumty** | 39.5d | 2026-08-06 | 2026-09-14 |  | start no earlier than 2026-08-06 |
| 2054 |  | Reinforcement | 29.94d | 2026-08-06 | 2026-09-05 | 2052FS+2d |  |
| 2055 |  | Wall conduiting | 4.94d | 2026-08-07 | 2026-08-12 | 2050, 2054SS+1d |  |
| 2056 |  | Formwork | 32.94d | 2026-08-09 | 2026-09-11 | 2054SS+3.62d |  |
| 2057 |  | Concreting | 2.94d | 2026-09-11 | 2026-09-14 | 2056 |  |
| 2058 | 37200.37300.37500.38100.39300.45000 | **Post Pour Activities** | 418.12d | 2025-07-20 | 2026-10-26 |  | start no earlier than 2025-07-20 |
| 2059 |  | 1st Floor | 7d | 2025-07-20 | 2025-07-27 | 1897 |  |
| 2060 |  | 2nd Floor | 7d | 2025-08-09 | 2025-08-16 | 2059, 1907 |  |
| 2061 |  | 3rd Floor | 7d | 2025-08-22 | 2025-08-29 | 2060, 1912 |  |
| 2062 |  | 4th Floor | 7d | 2025-09-01 | 2025-09-08 | 2061, 1917 |  |
| 2063 |  | 5th Floor | 7d | 2025-09-11 | 2025-09-18 | 2062, 1922 |  |
| 2064 |  | 6th Floor | 7d | 2025-09-21 | 2025-09-28 | 2063, 1927 |  |
| 2065 |  | 7th Floor | 7d | 2025-10-01 | 2025-10-08 | 2064, 1932 |  |
| 2066 |  | 8th Floor | 7d | 2025-10-12 | 2025-10-19 | 2065, 1937 |  |
| 2067 |  | 9th Floor | 7d | 2025-10-22 | 2025-10-29 | 2066, 1942 |  |
| 2068 |  | 10th Floor | 7d | 2025-12-17 | 2025-12-24 | 2067, 1947 |  |
| 2069 |  | 11th Floor | 7d | 2025-12-30 | 2026-01-06 | 2068, 1952 |  |
| 2070 |  | 12th Floor | 7d | 2026-01-09 | 2026-01-16 | 2069, 1957 |  |
| 2071 |  | 13th Floor | 7d | 2026-01-19 | 2026-01-26 | 2070, 1962 |  |
| 2072 |  | 14th Floor | 7d | 2026-01-28 | 2026-02-04 | 2071, 1967 |  |
| 2073 |  | 15th Floor | 7d | 2026-02-06 | 2026-02-13 | 2072, 1972 |  |
| 2074 |  | 16th Floor | 7d | 2026-02-16 | 2026-02-23 | 2073, 1977 |  |
| 2075 |  | 17th Floor | 7d | 2026-02-25 | 2026-03-04 | 2074, 1982 |  |
| 2076 |  | 18th Floor | 7d | 2026-03-06 | 2026-03-13 | 2075, 1987 |  |
| 2077 |  | 19th Floor | 7d | 2026-03-19 | 2026-03-26 | 2076, 1992 |  |
| 2078 |  | 20th Floor | 7d | 2026-04-01 | 2026-04-08 | 2077, 1997 |  |
| 2079 |  | 21st Floor | 7d | 2026-04-10 | 2026-04-17 | 2078, 2002 |  |
| 2080 |  | 22nd Floor | 7d | 2026-04-19 | 2026-04-26 | 2079, 2007 |  |
| 2081 |  | 23rd Floor | 7d | 2026-04-28 | 2026-05-05 | 2080, 2012 |  |
| 2082 |  | 24th Floor | 7d | 2026-05-07 | 2026-05-14 | 2081, 2017 |  |
| 2083 |  | 25th Floor | 7d | 2026-05-16 | 2026-05-23 | 2082, 2022 |  |
| 2084 |  | 26th Floor | 7d | 2026-05-27 | 2026-06-03 | 2083, 2027 |  |
| 2085 |  | 27th Floor | 7d | 2026-06-10 | 2026-06-17 | 2084, 2032 |  |
| 2086 |  | 28th Floor | 7d | 2026-06-23 | 2026-06-30 | 2085, 2037 |  |
| 2087 |  | 29th Floor | 7d | 2026-07-06 | 2026-07-13 | 2086, 2042 |  |
| 2088 |  | 30th Floor | 7d | 2026-07-19 | 2026-07-26 | 2087, 2047 |  |
| 2089 |  | 31st Floor | 7d | 2026-08-04 | 2026-08-11 | 2088, 2052 |  |
| 2090 |  | 32nd Flood | 7d | 2026-09-14 | 2026-09-21 | 2089, 2057 |  |
| 2091 |  | 33rd Floor | 7d | 2026-09-21 | 2026-09-28 | 2090 |  |
| 2092 |  | 34th Floor | 7d | 2026-09-28 | 2026-10-05 | 2091 |  |
| 2093 |  | 35th Floor | 7d | 2026-10-05 | 2026-10-12 | 2092 |  |
| 2094 |  | Terrace | 7d | 2026-10-12 | 2026-10-19 | 2093 |  |
| 2095 |  | Mumty & Machine Room | 7d | 2026-10-19 | 2026-10-26 | 2094 |  |
| 2096 | 37200.37300.37500.38100.39300.40500 | **Finishing work** | 667d | 2025-07-11 | 2027-08-07 |  | start no earlier than 2025-07-11 |
| 2097 | 37200.37300.37500.38100.39300.40500.41500 | **Flat finishing** | 577.12d | 2025-07-11 | 2027-05-09 |  | start no earlier than 2025-07-11 |
| 2098 | 37200.37300.37500.38100.39300.40500.41500.74500 | **1st Floor** | 67.25d | 2025-07-11 | 2025-09-16 |  | start no earlier than 2025-07-11 |
| 2099 |  | Block Work | 8d | 2025-07-21 | 2025-07-29 | 2059SS+1d |  |
| 2100 |  | Door Frame Fixing | 9d | 2025-07-29 | 2025-08-07 | 2099 |  |

| ID | WBS | Task | Duration | Start | Finish | Predecessors | Constraint |
| --- | --- | --- | --- | --- | --- | --- | --- |
| 2101 |  | Internal Plumbing Works | 8d | 2025-07-29 | 2025-08-06 | 2099 |  |
| 2102 |  | Waterproofing | 10d | 2025-08-06 | 2025-08-16 | 2101 |  |
| 2103 |  | Internal Plaster | 8d | 2025-07-11 | 2025-07-19 | 1892FS+1d |  |
| 2104 |  | IPS flooring work | 10d | 2025-08-16 | 2025-08-26 | 2100, 2101, 2102 |  |
| 2105 |  | Toilet dado work | 8d | 2025-08-16 | 2025-08-24 | 2102, 2103 |  |
| 2106 |  | Toilet flooring work | 8d | 2025-08-24 | 2025-09-01 | 2105 |  |
| 2107 |  | Living dinning flooring | 8d | 2025-08-07 | 2025-08-15 | 2100FS+0.25d |  |
| 2108 |  | Aluminium door-window fixing | 8d | 2025-08-26 | 2025-09-03 | 2104FS+0.25d |  |
| 2109 |  | Putty primer coat | 6d | 2025-08-15 | 2025-08-21 | 2107 |  |
| 2110 |  | Door shutter fixing | 8d | 2025-08-15 | 2025-08-23 | 2107 |  |
| 2111 |  | Electrical wiring work | 8d | 2025-08-23 | 2025-08-31 | 2110 |  |
| 2112 |  | Painting 1st coat | 8d | 2025-08-31 | 2025-09-08 | 2109, 2110, 2111 |  |
| 2113 |  | False ceiling | 8d | 2025-09-08 | 2025-09-16 | 2112 |  |
| 2114 | 37200.37300.37500.38100.39300.40500.41500.74200 | **2nd Floor** | 67.25d | 2025-07-19 | 2025-09-25 |  | start no earlier than 2025-07-19 |
| 2115 |  | Block Work | 8d | 2025-07-29 | 2025-08-06 | 2099FS+0.25d |  |
| 2116 |  | Door Frame Fixing | 9d | 2025-08-07 | 2025-08-16 | 2115FS+0.25d |  |
| 2117 |  | Internal Plumbing Works | 8d | 2025-08-06 | 2025-08-14 | 2101, 2115 |  |
| 2118 |  | Waterproofing | 10d | 2025-08-16 | 2025-08-26 | 2102, 2117 |  |
| 2119 |  | Internal Plaster | 8d | 2025-07-19 | 2025-07-27 | 2103FS+0.25d |  |
| 2120 |  | IPS flooring work | 10d | 2025-08-26 | 2025-09-05 | 2104, 2116, 2117, 2118 |  |
| 2121 |  | Toilet dado work | 8d | 2025-08-26 | 2025-09-03 | 2105, 2118, 2119 |  |
| 2122 |  | Toilet flooring work | 8d | 2025-09-03 | 2025-09-11 | 2106, 2121 |  |
| 2123 |  | Living dinning flooring | 8d | 2025-08-16 | 2025-08-24 | 2107FS+0.25d |  |
| 2124 |  | Aluminium door-window fixing | 8d | 2025-09-04 | 2025-09-12 | 2108FS+0.25d |  |
| 2125 |  | Putty primer coat | 6d | 2025-08-24 | 2025-08-30 | 2109, 2123 |  |
| 2126 |  | Door shutter fixing | 8d | 2025-08-24 | 2025-09-01 | 2110, 2123 |  |
| 2127 |  | Electrical wiring work | 8d | 2025-09-01 | 2025-09-09 | 2111, 2126 |  |
| 2128 |  | Painting 1st coat | 8d | 2025-09-09 | 2025-09-17 | 2112, 2125, 2126, 2127 |  |
| 2129 |  | False ceiling | 8d | 2025-09-17 | 2025-09-25 | 2113, 2128 |  |
| 2130 | 37200.37300.37500.38100.39300.40500.41500.72300 | **3rd Floor** | 71.25d | 2025-07-28 | 2025-10-07 |  | start no earlier than 2025-07-28 |
| 2131 |  | Block Work | 8d | 2025-08-07 | 2025-08-15 | 2115FS+0.25d |  |
| 2132 |  | Door Frame Fixing | 9d | 2025-08-16 | 2025-08-25 | 2116, 2131 |  |
| 2133 |  | Internal Plumbing Works | 8d | 2025-08-15 | 2025-08-23 | 2117, 2131 |  |
| 2134 |  | Waterproofing | 10d | 2025-08-26 | 2025-09-05 | 2118, 2133 |  |
| 2135 |  | Internal Plaster | 8d | 2025-07-28 | 2025-08-05 | 2119FS+0.25d |  |
| 2136 |  | IPS flooring work | 10d | 2025-09-05 | 2025-09-15 | 2120, 2132, 2134, 2135 |  |
| 2137 |  | Toilet dado work | 8d | 2025-09-05 | 2025-09-13 | 2121, 2134, 2135 |  |
| 2138 |  | Toilet flooring work | 8d | 2025-09-13 | 2025-09-21 | 2122, 2137 |  |
| 2139 |  | Living dinning flooring | 12d | 2025-08-24 | 2025-09-05 | 2123FS+0.25d |  |
| 2140 |  | Aluminium door-window fixing | 12d | 2025-09-12 | 2025-09-24 | 2124FS+0.25d |  |
| 2141 |  | Putty primer coat | 6d | 2025-09-05 | 2025-09-11 | 2125, 2139 |  |
| 2142 |  | Door shutter fixing | 8d | 2025-09-05 | 2025-09-13 | 2126, 2139 |  |
| 2143 |  | Electrical wiring work | 8d | 2025-09-13 | 2025-09-21 | 2127, 2142 |  |
| 2144 |  | Painting 1st coat | 8d | 2025-09-21 | 2025-09-29 | 2128, 2141, 2142, 2143 |  |
| 2145 |  | False ceiling | 8d | 2025-09-29 | 2025-10-07 | 2129, 2144 |  |
| 2146 | 37200.37300.37500.38100.39300.40500.41500.71200 | **4th Floor** | 75.25d | 2025-08-05 | 2025-10-19 |  | start no earlier than 2025-08-05 |
| 2147 |  | Block Work | 8d | 2025-08-15 | 2025-08-23 | 2131FS+0.25d |  |
| 2148 |  | Door Frame Fixing | 9d | 2025-08-25 | 2025-09-03 | 2132, 2147 |  |
| 2149 |  | Internal Plumbing Works | 8d | 2025-08-23 | 2025-08-31 | 2133, 2147 |  |
| 2150 |  | Waterproofing | 10d | 2025-09-05 | 2025-09-15 | 2134, 2149 |  |
| 2151 |  | Internal Plaster | 8d | 2025-08-05 | 2025-08-13 | 2135FS+0.25d |  |
| 2152 |  | IPS flooring work | 10d | 2025-09-15 | 2025-09-25 | 2136, 2148, 2150, 2151 |  |
| 2153 |  | Toilet dado work | 8d | 2025-09-15 | 2025-09-23 | 2137, 2150, 2151 |  |
| 2154 |  | Toilet flooring work | 8d | 2025-09-23 | 2025-10-01 | 2138, 2153 |  |
| 2155 |  | Living dinning flooring | 12d | 2025-09-05 | 2025-09-17 | 2139FS+0.25d |  |
| 2156 |  | Aluminium door-window fixing | 12d | 2025-09-24 | 2025-10-06 | 2140FS+0.25d |  |
| 2157 |  | Putty primer coat | 6d | 2025-09-17 | 2025-09-23 | 2141, 2155 |  |
| 2158 |  | Door shutter fixing | 8d | 2025-09-17 | 2025-09-25 | 2142, 2155 |  |
| 2159 |  | Electrical wiring work | 8d | 2025-09-25 | 2025-10-03 | 2143, 2158 |  |
| 2160 |  | Painting 1st coat | 8d | 2025-10-03 | 2025-10-11 | 2144, 2157, 2158, 2159 |  |
| 2161 |  | False ceiling | 8d | 2025-10-11 | 2025-10-19 | 2145, 2160 |  |
| 2162 | 37200.37300.37500.38100.39300.40500.41500.70400 | **5th Floor** | 79.25d | 2025-08-13 | 2025-10-31 |  | start no earlier than 2025-08-13 |
| 2163 |  | Block Work | 8d | 2025-08-23 | 2025-08-31 | 2147FS+0.25d |  |
| 2164 |  | Door Frame Fixing | 9d | 2025-09-03 | 2025-09-12 | 2148, 2163 |  |
| 2165 |  | Internal Plumbing Works | 8d | 2025-08-31 | 2025-09-08 | 2149, 2163 |  |
| 2166 |  | Waterproofing | 10d | 2025-09-15 | 2025-09-25 | 2150, 2165 |  |
| 2167 |  | Internal Plaster | 8d | 2025-08-13 | 2025-08-21 | 2151FS+0.25d |  |
| 2168 |  | IPS flooring work | 10d | 2025-09-25 | 2025-10-05 | 2152, 2164, 2166, 2167 |  |
| 2169 |  | Toilet dado work | 8d | 2025-09-25 | 2025-10-03 | 2153, 2166, 2167 |  |
| 2170 |  | Toilet flooring work | 8d | 2025-10-03 | 2025-10-11 | 2154, 2169 |  |

| ID | WBS | Task | Duration | Start | Finish | Predecessors | Constraint |
| --- | --- | --- | --- | --- | --- | --- | --- |
| 2171 |  | Living dinning flooring | 12d | 2025-09-17 | 2025-09-29 | 2155FS+0.25d |  |
| 2172 |  | Aluminium door-window fixing | 12d | 2025-10-06 | 2025-10-18 | 2156FS+0.25d |  |
| 2173 |  | Putty primer coat | 6d | 2025-09-29 | 2025-10-05 | 2157, 2171 |  |
| 2174 |  | Door shutter fixing | 8d | 2025-09-29 | 2025-10-07 | 2158, 2171 |  |
| 2175 |  | Electrical wiring work | 8d | 2025-10-07 | 2025-10-15 | 2159, 2174 |  |
| 2176 |  | Painting 1st coat | 8d | 2025-10-15 | 2025-10-23 | 2160, 2173, 2174, 2175 |  |
| 2177 |  | False ceiling | 8d | 2025-10-23 | 2025-10-31 | 2161, 2176 |  |
| 2178 | 37200.37300.37500.38100.39300.40500.41500.62600 | **6th Floor** | 83.25d | 2025-08-21 | 2025-12-28 |  | start no earlier than 2025-08-21 |
| 2179 |  | Block Work | 8d | 2025-08-31 | 2025-09-08 | 2163FS+0.25d |  |
| 2180 |  | Door Frame Fixing | 9d | 2025-09-12 | 2025-09-21 | 1912, 2164 |  |
| 2181 |  | Internal Plumbing Works | 8d | 2025-09-08 | 2025-09-16 | 2165, 2179 |  |
| 2182 |  | Waterproofing | 10d | 2025-09-25 | 2025-10-05 | 2166, 2181 |  |
| 2183 |  | Internal Plaster | 8d | 2025-08-21 | 2025-08-29 | 2167FS+0.25d |  |
| 2184 |  | IPS flooring work | 10d | 2025-10-05 | 2025-10-15 | 2168, 2180, 2182, 2183 |  |
| 2185 |  | Toilet dado work | 8d | 2025-10-05 | 2025-10-13 | 2169, 2182, 2183 |  |
| 2186 |  | Toilet flooring work | 8d | 2025-10-13 | 2025-10-21 | 2170, 2185 |  |
| 2187 |  | Living dinning flooring | 12d | 2025-09-30 | 2025-10-12 | 2171FS+0.25d |  |
| 2188 |  | Aluminium door-window fixing | 12d | 2025-10-19 | 2025-10-31 | 2172FS+0.25d |  |
| 2189 |  | Putty primer coat | 6d | 2025-10-12 | 2025-10-18 | 2173, 2187 |  |
| 2190 |  | Door shutter fixing | 8d | 2025-10-12 | 2025-10-20 | 2174, 2187 |  |
| 2191 |  | Electrical wiring work | 8d | 2025-10-20 | 2025-10-28 | 2175, 2190 |  |
| 2192 |  | Painting 1st coat | 8d | 2025-10-28 | 2025-12-20 | 2176, 2189, 2190, 2191 |  |
| 2193 |  | False ceiling | 8d | 2025-12-20 | 2025-12-28 | 2177, 2192 |  |
| 2194 | 37200.37300.37500.38100.39300.40500.41500.91800 | **7th Floor** | 87.25d | 2025-08-30 | 2026-01-09 |  | start no earlier than 2025-08-30 |
| 2195 |  | Block Work | 8d | 2025-09-09 | 2025-09-17 | 2179FS+0.25d |  |
| 2196 |  | Door Frame Fixing | 9d | 2025-09-21 | 2025-09-30 | 2180, 2195 |  |
| 2197 |  | Internal Plumbing Works | 8d | 2025-09-17 | 2025-09-25 | 2181, 2195 |  |
| 2198 |  | Waterproofing | 10d | 2025-10-05 | 2025-10-15 | 2182, 2197 |  |
| 2199 |  | Internal Plaster | 8d | 2025-08-30 | 2025-09-07 | 2183FS+0.25d |  |
| 2200 |  | IPS flooring work | 10d | 2025-10-15 | 2025-10-25 | 2184, 2196, 2198, 2199 |  |
| 2201 |  | Toilet dado work | 8d | 2025-10-15 | 2025-10-23 | 2185, 2198, 2199 |  |
| 2202 |  | Toilet flooring work | 8d | 2025-10-23 | 2025-10-31 | 2186, 2201 |  |
| 2203 |  | Living dinning flooring | 12d | 2025-10-12 | 2025-10-24 | 2187FS+0.25d |  |
| 2204 |  | Aluminium door-window fixing | 12d | 2025-10-31 | 2025-12-27 | 2188FS+0.25d |  |
| 2205 |  | Putty primer coat | 6d | 2025-10-24 | 2025-10-30 | 2189, 2203 |  |
| 2206 |  | Door shutter fixing | 8d | 2025-10-24 | 2025-12-16 | 2190, 2203 |  |
| 2207 |  | Electrical wiring work | 8d | 2025-12-16 | 2025-12-24 | 2191, 2206 |  |
| 2208 |  | Painting 1st coat | 8d | 2025-12-24 | 2026-01-01 | 2192, 2205, 2206, 2207 |  |
| 2209 |  | False ceiling | 8d | 2026-01-01 | 2026-01-09 | 2193, 2208 |  |
| 2210 | 37200.37300.37500.38100.39300.40500.41500.61900 | **8th Floor** | 91.25d | 2025-09-07 | 2026-01-21 |  | start no earlier than 2025-09-07 |
| 2211 |  | Block Work | 8d | 2025-09-17 | 2025-09-25 | 2195FS+0.25d |  |
| 2212 |  | Door Frame Fixing | 9d | 2025-09-30 | 2025-10-09 | 2196, 2211 |  |
| 2213 |  | Internal Plumbing Works | 8d | 2025-09-25 | 2025-10-03 | 2197, 2211 |  |
| 2214 |  | Waterproofing | 10d | 2025-10-15 | 2025-10-25 | 2198, 2213 |  |
| 2215 |  | Internal Plaster | 8d | 2025-09-07 | 2025-09-15 | 2199FS+0.25d |  |
| 2216 |  | IPS flooring work | 10d | 2025-10-25 | 2025-12-19 | 2200, 2212, 2214, 2215 |  |
| 2217 |  | Toilet dado work | 8d | 2025-10-25 | 2025-12-17 | 2201, 2214, 2215 |  |
| 2218 |  | Toilet flooring work | 8d | 2025-12-17 | 2025-12-25 | 2202, 2217 |  |
| 2219 |  | Living dinning flooring | 12d | 2025-10-24 | 2025-12-20 | 2203FS+0.25d |  |
| 2220 |  | Aluminium door-window fixing | 12d | 2025-12-27 | 2026-01-08 | 2204FS+0.25d |  |
| 2221 |  | Putty primer coat | 6d | 2025-12-20 | 2025-12-26 | 2205, 2219 |  |
| 2222 |  | Door shutter fixing | 8d | 2025-12-20 | 2025-12-28 | 2206, 2219 |  |
| 2223 |  | Electrical wiring work | 8d | 2025-12-28 | 2026-01-05 | 2207, 2222 |  |
| 2224 |  | Painting 1st coat | 8d | 2026-01-05 | 2026-01-13 | 2208, 2221, 2222, 2223 |  |
| 2225 |  | False ceiling | 8d | 2026-01-13 | 2026-01-21 | 2209, 2224 |  |
| 2226 | 37200.37300.37500.38100.39300.40500.41500.67300 | **9th Floor** | 95.25d | 2025-09-15 | 2026-02-02 |  | start no earlier than 2025-09-15 |
| 2227 |  | Block Work | 8d | 2025-09-25 | 2025-10-03 | 2211FS+0.25d |  |
| 2228 |  | Door Frame Fixing | 9d | 2025-10-09 | 2025-10-18 | 2212, 2227 |  |
| 2229 |  | Internal Plumbing Works | 8d | 2025-10-03 | 2025-10-11 | 2213, 2227 |  |
| 2230 |  | Waterproofing | 10d | 2025-10-25 | 2025-12-19 | 2214, 2229 |  |
| 2231 |  | Internal Plaster | 8d | 2025-09-15 | 2025-09-23 | 2215FS+0.25d |  |
| 2232 |  | IPS flooring work | 10d | 2025-12-19 | 2025-12-29 | 2216, 2228, 2230, 2231 |  |
| 2233 |  | Toilet dado work | 8d | 2025-12-19 | 2025-12-27 | 2217, 2230, 2231 |  |
| 2234 |  | Toilet flooring work | 8d | 2025-12-27 | 2026-01-04 | 2218, 2233 |  |
| 2235 |  | Living dinning flooring | 12d | 2025-12-20 | 2026-01-01 | 2219FS+0.25d |  |
| 2236 |  | Aluminium door-window fixing | 12d | 2026-01-08 | 2026-01-20 | 2220FS+0.25d |  |
| 2237 |  | Putty primer coat | 6d | 2026-01-01 | 2026-01-07 | 2221, 2235 |  |
| 2238 |  | Door shutter fixing | 8d | 2026-01-01 | 2026-01-09 | 2222, 2235 |  |
| 2239 |  | Electrical wiring work | 8d | 2026-01-09 | 2026-01-17 | 2223, 2238 |  |
| 2240 |  | Painting 1st coat | 8d | 2026-01-17 | 2026-01-25 | 2224, 2237, 2238, 2239 |  |

| ID | WBS | Task | Duration | Start | Finish | Predecessors | Constraint |
| --- | --- | --- | --- | --- | --- | --- | --- |
| 2241 |  | False ceiling | 8d | 2026-01-25 | 2026-02-02 | 2225, 2240 |  |
| 2242 | 37200.37300.37500.38100.39300.40500.41500.90300 | **10th Floor** | 99.25d | 2025-09-23 | 2026-02-15 |  | start no earlier than 2025-09-23 |
| 2243 |  | Block Work | 8d | 2025-10-03 | 2025-10-11 | 2227FS+0.25d |  |
| 2244 |  | Door Frame Fixing | 9d | 2025-10-18 | 2025-10-27 | 2228, 2243 |  |
| 2245 |  | Internal Plumbing Works | 8d | 2025-10-11 | 2025-10-19 | 2229, 2243 |  |
| 2246 |  | Waterproofing | 10d | 2025-12-19 | 2025-12-29 | 2230, 2245 |  |
| 2247 |  | Internal Plaster | 8d | 2025-09-23 | 2025-10-01 | 2231FS+0.25d |  |
| 2248 |  | IPS flooring work | 10d | 2025-12-29 | 2026-01-08 | 2232, 2244, 2246, 2247 |  |
| 2249 |  | Toilet dado work | 8d | 2025-12-29 | 2026-01-06 | 2233, 2246, 2247 |  |
| 2250 |  | Toilet flooring work | 8d | 2026-01-06 | 2026-01-14 | 2234, 2249 |  |
| 2251 |  | Living dinning flooring | 12d | 2026-01-02 | 2026-01-14 | 2235FS+0.25d |  |
| 2252 |  | Aluminium door-window fixing | 12d | 2026-01-21 | 2026-02-02 | 2236FS+0.25d |  |
| 2253 |  | Putty primer coat | 6d | 2026-01-14 | 2026-01-20 | 2237, 2251 |  |
| 2254 |  | Door shutter fixing | 8d | 2026-01-14 | 2026-01-22 | 2238, 2251 |  |
| 2255 |  | Electrical wiring work | 8d | 2026-01-22 | 2026-01-30 | 2239, 2254 |  |
| 2256 |  | Painting 1st coat | 8d | 2026-01-30 | 2026-02-07 | 2240, 2253, 2254, 2255 |  |
| 2257 |  | False ceiling | 8d | 2026-02-07 | 2026-02-15 | 2241, 2256 |  |
| 2258 | 37200.37300.37500.38100.39300.40500.41500.90200 | **11th Floor** | 93.25d | 2025-10-12 | 2026-02-27 |  | start no earlier than 2025-10-12 |
| 2259 |  | Block Work | 8d | 2025-10-12 | 2025-10-20 | 2243FS+0.25d |  |
| 2260 |  | Door Frame Fixing | 9d | 2025-10-27 | 2025-12-20 | 2244, 2259 |  |
| 2261 |  | Internal Plumbing Works | 8d | 2025-10-20 | 2025-10-28 | 2245, 2259 |  |
| 2262 |  | Waterproofing | 10d | 2025-12-29 | 2026-01-08 | 2246, 2261 |  |
| 2263 |  | Internal Plaster | 8d | 2025-10-20 | 2025-10-28 | 2247FS+0.25d, 2259FS+0.25d |  |
| 2264 |  | IPS flooring work | 10d | 2026-01-08 | 2026-01-18 | 2248, 2260, 2261, 2262 |  |
| 2265 |  | Toilet dado work | 8d | 2026-01-08 | 2026-01-16 | 2249, 2262, 2263 |  |
| 2266 |  | Toilet flooring work | 8d | 2026-01-16 | 2026-01-24 | 2250, 2265 |  |
| 2267 |  | Living dinning flooring | 12d | 2026-01-14 | 2026-01-26 | 2251FS+0.25d |  |
| 2268 |  | Aluminium door-window fixing | 12d | 2026-02-02 | 2026-02-14 | 2252FS+0.25d |  |
| 2269 |  | Putty primer coat | 6d | 2026-01-26 | 2026-02-01 | 2253, 2267 |  |
| 2270 |  | Door shutter fixing | 8d | 2026-01-26 | 2026-02-03 | 2254, 2267 |  |
| 2271 |  | Electrical wiring work | 8d | 2026-02-03 | 2026-02-11 | 2255, 2270 |  |
| 2272 |  | Painting 1st coat | 8d | 2026-02-11 | 2026-02-19 | 2256, 2269, 2270, 2271 |  |
| 2273 |  | False ceiling | 8d | 2026-02-19 | 2026-02-27 | 2257, 2272 |  |
| 2274 | 37200.37300.37500.38100.39300.40500.41500.90100 | **12th Floor** | 105.25d | 2025-10-20 | 2026-03-19 |  | start no earlier than 2025-10-20 |
| 2275 |  | Block Work | 8d | 2025-10-20 | 2025-10-28 | 2259FS+0.25d |  |
| 2276 |  | Door Frame Fixing | 9d | 2025-12-20 | 2025-12-29 | 2260, 2275 |  |
| 2277 |  | Internal Plumbing Works | 8d | 2025-10-28 | 2025-12-20 | 2261, 2275 |  |
| 2278 |  | Waterproofing | 10d | 2026-01-08 | 2026-01-18 | 2262, 2277 |  |
| 2279 |  | Internal Plaster | 8d | 2025-10-28 | 2025-12-20 | 2263FS+0.25d, 2275FS+0.25d |  |
| 2280 |  | IPS flooring work | 10d | 2026-01-18 | 2026-01-28 | 2264, 2276, 2277, 2278 |  |
| 2281 |  | Toilet dado work | 8d | 2026-01-18 | 2026-01-26 | 2265, 2278, 2279 |  |
| 2282 |  | Toilet flooring work | 8d | 2026-01-26 | 2026-02-03 | 2266, 2281 |  |
| 2283 |  | Living dinning flooring | 12d | 2026-02-03 | 2026-02-15 | 2267, 2276, 2282 |  |
| 2284 |  | Aluminium door-window fixing | 12d | 2026-02-15 | 2026-02-27 | 2268, 2280, 2283 |  |
| 2285 |  | Putty primer coat | 6d | 2026-02-15 | 2026-02-21 | 2269, 2283 |  |
| 2286 |  | Door shutter fixing | 8d | 2026-02-15 | 2026-02-23 | 2270, 2283 |  |
| 2287 |  | Electrical wiring work | 8d | 2026-02-23 | 2026-03-03 | 2271, 2286 |  |
| 2288 |  | Painting 1st coat | 8d | 2026-03-03 | 2026-03-11 | 2272, 2285, 2286, 2287 |  |
| 2289 |  | False ceiling | 8d | 2026-03-11 | 2026-03-19 | 2273, 2288 |  |
| 2290 | 37200.37300.37500.38100.39300.40500.41500.90000 | **13th Floor** | 109.25d | 2025-10-28 | 2026-03-31 |  | start no earlier than 2025-10-28 |
| 2291 |  | Block Work | 8d | 2025-10-28 | 2025-12-20 | 2275FS+0.25d |  |
| 2292 |  | Door Frame Fixing | 9d | 2025-12-29 | 2026-01-07 | 2276, 2291 |  |
| 2293 |  | Internal Plumbing Works | 8d | 2025-12-20 | 2025-12-28 | 2277, 2291 |  |
| 2294 |  | Waterproofing | 10d | 2026-01-18 | 2026-01-28 | 2278, 2293 |  |
| 2295 |  | Internal Plaster | 8d | 2025-12-20 | 2025-12-28 | 2279FS+0.25d, 2291FS+0.25d |  |
| 2296 |  | IPS flooring work | 10d | 2026-01-28 | 2026-02-07 | 2280, 2292, 2294, 2295 |  |
| 2297 |  | Toilet dado work | 8d | 2026-01-28 | 2026-02-05 | 2281, 2294, 2295 |  |
| 2298 |  | Toilet flooring work | 8d | 2026-02-05 | 2026-02-13 | 2282, 2297 |  |
| 2299 |  | Living dinning flooring | 12d | 2026-02-15 | 2026-02-27 | 2283FS+0.25d |  |
| 2300 |  | Aluminium door-window fixing | 12d | 2026-02-27 | 2026-03-11 | 2284FS+0.25d |  |
| 2301 |  | Putty primer coat | 6d | 2026-02-27 | 2026-03-05 | 2285, 2299 |  |
| 2302 |  | Door shutter fixing | 8d | 2026-02-27 | 2026-03-07 | 2286, 2299 |  |
| 2303 |  | Electrical wiring work | 8d | 2026-03-07 | 2026-03-15 | 2287, 2302 |  |
| 2304 |  | Painting 1st coat | 8d | 2026-03-15 | 2026-03-23 | 2288, 2301, 2302, 2303 |  |
| 2305 |  | False ceiling | 8d | 2026-03-23 | 2026-03-31 | 2289, 2304 |  |
| 2306 | 37200.37300.37500.38100.39300.40500.41500.89900 | **14th Floor** | 107d | 2025-12-20 | 2026-04-06 |  | start no earlier than 2025-12-20 |
| 2307 |  | Block Work | 5d | 2025-12-20 | 2025-12-25 | 2291FS+0.25d |  |
| 2308 |  | Door Frame Fixing | 9d | 2026-01-07 | 2026-01-16 | 2292, 2307 |  |
| 2309 |  | Internal Plumbing Works | 15d | 2025-12-28 | 2026-01-12 | 2293, 2307 |  |
| 2310 |  | Waterproofing | 15d | 2026-01-28 | 2026-02-12 | 2294, 2309 |  |

| ID | WBS | Task | Duration | Start | Finish | Predecessors | Constraint |
| --- | --- | --- | --- | --- | --- | --- | --- |
| 2311 |  | Internal Plaster | 8d | 2025-12-29 | 2026-01-06 | 2295FS+0.25d |  |
| 2312 |  | IPS flooring work | 12d | 2026-02-12 | 2026-02-24 | 2296, 2308, 2309, 2310 |  |
| 2313 |  | Toilet dado work | 12d | 2026-02-12 | 2026-02-24 | 2297, 2310, 2311 |  |
| 2314 |  | Toilet flooring work | 12d | 2026-02-24 | 2026-03-08 | 2298, 2313 |  |
| 2315 |  | Living dinning flooring | 7d | 2026-02-28 | 2026-03-07 | 2299FS+0.25d |  |
| 2316 |  | Aluminium door-window fixing | 18d | 2026-03-12 | 2026-03-30 | 2300FS+0.25d |  |
| 2317 |  | Putty primer coat | 6d | 2026-03-07 | 2026-03-13 | 2301, 2315 |  |
| 2318 |  | Door shutter fixing | 6d | 2026-03-07 | 2026-03-13 | 2302, 2315 |  |
| 2319 |  | Electrical wiring work | 6d | 2026-03-15 | 2026-03-21 | 2303, 2318 |  |
| 2320 |  | Painting 1st coat | 6d | 2026-03-23 | 2026-03-29 | 2304, 2317, 2318, 2319 |  |
| 2321 |  | False ceiling | 6d | 2026-03-31 | 2026-04-06 | 2305, 2320 |  |
| 2322 | 37200.37300.37500.38100.39300.40500.41500.89800 | **15th Floor** | 120d | 2025-12-26 | 2026-04-25 |  | start no earlier than 2025-12-26 |
| 2323 |  | Block Work | 5d | 2025-12-26 | 2025-12-31 | 2307FS+0.25d |  |
| 2324 |  | Door Frame Fixing | 9d | 2026-01-16 | 2026-01-25 | 2308, 2323 |  |
| 2325 |  | Internal Plumbing Works | 15d | 2026-01-12 | 2026-01-27 | 2309, 2323 |  |
| 2326 |  | Waterproofing | 15d | 2026-02-12 | 2026-02-27 | 2310, 2325 |  |
| 2327 |  | Internal Plaster | 8d | 2026-01-06 | 2026-01-14 | 2311FS+0.25d |  |
| 2328 |  | IPS flooring work | 12d | 2026-02-27 | 2026-03-11 | 2312, 2324, 2325, 2326 |  |
| 2329 |  | Toilet dado work | 12d | 2026-02-27 | 2026-03-11 | 2313, 2326, 2327 |  |
| 2330 |  | Toilet flooring work | 12d | 2026-03-11 | 2026-03-23 | 2314, 2329 |  |
| 2331 |  | Living dinning flooring | 7d | 2026-03-07 | 2026-03-14 | 2315FS+0.25d |  |
| 2332 |  | Aluminium door-window fixing | 18d | 2026-03-30 | 2026-04-17 | 2316, 2328, 2331 |  |
| 2333 |  | Putty primer coat | 6d | 2026-03-14 | 2026-03-20 | 2317, 2331 |  |
| 2334 |  | Door shutter fixing | 7.94d | 2026-03-14 | 2026-03-22 | 2318, 2331 |  |
| 2335 |  | Electrical wiring work | 11.94d | 2026-03-22 | 2026-04-03 | 2319, 2334 |  |
| 2336 |  | Painting 1st coat | 11.94d | 2026-04-03 | 2026-04-15 | 2320, 2333, 2334, 2335 |  |
| 2337 |  | False ceiling | 9.94d | 2026-04-15 | 2026-04-25 | 2321, 2336 |  |
| 2338 | 37200.37300.37500.38100.39300.40500.41500.89700 | **16th Floor** | 126.69d | 2025-12-31 | 2026-05-07 |  | start no earlier than 2025-12-31 |
| 2339 |  | Block Work | 10d | 2025-12-31 | 2026-01-10 | 2323FS+0.25d |  |
| 2340 |  | Door Frame Fixing | 9d | 2026-01-25 | 2026-02-03 | 2324, 2339 |  |
| 2341 |  | Internal Plumbing Works | 15d | 2026-01-27 | 2026-02-11 | 2325, 2339 |  |
| 2342 |  | Waterproofing | 15d | 2026-02-27 | 2026-03-14 | 2326, 2341 |  |
| 2343 |  | Internal Plaster | 12d | 2026-01-14 | 2026-01-26 | 2327FS+0.25d |  |
| 2344 |  | IPS flooring work | 12d | 2026-03-14 | 2026-03-26 | 2328, 2340, 2341, 2342 |  |
| 2345 |  | Toilet dado work | 12d | 2026-03-14 | 2026-03-26 | 2329, 2342, 2343 |  |
| 2346 |  | Toilet flooring work | 12d | 2026-03-26 | 2026-04-07 | 2330, 2345 |  |
| 2347 |  | Living dinning flooring | 7d | 2026-03-14 | 2026-03-21 | 2331FS+0.25d |  |
| 2348 |  | Aluminium door-window fixing | 18d | 2026-04-17 | 2026-05-05 | 2332FS+0.25d |  |
| 2349 |  | Putty primer coat | 5.94d | 2026-03-21 | 2026-03-27 | 2333, 2347 |  |
| 2350 |  | Door shutter fixing | 7.94d | 2026-03-22 | 2026-03-30 | 2334, 2347 |  |
| 2351 |  | Electrical wiring work | 11.94d | 2026-04-03 | 2026-04-15 | 2335, 2350 |  |
| 2352 |  | Painting 1st coat | 11.94d | 2026-04-15 | 2026-04-27 | 2336, 2349, 2350, 2351 |  |
| 2353 |  | False ceiling | 9.94d | 2026-04-27 | 2026-05-07 | 2337, 2352 |  |
| 2354 | 37200.37300.37500.38100.39300.40500.41500.89600 | **17th Floor** | 132.75d | 2026-01-10 | 2026-05-23 |  | start no earlier than 2026-01-10 |
| 2355 |  | Block Work | 12d | 2026-01-10 | 2026-01-22 | 2339FS+0.25d |  |
| 2356 |  | Door Frame Fixing | 9d | 2026-02-03 | 2026-02-12 | 2340, 2355 |  |
| 2357 |  | Internal Plumbing Works | 15d | 2026-02-11 | 2026-02-26 | 2341, 2355 |  |
| 2358 |  | Waterproofing | 15d | 2026-03-14 | 2026-03-29 | 2342, 2357 |  |
| 2359 |  | Internal Plaster | 12d | 2026-01-26 | 2026-02-07 | 2343FS+0.25d |  |
| 2360 |  | IPS flooring work | 12d | 2026-03-29 | 2026-04-10 | 2344, 2356, 2357, 2358 |  |
| 2361 |  | Toilet dado work | 12d | 2026-03-29 | 2026-04-10 | 2345, 2358, 2359 |  |
| 2362 |  | Toilet flooring work | 12d | 2026-04-10 | 2026-04-22 | 2346, 2361 |  |
| 2363 |  | Living dinning flooring | 7d | 2026-03-21 | 2026-03-28 | 2347FS+0.25d |  |
| 2364 |  | Aluminium door-window fixing | 18d | 2026-05-05 | 2026-05-23 | 2348, 2360, 2363 |  |
| 2365 |  | Putty primer coat | 5.94d | 2026-03-28 | 2026-04-03 | 2349, 2363 |  |
| 2366 |  | Door shutter fixing | 7.94d | 2026-03-30 | 2026-04-07 | 2350, 2363 |  |
| 2367 |  | Electrical wiring work | 11.94d | 2026-04-15 | 2026-04-27 | 2351, 2366 |  |
| 2368 |  | Painting 1st coat | 11.94d | 2026-04-27 | 2026-05-09 | 2352, 2365, 2366, 2367 |  |
| 2369 |  | False ceiling | 9.94d | 2026-05-09 | 2026-05-19 | 2353, 2368 |  |
| 2370 | 37200.37300.37500.38100.39300.40500.41500.89500 | **18th Floor** | 138.5d | 2026-01-22 | 2026-06-10 |  | start no earlier than 2026-01-22 |
| 2371 |  | Block Work | 12d | 2026-01-22 | 2026-02-03 | 2355FS+0.25d |  |
| 2372 |  | Door Frame Fixing | 9d | 2026-02-12 | 2026-02-21 | 2356, 2371 |  |
| 2373 |  | Internal Plumbing Works | 15d | 2026-02-26 | 2026-03-13 | 2357, 2371 |  |
| 2374 |  | Waterproofing | 15d | 2026-03-29 | 2026-04-13 | 2358, 2373 |  |
| 2375 |  | Internal Plaster | 12d | 2026-02-08 | 2026-02-20 | 2359FS+0.25d |  |
| 2376 |  | IPS flooring work | 12d | 2026-04-13 | 2026-04-25 | 2360, 2372, 2373, 2374 |  |
| 2377 |  | Toilet dado work | 12d | 2026-04-13 | 2026-04-25 | 2361, 2374, 2375 |  |
| 2378 |  | Toilet flooring work | 12d | 2026-04-25 | 2026-05-07 | 2362, 2377 |  |
| 2379 |  | Living dinning flooring | 7d | 2026-03-29 | 2026-04-05 | 2363FS+0.25d |  |
| 2380 |  | Aluminium door-window fixing | 18d | 2026-05-23 | 2026-06-10 | 2364, 2376, 2379 |  |

| ID | WBS | Task | Duration | Start | Finish | Predecessors | Constraint |
| --- | --- | --- | --- | --- | --- | --- | --- |
| 2381 |  | Putty primer coat | 5.94d | 2026-04-05 | 2026-04-11 | 2365, 2379 |  |
| 2382 |  | Door shutter fixing | 7.94d | 2026-04-07 | 2026-04-15 | 2366, 2379 |  |
| 2383 |  | Electrical wiring work | 11.94d | 2026-04-27 | 2026-05-09 | 2367, 2382 |  |
| 2384 |  | Painting 1st coat | 11.94d | 2026-05-09 | 2026-05-21 | 2368, 2381, 2382, 2383 |  |
| 2385 |  | False ceiling | 9.94d | 2026-05-21 | 2026-05-30 | 2369, 2384 |  |
| 2386 | 37200.37300.37500.38100.39300.40500.41500.89400 | **19th Floor** | 156.25d | 2026-02-04 | 2026-07-10 |  | start no earlier than 2026-02-04 |
| 2387 |  | Block Work | 12d | 2026-02-04 | 2026-02-16 | 2371FS+0.25d |  |
| 2388 |  | Door Frame Fixing | 9d | 2026-02-21 | 2026-03-02 | 2372, 2387 |  |
| 2389 |  | Internal Plumbing Works | 15d | 2026-03-13 | 2026-03-28 | 2373, 2387 |  |
| 2390 |  | Waterproofing | 15d | 2026-04-13 | 2026-04-28 | 2374, 2389 |  |
| 2391 |  | Internal Plaster | 12d | 2026-02-20 | 2026-03-04 | 2375FS+0.25d |  |
| 2392 |  | IPS flooring work | 12d | 2026-04-28 | 2026-05-10 | 2376, 2388, 2390, 2391 |  |
| 2393 |  | Toilet dado work | 12d | 2026-04-28 | 2026-05-10 | 2377, 2390, 2391 |  |
| 2394 |  | Toilet flooring work | 12d | 2026-05-10 | 2026-05-22 | 2378, 2393 |  |
| 2395 |  | Living dinning flooring | 7d | 2026-05-22 | 2026-05-29 | 2379, 2388, 2394 |  |
| 2396 |  | Aluminium door-window fixing | 18d | 2026-06-10 | 2026-06-28 | 2380, 2392, 2395 |  |
| 2397 |  | Putty primer coat | 5.94d | 2026-05-29 | 2026-06-04 | 2381, 2395 |  |
| 2398 |  | Door shutter fixing | 7.94d | 2026-05-29 | 2026-06-06 | 2382, 2395 |  |
| 2399 |  | Electrical wiring work | 11.94d | 2026-06-06 | 2026-06-18 | 2383, 2398 |  |
| 2400 |  | Painting 1st coat | 11.94d | 2026-06-18 | 2026-06-30 | 2384, 2397, 2398, 2399 |  |
| 2401 |  | False ceiling | 9.94d | 2026-06-30 | 2026-07-10 | 2385, 2400 |  |
| 2402 | 37200.37300.37500.38100.39300.40500.41500.89300 | **20th Floor** | 159d | 2026-02-16 | 2026-07-25 |  | start no earlier than 2026-02-16 |
| 2403 |  | Block Work | 12d | 2026-02-16 | 2026-02-28 | 2387FS+0.25d |  |
| 2404 |  | Door Frame Fixing | 9d | 2026-03-02 | 2026-03-11 | 2388, 2403 |  |
| 2405 |  | Internal Plumbing Works | 15d | 2026-03-28 | 2026-04-12 | 2389, 2403 |  |
| 2406 |  | Waterproofing | 15d | 2026-04-28 | 2026-05-13 | 2390, 2405 |  |
| 2407 |  | Internal Plaster | 12d | 2026-03-04 | 2026-03-16 | 2391FS+0.25d |  |
| 2408 |  | IPS flooring work | 12d | 2026-05-13 | 2026-05-25 | 2392, 2404, 2406, 2407 |  |
| 2409 |  | Toilet dado work | 12d | 2026-05-13 | 2026-05-25 | 2393, 2406, 2407 |  |
| 2410 |  | Toilet flooring work | 12d | 2026-05-25 | 2026-06-06 | 2394, 2409 |  |
| 2411 |  | Living dinning flooring | 7d | 2026-06-06 | 2026-06-13 | 2395, 2404, 2410 |  |
| 2412 |  | Aluminium door-window fixing | 18d | 2026-06-28 | 2026-07-16 | 2396, 2408, 2411 |  |
| 2413 |  | Putty primer coat | 5.94d | 2026-06-13 | 2026-06-19 | 2397, 2411 |  |
| 2414 |  | Door shutter fixing | 7.94d | 2026-06-13 | 2026-06-21 | 2398, 2411 |  |
| 2415 |  | Electrical wiring work | 11.94d | 2026-06-21 | 2026-07-03 | 2399, 2414 |  |
| 2416 |  | Painting 1st coat | 11.94d | 2026-07-03 | 2026-07-15 | 2400, 2413, 2414, 2415 |  |
| 2417 |  | False ceiling | 9.94d | 2026-07-15 | 2026-07-25 | 2401, 2416 |  |
| 2418 | 37200.37300.37500.38100.39300.40500.41500.89200 | **21st Floor** | 145.69d | 2026-03-13 | 2026-08-06 |  | start no earlier than 2026-03-13 |
| 2419 |  | Block Work | 7.94d | 2026-03-13 | 2026-03-21 | 2076FS+0.25d, 2403FS+0.25d |  |
| 2420 |  | Door Frame Fixing | 8.94d | 2026-03-21 | 2026-03-30 | 2404, 2419 |  |
| 2421 |  | Internal Plumbing Works | 9.94d | 2026-03-21 | 2026-03-31 | 2419FS+0.25d |  |
| 2422 |  | Waterproofing | 11.94d | 2026-05-13 | 2026-05-25 | 2406, 2421 |  |
| 2423 |  | Internal Plaster | 8.94d | 2026-03-31 | 2026-04-09 | 2407FS+0.25d, 2419FS+10d |  |
| 2424 |  | IPS flooring work | 8.94d | 2026-05-25 | 2026-06-03 | 2408, 2420, 2422, 2423 |  |
| 2425 |  | Toilet dado work | 7.94d | 2026-05-25 | 2026-06-02 | 2409, 2422, 2423 |  |
| 2426 |  | Toilet flooring work | 6.94d | 2026-06-06 | 2026-06-13 | 2410, 2425 |  |
| 2427 |  | Living dinning flooring | 11.94d | 2026-06-13 | 2026-06-25 | 2411, 2420, 2426 |  |
| 2428 |  | Aluminium door-window fixing | 11.94d | 2026-07-16 | 2026-07-28 | 2412, 2424, 2427 |  |
| 2429 |  | Putty primer coat | 5.94d | 2026-06-25 | 2026-07-01 | 2413, 2427 |  |
| 2430 |  | Door shutter fixing | 7.94d | 2026-06-25 | 2026-07-03 | 2414, 2427 |  |
| 2431 |  | Electrical wiring work | 11.94d | 2026-07-03 | 2026-07-15 | 2415, 2430 |  |
| 2432 |  | Painting 1st coat | 11.94d | 2026-07-15 | 2026-07-27 | 2416, 2429, 2430, 2431 |  |
| 2433 |  | False ceiling | 9.94d | 2026-07-27 | 2026-08-06 | 2417, 2432 |  |
| 2434 | 37200.37300.37500.38100.39300.40500.41500.89100 | **22nd Floor** | 107.31d | 2026-05-14 | 2026-08-29 |  | start no earlier than 2026-05-14 |
| 2435 |  | Block Work | 7.94d | 2026-05-14 | 2026-05-22 | 2082, 2419 |  |
| 2436 |  | Door Frame Fixing | 8.94d | 2026-05-22 | 2026-05-31 | 2420, 2435 |  |
| 2437 |  | Internal Plumbing Works | 9.94d | 2026-05-22 | 2026-06-01 | 2421, 2435 |  |
| 2438 |  | Waterproofing | 11.94d | 2026-06-01 | 2026-06-13 | 2422, 2437 |  |
| 2439 |  | Internal Plaster | 8.94d | 2026-06-13 | 2026-06-22 | 2423, 2436, 2437, 2438 |  |
| 2440 |  | IPS flooring work | 8.94d | 2026-06-22 | 2026-07-01 | 2424, 2436, 2438, 2439 |  |
| 2441 |  | Toilet dado work | 7.94d | 2026-06-22 | 2026-06-30 | 2425, 2438, 2439 |  |
| 2442 |  | Toilet flooring work | 6.94d | 2026-06-30 | 2026-07-07 | 2426, 2441 |  |
| 2443 |  | Living dinning flooring | 11.94d | 2026-07-07 | 2026-07-18 | 2427, 2436, 2442 |  |
| 2444 |  | Aluminium door-window fixing | 11.94d | 2026-07-28 | 2026-08-09 | 2428, 2440, 2443 |  |
| 2445 |  | Putty primer coat | 5.94d | 2026-07-19 | 2026-07-24 | 2429, 2443 |  |
| 2446 |  | Door shutter fixing | 7.94d | 2026-07-19 | 2026-07-26 | 2430, 2443 |  |
| 2447 |  | Electrical wiring work | 11.94d | 2026-07-26 | 2026-08-07 | 2431, 2446 |  |
| 2448 |  | Painting 1st coat | 11.94d | 2026-08-07 | 2026-08-19 | 2432, 2445, 2446, 2447 |  |
| 2449 |  | False ceiling | 9.94d | 2026-08-19 | 2026-08-29 | 2433, 2448 |  |
| 2450 | 37200.37300.37500.38100.39300.40500.41500.89000 | **23rd Floor** | 113.25d | 2026-05-23 | 2026-09-13 |  | start no earlier than 2026-05-23 |

| ID | WBS | Task | Duration | Start | Finish | Predecessors | Constraint |
| --- | --- | --- | --- | --- | --- | --- | --- |
| 2451 |  | Block Work | 7.94d | 2026-05-23 | 2026-05-31 | 2083, 2435 |  |
| 2452 |  | Door Frame Fixing | 8.94d | 2026-05-31 | 2026-06-09 | 2436, 2451 |  |
| 2453 |  | Internal Plumbing Works | 9.94d | 2026-06-01 | 2026-06-11 | 2437, 2451 |  |
| 2454 |  | Waterproofing | 11.94d | 2026-06-13 | 2026-06-25 | 2438, 2453 |  |
| 2455 |  | Internal Plaster | 8.94d | 2026-06-25 | 2026-07-04 | 2439, 2452, 2453, 2454 |  |
| 2456 |  | IPS flooring work | 8.94d | 2026-07-04 | 2026-07-13 | 2440, 2452, 2454, 2455 |  |
| 2457 |  | Toilet dado work | 7.94d | 2026-07-04 | 2026-07-12 | 2441, 2454, 2455 |  |
| 2458 |  | Toilet flooring work | 6.94d | 2026-07-12 | 2026-07-18 | 2442, 2457 |  |
| 2459 |  | Living dinning flooring | 14.94d | 2026-07-19 | 2026-08-02 | 2443, 2452, 2458 |  |
| 2460 |  | Aluminium door-window fixing | 14.94d | 2026-08-09 | 2026-08-24 | 2444, 2456, 2459 |  |
| 2461 |  | Putty primer coat | 5.94d | 2026-08-02 | 2026-08-08 | 2445, 2459 |  |
| 2462 |  | Door shutter fixing | 7.94d | 2026-08-02 | 2026-08-10 | 2446, 2459 |  |
| 2463 |  | Electrical wiring work | 11.94d | 2026-08-10 | 2026-08-22 | 2447, 2462 |  |
| 2464 |  | Painting 1st coat | 11.94d | 2026-08-22 | 2026-09-03 | 2448, 2461, 2462, 2463 |  |
| 2465 |  | False ceiling | 9.94d | 2026-09-03 | 2026-09-13 | 2449, 2464 |  |
| 2466 | 37200.37300.37500.38100.39300.40500.41500.88900 | **24th Floor** | 117.06d | 2026-06-03 | 2026-09-28 |  | start no earlier than 2026-06-03 |
| 2467 |  | Block Work | 7.94d | 2026-06-03 | 2026-06-11 | 2084, 2451 |  |
| 2468 |  | Door Frame Fixing | 8.94d | 2026-06-11 | 2026-06-20 | 2452, 2467 |  |
| 2469 |  | Internal Plumbing Works | 9.94d | 2026-06-11 | 2026-06-21 | 2453, 2467 |  |
| 2470 |  | Waterproofing | 11.94d | 2026-06-25 | 2026-07-07 | 2454, 2469 |  |
| 2471 |  | Internal Plaster | 8.94d | 2026-07-07 | 2026-07-16 | 2455, 2468, 2469, 2470 |  |
| 2472 |  | IPS flooring work | 8.94d | 2026-07-16 | 2026-07-24 | 2456, 2468, 2470, 2471 |  |
| 2473 |  | Toilet dado work | 7.94d | 2026-07-16 | 2026-07-23 | 2457, 2470, 2471 |  |
| 2474 |  | Toilet flooring work | 6.94d | 2026-07-24 | 2026-07-30 | 2458, 2473 |  |
| 2475 |  | Living dinning flooring | 14.94d | 2026-08-02 | 2026-08-17 | 2459, 2468, 2474 |  |
| 2476 |  | Aluminium door-window fixing | 14.94d | 2026-08-24 | 2026-09-08 | 2460, 2472, 2475 |  |
| 2477 |  | Putty primer coat | 5.94d | 2026-08-17 | 2026-08-23 | 2461, 2475 |  |
| 2478 |  | Door shutter fixing | 7.94d | 2026-08-17 | 2026-08-25 | 2462, 2475 |  |
| 2479 |  | Electrical wiring work | 11.94d | 2026-08-25 | 2026-09-06 | 2463, 2478 |  |
| 2480 |  | Painting 1st coat | 11.94d | 2026-09-06 | 2026-09-18 | 2464, 2477, 2478, 2479 |  |
| 2481 |  | False ceiling | 9.94d | 2026-09-18 | 2026-09-28 | 2465, 2480 |  |
| 2482 | 37200.37300.37500.38100.39300.40500.41500.88800 | **25th Floor** | 118.25d | 2026-06-17 | 2026-10-13 |  | start no earlier than 2026-06-17 |
| 2483 |  | Block Work | 7.94d | 2026-06-17 | 2026-06-25 | 2085, 2467 |  |
| 2484 |  | Door Frame Fixing | 8.94d | 2026-06-25 | 2026-07-04 | 2468, 2483 |  |
| 2485 |  | Internal Plumbing Works | 9.94d | 2026-06-25 | 2026-07-05 | 2469, 2483 |  |
| 2486 |  | Waterproofing | 11.94d | 2026-07-07 | 2026-07-19 | 2470, 2485 |  |
| 2487 |  | Internal Plaster | 8.94d | 2026-07-19 | 2026-07-27 | 2471, 2484, 2485, 2486 |  |
| 2488 |  | IPS flooring work | 8.94d | 2026-07-28 | 2026-08-05 | 2472, 2484, 2486, 2487 |  |
| 2489 |  | Toilet dado work | 7.94d | 2026-07-28 | 2026-08-04 | 2473, 2486, 2487 |  |
| 2490 |  | Toilet flooring work | 6.94d | 2026-08-04 | 2026-08-11 | 2474, 2489 |  |
| 2491 |  | Living dinning flooring | 14.94d | 2026-08-17 | 2026-09-01 | 2475, 2484, 2490 |  |
| 2492 |  | Aluminium door-window fixing | 14.94d | 2026-09-08 | 2026-09-23 | 2476, 2488, 2491 |  |
| 2493 |  | Putty primer coat | 5.94d | 2026-09-01 | 2026-09-07 | 2477, 2491 |  |
| 2494 |  | Door shutter fixing | 7.94d | 2026-09-01 | 2026-09-09 | 2478, 2491 |  |
| 2495 |  | Electrical wiring work | 11.94d | 2026-09-09 | 2026-09-21 | 2479, 2494 |  |
| 2496 |  | Painting 1st coat | 11.94d | 2026-09-21 | 2026-10-03 | 2480, 2493, 2494, 2495 |  |
| 2497 |  | False ceiling | 9.94d | 2026-10-03 | 2026-10-13 | 2481, 2496 |  |
| 2498 | 37200.37300.37500.38100.39300.40500.41500.88700 | **26th Floor** | 120.44d | 2026-06-30 | 2026-10-28 |  | start no earlier than 2026-06-30 |
| 2499 |  | Block Work | 7.94d | 2026-06-30 | 2026-07-07 | 2086, 2483 |  |
| 2500 |  | Door Frame Fixing | 8.94d | 2026-07-08 | 2026-07-16 | 2484, 2499 |  |
| 2501 |  | Internal Plumbing Works | 9.94d | 2026-07-08 | 2026-07-17 | 2485, 2499 |  |
| 2502 |  | Waterproofing | 11.94d | 2026-07-19 | 2026-07-30 | 2486, 2501 |  |
| 2503 |  | Internal Plaster | 8.94d | 2026-07-31 | 2026-08-08 | 2487, 2500, 2501, 2502 |  |
| 2504 |  | IPS flooring work | 8.94d | 2026-08-08 | 2026-08-17 | 2488, 2500, 2502, 2503 |  |
| 2505 |  | Toilet dado work | 7.94d | 2026-08-08 | 2026-08-16 | 2489, 2502, 2503 |  |
| 2506 |  | Toilet flooring work | 6.94d | 2026-08-16 | 2026-08-23 | 2490, 2505 |  |
| 2507 |  | Living dinning flooring | 14.94d | 2026-09-01 | 2026-09-16 | 2491, 2500, 2506 |  |
| 2508 |  | Aluminium door-window fixing | 14.94d | 2026-09-23 | 2026-10-08 | 2492, 2504, 2507 |  |
| 2509 |  | Putty primer coat | 5.94d | 2026-09-16 | 2026-09-22 | 2493, 2507 |  |
| 2510 |  | Door shutter fixing | 7.94d | 2026-09-16 | 2026-09-24 | 2494, 2507 |  |
| 2511 |  | Electrical wiring work | 11.94d | 2026-09-24 | 2026-10-06 | 2495, 2510 |  |
| 2512 |  | Painting 1st coat | 11.94d | 2026-10-06 | 2026-10-18 | 2496, 2509, 2510, 2511 |  |
| 2513 |  | False ceiling | 9.94d | 2026-10-18 | 2026-10-28 | 2497, 2512 |  |
| 2514 | 37200.37300.37500.38100.39300.40500.41500.88600 | **27th Floor** | 121.62d | 2026-07-13 | 2026-12-27 |  | start no earlier than 2026-07-13 |
| 2515 |  | Block Work | 7.94d | 2026-07-13 | 2026-07-21 | 2087, 2499 |  |
| 2516 |  | Door Frame Fixing | 8.94d | 2026-07-21 | 2026-07-30 | 2500, 2515 |  |
| 2517 |  | Internal Plumbing Works | 9.94d | 2026-07-21 | 2026-07-31 | 2501, 2515 |  |
| 2518 |  | Waterproofing | 11.94d | 2026-07-31 | 2026-08-12 | 2502, 2517 |  |
| 2519 |  | Internal Plaster | 8.94d | 2026-08-12 | 2026-08-21 | 2503, 2516, 2517, 2518 |  |
| 2520 |  | IPS flooring work | 8.94d | 2026-08-21 | 2026-08-30 | 2504, 2516, 2518, 2519 |  |

| ID | WBS | Task | Duration | Start | Finish | Predecessors | Constraint |
| --- | --- | --- | --- | --- | --- | --- | --- |
| 2521 |  | Toilet dado work | 7.94d | 2026-08-21 | 2026-08-29 | 2505, 2518, 2519 |  |
| 2522 |  | Toilet flooring work | 6.94d | 2026-08-29 | 2026-09-05 | 2506, 2521 |  |
| 2523 |  | Living dinning flooring | 14.94d | 2026-09-16 | 2026-10-01 | 2507, 2516, 2522 |  |
| 2524 |  | Aluminium door-window fixing | 14.94d | 2026-10-08 | 2026-10-22 | 2508, 2520, 2523 |  |
| 2525 |  | Putty primer coat | 5.94d | 2026-10-01 | 2026-10-07 | 2509, 2523 |  |
| 2526 |  | Door shutter fixing | 7.94d | 2026-10-01 | 2026-10-09 | 2510, 2523 |  |
| 2527 |  | Electrical wiring work | 11.94d | 2026-10-09 | 2026-10-21 | 2511, 2526 |  |
| 2528 |  | Painting 1st coat | 11.94d | 2026-10-21 | 2026-12-17 | 2512, 2525, 2526, 2527 |  |
| 2529 |  | False ceiling | 9.94d | 2026-12-17 | 2026-12-27 | 2513, 2528 |  |
| 2530 | 37200.37300.37500.38100.39300.40500.41500.88500 | **28th Floor** | 123.81d | 2026-07-26 | 2027-01-11 |  | start no earlier than 2026-07-26 |
| 2531 |  | Block Work | 7.94d | 2026-07-26 | 2026-08-03 | 2088, 2515 |  |
| 2532 |  | Door Frame Fixing | 8.94d | 2026-08-03 | 2026-08-12 | 2516, 2531 |  |
| 2533 |  | Internal Plumbing Works | 9.94d | 2026-08-03 | 2026-08-13 | 2517, 2531 |  |
| 2534 |  | Waterproofing | 11.94d | 2026-08-13 | 2026-08-25 | 2518, 2533 |  |
| 2535 |  | Internal Plaster | 8.94d | 2026-08-25 | 2026-09-03 | 2519, 2532, 2533, 2534 |  |
| 2536 |  | IPS flooring work | 8.94d | 2026-09-03 | 2026-09-12 | 2520, 2532, 2534, 2535 |  |
| 2537 |  | Toilet dado work | 7.94d | 2026-09-03 | 2026-09-11 | 2521, 2534, 2535 |  |
| 2538 |  | Toilet flooring work | 6.94d | 2026-09-11 | 2026-09-18 | 2522, 2537 |  |
| 2539 |  | Living dinning flooring | 14.94d | 2026-10-01 | 2026-10-16 | 2523, 2532, 2538 |  |
| 2540 |  | Aluminium door-window fixing | 14.94d | 2026-10-23 | 2026-12-21 | 2524, 2536, 2539 |  |
| 2541 |  | Putty primer coat | 5.94d | 2026-10-16 | 2026-10-22 | 2525, 2539 |  |
| 2542 |  | Door shutter fixing | 7.94d | 2026-10-16 | 2026-10-24 | 2526, 2539 |  |
| 2543 |  | Electrical wiring work | 11.94d | 2026-10-24 | 2026-12-20 | 2527, 2542 |  |
| 2544 |  | Painting 1st coat | 11.94d | 2026-12-20 | 2027-01-01 | 2528, 2541, 2542, 2543 |  |
| 2545 |  | False ceiling | 9.94d | 2027-01-01 | 2027-01-11 | 2529, 2544 |  |
| 2546 | 37200.37300.37500.38100.39300.40500.41500.88400 | **29th Floor** | 123d | 2026-08-11 | 2027-01-26 |  | start no earlier than 2026-08-11 |
| 2547 |  | Block Work | 7.94d | 2026-08-11 | 2026-08-19 | 2089, 2531 |  |
| 2548 |  | Door Frame Fixing | 8.94d | 2026-08-19 | 2026-08-28 | 2532, 2547 |  |
| 2549 |  | Internal Plumbing Works | 9.94d | 2026-08-19 | 2026-08-29 | 2533, 2547 |  |
| 2550 |  | Waterproofing | 11.94d | 2026-08-29 | 2026-09-10 | 2534, 2549 |  |
| 2551 |  | Internal Plaster | 8.94d | 2026-09-10 | 2026-09-19 | 2535, 2548, 2549, 2550 |  |
| 2552 |  | IPS flooring work | 8.94d | 2026-09-19 | 2026-09-27 | 2536, 2548, 2550, 2551 |  |
| 2553 |  | Toilet dado work | 7.94d | 2026-09-19 | 2026-09-26 | 2537, 2550, 2551 |  |
| 2554 |  | Toilet flooring work | 6.94d | 2026-09-27 | 2026-10-03 | 2538, 2553 |  |
| 2555 |  | Living dinning flooring | 14.94d | 2026-10-16 | 2026-10-31 | 2539, 2548, 2554 |  |
| 2556 |  | Aluminium door-window fixing | 14.94d | 2026-12-21 | 2027-01-05 | 2540, 2552, 2555 |  |
| 2557 |  | Putty primer coat | 5.94d | 2026-10-31 | 2026-12-21 | 2541, 2555 |  |
| 2558 |  | Door shutter fixing | 7.94d | 2026-10-31 | 2026-12-23 | 2542, 2555 |  |
| 2559 |  | Electrical wiring work | 11.94d | 2026-12-23 | 2027-01-04 | 2543, 2558 |  |
| 2560 |  | Painting 1st coat | 11.94d | 2027-01-04 | 2027-01-16 | 2544, 2557, 2558, 2559 |  |
| 2561 |  | False ceiling | 9.94d | 2027-01-16 | 2027-01-26 | 2545, 2560 |  |
| 2562 | 37200.37300.37500.38100.39300.40500.41500.88300 | **30th Floor** | 116.31d | 2026-09-21 | 2027-03-02 |  | start no earlier than 2026-09-21 |
| 2563 |  | Block Work | 7.94d | 2026-09-21 | 2026-09-29 | 2090, 2547 |  |
| 2564 |  | Door Frame Fixing | 8.94d | 2026-09-29 | 2026-10-08 | 2548, 2563 |  |
| 2565 |  | Internal Plumbing Works | 9.94d | 2026-09-29 | 2026-10-09 | 2549, 2563 |  |
| 2566 |  | Waterproofing | 11.94d | 2026-10-09 | 2026-10-21 | 2550, 2565 |  |
| 2567 |  | Internal Plaster | 8.94d | 2026-10-21 | 2026-10-30 | 2551, 2564, 2565, 2566 |  |
| 2568 |  | IPS flooring work | 8.94d | 2026-10-30 | 2026-12-23 | 2552, 2564, 2566, 2567 |  |
| 2569 |  | Toilet dado work | 7.94d | 2026-10-30 | 2026-12-22 | 2553, 2566, 2567 |  |
| 2570 |  | Toilet flooring work | 6.94d | 2026-12-22 | 2026-12-29 | 2554, 2569 |  |
| 2571 |  | Living dinning flooring | 14.94d | 2026-12-29 | 2027-01-13 | 2555, 2564, 2570 |  |
| 2572 |  | Aluminium door-window fixing | 14.94d | 2027-01-13 | 2027-01-28 | 2556, 2568, 2571 |  |
| 2573 |  | Putty primer coat | 5.94d | 2027-01-13 | 2027-01-19 | 2557, 2571 |  |
| 2574 |  | Door shutter fixing | 7.94d | 2027-01-13 | 2027-01-21 | 2558, 2571 |  |
| 2575 |  | Electrical wiring work | 14.94d | 2027-01-21 | 2027-02-05 | 2559, 2574 |  |
| 2576 |  | Painting 1st coat | 14.94d | 2027-02-05 | 2027-02-20 | 2560, 2573, 2574, 2575 |  |
| 2577 |  | False ceiling | 9.94d | 2027-02-20 | 2027-03-02 | 2561, 2576 |  |
| 2578 | 37200.37300.37500.38100.39300.40500.41500.88200 | **31st Floor** | 123.31d | 2026-09-29 | 2027-03-17 |  | start no earlier than 2026-09-29 |
| 2579 |  | Block Work | 7.94d | 2026-09-29 | 2026-10-07 | 2091, 2563 |  |
| 2580 |  | Door Frame Fixing | 8.94d | 2026-10-08 | 2026-10-17 | 2564, 2579 |  |
| 2581 |  | Internal Plumbing Works | 9.94d | 2026-10-09 | 2026-10-19 | 2565, 2579 |  |
| 2582 |  | Waterproofing | 11.94d | 2026-10-21 | 2026-12-17 | 2566, 2581 |  |
| 2583 |  | Internal Plaster | 8.94d | 2026-12-17 | 2026-12-26 | 2567, 2580, 2581, 2582 |  |
| 2584 |  | IPS flooring work | 8.94d | 2026-12-26 | 2027-01-04 | 2568, 2580, 2582, 2583 |  |
| 2585 |  | Toilet dado work | 7.94d | 2026-12-26 | 2027-01-03 | 2569, 2582, 2583 |  |
| 2586 |  | Toilet flooring work | 6.94d | 2027-01-03 | 2027-01-10 | 2570, 2585 |  |
| 2587 |  | Living dinning flooring | 14.94d | 2027-01-13 | 2027-01-28 | 2571, 2580, 2586 |  |
| 2588 |  | Aluminium door-window fixing | 11.94d | 2027-01-28 | 2027-02-09 | 2572, 2584, 2587 |  |
| 2589 |  | Putty primer coat | 5.94d | 2027-01-28 | 2027-02-03 | 2573, 2587 |  |
| 2590 |  | Door shutter fixing | 7.94d | 2027-01-28 | 2027-02-05 | 2574, 2587 |  |

| ID | WBS | Task | Duration | Start | Finish | Predecessors | Constraint |
| --- | --- | --- | --- | --- | --- | --- | --- |
| 2591 |  | Electrical wiring work | 14.94d | 2027-02-05 | 2027-02-20 | 2575, 2590 |  |
| 2592 |  | Painting 1st coat | 14.94d | 2027-02-20 | 2027-03-07 | 2576, 2589, 2590, 2591 |  |
| 2593 |  | False ceiling | 9.94d | 2027-03-07 | 2027-03-17 | 2577, 2592 |  |
| 2594 | 37200.37300.37500.38100.39300.40500.41500.88100 | **32nd Floor** | 130.31d | 2026-10-07 | 2027-03-31 |  | start no earlier than 2026-10-07 |
| 2595 |  | Block Work | 7.94d | 2026-10-07 | 2026-10-15 | 2092, 2579 |  |
| 2596 |  | Door Frame Fixing | 8.94d | 2026-10-17 | 2026-10-26 | 2580, 2595 |  |
| 2597 |  | Internal Plumbing Works | 9.94d | 2026-10-19 | 2026-10-29 | 2581, 2595 |  |
| 2598 |  | Waterproofing | 11.94d | 2026-12-17 | 2026-12-29 | 2582, 2597 |  |
| 2599 |  | Internal Plaster | 8.94d | 2026-12-29 | 2027-01-07 | 2583, 2596, 2597, 2598 |  |
| 2600 |  | IPS flooring work | 8.94d | 2027-01-07 | 2027-01-16 | 2584, 2596, 2598, 2599 |  |
| 2601 |  | Toilet dado work | 7.94d | 2027-01-07 | 2027-01-15 | 2585, 2598, 2599 |  |
| 2602 |  | Toilet flooring work | 6.94d | 2027-01-15 | 2027-01-22 | 2586, 2601 |  |
| 2603 |  | Living dinning flooring | 14.94d | 2027-01-28 | 2027-02-12 | 2587, 2596, 2602 |  |
| 2604 |  | Aluminium door-window fixing | 11.94d | 2027-02-12 | 2027-02-24 | 2588, 2600, 2603 |  |
| 2605 |  | Putty primer coat | 5.94d | 2027-02-12 | 2027-02-18 | 2589, 2603 |  |
| 2606 |  | Door shutter fixing | 7.94d | 2027-02-12 | 2027-02-20 | 2590, 2603 |  |
| 2607 |  | Electrical wiring work | 14.94d | 2027-02-20 | 2027-03-07 | 2591, 2606 |  |
| 2608 |  | Painting 1st coat | 14.94d | 2027-03-07 | 2027-03-22 | 2592, 2605, 2606, 2607 |  |
| 2609 |  | False ceiling | 9.94d | 2027-03-22 | 2027-03-31 | 2593, 2608 |  |
| 2610 | 37200.37300.37500.38100.39300.40500.41500.88000 | **33rd Floor** | 134.31d | 2026-10-15 | 2027-04-12 |  | start no earlier than 2026-10-15 |
| 2611 |  | Block Work | 7.94d | 2026-10-15 | 2026-10-23 | 2093, 2595 |  |
| 2612 |  | Door Frame Fixing | 8.94d | 2026-10-26 | 2026-12-19 | 2596, 2611 |  |
| 2613 |  | Internal Plumbing Works | 9.94d | 2026-10-29 | 2026-12-23 | 2597, 2611 |  |
| 2614 |  | Waterproofing | 11.94d | 2026-12-29 | 2027-01-10 | 2598, 2613 |  |
| 2615 |  | Internal Plaster | 8.94d | 2027-01-10 | 2027-01-19 | 2599, 2612, 2613, 2614 |  |
| 2616 |  | IPS flooring work | 8.94d | 2027-01-19 | 2027-01-28 | 2600, 2612, 2614, 2615 |  |
| 2617 |  | Toilet dado work | 7.94d | 2027-01-19 | 2027-01-27 | 2601, 2614, 2615 |  |
| 2618 |  | Toilet flooring work | 6.94d | 2027-01-27 | 2027-02-03 | 2602, 2617 |  |
| 2619 |  | Living dinning flooring | 14.94d | 2027-02-12 | 2027-02-27 | 2603, 2612, 2618 |  |
| 2620 |  | Aluminium door-window fixing | 14.94d | 2027-02-27 | 2027-03-14 | 2604, 2616, 2619 |  |
| 2621 |  | Putty primer coat | 5.94d | 2027-02-27 | 2027-03-05 | 2605, 2619 |  |
| 2622 |  | Door shutter fixing | 7.94d | 2027-02-27 | 2027-03-07 | 2606, 2619 |  |
| 2623 |  | Electrical wiring work | 11.94d | 2027-03-07 | 2027-03-19 | 2607, 2622 |  |
| 2624 |  | Painting 1st coat | 11.94d | 2027-03-22 | 2027-04-02 | 2608, 2621, 2622, 2623 |  |
| 2625 |  | False ceiling | 9.94d | 2027-04-03 | 2027-04-12 | 2609, 2624 |  |
| 2626 | 37200.37300.37500.38100.39300.40500.41500.87900 | **34th Floor** | 138.31d | 2026-10-23 | 2027-04-24 |  | start no earlier than 2026-10-23 |
| 2627 |  | Block Work | 7.94d | 2026-10-23 | 2026-10-31 | 2094, 2611 |  |
| 2628 |  | Door Frame Fixing | 8.94d | 2026-12-19 | 2026-12-28 | 2612, 2627 |  |
| 2629 |  | Internal Plumbing Works | 9.94d | 2026-12-23 | 2027-01-02 | 2613, 2627 |  |
| 2630 |  | Waterproofing | 11.94d | 2027-01-10 | 2027-01-22 | 2614, 2629 |  |
| 2631 |  | Internal Plaster | 8.94d | 2027-01-22 | 2027-01-31 | 2615, 2628, 2629, 2630 |  |
| 2632 |  | IPS flooring work | 8.94d | 2027-01-31 | 2027-02-09 | 2616, 2628, 2630, 2631 |  |
| 2633 |  | Toilet dado work | 7.94d | 2027-01-31 | 2027-02-08 | 2617, 2630, 2631 |  |
| 2634 |  | Toilet flooring work | 6.94d | 2027-02-08 | 2027-02-15 | 2618, 2633 |  |
| 2635 |  | Living dinning flooring | 14.94d | 2027-02-27 | 2027-03-14 | 2619, 2628, 2634 |  |
| 2636 |  | Aluminium door-window fixing | 14.94d | 2027-03-14 | 2027-03-29 | 2620, 2632, 2635 |  |
| 2637 |  | Putty primer coat | 5.94d | 2027-03-14 | 2027-03-20 | 2621, 2635 |  |
| 2638 |  | Door shutter fixing | 7.94d | 2027-03-14 | 2027-03-22 | 2622, 2635 |  |
| 2639 |  | Electrical wiring work | 11.94d | 2027-03-22 | 2027-04-02 | 2623, 2638 |  |
| 2640 |  | Painting 1st coat | 11.94d | 2027-04-03 | 2027-04-14 | 2624, 2637, 2638, 2639 |  |
| 2641 |  | False ceiling | 9.94d | 2027-04-14 | 2027-04-24 | 2625, 2640 |  |
| 2642 | 37200.37300.37500.38100.39300.40500.41500.87800 | **35th Floor** | 145.31d | 2026-10-31 | 2027-05-09 |  | start no earlier than 2026-10-31 |
| 2643 |  | Block Work | 7.94d | 2026-10-31 | 2026-12-23 | 2095, 2627 |  |
| 2644 |  | Door Frame Fixing | 8.94d | 2026-12-28 | 2027-01-06 | 2628, 2643 |  |
| 2645 |  | Internal Plumbing Works | 9.94d | 2027-01-02 | 2027-01-12 | 2629, 2643 |  |
| 2646 |  | Waterproofing | 11.94d | 2027-01-22 | 2027-02-03 | 2630, 2645 |  |
| 2647 |  | Internal Plaster | 8.94d | 2027-02-03 | 2027-02-12 | 2631, 2644, 2645, 2646 |  |
| 2648 |  | IPS flooring work | 8.94d | 2027-02-12 | 2027-02-21 | 2632, 2644, 2646, 2647 |  |
| 2649 |  | Toilet dado work | 7.94d | 2027-02-12 | 2027-02-20 | 2633, 2646, 2647 |  |
| 2650 |  | Toilet flooring work | 6.94d | 2027-02-20 | 2027-02-27 | 2634, 2649 |  |
| 2651 |  | Living dinning flooring | 14.94d | 2027-03-14 | 2027-03-29 | 2635, 2644, 2650 |  |
| 2652 |  | Aluminium door-window fixing | 14.94d | 2027-03-29 | 2027-04-12 | 2636, 2648, 2651 |  |
| 2653 |  | Putty primer coat | 5.94d | 2027-03-29 | 2027-04-03 | 2637, 2651 |  |
| 2654 |  | Door shutter fixing | 7.94d | 2027-03-29 | 2027-04-05 | 2638, 2651 |  |
| 2655 |  | Electrical wiring work | 11.94d | 2027-04-06 | 2027-04-17 | 2639, 2654 |  |
| 2656 |  | Painting 1st coat | 11.94d | 2027-04-17 | 2027-04-29 | 2640, 2653, 2654, 2655 |  |
| 2657 |  | False ceiling | 9.94d | 2027-04-29 | 2027-05-09 | 2641, 2656 |  |
| 2658 | 37200.37300.37500.38100.39300.40500.191200 | **Terrace Finishing** | 79.88d | 2026-08-04 | 2026-10-23 |  | start no earlier than 2026-08-04 |
| 2659 |  | Terrace waterproofing | 39.94d | 2026-08-04 | 2026-09-13 | 2052 |  |
| 2660 |  | Terrace finishing | 39.94d | 2026-09-13 | 2026-10-23 | 2659 |  |

| ID | WBS | Task | Duration | Start | Finish | Predecessors | Constraint |
| --- | --- | --- | --- | --- | --- | --- | --- |
| 2661 | 37200.37300.37500.38100.39300.40500.99500 | **Common Area Finishing** | 279.31d | 2025-09-18 | 2026-08-09 |  | start no earlier than 2025-09-18 |
| 2662 |  | Block Work | 39.94d | 2025-09-18 | 2025-10-28 | 2063FS+0.25d |  |
| 2663 |  | Internal Plaster | 119.94d | 2025-10-24 | 2026-04-07 | 2668SS+17.88d |  |
| 2664 |  | Staircase railing fixing | 149.94d | 2026-03-12 | 2026-08-09 | 2666SS+26.75d, 2665SS+26.75d |  |
| 2665 |  | Main staircase flooring | 149.94d | 2026-02-13 | 2026-07-13 | 2666SS+13.38d |  |
| 2666 |  | Fire staircase flooring | 149.94d | 2026-01-31 | 2026-06-30 | 2663SS+13.38d, 2670SS+26.75d |  |
| 2667 |  | Fire door work | 59.94d | 2026-03-12 | 2026-05-11 | 2665SS+26.75d, 2666SS+26.75d |  |
| 2668 |  | Electrical wiring work | 119.94d | 2025-10-06 | 2026-03-20 | 2662SS+17.88d |  |
| 2669 |  | Lobby flooring | 150d | 2025-10-10 | 2026-04-23 | 2668SS+3.38d |  |
| 2670 |  | Ceiling & wall putty-primer | 109.94d | 2026-01-04 | 2026-04-24 | 2663SS+26.75d |  |
| 2671 |  | Ceiling & wall painting | 99.94d | 2026-01-22 | 2026-05-02 | 2670SS+17.88d |  |
| 2672 |  | Light fixture supply & installation | 44.94d | 2026-03-16 | 2026-04-30 | 2671SS+53.38d |  |
| 2673 | 37200.37300.37500.38100.39300.40500.46700 | **Balcony Glass Railing** | 58.12d | 2027-06-10 | 2027-08-07 |  | start no earlier than 2027-06-10 |
| 2674 |  | 1st Floor | 1.94d | 2027-06-10 | 2027-06-12 | 2742 |  |
| 2675 |  | 2nd Floor | 1.94d | 2027-06-12 | 2027-06-14 | 2674 |  |
| 2676 |  | 3rd Floor | 1.94d | 2027-06-14 | 2027-06-16 | 2675 |  |
| 2677 |  | 4th Floor | 1.94d | 2027-06-16 | 2027-06-18 | 2676 |  |
| 2678 |  | 5th Floor | 1.94d | 2027-06-18 | 2027-06-20 | 2677 |  |
| 2679 |  | 6th Floor | 1.94d | 2027-06-20 | 2027-06-22 | 2678 |  |
| 2680 |  | 7th Floor | 1.94d | 2027-06-22 | 2027-06-24 | 2679 |  |
| 2681 |  | 8th Floor | 1.94d | 2027-06-24 | 2027-06-26 | 2680 |  |
| 2682 |  | 9th Floor | 1.94d | 2027-06-26 | 2027-06-27 | 2681 |  |
| 2683 |  | 10th Floor | 1.94d | 2027-06-28 | 2027-06-29 | 2682 |  |
| 2684 |  | 11th Floor | 1.94d | 2027-06-29 | 2027-07-01 | 2683 |  |
| 2685 |  | 12th Floor | 1.94d | 2027-07-01 | 2027-07-03 | 2684 |  |
| 2686 |  | 13th Floor | 1.94d | 2027-07-03 | 2027-07-05 | 2685 |  |
| 2687 |  | 14th Floor | 1.94d | 2027-07-05 | 2027-07-07 | 2686 |  |
| 2688 |  | 15th Floor | 1.94d | 2027-07-07 | 2027-07-09 | 2687 |  |
| 2689 |  | 16th Floor | 1.94d | 2027-07-09 | 2027-07-11 | 2688 |  |
| 2690 |  | 17th Floor | 1.94d | 2027-07-11 | 2027-07-13 | 2689 |  |
| 2691 |  | 18th Floor | 1.94d | 2027-07-13 | 2027-07-15 | 2690 |  |
| 2692 |  | 19th Floor | 1.94d | 2027-07-15 | 2027-07-17 | 2691 |  |
| 2693 |  | 20th Floor | 1.94d | 2027-07-17 | 2027-07-19 | 2692 |  |
| 2694 |  | 21st Floor | 1.94d | 2027-07-19 | 2027-07-21 | 2693 |  |
| 2695 |  | 22nd Floor | 1.94d | 2027-07-21 | 2027-07-23 | 2694 |  |
| 2696 |  | 23rd Floor | 1.94d | 2027-07-23 | 2027-07-25 | 2695 |  |
| 2697 |  | 24th Floor | 1.94d | 2027-07-25 | 2027-07-27 | 2696 |  |
| 2698 |  | 25th Floor | 1.94d | 2027-07-27 | 2027-07-28 | 2697 |  |
| 2699 |  | 26th Floor | 1.94d | 2027-07-29 | 2027-07-30 | 2698 |  |
| 2700 |  | 27th Floor | 1.94d | 2027-07-30 | 2027-08-01 | 2699 |  |
| 2701 |  | 28th Floor | 1.94d | 2027-08-01 | 2027-08-03 | 2700 |  |
| 2702 |  | 29th Floor | 1.94d | 2027-08-03 | 2027-08-05 | 2701 |  |
| 2703 |  | 30th Floor | 1.94d | 2027-08-05 | 2027-08-07 | 2702 |  |
| 2704 |  | 31st Floor | 0d | 2027-08-07 | 2027-08-07 | 2703 |  |
| 2705 |  | 32nd Floor | 0d | 2027-08-07 | 2027-08-07 | 2704 |  |
| 2706 |  | 33rd Floor | 0d | 2027-08-07 | 2027-08-07 | 2705 |  |
| 2707 |  | 34th Floor | 0d | 2027-08-07 | 2027-08-07 | 2706 |  |
| 2708 |  | 35th Floor | 0d | 2027-08-07 | 2027-08-07 | 2707 |  |
| 2709 | 37200.37300.37500.38100.95300 | **MEP work** | 633.12d | 2026-01-31 | 2027-12-10 |  | start no earlier than 2026-01-31 |
| 2710 | 37200.37300.37500.38100.95300.97400 | **Electrical work** | 233.25d | 2026-09-14 | 2027-06-20 |  | start no earlier than 2026-09-14 |
| 2711 |  | Cable Tray | 89.94d | 2026-09-14 | 2027-01-27 | 2057 |  |
| 2712 |  | Cable, main & sub main | 79.94d | 2026-10-24 | 2027-02-26 | 2711SS+40d |  |
| 2713 |  | LT panel & DB | 119.94d | 2027-01-27 | 2027-05-27 | 2711 |  |
| 2714 |  | Rising main | 89.94d | 2027-03-22 | 2027-06-20 | 2711FS+53.38d |  |
| 2715 |  | EARTHING Works | 59.94d | 2027-02-10 | 2027-04-11 | 2711FS+13.38d |  |
| 2716 |  | Advance lightening protection | 59.94d | 2026-10-23 | 2027-02-05 | 2660 |  |
| 2717 |  | Inverter | 34.94d | 2027-04-11 | 2027-05-15 | 2715 |  |
| 2718 |  | Energy meter | 59.94d | 2027-02-26 | 2027-04-27 | 2712 |  |
| 2719 |  | Exhast fan | 59.94d | 2027-02-16 | 2027-04-17 | 2652FF+4.5d |  |
| 2720 |  | FTTH | 59.94d | 2027-04-02 | 2027-05-31 | 2715FS-9d |  |
| 2721 |  | Security System - FA & PA | 54.94d | 2027-04-07 | 2027-05-31 | 2720FF |  |
| 2722 |  | Solar water heater | 59.94d | 2026-10-23 | 2027-02-05 | 2660 |  |
| 2723 | 37200.37300.37500.38100.95300.122200 | **Plumbing wrok** | 448.75d | 2026-02-26 | 2027-07-05 |  | start no earlier than 2026-02-26 |
| 2724 |  | Terrace looping | 44.94d | 2026-09-13 | 2026-10-28 | 2659 |  |
| 2725 |  | Shaft Plumbing | 119.94d | 2026-10-28 | 2027-04-11 | 2724 |  |
| 2726 |  | CP sanitary fixture supply | 74.94d | 2027-04-21 | 2027-07-05 | 2647, 2650FS+53.38d |  |
| 2727 |  | Cold & flushing water supply | 89.94d | 2026-02-26 | 2026-05-27 | 2663SS+80d |  |
| 2728 |  | Misc work | 29.94d | 2026-05-18 | 2026-06-17 | 2727FS-9d |  |
| 2729 | 37200.37300.37500.38100.95300.128700 | **Fire fighting work** | 345.06d | 2026-01-31 | 2027-02-25 |  | start no earlier than 2026-01-31 |
| 2730 |  | Fire hydrant work | 89.94d | 2026-01-31 | 2026-04-30 | 2663SS+53.38d |  |

| ID | WBS | Task | Duration | Start | Finish | Predecessors | Complete | Constraint |
| --- | --- | --- | --- | --- | --- | --- | --- | --- |
| 2731 |  | Sprinkler & piping work | 88d | 2026-05-27 | 2026-08-23 | 2730FS+26.75d |  |  |
| 2732 |  | Shaft Downtake works | 89.94d | 2026-09-13 | 2027-01-26 | 2659 |  |  |
| 2733 |  | Connection to pump room | 29.94d | 2027-01-26 | 2027-02-25 | 2732 |  |  |
| 2734 | 37200.37300.37500.38100.95300.183700 | **Lift work** | 169.81d | 2026-09-14 | 2027-04-17 |  |  | start no earlier than 2026-09-14 |
| 2735 |  | Lift Shaft Handover | 39.94d | 2026-09-14 | 2026-10-24 | 2057 |  |  |
| 2736 |  | Lift installation work | 44.94d | 2026-10-24 | 2027-01-22 | 2735 |  |  |
| 2737 |  | Lift testing and commissioning | 84.94d | 2027-01-22 | 2027-04-17 | 2736 |  |  |
| 2738 | 37200.37300.37500.38100.95300.193700 | **AC work** | 96.94d | 2027-09-04 | 2027-12-10 |  |  | start no earlier than 2027-09-04 |
| 2739 |  | Split AC | 96.94d | 2027-09-04 | 2027-12-10 | 2755FS-26.75d |  |  |
| 2740 | 37200.37300.37500.38100.126000 | **Tower Completion** | 239.88d | 2026-10-28 | 2027-08-09 |  |  | start no earlier than 2026-10-28 |
| 2741 |  | SURFACE PREPARATION | 79.94d | 2026-10-28 | 2027-03-02 | 2095FS+1.88d |  |  |
| 2742 |  | External Painting | 99.94d | 2027-03-02 | 2027-06-10 | 2741 |  |  |
| 2743 |  | Final coat of painting | 60d | 2027-06-10 | 2027-08-09 | 2742 |  |  |
| 2744 |  | Misc. work | 59.94d | 2027-06-10 | 2027-08-09 | 2742 |  |  |
| 2745 | 37200.37300.37500.38100.193000 | **Basement lobby** | 60d | 2026-04-23 | 2026-06-22 |  |  | start no earlier than 2026-04-23 |
| 2746 |  | Basement lobby | 60d | 2026-04-23 | 2026-06-22 | 2669 |  |  |
| 2747 | 37200.37300.37500.38100.114200 | **Post OC activities** | 316.25d | 2027-04-17 | 2028-02-28 |  |  | start no earlier than 2027-04-17 |
| 2748 |  | Wardrobe installation | 176.94d | 2027-09-04 | 2028-02-28 | 2755FS-26.75d |  |  |
| 2749 |  | CP & SANITARYWARE | 116.94d | 2027-09-04 | 2027-12-30 | 2755FS-26.75d, 2726 |  |  |
| 2750 |  | Wooden Flooring | 176.94d | 2027-09-04 | 2028-02-28 | 2755FS-26.75d |  |  |
| 2751 |  | Electrical Fixtures And Fittings | 74.94d | 2027-04-17 | 2027-07-01 | 2655 |  |  |
| 2752 |  | Modular Kitchen | 176.94d | 2027-09-04 | 2028-02-28 | 2748SS |  |  |
| 2753 |  | Final Coat Paint | 89.94d | 2027-09-17 | 2027-12-16 | 2755FS-13.38d, 2672 |  |  |
| 2754 |  | OC Application/Readiness | 0d | 2027-08-07 | 2027-08-07 | 2057, 2664FS+7.12d, 1869, 1870, 2055, 2667, 2657, 2708, 2713, 2714, 2716, 2717, 2718, 2719, 2721, 2722, 2725, 2728, 2731, 2733, 2737 |  |  |
| 2755 |  | OC Receipt | 0.94d | 2027-09-30 | 2027-09-30 | 2754FS+53.38d, 2743, 2744 |  |  |
| 2756 |  | Offer To Possession | 29.94d | 2028-02-28 | 2028-03-29 | 2748, 2749, 2750, 2751, 2752, 2753 |  |  |
| 2757 | 37200.37300.37500.38200 | **Tower 2** | 1428.31d | 2024-01-10 | 2028-04-06 |  | 3% | start no earlier than 2024-01-10 |
| 2758 | 37200.37300.37500.38200.100200 | **Substructure** | 604.94d | 2024-01-10 | 2025-10-06 |  | 56% | start no earlier than 2024-01-10 |
| 2759 | 37200.37300.37500.38200.100200.113400 | **Soil Bed Preparation** | 476.44d | 2024-01-10 | 2025-05-30 |  | 78% | start no earlier than 2024-01-10 |
| 2760 |  | Test Piling | 24.94d | 2024-02-01 | 2024-02-25 |  | 100% | start no earlier than 2024-02-01 |
| 2761 |  | Excavation | 29.94d | 2024-01-10 | 2024-02-08 | 7SS+36.74d | 100% | start no earlier than 2024-01-10 |
| 2762 |  | Main Piling Work | 169.06d | 2024-04-12 | 2024-10-11 | 7FS-12.45d | 100% | start no earlier than 2024-04-12 |
| 2763 |  | Anti-termite | 4.94d | 2025-04-01 | 2025-04-05 | 2761FS-14.7d, 2762FS+1.94d |  |  |
| 2764 |  | PCC | 9.69d | 2024-10-18 | 2024-10-27 | 2763SS+21.89d | 100% | start no earlier than 2024-10-18 |
| 2765 |  | Backfilling | 59.94d | 2025-04-01 | 2025-05-30 | 2778FS-8d |  |  |
| 2766 | 37200.37300.37500.38200.100200.104300 | **RCC Structure** | 140.94d | 2024-12-16 | 2025-05-05 |  | 76% | start no earlier than 2024-12-16 |
| 2767 | 37200.37300.37500.38200.100200.104300.142700 | **Raft Foundation** | 32d | 2024-12-16 | 2025-01-16 |  | 100% | start no earlier than 2024-12-16 |
| 2768 |  | Reinforcement | 26d | 2024-12-16 | 2025-01-11 | 2764SS+5d | 100% | start no earlier than 2024-12-16 |
| 2769 |  | Formwork | 21d | 2024-12-24 | 2025-01-13 | 2768FF | 100% | start no earlier than 2024-12-24 |
| 2770 |  | Concreting | 4d | 2025-01-13 | 2025-01-16 | 2769FS+2d | 100% | start no earlier than 2025-01-13 |
| 2771 | 37200.37300.37500.38200.100200.104300.142800 | **Basement 1 Slab** | 40d | 2025-01-17 | 2025-02-25 |  | 100% | start no earlier than 2025-01-17 |
| 2772 |  | Reinforcement | 21d | 2025-01-17 | 2025-02-20 | 2770 | 100% | start no earlier than 2025-01-17 |
| 2773 |  | Formwork | 21d | 2025-01-20 | 2025-02-24 | 2772SS+3d | 100% | start no earlier than 2025-01-20 |
| 2774 |  | Concreting | 1d | 2025-02-25 | 2025-02-25 | 2773 | 100% | start no earlier than 2025-02-25 |
| 2775 | 37200.37300.37500.38200.100200.104300.142900 | **Basement 2 Slab/GF** | 25d | 2025-02-13 | 2025-03-09 |  | 100% | start no earlier than 2025-02-13 |
| 2776 |  | Reinforcement | 16d | 2025-02-13 | 2025-03-06 | 2774 | 100% | start no earlier than 2025-02-13 |
| 2777 |  | Formwork | 14d | 2025-02-17 | 2025-03-07 | 2776SS+3d | 100% | start no earlier than 2025-02-17 |
| 2778 |  | Concreting | 3d | 2025-03-01 | 2025-03-09 | 2777FS-6d | 100% | start no earlier than 2025-03-01 |
| 2779 | 37200.37300.37500.38200.100200.104300.183000 | **Podium** | 65.94d | 2025-03-01 | 2025-05-05 |  | 45% | start no earlier than 2025-03-01 |
| 2780 |  | Reinforcement | 42.94d | 2025-03-01 | 2025-05-05 | 2778FS-8d | 55% | start no earlier than 2025-03-01 |
| 2781 |  | Formwork | 39.94d | 2025-03-04 | 2025-05-04 | 2780SS+3d | 45% | start no earlier than 2025-03-04 |
| 2782 |  | Concreting | 9.94d | 2025-04-22 | 2025-05-02 | 2781 |  |  |
| 2783 | 37200.37300.37500.38200.100200.128800 | **Substructure Finishing** | 129.81d | 2025-05-29 | 2025-10-06 |  |  | start no earlier than 2025-05-29 |
| 2784 |  | Masonary work | 44.94d | 2025-05-29 | 2025-07-13 | 2782FS+26.75d |  |  |
| 2785 |  | Plaster | 39.94d | 2025-07-13 | 2025-08-22 | 2784 |  |  |
| 2786 |  | Structural steel | 59.94d | 2025-06-25 | 2025-08-24 | 2782FS+53.38d |  |  |
| 2787 |  | White Wash | 44.94d | 2025-08-22 | 2025-10-06 | 2785 |  |  |
| 2788 | 37200.37300.37500.38200.39100 | **Superstructure** | 733.56d | 2025-05-05 | 2027-08-07 |  |  | start no earlier than 2025-05-05 |
| 2789 | 37200.37300.37500.38200.39100.43600 | **RCC structure** | 442d | 2025-05-05 | 2026-09-04 |  |  | start no earlier than 2025-05-05 |
| 2790 | 37200.37300.37500.38200.39100.43600.143000 | **1st floor slab** | 24d | 2025-05-05 | 2025-05-29 |  |  | start no earlier than 2025-05-05 |
| 2791 |  | Reinforcement | 20d | 2025-05-05 | 2025-05-25 | 2782FS+2.75d |  |  |
| 2792 |  | Wall conduiting | 4d | 2025-05-08 | 2025-05-12 | 2791SS+2.75d |  |  |
| 2793 |  | Formwork | 20d | 2025-05-08 | 2025-05-28 | 2791SS+3d |  |  |
| 2794 |  | Concreting | 1d | 2025-05-28 | 2025-05-29 | 2793 |  |  |
| 2795 | 37200.37300.37500.38200.39100.43600.143100 | **2nd floor slab** | 21d | 2025-06-01 | 2025-06-22 |  |  | start no earlier than 2025-06-01 |
| 2796 |  | Reinforcement | 20d | 2025-06-01 | 2025-06-21 | 2794FS+2.75d |  |  |
| 2797 |  | Wall conduiting | 4d | 2025-06-04 | 2025-06-08 | 2792, 2796SS+2.75d |  |  |
| 2798 |  | Formwork | 20d | 2025-06-01 | 2025-06-21 | 2796SS |  |  |
| 2799 |  | Concreting | 1d | 2025-06-21 | 2025-06-22 | 2798 |  |  |
| 2800 | 37200.37300.37500.38200.39100.43600.143200 | **3rd floor slab** | 15d | 2025-06-23 | 2025-07-08 |  |  | start no earlier than 2025-06-23 |

| ID | WBS | Task | Duration | Start | Finish | Predecessors | Constraint |
| --- | --- | --- | --- | --- | --- | --- | --- |
| 2801 |  | Reinforcement | 11d | 2025-06-23 | 2025-07-04 | 2799FS+1d |  |
| 2802 |  | Wall conduiting | 3d | 2025-06-26 | 2025-06-29 | 2797, 2801SS+2.75d |  |
| 2803 |  | Formwork | 14d | 2025-06-23 | 2025-07-07 | 2801SS |  |
| 2804 |  | Concreting | 1d | 2025-07-07 | 2025-07-08 | 2803 |  |
| 2805 | 37200.37300.37500.38200.39100.43600.143300 | **4th floor slab** | 9d | 2025-07-09 | 2025-07-18 |  | start no earlier than 2025-07-09 |
| 2806 |  | Reinforcement | 8d | 2025-07-09 | 2025-07-17 | 2804FS+1d |  |
| 2807 |  | Wall conduiting | 3d | 2025-07-10 | 2025-07-13 | 2802, 2806SS+1d |  |
| 2808 |  | Formwork | 7d | 2025-07-10 | 2025-07-17 | 2806SS+1d |  |
| 2809 |  | Concreting | 1d | 2025-07-17 | 2025-07-18 | 2808 |  |
| 2810 | 37200.37300.37500.38200.39100.43600.143400 | **5th floor slab** | 9d | 2025-07-19 | 2025-07-28 |  | start no earlier than 2025-07-19 |
| 2811 |  | Reinforcement | 8d | 2025-07-19 | 2025-07-27 | 2809FS+1d |  |
| 2812 |  | Wall conduiting | 3d | 2025-07-20 | 2025-07-23 | 2807, 2811SS+1d |  |
| 2813 |  | Formwork | 7d | 2025-07-20 | 2025-07-27 | 2811SS+1d |  |
| 2814 |  | Concreting | 1d | 2025-07-27 | 2025-07-28 | 2813 |  |
| 2815 | 37200.37300.37500.38200.39100.43600.143500 | **6th floor slab** | 9d | 2025-07-29 | 2025-08-07 |  | start no earlier than 2025-07-29 |
| 2816 |  | Reinforcement | 8d | 2025-07-29 | 2025-08-06 | 2814FS+1d |  |
| 2817 |  | Wall conduiting | 3d | 2025-07-30 | 2025-08-02 | 2812, 2816SS+1d |  |
| 2818 |  | Formwork | 7d | 2025-07-30 | 2025-08-06 | 2816SS+1d |  |
| 2819 |  | Concreting | 1d | 2025-08-06 | 2025-08-07 | 2818 |  |
| 2820 | 37200.37300.37500.38200.39100.43600.143600 | **7th floor slab** | 9d | 2025-08-08 | 2025-08-17 |  | start no earlier than 2025-08-08 |
| 2821 |  | Reinforcement | 8d | 2025-08-08 | 2025-08-16 | 2819FS+1d |  |
| 2822 |  | Wall conduiting | 3d | 2025-08-09 | 2025-08-12 | 2817, 2821SS+1d |  |
| 2823 |  | Formwork | 7d | 2025-08-09 | 2025-08-16 | 2821SS+1d |  |
| 2824 |  | Concreting | 1d | 2025-08-16 | 2025-08-17 | 2823 |  |
| 2825 | 37200.37300.37500.38200.39100.43600.143700 | **8th floor slab** | 12d | 2025-08-18 | 2025-08-30 |  | start no earlier than 2025-08-18 |
| 2826 |  | Reinforcement | 10d | 2025-08-18 | 2025-08-28 | 2824FS+1d |  |
| 2827 |  | Wall conduiting | 3d | 2025-08-19 | 2025-08-22 | 2822, 2826SS+1d |  |
| 2828 |  | Formwork | 10d | 2025-08-19 | 2025-08-29 | 2826SS+1d |  |
| 2829 |  | Concreting | 1d | 2025-08-29 | 2025-08-30 | 2828 |  |
| 2830 | 37200.37300.37500.38200.39100.43600.143800 | **9th floor slab** | 9d | 2025-08-31 | 2025-09-09 |  | start no earlier than 2025-08-31 |
| 2831 |  | Reinforcement | 8d | 2025-08-31 | 2025-09-08 | 2829FS+1d |  |
| 2832 |  | Wall conduiting | 3d | 2025-09-01 | 2025-09-04 | 2827, 2831SS+1d |  |
| 2833 |  | Formwork | 7d | 2025-09-01 | 2025-09-08 | 2831SS+1d |  |
| 2834 |  | Concreting | 1d | 2025-09-08 | 2025-09-09 | 2833 |  |
| 2835 | 37200.37300.37500.38200.39100.43600.143900 | **10th floor slab** | 9d | 2025-09-10 | 2025-09-19 |  | start no earlier than 2025-09-10 |
| 2836 |  | Reinforcement | 8d | 2025-09-10 | 2025-09-18 | 2834FS+1d |  |
| 2837 |  | Wall conduiting | 3d | 2025-09-11 | 2025-09-14 | 2832, 2836SS+1d |  |
| 2838 |  | Formwork | 7d | 2025-09-11 | 2025-09-18 | 2836SS+1d |  |
| 2839 |  | Concreting | 1d | 2025-09-18 | 2025-09-19 | 2838 |  |
| 2840 | 37200.37300.37500.38200.39100.43600.144000 | **11th floor slab** | 9d | 2025-09-20 | 2025-09-29 |  | start no earlier than 2025-09-20 |
| 2841 |  | Reinforcement | 8d | 2025-09-20 | 2025-09-28 | 2839FS+1d |  |
| 2842 |  | Wall conduiting | 3d | 2025-09-21 | 2025-09-24 | 2837, 2841SS+1d |  |
| 2843 |  | Formwork | 7d | 2025-09-21 | 2025-09-28 | 2841SS+1d |  |
| 2844 |  | Concreting | 1d | 2025-09-28 | 2025-09-29 | 2843 |  |
| 2845 | 37200.37300.37500.38200.39100.43600.144100 | **12th floor slab** | 9d | 2025-09-30 | 2025-10-09 |  | start no earlier than 2025-09-30 |
| 2846 |  | Reinforcement | 8d | 2025-09-30 | 2025-10-08 | 2844FS+1d |  |
| 2847 |  | Wall conduiting | 3d | 2025-10-01 | 2025-10-04 | 2842, 2846SS+1d |  |
| 2848 |  | Formwork | 7d | 2025-10-01 | 2025-10-08 | 2846SS+1d |  |
| 2849 |  | Concreting | 1d | 2025-10-08 | 2025-10-09 | 2848 |  |
| 2850 | 37200.37300.37500.38200.39100.43600.144200 | **13th floor slab** | 9d | 2025-10-10 | 2025-10-19 |  | start no earlier than 2025-10-10 |
| 2851 |  | Reinforcement | 8d | 2025-10-10 | 2025-10-18 | 2849FS+1d |  |
| 2852 |  | Wall conduiting | 3d | 2025-10-11 | 2025-10-14 | 2847, 2851SS+1d |  |
| 2853 |  | Formwork | 7d | 2025-10-11 | 2025-10-18 | 2851SS+1d |  |
| 2854 |  | Concreting | 1d | 2025-10-18 | 2025-10-19 | 2853 |  |
| 2855 | 37200.37300.37500.38200.39100.43600.144300 | **14th floor slab** | 9d | 2025-10-20 | 2025-10-29 |  | start no earlier than 2025-10-20 |
| 2856 |  | Reinforcement | 8d | 2025-10-20 | 2025-10-28 | 2854FS+1d |  |
| 2857 |  | Wall conduiting | 3d | 2025-10-21 | 2025-10-24 | 2852, 2856SS+1d |  |
| 2858 |  | Formwork | 7d | 2025-10-21 | 2025-10-28 | 2856SS+1d |  |
| 2859 |  | Concreting | 1d | 2025-10-28 | 2025-10-29 | 2858 |  |
| 2860 | 37200.37300.37500.38200.39100.43600.144400 | **15th floor slab** | 9d | 2025-10-30 | 2025-12-23 |  | start no earlier than 2025-10-30 |
| 2861 |  | Reinforcement | 8d | 2025-10-30 | 2025-12-22 | 2859FS+1d |  |
| 2862 |  | Wall conduiting | 3d | 2025-10-31 | 2025-12-18 | 2857, 2861SS+1d |  |
| 2863 |  | Formwork | 7d | 2025-10-31 | 2025-12-22 | 2861SS+1d |  |
| 2864 |  | Concreting | 1d | 2025-12-22 | 2025-12-23 | 2863 |  |
| 2865 | 37200.37300.37500.38200.39100.43600.144500 | **16th floor slab** | 12d | 2025-12-24 | 2026-01-05 |  | start no earlier than 2025-12-24 |
| 2866 |  | Reinforcement | 10d | 2025-12-24 | 2026-01-03 | 2864FS+1d |  |
| 2867 |  | Wall conduiting | 3d | 2025-12-25 | 2025-12-28 | 2862, 2866SS+1d |  |
| 2868 |  | Formwork | 10d | 2025-12-25 | 2026-01-04 | 2866SS+1d |  |
| 2869 |  | Concreting | 1d | 2026-01-04 | 2026-01-05 | 2868 |  |
| 2870 | 37200.37300.37500.38200.39100.43600.144600 | **17th floor slab** | 9d | 2026-01-06 | 2026-01-15 |  | start no earlier than 2026-01-06 |

| ID | WBS | Task | Duration | Start | Finish | Predecessors | Constraint |
| --- | --- | --- | --- | --- | --- | --- | --- |
| 2871 |  | Reinforcement | 8d | 2026-01-06 | 2026-01-14 | 2869FS+1d |  |
| 2872 |  | Wall conduiting | 3d | 2026-01-07 | 2026-01-10 | 2867, 2871SS+1d |  |
| 2873 |  | Formwork | 7d | 2026-01-07 | 2026-01-14 | 2871SS+1d |  |
| 2874 |  | Concreting | 1d | 2026-01-14 | 2026-01-15 | 2873 |  |
| 2875 | 37200.37300.37500.38200.39100.43600.144700 | **18th floor slab** | 9d | 2026-01-16 | 2026-01-25 |  | start no earlier than 2026-01-16 |
| 2876 |  | Reinforcement | 8d | 2026-01-16 | 2026-01-24 | 2874FS+1d |  |
| 2877 |  | Wall conduiting | 3d | 2026-01-17 | 2026-01-20 | 2872, 2876SS+1d |  |
| 2878 |  | Formwork | 7d | 2026-01-17 | 2026-01-24 | 2876SS+1d |  |
| 2879 |  | Concreting | 1d | 2026-01-24 | 2026-01-25 | 2878 |  |
| 2880 | 37200.37300.37500.38200.39100.43600.144800 | **19th floor slab** | 8d | 2026-01-26 | 2026-02-03 |  | start no earlier than 2026-01-26 |
| 2881 |  | Reinforcement | 7d | 2026-01-26 | 2026-02-02 | 2879FS+1d |  |
| 2882 |  | Wall conduiting | 3d | 2026-01-27 | 2026-01-30 | 2877, 2881SS+1d |  |
| 2883 |  | Formwork | 6d | 2026-01-27 | 2026-02-02 | 2881SS+1d |  |
| 2884 |  | Concreting | 1d | 2026-02-02 | 2026-02-03 | 2883 |  |
| 2885 | 37200.37300.37500.38200.39100.43600.144900 | **20th floor slab** | 8d | 2026-02-04 | 2026-02-12 |  | start no earlier than 2026-02-04 |
| 2886 |  | Reinforcement | 7d | 2026-02-04 | 2026-02-11 | 2884FS+1d |  |
| 2887 |  | Wall conduiting | 3d | 2026-02-05 | 2026-02-08 | 2882, 2886SS+1d |  |
| 2888 |  | Formwork | 6d | 2026-02-05 | 2026-02-11 | 2886SS+1d |  |
| 2889 |  | Concreting | 1d | 2026-02-11 | 2026-02-12 | 2888 |  |
| 2890 | 37200.37300.37500.38200.39100.43600.145000 | **21st floor slab** | 8d | 2026-02-13 | 2026-02-21 |  | start no earlier than 2026-02-13 |
| 2891 |  | Reinforcement | 7d | 2026-02-13 | 2026-02-20 | 2889FS+1d |  |
| 2892 |  | Wall conduiting | 3d | 2026-02-14 | 2026-02-17 | 2887, 2891SS+1d |  |
| 2893 |  | Formwork | 6d | 2026-02-14 | 2026-02-20 | 2891SS+1d |  |
| 2894 |  | Concreting | 1d | 2026-02-20 | 2026-02-21 | 2893 |  |
| 2895 | 37200.37300.37500.38200.39100.43600.145100 | **22nd floor slab** | 8d | 2026-02-22 | 2026-03-02 |  | start no earlier than 2026-02-22 |
| 2896 |  | Reinforcement | 7d | 2026-02-22 | 2026-03-01 | 2894FS+1d |  |
| 2897 |  | Wall conduiting | 3d | 2026-02-23 | 2026-02-26 | 2892, 2896SS+1d |  |
| 2898 |  | Formwork | 6d | 2026-02-23 | 2026-03-01 | 2896SS+1d |  |
| 2899 |  | Concreting | 1d | 2026-03-01 | 2026-03-02 | 2898 |  |
| 2900 | 37200.37300.37500.38200.39100.43600.145200 | **23rd floor slab** | 8d | 2026-03-03 | 2026-03-11 |  | start no earlier than 2026-03-03 |
| 2901 |  | Reinforcement | 7d | 2026-03-03 | 2026-03-10 | 2899FS+1d |  |
| 2902 |  | Wall conduiting | 3d | 2026-03-04 | 2026-03-07 | 2897, 2901SS+1d |  |
| 2903 |  | Formwork | 6d | 2026-03-04 | 2026-03-10 | 2901SS+1d |  |
| 2904 |  | Concreting | 1d | 2026-03-10 | 2026-03-11 | 2903 |  |
| 2905 | 37200.37300.37500.38200.39100.43600.145300 | **24th floor slab** | 12d | 2026-03-11 | 2026-03-23 |  | start no earlier than 2026-03-11 |
| 2906 |  | Reinforcement | 10d | 2026-03-11 | 2026-03-21 | 2904 |  |
| 2907 |  | Wall conduiting | 3d | 2026-03-12 | 2026-03-15 | 2902, 2906SS+1d |  |
| 2908 |  | Formwork | 10d | 2026-03-12 | 2026-03-22 | 2906SS+1d |  |
| 2909 |  | Concreting | 1d | 2026-03-22 | 2026-03-23 | 2908 |  |
| 2910 | 37200.37300.37500.38200.39100.43600.145400 | **25th floor slab** | 12d | 2026-03-24 | 2026-04-05 |  | start no earlier than 2026-03-24 |
| 2911 |  | Reinforcement | 10d | 2026-03-24 | 2026-04-03 | 2909FS+1d |  |
| 2912 |  | Wall conduiting | 3d | 2026-03-25 | 2026-03-28 | 2907, 2911SS+1d |  |
| 2913 |  | Formwork | 10d | 2026-03-25 | 2026-04-04 | 2911SS+1d |  |
| 2914 |  | Concreting | 1d | 2026-04-04 | 2026-04-05 | 2913 |  |
| 2915 | 37200.37300.37500.38200.39100.43600.145500 | **26th floor slab** | 8d | 2026-04-06 | 2026-04-14 |  | start no earlier than 2026-04-06 |
| 2916 |  | Reinforcement | 7d | 2026-04-06 | 2026-04-13 | 2914FS+1d |  |
| 2917 |  | Wall conduiting | 3d | 2026-04-07 | 2026-04-10 | 2912, 2916SS+1d |  |
| 2918 |  | Formwork | 6d | 2026-04-07 | 2026-04-13 | 2916SS+1d |  |
| 2919 |  | Concreting | 1d | 2026-04-13 | 2026-04-14 | 2918 |  |
| 2920 | 37200.37300.37500.38200.39100.43600.145600 | **27th floor slab** | 8d | 2026-04-14 | 2026-04-22 |  | start no earlier than 2026-04-14 |
| 2921 |  | Reinforcement | 7d | 2026-04-14 | 2026-04-21 | 2919 |  |
| 2922 |  | Wall conduiting | 3d | 2026-04-15 | 2026-04-18 | 2917, 2921SS+1d |  |
| 2923 |  | Formwork | 6d | 2026-04-15 | 2026-04-21 | 2921SS+1d |  |
| 2924 |  | Concreting | 1d | 2026-04-21 | 2026-04-22 | 2923 |  |
| 2925 | 37200.37300.37500.38200.39100.43600.145700 | **28th floor slab** | 8d | 2026-04-22 | 2026-04-30 |  | start no earlier than 2026-04-22 |
| 2926 |  | Reinforcement | 7d | 2026-04-22 | 2026-04-29 | 2924 |  |
| 2927 |  | Wall conduiting | 3d | 2026-04-23 | 2026-04-26 | 2922, 2926SS+1d |  |
| 2928 |  | Formwork | 6d | 2026-04-23 | 2026-04-29 | 2926SS+1d |  |
| 2929 |  | Concreting | 1d | 2026-04-29 | 2026-04-30 | 2928 |  |
| 2930 | 37200.37300.37500.38200.39100.43600.145800 | **29th floor slab** | 8d | 2026-04-30 | 2026-05-08 |  | start no earlier than 2026-04-30 |
| 2931 |  | Reinforcement | 7d | 2026-04-30 | 2026-05-07 | 2929 |  |
| 2932 |  | Wall conduiting | 3d | 2026-05-01 | 2026-05-04 | 2927, 2931SS+1d |  |
| 2933 |  | Formwork | 6d | 2026-05-01 | 2026-05-07 | 2931SS+1d |  |
| 2934 |  | Concreting | 1d | 2026-05-07 | 2026-05-08 | 2933 |  |
| 2935 | 37200.37300.37500.38200.39100.43600.145900 | **30th floor slab** | 8d | 2026-05-08 | 2026-05-16 |  | start no earlier than 2026-05-08 |
| 2936 |  | Reinforcement | 7d | 2026-05-08 | 2026-05-15 | 2934 |  |
| 2937 |  | Wall conduiting | 3d | 2026-05-09 | 2026-05-12 | 2932, 2936SS+1d |  |
| 2938 |  | Formwork | 6d | 2026-05-09 | 2026-05-15 | 2936SS+1d |  |
| 2939 |  | Concreting | 1d | 2026-05-15 | 2026-05-16 | 2938 |  |
| 2940 | 37200.37300.37500.38200.39100.43600.146000 | **31st floor slab** | 8d | 2026-05-16 | 2026-05-24 |  | start no earlier than 2026-05-16 |

| ID | WBS | Task | Duration | Start | Finish | Predecessors | Constraint |
| --- | --- | --- | --- | --- | --- | --- | --- |
| 2941 |  | Reinforcement | 7d | 2026-05-16 | 2026-05-23 | 2939 |  |
| 2942 |  | Wall conduiting | 3d | 2026-05-17 | 2026-05-20 | 2937, 2941SS+1d |  |
| 2943 |  | Formwork | 6d | 2026-05-17 | 2026-05-23 | 2941SS+1d |  |
| 2944 |  | Concreting | 1d | 2026-05-23 | 2026-05-24 | 2943 |  |
| 2945 | 37200.37300.37500.38200.39100.43600.146100 | **32nd floor slab** | 12.75d | 2026-05-24 | 2026-06-06 |  | start no earlier than 2026-05-24 |
| 2946 |  | Reinforcement | 9.94d | 2026-05-24 | 2026-06-03 | 2944 |  |
| 2947 |  | Wall conduiting | 1.94d | 2026-05-25 | 2026-05-27 | 2942, 2946SS+1d |  |
| 2948 |  | Formwork | 9.94d | 2026-05-26 | 2026-06-05 | 2946SS+1.88d |  |
| 2949 |  | Concreting | 0.94d | 2026-06-05 | 2026-06-06 | 2948 |  |
| 2950 | 37200.37300.37500.38200.39100.43600.146200 | **33rd floor slab** | 11.75d | 2026-06-06 | 2026-06-17 |  | start no earlier than 2026-06-06 |
| 2951 |  | Reinforcement | 8.94d | 2026-06-06 | 2026-06-15 | 2949 |  |
| 2952 |  | Wall conduiting | 1.94d | 2026-06-07 | 2026-06-09 | 2947, 2951SS+1d |  |
| 2953 |  | Formwork | 8.94d | 2026-06-08 | 2026-06-16 | 2951SS+1.88d |  |
| 2954 |  | Concreting | 0.94d | 2026-06-16 | 2026-06-17 | 2953 |  |
| 2955 | 37200.37300.37500.38200.39100.43600.146300 | **34th floor slab** | 12.75d | 2026-06-17 | 2026-06-30 |  | start no earlier than 2026-06-17 |
| 2956 |  | Reinforcement | 9.94d | 2026-06-17 | 2026-06-27 | 2954 |  |
| 2957 |  | Wall conduiting | 1.94d | 2026-06-18 | 2026-06-20 | 2952, 2956SS+1d |  |
| 2958 |  | Formwork | 9.94d | 2026-06-19 | 2026-06-29 | 2956SS+1.88d |  |
| 2959 |  | Concreting | 0.94d | 2026-06-29 | 2026-06-30 | 2958 |  |
| 2960 | 37200.37300.37500.38200.39100.43600.146400 | **35th floor slab** | 11.75d | 2026-06-30 | 2026-07-12 |  | start no earlier than 2026-06-30 |
| 2961 |  | Reinforcement | 8.94d | 2026-06-30 | 2026-07-09 | 2959 |  |
| 2962 |  | Wall conduiting | 1.94d | 2026-07-01 | 2026-07-03 | 2957, 2961SS+1d |  |
| 2963 |  | Formwork | 7.94d | 2026-07-03 | 2026-07-11 | 2962SS+1.88d |  |
| 2964 |  | Concreting | 0.94d | 2026-07-11 | 2026-07-12 | 2963 |  |
| 2965 | 37200.37300.37500.38200.39100.43600.146500 | **Terrace floor slab** | 14.75d | 2026-07-12 | 2026-07-27 |  | start no earlier than 2026-07-12 |
| 2966 |  | Reinforcement | 10.94d | 2026-07-12 | 2026-07-23 | 2964 |  |
| 2967 |  | Wall conduiting | 1.94d | 2026-07-13 | 2026-07-15 | 2962, 2966SS+1d |  |
| 2968 |  | Formwork | 11.94d | 2026-07-14 | 2026-07-26 | 2966SS+1.88d |  |
| 2969 |  | Concreting | 0.94d | 2026-07-26 | 2026-07-27 | 2968 |  |
| 2970 | 37200.37300.37500.38200.39100.43600.146600 | **OHT & Mumty** | 39.5d | 2026-07-27 | 2026-09-04 |  | start no earlier than 2026-07-27 |
| 2971 |  | Reinforcement | 29.94d | 2026-07-27 | 2026-08-26 | 2969 |  |
| 2972 |  | Wall conduiting | 4.94d | 2026-07-28 | 2026-08-02 | 2967, 2971SS+1d |  |
| 2973 |  | Formwork | 32.94d | 2026-07-30 | 2026-09-01 | 2971SS+3.62d |  |
| 2974 |  | Concreting | 2.94d | 2026-09-01 | 2026-09-04 | 2973 |  |
| 2975 | 37200.37300.37500.38200.39100.45100 | **Post Pour Activities** | 400.25d | 2025-07-28 | 2026-10-16 |  | start no earlier than 2025-07-28 |
| 2976 |  | 1st Floor | 7d | 2025-07-28 | 2025-08-04 | 2814 |  |
| 2977 |  | 2nd Floor | 7d | 2025-08-17 | 2025-08-24 | 2976, 2824 |  |
| 2978 |  | 3rd Floor | 7d | 2025-08-30 | 2025-09-06 | 2977, 2829 |  |
| 2979 |  | 4th Floor | 7d | 2025-09-09 | 2025-09-16 | 2978, 2834 |  |
| 2980 |  | 5th Floor | 7d | 2025-09-19 | 2025-09-26 | 2979, 2839 |  |
| 2981 |  | 6th Floor | 7d | 2025-09-29 | 2025-10-06 | 2980, 2844 |  |
| 2982 |  | 7th Floor | 7d | 2025-10-09 | 2025-10-16 | 2981, 2849 |  |
| 2983 |  | 8th Floor | 7d | 2025-10-19 | 2025-10-26 | 2982, 2854 |  |
| 2984 |  | 9th Floor | 7d | 2025-10-29 | 2025-12-20 | 2983, 2859 |  |
| 2985 |  | 10th Floor | 7d | 2025-12-23 | 2025-12-30 | 2984, 2864 |  |
| 2986 |  | 11th Floor | 7d | 2026-01-05 | 2026-01-12 | 2985, 2869 |  |
| 2987 |  | 12th Floor | 7d | 2026-01-15 | 2026-01-22 | 2986, 2874 |  |
| 2988 |  | 13th Floor | 7d | 2026-01-25 | 2026-02-01 | 2987, 2879 |  |
| 2989 |  | 14th Floor | 7d | 2026-02-03 | 2026-02-10 | 2988, 2884 |  |
| 2990 |  | 15th Floor | 7d | 2026-02-12 | 2026-02-19 | 2989, 2889 |  |
| 2991 |  | 16th Floor | 7d | 2026-02-21 | 2026-02-28 | 2990, 2894 |  |
| 2992 |  | 17th Floor | 7d | 2026-03-02 | 2026-03-09 | 2991, 2899 |  |
| 2993 |  | 18th Floor | 7d | 2026-03-11 | 2026-03-18 | 2992, 2904 |  |
| 2994 |  | 19th Floor | 7d | 2026-03-23 | 2026-03-30 | 2993, 2909 |  |
| 2995 |  | 20th Floor | 7d | 2026-04-05 | 2026-04-12 | 2994, 2914 |  |
| 2996 |  | 21st Floor | 7d | 2026-04-14 | 2026-04-21 | 2995, 2919 |  |
| 2997 |  | 22nd Floor | 7d | 2026-04-22 | 2026-04-29 | 2996, 2924 |  |
| 2998 |  | 23rd Floor | 7d | 2026-04-30 | 2026-05-07 | 2997, 2929 |  |
| 2999 |  | 24th Floor | 7d | 2026-05-08 | 2026-05-15 | 2998, 2934 |  |
| 3000 |  | 25th Floor | 7d | 2026-05-16 | 2026-05-23 | 2999, 2939 |  |
| 3001 |  | 26th Floor | 7d | 2026-05-24 | 2026-05-31 | 3000, 2944 |  |
| 3002 |  | 27th Floor | 7d | 2026-06-06 | 2026-06-13 | 3001, 2949 |  |
| 3003 |  | 28th Floor | 7d | 2026-06-17 | 2026-06-24 | 3002, 2954 |  |
| 3004 |  | 29th Floor | 7d | 2026-06-30 | 2026-07-07 | 3003, 2959 |  |
| 3005 |  | 30th Floor | 7d | 2026-07-12 | 2026-07-19 | 3004, 2964 |  |
| 3006 |  | 31st Floor | 7d | 2026-07-27 | 2026-08-03 | 3005, 2969 |  |
| 3007 |  | 32nd Flood | 7d | 2026-09-04 | 2026-09-11 | 3006, 2974 |  |
| 3008 |  | 33rd Floor | 7d | 2026-09-11 | 2026-09-18 | 3007 |  |
| 3009 |  | 34th Floor | 7d | 2026-09-18 | 2026-09-25 | 3008 |  |
| 3010 |  | 35th Floor | 7d | 2026-09-25 | 2026-10-02 | 3009 |  |

| ID | WBS | Task | Duration | Start | Finish | Predecessors | Constraint |
| --- | --- | --- | --- | --- | --- | --- | --- |
| 3011 |  | Terrace | 7d | 2026-10-02 | 2026-10-09 | 3010 |  |
| 3012 |  | Mumty & Machine Room | 7d | 2026-10-09 | 2026-10-16 | 3011 |  |
| 3013 | 37200.37300.37500.38200.39100.40600 | **Finishing work** | 642.56d | 2025-08-04 | 2027-08-07 |  | start no earlier than 2025-08-04 |
| 3014 | 37200.37300.37500.38200.39100.40600.41600 | **Flat finishing** | 544.19d | 2025-08-04 | 2027-04-30 |  | start no earlier than 2025-08-04 |
| 3015 | 37200.37300.37500.38200.39100.40600.41600.84000 | **1st Floor** | 61.25d | 2025-08-04 | 2025-10-04 |  | start no earlier than 2025-08-04 |
| 3016 |  | Block Work | 8d | 2025-08-04 | 2025-08-12 | 2976FS+0.25d |  |
| 3017 |  | Door Frame Fixing | 9d | 2025-08-12 | 2025-08-21 | 3016 |  |
| 3018 |  | Internal Plumbing Works | 8d | 2025-08-12 | 2025-08-20 | 3016 |  |
| 3019 |  | Waterproofing | 10d | 2025-08-20 | 2025-08-30 | 3018 |  |
| 3020 |  | Internal Plaster | 8d | 2025-08-13 | 2025-08-21 | 3016FS+1d |  |
| 3021 |  | IPS flooring work | 10d | 2025-08-30 | 2025-09-09 | 3017, 3018, 3019 |  |
| 3022 |  | Toilet dado work | 8d | 2025-08-17 | 2025-08-25 | 2824 |  |
| 3023 |  | Toilet flooring work | 8d | 2025-08-25 | 2025-09-02 | 3022 |  |
| 3024 |  | Living dinning flooring | 12d | 2025-08-21 | 2025-09-02 | 3017FS+0.25d |  |
| 3025 |  | Aluminium door-window fixing | 12d | 2025-09-09 | 2025-09-21 | 3021FS+0.25d |  |
| 3026 |  | Putty primer coat | 6d | 2025-09-02 | 2025-09-08 | 3024 |  |
| 3027 |  | Door shutter fixing | 8d | 2025-09-02 | 2025-09-10 | 3024 |  |
| 3028 |  | Electrical wiring work | 8d | 2025-09-10 | 2025-09-18 | 3027 |  |
| 3029 |  | Painting 1st coat | 8d | 2025-09-18 | 2025-09-26 | 3026, 3027, 3028 |  |
| 3030 |  | False ceiling | 8d | 2025-09-26 | 2025-10-04 | 3029 |  |
| 3031 | 37200.37300.37500.38200.39100.40600.41600.83900 | **2nd Floor** | 65.25d | 2025-08-12 | 2025-10-17 |  | start no earlier than 2025-08-12 |
| 3032 |  | Block Work | 8d | 2025-08-12 | 2025-08-20 | 3016FS+0.25d |  |
| 3033 |  | Door Frame Fixing | 9d | 2025-08-21 | 2025-08-30 | 3017, 3032 |  |
| 3034 |  | Internal Plumbing Works | 8d | 2025-08-20 | 2025-08-28 | 3018, 3032 |  |
| 3035 |  | Waterproofing | 10d | 2025-08-30 | 2025-09-09 | 3019, 3034 |  |
| 3036 |  | Internal Plaster | 8d | 2025-08-21 | 2025-08-29 | 3032FS+0.25d |  |
| 3037 |  | IPS flooring work | 10d | 2025-09-09 | 2025-09-19 | 3021, 3033, 3034, 3035 |  |
| 3038 |  | Toilet dado work | 8d | 2025-08-25 | 2025-09-02 | 3022FS+0.25d |  |
| 3039 |  | Toilet flooring work | 8d | 2025-09-02 | 2025-09-10 | 3023, 3038 |  |
| 3040 |  | Living dinning flooring | 12d | 2025-09-03 | 2025-09-15 | 3024FS+0.25d |  |
| 3041 |  | Aluminium door-window fixing | 12d | 2025-09-22 | 2025-10-04 | 3025FS+0.25d |  |
| 3042 |  | Putty primer coat | 6d | 2025-09-15 | 2025-09-21 | 3026, 3040 |  |
| 3043 |  | Door shutter fixing | 8d | 2025-09-15 | 2025-09-23 | 3027, 3040 |  |
| 3044 |  | Electrical wiring work | 8d | 2025-09-23 | 2025-10-01 | 3028, 3043 |  |
| 3045 |  | Painting 1st coat | 8d | 2025-10-01 | 2025-10-09 | 3029, 3042, 3043, 3044 |  |
| 3046 |  | False ceiling | 8d | 2025-10-09 | 2025-10-17 | 3030, 3045 |  |
| 3047 | 37200.37300.37500.38200.39100.40600.41600.83800 | **3rd Floor** | 69.25d | 2025-08-21 | 2025-10-29 |  | start no earlier than 2025-08-21 |
| 3048 |  | Block Work | 8d | 2025-08-21 | 2025-08-29 | 3032FS+0.25d |  |
| 3049 |  | Door Frame Fixing | 9d | 2025-08-30 | 2025-09-08 | 3033, 3048 |  |
| 3050 |  | Internal Plumbing Works | 8d | 2025-08-29 | 2025-09-06 | 3034, 3048 |  |
| 3051 |  | Waterproofing | 10d | 2025-09-09 | 2025-09-19 | 3035, 3050 |  |
| 3052 |  | Internal Plaster | 8d | 2025-08-29 | 2025-09-06 | 3036FS+0.25d |  |
| 3053 |  | IPS flooring work | 10d | 2025-09-19 | 2025-09-29 | 3037, 3049, 3051, 3052 |  |
| 3054 |  | Toilet dado work | 8d | 2025-09-02 | 2025-09-10 | 3038FS+0.25d |  |
| 3055 |  | Toilet flooring work | 8d | 2025-09-10 | 2025-09-18 | 3039, 3054 |  |
| 3056 |  | Living dinning flooring | 12d | 2025-09-15 | 2025-09-27 | 3040FS+0.25d |  |
| 3057 |  | Aluminium door-window fixing | 12d | 2025-10-04 | 2025-10-16 | 3041FS+0.25d |  |
| 3058 |  | Putty primer coat | 6d | 2025-09-27 | 2025-10-03 | 3042, 3056 |  |
| 3059 |  | Door shutter fixing | 8d | 2025-09-27 | 2025-10-05 | 3043, 3056 |  |
| 3060 |  | Electrical wiring work | 8d | 2025-10-05 | 2025-10-13 | 3044, 3059 |  |
| 3061 |  | Painting 1st coat | 8d | 2025-10-13 | 2025-10-21 | 3045, 3058, 3059, 3060 |  |
| 3062 |  | False ceiling | 8d | 2025-10-21 | 2025-10-29 | 3046, 3061 |  |
| 3063 | 37200.37300.37500.38200.39100.40600.41600.83700 | **4th Floor** | 73.25d | 2025-08-29 | 2025-12-25 |  | start no earlier than 2025-08-29 |
| 3064 |  | Block Work | 8d | 2025-08-29 | 2025-09-06 | 3048FS+0.25d |  |
| 3065 |  | Door Frame Fixing | 9d | 2025-09-08 | 2025-09-17 | 3049, 3064 |  |
| 3066 |  | Internal Plumbing Works | 8d | 2025-09-06 | 2025-09-14 | 3050, 3064 |  |
| 3067 |  | Waterproofing | 10d | 2025-09-19 | 2025-09-29 | 3051, 3066 |  |
| 3068 |  | Internal Plaster | 8d | 2025-09-06 | 2025-09-14 | 3052FS+0.25d |  |
| 3069 |  | IPS flooring work | 10d | 2025-09-29 | 2025-10-09 | 3053, 3065, 3067, 3068 |  |
| 3070 |  | Toilet dado work | 8d | 2025-09-11 | 2025-09-19 | 3054FS+0.25d |  |
| 3071 |  | Toilet flooring work | 8d | 2025-09-19 | 2025-09-27 | 3055, 3070 |  |
| 3072 |  | Living dinning flooring | 12d | 2025-09-27 | 2025-10-09 | 3056FS+0.25d |  |
| 3073 |  | Aluminium door-window fixing | 12d | 2025-10-16 | 2025-10-28 | 3057FS+0.25d |  |
| 3074 |  | Putty primer coat | 6d | 2025-10-09 | 2025-10-15 | 3058, 3072 |  |
| 3075 |  | Door shutter fixing | 8d | 2025-10-09 | 2025-10-17 | 3059, 3072 |  |
| 3076 |  | Electrical wiring work | 8d | 2025-10-17 | 2025-10-25 | 3060, 3075 |  |
| 3077 |  | Painting 1st coat | 8d | 2025-10-25 | 2025-12-17 | 3061, 3074, 3075, 3076 |  |
| 3078 |  | False ceiling | 8d | 2025-12-17 | 2025-12-25 | 3062, 3077 |  |
| 3079 | 37200.37300.37500.38200.39100.40600.41600.83600 | **5th Floor** | 77.25d | 2025-09-06 | 2026-01-06 |  | start no earlier than 2025-09-06 |
| 3080 |  | Block Work | 8d | 2025-09-06 | 2025-09-14 | 3064FS+0.25d |  |

| ID | WBS | Task | Duration | Start | Finish | Predecessors | Constraint |
| --- | --- | --- | --- | --- | --- | --- | --- |
| 3081 |  | Door Frame Fixing | 9d | 2025-09-17 | 2025-09-26 | 3065, 3080 |  |
| 3082 |  | Internal Plumbing Works | 8d | 2025-09-14 | 2025-09-22 | 3066, 3080 |  |
| 3083 |  | Waterproofing | 10d | 2025-09-29 | 2025-10-09 | 3067, 3082 |  |
| 3084 |  | Internal Plaster | 8d | 2025-09-14 | 2025-09-22 | 3068FS+0.25d |  |
| 3085 |  | IPS flooring work | 10d | 2025-10-09 | 2025-10-19 | 3069, 3081, 3083, 3084 |  |
| 3086 |  | Toilet dado work | 8d | 2025-10-09 | 2025-10-17 | 3070, 3083, 3084 |  |
| 3087 |  | Toilet flooring work | 8d | 2025-10-17 | 2025-10-25 | 3071, 3086 |  |
| 3088 |  | Living dinning flooring | 12d | 2025-10-09 | 2025-10-21 | 3072FS+0.25d |  |
| 3089 |  | Aluminium door-window fixing | 12d | 2025-10-28 | 2025-12-24 | 3073FS+0.25d |  |
| 3090 |  | Putty primer coat | 6d | 2025-10-21 | 2025-10-27 | 3074, 3088 |  |
| 3091 |  | Door shutter fixing | 8d | 2025-10-21 | 2025-10-29 | 3075, 3088 |  |
| 3092 |  | Electrical wiring work | 8d | 2025-10-29 | 2025-12-21 | 3076, 3091 |  |
| 3093 |  | Painting 1st coat | 8d | 2025-12-21 | 2025-12-29 | 3077, 3090, 3091, 3092 |  |
| 3094 |  | False ceiling | 8d | 2025-12-29 | 2026-01-06 | 3078, 3093 |  |
| 3095 | 37200.37300.37500.38200.39100.40600.41600.83500 | **6th Floor** | 81.25d | 2025-09-14 | 2026-01-19 |  | start no earlier than 2025-09-14 |
| 3096 |  | Block Work | 8d | 2025-09-14 | 2025-09-22 | 3080FS+0.25d |  |
| 3097 |  | Door Frame Fixing | 9d | 2025-09-26 | 2025-10-05 | 2829, 3081 |  |
| 3098 |  | Internal Plumbing Works | 8d | 2025-09-22 | 2025-09-30 | 3082, 3096 |  |
| 3099 |  | Waterproofing | 10d | 2025-10-09 | 2025-10-19 | 3083, 3098 |  |
| 3100 |  | Internal Plaster | 8d | 2025-09-23 | 2025-10-01 | 3084FS+0.25d |  |
| 3101 |  | IPS flooring work | 10d | 2025-10-19 | 2025-10-29 | 3085, 3097, 3099, 3100 |  |
| 3102 |  | Toilet dado work | 8d | 2025-10-19 | 2025-10-27 | 3086, 3099, 3100 |  |
| 3103 |  | Toilet flooring work | 8d | 2025-10-27 | 2025-12-19 | 3087, 3102 |  |
| 3104 |  | Living dinning flooring | 12d | 2025-10-22 | 2025-12-18 | 3088FS+0.25d |  |
| 3105 |  | Aluminium door-window fixing | 12d | 2025-12-25 | 2026-01-06 | 3089FS+0.25d |  |
| 3106 |  | Putty primer coat | 6d | 2025-12-18 | 2025-12-24 | 3090, 3104 |  |
| 3107 |  | Door shutter fixing | 8d | 2025-12-18 | 2025-12-26 | 3091, 3104 |  |
| 3108 |  | Electrical wiring work | 8d | 2025-12-26 | 2026-01-03 | 3092, 3107 |  |
| 3109 |  | Painting 1st coat | 8d | 2026-01-03 | 2026-01-11 | 3093, 3106, 3107, 3108 |  |
| 3110 |  | False ceiling | 8d | 2026-01-11 | 2026-01-19 | 3094, 3109 |  |
| 3111 | 37200.37300.37500.38200.39100.40600.41600.83400 | **7th Floor** | 85.25d | 2025-09-23 | 2026-01-31 |  | start no earlier than 2025-09-23 |
| 3112 |  | Block Work | 8d | 2025-09-23 | 2025-10-01 | 3096FS+0.25d |  |
| 3113 |  | Door Frame Fixing | 9d | 2025-10-05 | 2025-10-14 | 3097, 3112 |  |
| 3114 |  | Internal Plumbing Works | 8d | 2025-10-01 | 2025-10-09 | 3098, 3112 |  |
| 3115 |  | Waterproofing | 10d | 2025-10-19 | 2025-10-29 | 3099, 3114 |  |
| 3116 |  | Internal Plaster | 8d | 2025-10-01 | 2025-10-09 | 3100FS+0.25d |  |
| 3117 |  | IPS flooring work | 10d | 2025-10-29 | 2025-12-23 | 3101, 3113, 3115, 3116 |  |
| 3118 |  | Toilet dado work | 8d | 2025-10-29 | 2025-12-21 | 3102, 3115, 3116 |  |
| 3119 |  | Toilet flooring work | 8d | 2025-12-21 | 2025-12-29 | 3103, 3118 |  |
| 3120 |  | Living dinning flooring | 12d | 2025-12-18 | 2025-12-30 | 3104FS+0.25d |  |
| 3121 |  | Aluminium door-window fixing | 12d | 2026-01-06 | 2026-01-18 | 3105FS+0.25d |  |
| 3122 |  | Putty primer coat | 6d | 2025-12-30 | 2026-01-05 | 3106, 3120 |  |
| 3123 |  | Door shutter fixing | 8d | 2025-12-30 | 2026-01-07 | 3107, 3120 |  |
| 3124 |  | Electrical wiring work | 8d | 2026-01-07 | 2026-01-15 | 3108, 3123 |  |
| 3125 |  | Painting 1st coat | 8d | 2026-01-15 | 2026-01-23 | 3109, 3122, 3123, 3124 |  |
| 3126 |  | False ceiling | 8d | 2026-01-23 | 2026-01-31 | 3110, 3125 |  |
| 3127 | 37200.37300.37500.38200.39100.40600.41600.83300 | **8th Floor** | 89.25d | 2025-10-01 | 2026-02-12 |  | start no earlier than 2025-10-01 |
| 3128 |  | Block Work | 8d | 2025-10-01 | 2025-10-09 | 3112FS+0.25d |  |
| 3129 |  | Door Frame Fixing | 9d | 2025-10-14 | 2025-10-23 | 3113, 3128 |  |
| 3130 |  | Internal Plumbing Works | 8d | 2025-10-09 | 2025-10-17 | 3114, 3128 |  |
| 3131 |  | Waterproofing | 10d | 2025-10-29 | 2025-12-23 | 3115, 3130 |  |
| 3132 |  | Internal Plaster | 8d | 2025-10-09 | 2025-10-17 | 3116FS+0.25d |  |
| 3133 |  | IPS flooring work | 10d | 2025-12-23 | 2026-01-02 | 3117, 3129, 3131, 3132 |  |
| 3134 |  | Toilet dado work | 8d | 2025-12-23 | 2025-12-31 | 3118, 3131, 3132 |  |
| 3135 |  | Toilet flooring work | 8d | 2025-12-31 | 2026-01-08 | 3119, 3134 |  |
| 3136 |  | Living dinning flooring | 12d | 2025-12-30 | 2026-01-11 | 3120FS+0.25d |  |
| 3137 |  | Aluminium door-window fixing | 12d | 2026-01-18 | 2026-01-30 | 3121FS+0.25d |  |
| 3138 |  | Putty primer coat | 6d | 2026-01-11 | 2026-01-17 | 3122, 3136 |  |
| 3139 |  | Door shutter fixing | 8d | 2026-01-11 | 2026-01-19 | 3123, 3136 |  |
| 3140 |  | Electrical wiring work | 8d | 2026-01-19 | 2026-01-27 | 3124, 3139 |  |
| 3141 |  | Painting 1st coat | 8d | 2026-01-27 | 2026-02-04 | 3125, 3138, 3139, 3140 |  |
| 3142 |  | False ceiling | 8d | 2026-02-04 | 2026-02-12 | 3126, 3141 |  |
| 3143 | 37200.37300.37500.38200.39100.40600.41600.83200 | **9th Floor** | 93.25d | 2025-10-09 | 2026-02-24 |  | start no earlier than 2025-10-09 |
| 3144 |  | Block Work | 8d | 2025-10-09 | 2025-10-17 | 3128FS+0.25d |  |
| 3145 |  | Door Frame Fixing | 9d | 2025-10-23 | 2025-12-16 | 3129, 3144 |  |
| 3146 |  | Internal Plumbing Works | 8d | 2025-10-17 | 2025-10-25 | 3130, 3144 |  |
| 3147 |  | Waterproofing | 10d | 2025-12-23 | 2026-01-02 | 3131, 3146 |  |
| 3148 |  | Internal Plaster | 8d | 2025-10-17 | 2025-10-25 | 3132FS+0.25d |  |
| 3149 |  | IPS flooring work | 10d | 2026-01-02 | 2026-01-12 | 3133, 3145, 3147, 3148 |  |
| 3150 |  | Toilet dado work | 8d | 2026-01-02 | 2026-01-10 | 3134, 3147, 3148 |  |

| ID | WBS | Task | Duration | Start | Finish | Predecessors | Constraint |
| --- | --- | --- | --- | --- | --- | --- | --- |
| 3151 |  | Toilet flooring work | 8d | 2026-01-10 | 2026-01-18 | 3135, 3150 |  |
| 3152 |  | Living dinning flooring | 12d | 2026-01-11 | 2026-01-23 | 3136FS+0.25d |  |
| 3153 |  | Aluminium door-window fixing | 12d | 2026-01-30 | 2026-02-11 | 3137FS+0.25d |  |
| 3154 |  | Putty primer coat | 6d | 2026-01-23 | 2026-01-29 | 3138, 3152 |  |
| 3155 |  | Door shutter fixing | 8d | 2026-01-23 | 2026-01-31 | 3139, 3152 |  |
| 3156 |  | Electrical wiring work | 8d | 2026-01-31 | 2026-02-08 | 3140, 3155 |  |
| 3157 |  | Painting 1st coat | 8d | 2026-02-08 | 2026-02-16 | 3141, 3154, 3155, 3156 |  |
| 3158 |  | False ceiling | 8d | 2026-02-16 | 2026-02-24 | 3142, 3157 |  |
| 3159 | 37200.37300.37500.38200.39100.40600.41600.83100 | **10th Floor** | 97.25d | 2025-10-17 | 2026-03-09 |  | start no earlier than 2025-10-17 |
| 3160 |  | Block Work | 8d | 2025-10-17 | 2025-10-25 | 3144FS+0.25d |  |
| 3161 |  | Door Frame Fixing | 9d | 2025-12-16 | 2025-12-25 | 3145, 3160 |  |
| 3162 |  | Internal Plumbing Works | 8d | 2025-10-25 | 2025-12-17 | 3146, 3160 |  |
| 3163 |  | Waterproofing | 10d | 2026-01-02 | 2026-01-12 | 3147, 3162 |  |
| 3164 |  | Internal Plaster | 8d | 2025-10-26 | 2025-12-18 | 3148FS+0.25d |  |
| 3165 |  | IPS flooring work | 10d | 2026-01-12 | 2026-01-22 | 3149, 3161, 3163, 3164 |  |
| 3166 |  | Toilet dado work | 8d | 2026-01-12 | 2026-01-20 | 3150, 3163, 3164 |  |
| 3167 |  | Toilet flooring work | 8d | 2026-01-20 | 2026-01-28 | 3151, 3166 |  |
| 3168 |  | Living dinning flooring | 12d | 2026-01-24 | 2026-02-05 | 3152FS+0.25d |  |
| 3169 |  | Aluminium door-window fixing | 12d | 2026-02-12 | 2026-02-24 | 3153FS+0.25d |  |
| 3170 |  | Putty primer coat | 6d | 2026-02-05 | 2026-02-11 | 3154, 3168 |  |
| 3171 |  | Door shutter fixing | 8d | 2026-02-05 | 2026-02-13 | 3155, 3168 |  |
| 3172 |  | Electrical wiring work | 8d | 2026-02-13 | 2026-02-21 | 3156, 3171 |  |
| 3173 |  | Painting 1st coat | 8d | 2026-02-21 | 2026-03-01 | 3157, 3170, 3171, 3172 |  |
| 3174 |  | False ceiling | 8d | 2026-03-01 | 2026-03-09 | 3158, 3173 |  |
| 3175 | 37200.37300.37500.38200.39100.40600.41600.83000 | **11th Floor** | 97d | 2025-10-26 | 2026-03-17 |  | start no earlier than 2025-10-26 |
| 3176 |  | Block Work | 8d | 2025-10-26 | 2025-12-18 | 3160FS+0.25d |  |
| 3177 |  | Door Frame Fixing | 9d | 2025-12-25 | 2026-01-03 | 3161, 3176 |  |
| 3178 |  | Internal Plumbing Works | 8d | 2025-12-18 | 2025-12-26 | 3162, 3176 |  |
| 3179 |  | Waterproofing | 10d | 2026-01-12 | 2026-01-22 | 3163, 3178 |  |
| 3180 |  | Internal Plaster | 8d | 2025-12-18 | 2025-12-26 | 3164FS+0.25d |  |
| 3181 |  | IPS flooring work | 10d | 2026-01-22 | 2026-02-01 | 3165, 3177, 3178, 3179 |  |
| 3182 |  | Toilet dado work | 8d | 2026-01-22 | 2026-01-30 | 3166, 3179, 3180 |  |
| 3183 |  | Toilet flooring work | 8d | 2026-01-30 | 2026-02-07 | 3167, 3182 |  |
| 3184 |  | Living dinning flooring | 7d | 2026-02-05 | 2026-02-12 | 3168FS+0.25d |  |
| 3185 |  | Aluminium door-window fixing | 12d | 2026-02-24 | 2026-03-08 | 3169FS+0.25d |  |
| 3186 |  | Putty primer coat | 6d | 2026-02-12 | 2026-02-18 | 3170, 3184 |  |
| 3187 |  | Door shutter fixing | 8d | 2026-02-13 | 2026-02-21 | 3171, 3184 |  |
| 3188 |  | Electrical wiring work | 8d | 2026-02-21 | 2026-03-01 | 3172, 3187 |  |
| 3189 |  | Painting 1st coat | 8d | 2026-03-01 | 2026-03-09 | 3173, 3186, 3187, 3188 |  |
| 3190 |  | False ceiling | 8d | 2026-03-09 | 2026-03-17 | 3174, 3189 |  |
| 3191 | 37200.37300.37500.38200.39100.40600.41600.82900 | **12th Floor** | 100.25d | 2025-12-18 | 2026-03-28 |  | start no earlier than 2025-12-18 |
| 3192 |  | Block Work | 8d | 2025-12-18 | 2025-12-26 | 3176FS+0.25d |  |
| 3193 |  | Door Frame Fixing | 9d | 2026-01-03 | 2026-01-12 | 3177, 3192 |  |
| 3194 |  | Internal Plumbing Works | 8d | 2025-12-26 | 2026-01-03 | 3178, 3192 |  |
| 3195 |  | Waterproofing | 10d | 2026-01-22 | 2026-02-01 | 3179, 3194 |  |
| 3196 |  | Internal Plaster | 8d | 2025-12-26 | 2026-01-03 | 3180FS+0.25d |  |
| 3197 |  | IPS flooring work | 10d | 2026-02-01 | 2026-02-11 | 3181, 3193, 3194, 3195 |  |
| 3198 |  | Toilet dado work | 8d | 2026-02-01 | 2026-02-09 | 3182, 3195, 3196 |  |
| 3199 |  | Toilet flooring work | 8d | 2026-02-09 | 2026-02-17 | 3183, 3198 |  |
| 3200 |  | Living dinning flooring | 12d | 2026-02-12 | 2026-02-24 | 3184FS+0.25d |  |
| 3201 |  | Aluminium door-window fixing | 12d | 2026-03-08 | 2026-03-20 | 3185FS+0.25d |  |
| 3202 |  | Putty primer coat | 6d | 2026-02-24 | 2026-03-02 | 3186, 3200 |  |
| 3203 |  | Door shutter fixing | 8d | 2026-02-24 | 2026-03-04 | 3187, 3200 |  |
| 3204 |  | Electrical wiring work | 8d | 2026-03-04 | 2026-03-12 | 3188, 3203 |  |
| 3205 |  | Painting 1st coat | 8d | 2026-03-12 | 2026-03-20 | 3189, 3202, 3203, 3204 |  |
| 3206 |  | False ceiling | 8d | 2026-03-20 | 2026-03-28 | 3190, 3205 |  |
| 3207 | 37200.37300.37500.38200.39100.40600.41600.82800 | **13th Floor** | 100.25d | 2025-12-26 | 2026-04-05 |  | start no earlier than 2025-12-26 |
| 3208 |  | Block Work | 8d | 2025-12-26 | 2026-01-03 | 3192FS+0.25d |  |
| 3209 |  | Door Frame Fixing | 9d | 2026-01-12 | 2026-01-21 | 3193, 3208 |  |
| 3210 |  | Internal Plumbing Works | 8d | 2026-01-03 | 2026-01-11 | 3194, 3208 |  |
| 3211 |  | Waterproofing | 10d | 2026-02-01 | 2026-02-11 | 3195, 3210 |  |
| 3212 |  | Internal Plaster | 8d | 2026-01-03 | 2026-01-11 | 3196FS+0.25d |  |
| 3213 |  | IPS flooring work | 10d | 2026-02-11 | 2026-02-21 | 3197, 3209, 3211, 3212 |  |
| 3214 |  | Toilet dado work | 8d | 2026-02-11 | 2026-02-19 | 3198, 3211, 3212 |  |
| 3215 |  | Toilet flooring work | 8d | 2026-02-19 | 2026-02-27 | 3199, 3214 |  |
| 3216 |  | Living dinning flooring | 8d | 2026-02-24 | 2026-03-04 | 3200FS+0.25d |  |
| 3217 |  | Aluminium door-window fixing | 11d | 2026-03-20 | 2026-03-31 | 3201FS+0.25d |  |
| 3218 |  | Putty primer coat | 6d | 2026-03-04 | 2026-03-10 | 3202, 3216 |  |
| 3219 |  | Door shutter fixing | 8d | 2026-03-04 | 2026-03-12 | 3203, 3216 |  |
| 3220 |  | Electrical wiring work | 8d | 2026-03-12 | 2026-03-20 | 3204, 3219 |  |

| ID | WBS | Task | Duration | Start | Finish | Predecessors | Constraint |
| --- | --- | --- | --- | --- | --- | --- | --- |
| 3221 |  | Painting 1st coat | 8d | 2026-03-20 | 2026-03-28 | 3205, 3218, 3219, 3220 |  |
| 3222 |  | False ceiling | 8d | 2026-03-28 | 2026-04-05 | 3206, 3221 |  |
| 3223 | 37200.37300.37500.38200.39100.40600.41600.82700 | **14th Floor** | 100.25d | 2026-01-03 | 2026-04-14 |  | start no earlier than 2026-01-03 |
| 3224 |  | Block Work | 8d | 2026-01-03 | 2026-01-11 | 3208FS+0.25d |  |
| 3225 |  | Door Frame Fixing | 9d | 2026-01-21 | 2026-01-30 | 3209, 3224 |  |
| 3226 |  | Internal Plumbing Works | 8d | 2026-01-11 | 2026-01-19 | 3210, 3224 |  |
| 3227 |  | Waterproofing | 10d | 2026-02-11 | 2026-02-21 | 3211, 3226 |  |
| 3228 |  | Internal Plaster | 8d | 2026-01-12 | 2026-01-20 | 3212FS+0.25d |  |
| 3229 |  | IPS flooring work | 10d | 2026-02-21 | 2026-03-03 | 3213, 3225, 3226, 3227 |  |
| 3230 |  | Toilet dado work | 8d | 2026-02-21 | 2026-03-01 | 3214, 3227, 3228 |  |
| 3231 |  | Toilet flooring work | 8d | 2026-03-01 | 2026-03-09 | 3215, 3230 |  |
| 3232 |  | Living dinning flooring | 8d | 2026-03-05 | 2026-03-13 | 3216FS+0.25d |  |
| 3233 |  | Aluminium door-window fixing | 12d | 2026-04-01 | 2026-04-13 | 3217FS+0.25d |  |
| 3234 |  | Putty primer coat | 6d | 2026-03-13 | 2026-03-19 | 3218, 3232 |  |
| 3235 |  | Door shutter fixing | 8d | 2026-03-13 | 2026-03-21 | 3219, 3232 |  |
| 3236 |  | Electrical wiring work | 8d | 2026-03-21 | 2026-03-29 | 3220, 3235 |  |
| 3237 |  | Painting 1st coat | 8d | 2026-03-29 | 2026-04-06 | 3221, 3234, 3235, 3236 |  |
| 3238 |  | False ceiling | 8d | 2026-04-06 | 2026-04-14 | 3222, 3237 |  |
| 3239 | 37200.37300.37500.38200.39100.40600.41600.82600 | **15th Floor** | 103d | 2026-01-12 | 2026-04-25 |  | start no earlier than 2026-01-12 |
| 3240 |  | Block Work | 8d | 2026-01-12 | 2026-01-20 | 3224FS+0.25d |  |
| 3241 |  | Door Frame Fixing | 9d | 2026-01-30 | 2026-02-08 | 3225, 3240 |  |
| 3242 |  | Internal Plumbing Works | 8d | 2026-01-20 | 2026-01-28 | 3226, 3240 |  |
| 3243 |  | Waterproofing | 10d | 2026-02-21 | 2026-03-03 | 3227, 3242 |  |
| 3244 |  | Internal Plaster | 8d | 2026-01-20 | 2026-01-28 | 3228FS+0.25d |  |
| 3245 |  | IPS flooring work | 10d | 2026-03-03 | 2026-03-13 | 3229, 3241, 3242, 3243 |  |
| 3246 |  | Toilet dado work | 8d | 2026-03-03 | 2026-03-11 | 3230, 3243, 3244 |  |
| 3247 |  | Toilet flooring work | 8d | 2026-03-11 | 2026-03-19 | 3231, 3246 |  |
| 3248 |  | Living dinning flooring | 8d | 2026-03-13 | 2026-03-21 | 3232FS+0.25d |  |
| 3249 |  | Aluminium door-window fixing | 12d | 2026-04-13 | 2026-04-25 | 3233, 3245, 3248 |  |
| 3250 |  | Putty primer coat | 6d | 2026-03-21 | 2026-03-27 | 3234, 3248 |  |
| 3251 |  | Door shutter fixing | 8d | 2026-03-21 | 2026-03-29 | 3235, 3248 |  |
| 3252 |  | Electrical wiring work | 8d | 2026-03-29 | 2026-04-06 | 3236, 3251 |  |
| 3253 |  | Painting 1st coat | 8d | 2026-04-06 | 2026-04-14 | 3237, 3250, 3251, 3252 |  |
| 3254 |  | False ceiling | 8d | 2026-04-14 | 2026-04-22 | 3238, 3253 |  |
| 3255 | 37200.37300.37500.38200.39100.40600.41600.82500 | **16th Floor** | 106.75d | 2026-01-20 | 2026-05-07 |  | start no earlier than 2026-01-20 |
| 3256 |  | Block Work | 8d | 2026-01-20 | 2026-01-28 | 3240FS+0.25d |  |
| 3257 |  | Door Frame Fixing | 9d | 2026-02-08 | 2026-02-17 | 3241, 3256 |  |
| 3258 |  | Internal Plumbing Works | 8d | 2026-01-28 | 2026-02-05 | 3242, 3256 |  |
| 3259 |  | Waterproofing | 10d | 2026-03-03 | 2026-03-13 | 3243, 3258 |  |
| 3260 |  | Internal Plaster | 8d | 2026-01-28 | 2026-02-05 | 3244FS+0.25d |  |
| 3261 |  | IPS flooring work | 10d | 2026-03-13 | 2026-03-23 | 3245, 3257, 3258, 3259 |  |
| 3262 |  | Toilet dado work | 8d | 2026-03-13 | 2026-03-21 | 3246, 3259, 3260 |  |
| 3263 |  | Toilet flooring work | 8d | 2026-03-21 | 2026-03-29 | 3247, 3262 |  |
| 3264 |  | Living dinning flooring | 6d | 2026-03-21 | 2026-03-27 | 3248FS+0.25d |  |
| 3265 |  | Aluminium door-window fixing | 12d | 2026-04-25 | 2026-05-07 | 3249, 3261, 3264 |  |
| 3266 |  | Putty primer coat | 6d | 2026-03-27 | 2026-04-02 | 3250, 3264 |  |
| 3267 |  | Door shutter fixing | 8d | 2026-03-29 | 2026-04-06 | 3251, 3264 |  |
| 3268 |  | Electrical wiring work | 8d | 2026-04-06 | 2026-04-14 | 3252, 3267 |  |
| 3269 |  | Painting 1st coat | 8d | 2026-04-14 | 2026-04-22 | 3253, 3266, 3267, 3268 |  |
| 3270 |  | False ceiling | 8d | 2026-04-22 | 2026-04-30 | 3254, 3269 |  |
| 3271 | 37200.37300.37500.38200.39100.40600.41600.82400 | **17th Floor** | 110.5d | 2026-01-28 | 2026-05-19 |  | start no earlier than 2026-01-28 |
| 3272 |  | Block Work | 8d | 2026-01-28 | 2026-02-05 | 3256FS+0.25d |  |
| 3273 |  | Door Frame Fixing | 9d | 2026-02-17 | 2026-02-26 | 3257, 3272 |  |
| 3274 |  | Internal Plumbing Works | 8d | 2026-02-05 | 2026-02-13 | 3258, 3272 |  |
| 3275 |  | Waterproofing | 10d | 2026-03-13 | 2026-03-23 | 3259, 3274 |  |
| 3276 |  | Internal Plaster | 8d | 2026-02-05 | 2026-02-13 | 3260FS+0.25d |  |
| 3277 |  | IPS flooring work | 10d | 2026-03-23 | 2026-04-02 | 3261, 3273, 3274, 3275 |  |
| 3278 |  | Toilet dado work | 8d | 2026-03-23 | 2026-03-31 | 3262, 3275, 3276 |  |
| 3279 |  | Toilet flooring work | 8d | 2026-03-31 | 2026-04-08 | 3263, 3278 |  |
| 3280 |  | Living dinning flooring | 7d | 2026-03-27 | 2026-04-03 | 3264FS+0.25d |  |
| 3281 |  | Aluminium door-window fixing | 12d | 2026-05-07 | 2026-05-19 | 3265, 3277, 3280 |  |
| 3282 |  | Putty primer coat | 6d | 2026-04-03 | 2026-04-09 | 3266, 3280 |  |
| 3283 |  | Door shutter fixing | 8d | 2026-04-06 | 2026-04-14 | 3267, 3280 |  |
| 3284 |  | Electrical wiring work | 8d | 2026-04-14 | 2026-04-22 | 3268, 3283 |  |
| 3285 |  | Painting 1st coat | 8d | 2026-04-22 | 2026-04-30 | 3269, 3282, 3283, 3284 |  |
| 3286 |  | False ceiling | 8d | 2026-04-30 | 2026-05-08 | 3270, 3285 |  |
| 3287 | 37200.37300.37500.38200.39100.40600.41600.82300 | **18th Floor** | 126.25d | 2026-02-05 | 2026-06-12 |  | start no earlier than 2026-02-05 |
| 3288 |  | Block Work | 7.94d | 2026-02-05 | 2026-02-13 | 3272FS+0.25d |  |
| 3289 |  | Door Frame Fixing | 8.94d | 2026-02-26 | 2026-03-07 | 3273, 3288 |  |
| 3290 |  | Internal Plumbing Works | 9.94d | 2026-02-13 | 2026-02-23 | 3274, 3288 |  |

| ID | WBS | Task | Duration | Start | Finish | Predecessors | Constraint |
| --- | --- | --- | --- | --- | --- | --- | --- |
| 3291 |  | Waterproofing | 11.94d | 2026-03-23 | 2026-04-04 | 3275, 3290 |  |
| 3292 |  | Internal Plaster | 8.94d | 2026-02-14 | 2026-02-23 | 3276FS+0.25d |  |
| 3293 |  | IPS flooring work | 8.94d | 2026-04-04 | 2026-04-13 | 3277, 3289, 3290, 3291 |  |
| 3294 |  | Toilet dado work | 7.94d | 2026-04-04 | 2026-04-12 | 3278, 3291, 3292 |  |
| 3295 |  | Toilet flooring work | 6.94d | 2026-04-12 | 2026-04-19 | 3279, 3294 |  |
| 3296 |  | Living dinning flooring | 11.94d | 2026-04-19 | 2026-05-01 | 3280, 3289, 3295 |  |
| 3297 |  | Aluminium door-window fixing | 11.94d | 2026-05-19 | 2026-05-31 | 3281, 3293, 3296 |  |
| 3298 |  | Putty primer coat | 5.94d | 2026-05-01 | 2026-05-07 | 3282, 3296 |  |
| 3299 |  | Door shutter fixing | 7.94d | 2026-05-01 | 2026-05-09 | 3283, 3296 |  |
| 3300 |  | Electrical wiring work | 11.94d | 2026-05-09 | 2026-05-21 | 3284, 3299 |  |
| 3301 |  | Painting 1st coat | 11.94d | 2026-05-21 | 2026-06-02 | 3285, 3298, 3299, 3300 |  |
| 3302 |  | False ceiling | 9.94d | 2026-06-02 | 2026-06-12 | 3286, 3301 |  |
| 3303 | 37200.37300.37500.38200.39100.40600.41600.82200 | **19th Floor** | 130d | 2026-02-14 | 2026-06-24 |  | start no earlier than 2026-02-14 |
| 3304 |  | Block Work | 7.94d | 2026-02-14 | 2026-02-21 | 3288FS+0.25d |  |
| 3305 |  | Door Frame Fixing | 8.94d | 2026-03-07 | 2026-03-16 | 3289, 3304 |  |
| 3306 |  | Internal Plumbing Works | 9.94d | 2026-02-23 | 2026-03-05 | 3290, 3304 |  |
| 3307 |  | Waterproofing | 11.94d | 2026-04-04 | 2026-04-16 | 3291, 3306 |  |
| 3308 |  | Internal Plaster | 8.94d | 2026-02-23 | 2026-03-04 | 3292FS+0.25d |  |
| 3309 |  | IPS flooring work | 8.94d | 2026-04-16 | 2026-04-25 | 3293, 3305, 3307, 3308 |  |
| 3310 |  | Toilet dado work | 7.94d | 2026-04-16 | 2026-04-24 | 3294, 3307, 3308 |  |
| 3311 |  | Toilet flooring work | 6.94d | 2026-04-24 | 2026-05-01 | 3295, 3310 |  |
| 3312 |  | Living dinning flooring | 11.94d | 2026-05-01 | 2026-05-13 | 3296, 3305, 3311 |  |
| 3313 |  | Aluminium door-window fixing | 11.94d | 2026-05-31 | 2026-06-11 | 3297, 3309, 3312 |  |
| 3314 |  | Putty primer coat | 5.94d | 2026-05-13 | 2026-05-19 | 3298, 3312 |  |
| 3315 |  | Door shutter fixing | 7.94d | 2026-05-13 | 2026-05-21 | 3299, 3312 |  |
| 3316 |  | Electrical wiring work | 11.94d | 2026-05-21 | 2026-06-02 | 3300, 3315 |  |
| 3317 |  | Painting 1st coat | 11.94d | 2026-06-02 | 2026-06-14 | 3301, 3314, 3315, 3316 |  |
| 3318 |  | False ceiling | 9.94d | 2026-06-14 | 2026-06-24 | 3302, 3317 |  |
| 3319 | 37200.37300.37500.38200.39100.40600.41600.82100 | **20th Floor** | 142.69d | 2026-02-22 | 2026-07-14 |  | start no earlier than 2026-02-22 |
| 3320 |  | Block Work | 7.94d | 2026-02-22 | 2026-03-02 | 3304FS+0.25d |  |
| 3321 |  | Door Frame Fixing | 8.94d | 2026-03-16 | 2026-03-25 | 3305, 3320 |  |
| 3322 |  | Internal Plumbing Works | 9.94d | 2026-03-05 | 2026-03-15 | 3306, 3320 |  |
| 3323 |  | Waterproofing | 11.94d | 2026-04-16 | 2026-04-28 | 3307, 3322 |  |
| 3324 |  | Internal Plaster | 8.94d | 2026-04-28 | 2026-05-07 | 3308, 3321, 3322, 3323 |  |
| 3325 |  | IPS flooring work | 8.94d | 2026-05-07 | 2026-05-16 | 3309, 3321, 3323, 3324 |  |
| 3326 |  | Toilet dado work | 7.94d | 2026-05-07 | 2026-05-15 | 3310, 3323, 3324 |  |
| 3327 |  | Toilet flooring work | 6.94d | 2026-05-15 | 2026-05-22 | 3311, 3326 |  |
| 3328 |  | Living dinning flooring | 11.94d | 2026-05-22 | 2026-06-03 | 3312, 3321, 3327 |  |
| 3329 |  | Aluminium door-window fixing | 11.94d | 2026-06-12 | 2026-06-23 | 3313, 3325, 3328 |  |
| 3330 |  | Putty primer coat | 5.94d | 2026-06-03 | 2026-06-09 | 3314, 3328 |  |
| 3331 |  | Door shutter fixing | 7.94d | 2026-06-03 | 2026-06-11 | 3315, 3328 |  |
| 3332 |  | Electrical wiring work | 11.94d | 2026-06-11 | 2026-06-23 | 3316, 3331 |  |
| 3333 |  | Painting 1st coat | 11.94d | 2026-06-23 | 2026-07-04 | 3317, 3330, 3331, 3332 |  |
| 3334 |  | False ceiling | 9.94d | 2026-07-05 | 2026-07-14 | 3318, 3333 |  |
| 3335 | 37200.37300.37500.38200.39100.40600.41600.82000 | **21st Floor** | 107.31d | 2026-05-07 | 2026-08-22 |  | start no earlier than 2026-05-07 |
| 3336 |  | Block Work | 7.94d | 2026-05-07 | 2026-05-15 | 2998, 3320 |  |
| 3337 |  | Door Frame Fixing | 8.94d | 2026-05-15 | 2026-05-24 | 3321, 3336 |  |
| 3338 |  | Internal Plumbing Works | 9.94d | 2026-05-15 | 2026-05-25 | 3322, 3336 |  |
| 3339 |  | Waterproofing | 11.94d | 2026-05-25 | 2026-06-06 | 3323, 3338 |  |
| 3340 |  | Internal Plaster | 8.94d | 2026-06-06 | 2026-06-15 | 3324, 3337, 3338, 3339 |  |
| 3341 |  | IPS flooring work | 8.94d | 2026-06-15 | 2026-06-24 | 3325, 3337, 3339, 3340 |  |
| 3342 |  | Toilet dado work | 7.94d | 2026-06-15 | 2026-06-23 | 3326, 3339, 3340 |  |
| 3343 |  | Toilet flooring work | 6.94d | 2026-06-23 | 2026-06-29 | 3327, 3342 |  |
| 3344 |  | Living dinning flooring | 11.94d | 2026-06-30 | 2026-07-11 | 3328, 3337, 3343 |  |
| 3345 |  | Aluminium door-window fixing | 11.94d | 2026-07-11 | 2026-07-23 | 3329, 3341, 3344 |  |
| 3346 |  | Putty primer coat | 5.94d | 2026-07-11 | 2026-07-17 | 3330, 3344 |  |
| 3347 |  | Door shutter fixing | 7.94d | 2026-07-11 | 2026-07-19 | 3331, 3344 |  |
| 3348 |  | Electrical wiring work | 11.94d | 2026-07-19 | 2026-07-31 | 3332, 3347 |  |
| 3349 |  | Painting 1st coat | 11.94d | 2026-07-31 | 2026-08-12 | 3333, 3346, 3347, 3348 |  |
| 3350 |  | False ceiling | 9.94d | 2026-08-12 | 2026-08-22 | 3334, 3349 |  |
| 3351 | 37200.37300.37500.38200.39100.40600.41600.81900 | **22nd Floor** | 111.25d | 2026-05-15 | 2026-09-03 |  | start no earlier than 2026-05-15 |
| 3352 |  | Block Work | 7.94d | 2026-05-15 | 2026-05-23 | 2999, 3336 |  |
| 3353 |  | Door Frame Fixing | 8.94d | 2026-05-24 | 2026-06-02 | 3337, 3352 |  |
| 3354 |  | Internal Plumbing Works | 9.94d | 2026-05-25 | 2026-06-04 | 3338, 3352 |  |
| 3355 |  | Waterproofing | 11.94d | 2026-06-06 | 2026-06-18 | 3339, 3354 |  |
| 3356 |  | Internal Plaster | 8.94d | 2026-06-18 | 2026-06-27 | 3340, 3353, 3354, 3355 |  |
| 3357 |  | IPS flooring work | 8.94d | 2026-06-27 | 2026-07-05 | 3341, 3353, 3355, 3356 |  |
| 3358 |  | Toilet dado work | 7.94d | 2026-06-27 | 2026-07-04 | 3342, 3355, 3356 |  |
| 3359 |  | Toilet flooring work | 6.94d | 2026-07-05 | 2026-07-11 | 3343, 3358 |  |
| 3360 |  | Living dinning flooring | 11.94d | 2026-07-11 | 2026-07-23 | 3344, 3353, 3359 |  |

| ID | WBS | Task | Duration | Start | Finish | Predecessors | Constraint |
| --- | --- | --- | --- | --- | --- | --- | --- |
| 3361 |  | Aluminium door-window fixing | 11.94d | 2026-07-23 | 2026-08-04 | 3345, 3357, 3360 |  |
| 3362 |  | Putty primer coat | 5.94d | 2026-07-23 | 2026-07-29 | 3346, 3360 |  |
| 3363 |  | Door shutter fixing | 7.94d | 2026-07-23 | 2026-07-31 | 3347, 3360 |  |
| 3364 |  | Electrical wiring work | 11.94d | 2026-07-31 | 2026-08-12 | 3348, 3363 |  |
| 3365 |  | Painting 1st coat | 11.94d | 2026-08-12 | 2026-08-24 | 3349, 3362, 3363, 3364 |  |
| 3366 |  | False ceiling | 9.94d | 2026-08-24 | 2026-09-03 | 3350, 3365 |  |
| 3367 | 37200.37300.37500.38200.39100.40600.41600.81800 | **23rd Floor** | 118.19d | 2026-05-23 | 2026-09-18 |  | start no earlier than 2026-05-23 |
| 3368 |  | Block Work | 7.94d | 2026-05-23 | 2026-05-31 | 3000, 3352 |  |
| 3369 |  | Door Frame Fixing | 8.94d | 2026-06-02 | 2026-06-11 | 3353, 3368 |  |
| 3370 |  | Internal Plumbing Works | 9.94d | 2026-06-04 | 2026-06-14 | 3354, 3368 |  |
| 3371 |  | Waterproofing | 11.94d | 2026-06-18 | 2026-06-30 | 3355, 3370 |  |
| 3372 |  | Internal Plaster | 8.94d | 2026-06-30 | 2026-07-08 | 3356, 3369, 3370, 3371 |  |
| 3373 |  | IPS flooring work | 8.94d | 2026-07-09 | 2026-07-17 | 3357, 3369, 3371, 3372 |  |
| 3374 |  | Toilet dado work | 7.94d | 2026-07-09 | 2026-07-16 | 3358, 3371, 3372 |  |
| 3375 |  | Toilet flooring work | 6.94d | 2026-07-16 | 2026-07-23 | 3359, 3374 |  |
| 3376 |  | Living dinning flooring | 14.94d | 2026-07-23 | 2026-08-07 | 3360, 3369, 3375 |  |
| 3377 |  | Aluminium door-window fixing | 14.94d | 2026-08-07 | 2026-08-22 | 3361, 3373, 3376 |  |
| 3378 |  | Putty primer coat | 5.94d | 2026-08-07 | 2026-08-13 | 3362, 3376 |  |
| 3379 |  | Door shutter fixing | 7.94d | 2026-08-07 | 2026-08-15 | 3363, 3376 |  |
| 3380 |  | Electrical wiring work | 11.94d | 2026-08-15 | 2026-08-27 | 3364, 3379 |  |
| 3381 |  | Painting 1st coat | 11.94d | 2026-08-27 | 2026-09-08 | 3365, 3378, 3379, 3380 |  |
| 3382 |  | False ceiling | 9.94d | 2026-09-08 | 2026-09-18 | 3366, 3381 |  |
| 3383 | 37200.37300.37500.38200.39100.40600.41600.81700 | **24th Floor** | 125.12d | 2026-05-31 | 2026-10-03 |  | start no earlier than 2026-05-31 |
| 3384 |  | Block Work | 7.94d | 2026-05-31 | 2026-06-08 | 3001, 3368 |  |
| 3385 |  | Door Frame Fixing | 8.94d | 2026-06-11 | 2026-06-20 | 3369, 3384 |  |
| 3386 |  | Internal Plumbing Works | 9.94d | 2026-06-14 | 2026-06-24 | 3370, 3384 |  |
| 3387 |  | Waterproofing | 11.94d | 2026-06-30 | 2026-07-11 | 3371, 3386 |  |
| 3388 |  | Internal Plaster | 8.94d | 2026-07-12 | 2026-07-20 | 3372, 3385, 3386, 3387 |  |
| 3389 |  | IPS flooring work | 8.94d | 2026-07-20 | 2026-07-29 | 3373, 3385, 3387, 3388 |  |
| 3390 |  | Toilet dado work | 7.94d | 2026-07-20 | 2026-07-28 | 3374, 3387, 3388 |  |
| 3391 |  | Toilet flooring work | 6.94d | 2026-07-28 | 2026-08-04 | 3375, 3390 |  |
| 3392 |  | Living dinning flooring | 14.94d | 2026-08-07 | 2026-08-22 | 3376, 3385, 3391 |  |
| 3393 |  | Aluminium door-window fixing | 14.94d | 2026-08-22 | 2026-09-06 | 3377, 3389, 3392 |  |
| 3394 |  | Putty primer coat | 5.94d | 2026-08-22 | 2026-08-28 | 3378, 3392 |  |
| 3395 |  | Door shutter fixing | 7.94d | 2026-08-22 | 2026-08-30 | 3379, 3392 |  |
| 3396 |  | Electrical wiring work | 11.94d | 2026-08-30 | 2026-09-11 | 3380, 3395 |  |
| 3397 |  | Painting 1st coat | 11.94d | 2026-09-11 | 2026-09-23 | 3381, 3394, 3395, 3396 |  |
| 3398 |  | False ceiling | 9.94d | 2026-09-23 | 2026-10-03 | 3382, 3397 |  |
| 3399 | 37200.37300.37500.38200.39100.40600.41600.81600 | **25th Floor** | 127.31d | 2026-06-13 | 2026-10-18 |  | start no earlier than 2026-06-13 |
| 3400 |  | Block Work | 7.94d | 2026-06-13 | 2026-06-21 | 3002, 3384 |  |
| 3401 |  | Door Frame Fixing | 8.94d | 2026-06-21 | 2026-06-29 | 3385, 3400 |  |
| 3402 |  | Internal Plumbing Works | 9.94d | 2026-06-24 | 2026-07-03 | 3386, 3400 |  |
| 3403 |  | Waterproofing | 11.94d | 2026-07-12 | 2026-07-23 | 3387, 3402 |  |
| 3404 |  | Internal Plaster | 8.94d | 2026-07-23 | 2026-08-01 | 3388, 3401, 3402, 3403 |  |
| 3405 |  | IPS flooring work | 8.94d | 2026-08-01 | 2026-08-10 | 3389, 3401, 3403, 3404 |  |
| 3406 |  | Toilet dado work | 7.94d | 2026-08-01 | 2026-08-09 | 3390, 3403, 3404 |  |
| 3407 |  | Toilet flooring work | 6.94d | 2026-08-09 | 2026-08-16 | 3391, 3406 |  |
| 3408 |  | Living dinning flooring | 14.94d | 2026-08-22 | 2026-09-06 | 3392, 3401, 3407 |  |
| 3409 |  | Aluminium door-window fixing | 14.94d | 2026-09-06 | 2026-09-21 | 3393, 3405, 3408 |  |
| 3410 |  | Putty primer coat | 5.94d | 2026-09-06 | 2026-09-12 | 3394, 3408 |  |
| 3411 |  | Door shutter fixing | 7.94d | 2026-09-06 | 2026-09-14 | 3395, 3408 |  |
| 3412 |  | Electrical wiring work | 11.94d | 2026-09-14 | 2026-09-26 | 3396, 3411 |  |
| 3413 |  | Painting 1st coat | 11.94d | 2026-09-26 | 2026-10-08 | 3397, 3410, 3411, 3412 |  |
| 3414 |  | False ceiling | 9.94d | 2026-10-08 | 2026-10-18 | 3398, 3413 |  |
| 3415 | 37200.37300.37500.38200.39100.40600.41600.81500 | **26th Floor** | 130.5d | 2026-06-24 | 2026-12-17 |  | start no earlier than 2026-06-24 |
| 3416 |  | Block Work | 7.94d | 2026-06-24 | 2026-07-02 | 3003, 3400 |  |
| 3417 |  | Door Frame Fixing | 8.94d | 2026-07-02 | 2026-07-11 | 3401, 3416 |  |
| 3418 |  | Internal Plumbing Works | 9.94d | 2026-07-04 | 2026-07-13 | 3402, 3416 |  |
| 3419 |  | Waterproofing | 11.94d | 2026-07-23 | 2026-08-04 | 3403, 3418 |  |
| 3420 |  | Internal Plaster | 8.94d | 2026-08-04 | 2026-08-13 | 3404, 3417, 3418, 3419 |  |
| 3421 |  | IPS flooring work | 8.94d | 2026-08-13 | 2026-08-22 | 3405, 3417, 3419, 3420 |  |
| 3422 |  | Toilet dado work | 7.94d | 2026-08-13 | 2026-08-21 | 3406, 3419, 3420 |  |
| 3423 |  | Toilet flooring work | 6.94d | 2026-08-21 | 2026-08-28 | 3407, 3422 |  |
| 3424 |  | Living dinning flooring | 14.94d | 2026-09-06 | 2026-09-21 | 3408, 3417, 3423 |  |
| 3425 |  | Aluminium door-window fixing | 14.94d | 2026-09-21 | 2026-10-06 | 3409, 3421, 3424 |  |
| 3426 |  | Putty primer coat | 5.94d | 2026-09-21 | 2026-09-27 | 3410, 3424 |  |
| 3427 |  | Door shutter fixing | 7.94d | 2026-09-21 | 2026-09-29 | 3411, 3424 |  |
| 3428 |  | Electrical wiring work | 11.94d | 2026-09-29 | 2026-10-11 | 3412, 3427 |  |
| 3429 |  | Painting 1st coat | 11.94d | 2026-10-11 | 2026-10-23 | 3413, 3426, 3427, 3428 |  |
| 3430 |  | False ceiling | 9.94d | 2026-10-23 | 2026-12-17 | 3414, 3429 |  |

| ID | WBS | Task | Duration | Start | Finish | Predecessors | Constraint |
| --- | --- | --- | --- | --- | --- | --- | --- |
| 3431 | 37200.37300.37500.38200.39100.40600.41600.81400 | **27th Floor** | 132.69d | 2026-07-07 | 2027-01-01 |  | start no earlier than 2026-07-07 |
| 3432 |  | Block Work | 7.94d | 2026-07-07 | 2026-07-15 | 3004, 3416 |  |
| 3433 |  | Door Frame Fixing | 8.94d | 2026-07-15 | 2026-07-24 | 3417, 3432 |  |
| 3434 |  | Internal Plumbing Works | 9.94d | 2026-07-15 | 2026-07-25 | 3418, 3432 |  |
| 3435 |  | Waterproofing | 11.94d | 2026-08-04 | 2026-08-16 | 3419, 3434 |  |
| 3436 |  | Internal Plaster | 8.94d | 2026-08-16 | 2026-08-25 | 3420, 3433, 3434, 3435 |  |
| 3437 |  | IPS flooring work | 8.94d | 2026-08-25 | 2026-09-03 | 3421, 3433, 3435, 3436 |  |
| 3438 |  | Toilet dado work | 7.94d | 2026-08-25 | 2026-09-02 | 3422, 3435, 3436 |  |
| 3439 |  | Toilet flooring work | 6.94d | 2026-09-02 | 2026-09-09 | 3423, 3438 |  |
| 3440 |  | Living dinning flooring | 14.94d | 2026-09-21 | 2026-10-06 | 3424, 3433, 3439 |  |
| 3441 |  | Aluminium door-window fixing | 14.94d | 2026-10-06 | 2026-10-21 | 3425, 3437, 3440 |  |
| 3442 |  | Putty primer coat | 5.94d | 2026-10-06 | 2026-10-12 | 3426, 3440 |  |
| 3443 |  | Door shutter fixing | 7.94d | 2026-10-06 | 2026-10-14 | 3427, 3440 |  |
| 3444 |  | Electrical wiring work | 11.94d | 2026-10-14 | 2026-10-26 | 3428, 3443 |  |
| 3445 |  | Painting 1st coat | 11.94d | 2026-10-26 | 2026-12-22 | 3429, 3442, 3443, 3444 |  |
| 3446 |  | False ceiling | 9.94d | 2026-12-22 | 2027-01-01 | 3430, 3445 |  |
| 3447 | 37200.37300.37500.38200.39100.40600.41600.81300 | **28th Floor** | 135.88d | 2026-07-19 | 2027-01-16 |  | start no earlier than 2026-07-19 |
| 3448 |  | Block Work | 7.94d | 2026-07-19 | 2026-07-27 | 3005, 3432 |  |
| 3449 |  | Door Frame Fixing | 8.94d | 2026-07-27 | 2026-08-05 | 3433, 3448 |  |
| 3450 |  | Internal Plumbing Works | 9.94d | 2026-07-27 | 2026-08-06 | 3434, 3448 |  |
| 3451 |  | Waterproofing | 11.94d | 2026-08-16 | 2026-08-28 | 3435, 3450 |  |
| 3452 |  | Internal Plaster | 8.94d | 2026-08-28 | 2026-09-06 | 3436, 3449, 3450, 3451 |  |
| 3453 |  | IPS flooring work | 8.94d | 2026-09-06 | 2026-09-15 | 3437, 3449, 3451, 3452 |  |
| 3454 |  | Toilet dado work | 7.94d | 2026-09-06 | 2026-09-14 | 3438, 3451, 3452 |  |
| 3455 |  | Toilet flooring work | 6.94d | 2026-09-14 | 2026-09-21 | 3439, 3454 |  |
| 3456 |  | Living dinning flooring | 14.94d | 2026-10-06 | 2026-10-21 | 3440, 3449, 3455 |  |
| 3457 |  | Aluminium door-window fixing | 14.94d | 2026-10-21 | 2026-12-20 | 3441, 3453, 3456 |  |
| 3458 |  | Putty primer coat | 5.94d | 2026-10-21 | 2026-10-27 | 3442, 3456 |  |
| 3459 |  | Door shutter fixing | 7.94d | 2026-10-21 | 2026-10-29 | 3443, 3456 |  |
| 3460 |  | Electrical wiring work | 11.94d | 2026-10-29 | 2026-12-25 | 3444, 3459 |  |
| 3461 |  | Painting 1st coat | 11.94d | 2026-12-25 | 2027-01-06 | 3445, 3458, 3459, 3460 |  |
| 3462 |  | False ceiling | 9.94d | 2027-01-06 | 2027-01-16 | 3446, 3461 |  |
| 3463 | 37200.37300.37500.38200.39100.40600.41600.81200 | **29th Floor** | 136.06d | 2026-08-03 | 2027-01-31 |  | start no earlier than 2026-08-03 |
| 3464 |  | Block Work | 7.94d | 2026-08-03 | 2026-08-11 | 3006, 3448 |  |
| 3465 |  | Door Frame Fixing | 8.94d | 2026-08-11 | 2026-08-19 | 3449, 3464 |  |
| 3466 |  | Internal Plumbing Works | 9.94d | 2026-08-11 | 2026-08-20 | 3450, 3464 |  |
| 3467 |  | Waterproofing | 11.94d | 2026-08-28 | 2026-09-09 | 3451, 3466 |  |
| 3468 |  | Internal Plaster | 8.94d | 2026-09-09 | 2026-09-18 | 3452, 3465, 3466, 3467 |  |
| 3469 |  | IPS flooring work | 8.94d | 2026-09-18 | 2026-09-27 | 3453, 3465, 3467, 3468 |  |
| 3470 |  | Toilet dado work | 7.94d | 2026-09-18 | 2026-09-26 | 3454, 3467, 3468 |  |
| 3471 |  | Toilet flooring work | 6.94d | 2026-09-26 | 2026-10-03 | 3455, 3470 |  |
| 3472 |  | Living dinning flooring | 14.94d | 2026-10-21 | 2026-12-20 | 3456, 3465, 3471 |  |
| 3473 |  | Aluminium door-window fixing | 14.94d | 2026-12-20 | 2027-01-04 | 3457, 3469, 3472 |  |
| 3474 |  | Putty primer coat | 5.94d | 2026-12-20 | 2026-12-26 | 3458, 3472 |  |
| 3475 |  | Door shutter fixing | 7.94d | 2026-12-20 | 2026-12-28 | 3459, 3472 |  |
| 3476 |  | Electrical wiring work | 11.94d | 2026-12-28 | 2027-01-09 | 3460, 3475 |  |
| 3477 |  | Painting 1st coat | 11.94d | 2027-01-09 | 2027-01-21 | 3461, 3474, 3475, 3476 |  |
| 3478 |  | False ceiling | 9.94d | 2027-01-21 | 2027-01-31 | 3462, 3477 |  |
| 3479 | 37200.37300.37500.38200.39100.40600.41600.81100 | **30th Floor** | 117.5d | 2026-09-11 | 2027-02-21 |  | start no earlier than 2026-09-11 |
| 3480 |  | Block Work | 7.94d | 2026-09-11 | 2026-09-19 | 3007, 3464 |  |
| 3481 |  | Door Frame Fixing | 8.94d | 2026-09-19 | 2026-09-28 | 3465, 3480 |  |
| 3482 |  | Internal Plumbing Works | 9.94d | 2026-09-19 | 2026-09-29 | 3466, 3480 |  |
| 3483 |  | Waterproofing | 11.94d | 2026-09-29 | 2026-10-11 | 3467, 3482 |  |
| 3484 |  | Internal Plaster | 8.94d | 2026-10-11 | 2026-10-20 | 3468, 3481, 3482, 3483 |  |
| 3485 |  | IPS flooring work | 8.94d | 2026-10-20 | 2026-10-29 | 3469, 3481, 3483, 3484 |  |
| 3486 |  | Toilet dado work | 7.94d | 2026-10-20 | 2026-10-28 | 3470, 3483, 3484 |  |
| 3487 |  | Toilet flooring work | 6.94d | 2026-10-28 | 2026-12-19 | 3471, 3486 |  |
| 3488 |  | Living dinning flooring | 14.94d | 2026-12-20 | 2027-01-04 | 3472, 3481, 3487 |  |
| 3489 |  | Aluminium door-window fixing | 14.94d | 2027-01-04 | 2027-01-19 | 3473, 3485, 3488 |  |
| 3490 |  | Putty primer coat | 5.94d | 2027-01-04 | 2027-01-10 | 3474, 3488 |  |
| 3491 |  | Door shutter fixing | 7.94d | 2027-01-04 | 2027-01-12 | 3475, 3488 |  |
| 3492 |  | Electrical wiring work | 14.94d | 2027-01-12 | 2027-01-27 | 3476, 3491 |  |
| 3493 |  | Painting 1st coat | 14.94d | 2027-01-27 | 2027-02-11 | 3477, 3490, 3491, 3492 |  |
| 3494 |  | False ceiling | 9.94d | 2027-02-11 | 2027-02-21 | 3478, 3493 |  |
| 3495 | 37200.37300.37500.38200.39100.40600.41600.81000 | **31st Floor** | 124.5d | 2026-09-19 | 2027-03-08 |  | start no earlier than 2026-09-19 |
| 3496 |  | Block Work | 7.94d | 2026-09-19 | 2026-09-27 | 3008, 3480 |  |
| 3497 |  | Door Frame Fixing | 8.94d | 2026-09-28 | 2026-10-07 | 3481, 3496 |  |
| 3498 |  | Internal Plumbing Works | 9.94d | 2026-09-29 | 2026-10-09 | 3482, 3496 |  |
| 3499 |  | Waterproofing | 11.94d | 2026-10-11 | 2026-10-23 | 3483, 3498 |  |
| 3500 |  | Internal Plaster | 8.94d | 2026-10-23 | 2026-12-16 | 3484, 3497, 3498, 3499 |  |

| ID | WBS | Task | Duration | Start | Finish | Predecessors | Constraint |
| --- | --- | --- | --- | --- | --- | --- | --- |
| 3501 |  | IPS flooring work | 8.94d | 2026-12-16 | 2026-12-25 | 3485, 3497, 3499, 3500 |  |
| 3502 |  | Toilet dado work | 7.94d | 2026-12-16 | 2026-12-24 | 3486, 3499, 3500 |  |
| 3503 |  | Toilet flooring work | 6.94d | 2026-12-24 | 2026-12-31 | 3487, 3502 |  |
| 3504 |  | Living dinning flooring | 14.94d | 2027-01-04 | 2027-01-19 | 3488, 3497, 3503 |  |
| 3505 |  | Aluminium door-window fixing | 11.94d | 2027-01-19 | 2027-01-31 | 3489, 3501, 3504 |  |
| 3506 |  | Putty primer coat | 5.94d | 2027-01-19 | 2027-01-25 | 3490, 3504 |  |
| 3507 |  | Door shutter fixing | 7.94d | 2027-01-19 | 2027-01-27 | 3491, 3504 |  |
| 3508 |  | Electrical wiring work | 14.94d | 2027-01-27 | 2027-02-11 | 3492, 3507 |  |
| 3509 |  | Painting 1st coat | 14.94d | 2027-02-11 | 2027-02-26 | 3493, 3506, 3507, 3508 |  |
| 3510 |  | False ceiling | 9.94d | 2027-02-26 | 2027-03-08 | 3494, 3509 |  |
| 3511 | 37200.37300.37500.38200.39100.40600.41600.80900 | **32nd Floor** | 131.5d | 2026-09-27 | 2027-03-22 |  | start no earlier than 2026-09-27 |
| 3512 |  | Block Work | 7.94d | 2026-09-27 | 2026-10-05 | 3009, 3496 |  |
| 3513 |  | Door Frame Fixing | 8.94d | 2026-10-07 | 2026-10-16 | 3497, 3512 |  |
| 3514 |  | Internal Plumbing Works | 9.94d | 2026-10-09 | 2026-10-19 | 3498, 3512 |  |
| 3515 |  | Waterproofing | 11.94d | 2026-10-23 | 2026-12-19 | 3499, 3514 |  |
| 3516 |  | Internal Plaster | 8.94d | 2026-12-19 | 2026-12-28 | 3500, 3513, 3514, 3515 |  |
| 3517 |  | IPS flooring work | 8.94d | 2026-12-28 | 2027-01-06 | 3501, 3513, 3515, 3516 |  |
| 3518 |  | Toilet dado work | 7.94d | 2026-12-28 | 2027-01-05 | 3502, 3515, 3516 |  |
| 3519 |  | Toilet flooring work | 6.94d | 2027-01-05 | 2027-01-12 | 3503, 3518 |  |
| 3520 |  | Living dinning flooring | 14.94d | 2027-01-19 | 2027-02-03 | 3504, 3513, 3519 |  |
| 3521 |  | Aluminium door-window fixing | 11.94d | 2027-02-03 | 2027-02-15 | 3505, 3517, 3520 |  |
| 3522 |  | Putty primer coat | 5.94d | 2027-02-03 | 2027-02-09 | 3506, 3520 |  |
| 3523 |  | Door shutter fixing | 7.94d | 2027-02-03 | 2027-02-11 | 3507, 3520 |  |
| 3524 |  | Electrical wiring work | 14.94d | 2027-02-11 | 2027-02-26 | 3508, 3523 |  |
| 3525 |  | Painting 1st coat | 14.94d | 2027-02-26 | 2027-03-13 | 3509, 3522, 3523, 3524 |  |
| 3526 |  | False ceiling | 9.94d | 2027-03-13 | 2027-03-22 | 3510, 3525 |  |
| 3527 | 37200.37300.37500.38200.39100.40600.41600.80800 | **33rd Floor** | 135.5d | 2026-10-05 | 2027-04-03 |  | start no earlier than 2026-10-05 |
| 3528 |  | Block Work | 7.94d | 2026-10-05 | 2026-10-13 | 3010, 3512 |  |
| 3529 |  | Door Frame Fixing | 8.94d | 2026-10-16 | 2026-10-25 | 3513, 3528 |  |
| 3530 |  | Internal Plumbing Works | 9.94d | 2026-10-19 | 2026-10-29 | 3514, 3528 |  |
| 3531 |  | Waterproofing | 11.94d | 2026-12-19 | 2026-12-31 | 3515, 3530 |  |
| 3532 |  | Internal Plaster | 8.94d | 2026-12-31 | 2027-01-09 | 3516, 3529, 3530, 3531 |  |
| 3533 |  | IPS flooring work | 8.94d | 2027-01-09 | 2027-01-18 | 3517, 3529, 3531, 3532 |  |
| 3534 |  | Toilet dado work | 7.94d | 2027-01-09 | 2027-01-17 | 3518, 3531, 3532 |  |
| 3535 |  | Toilet flooring work | 6.94d | 2027-01-17 | 2027-01-24 | 3519, 3534 |  |
| 3536 |  | Living dinning flooring | 14.94d | 2027-02-03 | 2027-02-18 | 3520, 3529, 3535 |  |
| 3537 |  | Aluminium door-window fixing | 14.94d | 2027-02-18 | 2027-03-05 | 3521, 3533, 3536 |  |
| 3538 |  | Putty primer coat | 5.94d | 2027-02-18 | 2027-02-24 | 3522, 3536 |  |
| 3539 |  | Door shutter fixing | 7.94d | 2027-02-18 | 2027-02-26 | 3523, 3536 |  |
| 3540 |  | Electrical wiring work | 11.94d | 2027-02-26 | 2027-03-10 | 3524, 3539 |  |
| 3541 |  | Painting 1st coat | 11.94d | 2027-03-13 | 2027-03-24 | 3525, 3538, 3539, 3540 |  |
| 3542 |  | False ceiling | 9.94d | 2027-03-25 | 2027-04-03 | 3526, 3541 |  |
| 3543 | 37200.37300.37500.38200.39100.40600.41600.80700 | **34th Floor** | 139.5d | 2026-10-13 | 2027-04-15 |  | start no earlier than 2026-10-13 |
| 3544 |  | Block Work | 7.94d | 2026-10-13 | 2026-10-21 | 3011, 3528 |  |
| 3545 |  | Door Frame Fixing | 8.94d | 2026-10-25 | 2026-12-18 | 3529, 3544 |  |
| 3546 |  | Internal Plumbing Works | 9.94d | 2026-10-29 | 2026-12-23 | 3530, 3544 |  |
| 3547 |  | Waterproofing | 11.94d | 2026-12-31 | 2027-01-12 | 3531, 3546 |  |
| 3548 |  | Internal Plaster | 8.94d | 2027-01-12 | 2027-01-21 | 3532, 3545, 3546, 3547 |  |
| 3549 |  | IPS flooring work | 8.94d | 2027-01-21 | 2027-01-30 | 3533, 3545, 3547, 3548 |  |
| 3550 |  | Toilet dado work | 7.94d | 2027-01-21 | 2027-01-29 | 3534, 3547, 3548 |  |
| 3551 |  | Toilet flooring work | 6.94d | 2027-01-29 | 2027-02-04 | 3535, 3550 |  |
| 3552 |  | Living dinning flooring | 14.94d | 2027-02-18 | 2027-03-05 | 3536, 3545, 3551 |  |
| 3553 |  | Aluminium door-window fixing | 14.94d | 2027-03-05 | 2027-03-20 | 3537, 3549, 3552 |  |
| 3554 |  | Putty primer coat | 5.94d | 2027-03-05 | 2027-03-11 | 3538, 3552 |  |
| 3555 |  | Door shutter fixing | 7.94d | 2027-03-05 | 2027-03-13 | 3539, 3552 |  |
| 3556 |  | Electrical wiring work | 11.94d | 2027-03-13 | 2027-03-24 | 3540, 3555 |  |
| 3557 |  | Painting 1st coat | 11.94d | 2027-03-25 | 2027-04-05 | 3541, 3554, 3555, 3556 |  |
| 3558 |  | False ceiling | 9.94d | 2027-04-05 | 2027-04-15 | 3542, 3557 |  |
| 3559 | 37200.37300.37500.38200.39100.40600.41600.80600 | **35th Floor** | 146.5d | 2026-10-21 | 2027-04-30 |  | start no earlier than 2026-10-21 |
| 3560 |  | Block Work | 7.94d | 2026-10-21 | 2026-10-29 | 3012, 3544 |  |
| 3561 |  | Door Frame Fixing | 8.94d | 2026-12-18 | 2026-12-27 | 3545, 3560 |  |
| 3562 |  | Internal Plumbing Works | 9.94d | 2026-12-23 | 2027-01-02 | 3546, 3560 |  |
| 3563 |  | Waterproofing | 11.94d | 2027-01-12 | 2027-01-24 | 3547, 3562 |  |
| 3564 |  | Internal Plaster | 8.94d | 2027-01-24 | 2027-02-02 | 3548, 3561, 3562, 3563 |  |
| 3565 |  | IPS flooring work | 8.94d | 2027-02-02 | 2027-02-10 | 3549, 3561, 3563, 3564 |  |
| 3566 |  | Toilet dado work | 7.94d | 2027-02-02 | 2027-02-09 | 3550, 3563, 3564 |  |
| 3567 |  | Toilet flooring work | 6.94d | 2027-02-10 | 2027-02-16 | 3551, 3566 |  |
| 3568 |  | Living dinning flooring | 14.94d | 2027-03-05 | 2027-03-20 | 3552, 3561, 3567 |  |
| 3569 |  | Aluminium door-window fixing | 14.94d | 2027-03-20 | 2027-04-03 | 3553, 3565, 3568 |  |
| 3570 |  | Putty primer coat | 5.94d | 2027-03-20 | 2027-03-25 | 3554, 3568 |  |

| ID | WBS | Task | Duration | Start | Finish | Predecessors | Constraint |
| --- | --- | --- | --- | --- | --- | --- | --- |
| 3571 |  | Door shutter fixing | 7.94d | 2027-03-20 | 2027-03-27 | 3555, 3568 |  |
| 3572 |  | Electrical wiring work | 11.94d | 2027-03-28 | 2027-04-08 | 3556, 3571 |  |
| 3573 |  | Painting 1st coat | 11.94d | 2027-04-08 | 2027-04-20 | 3557, 3570, 3571, 3572 |  |
| 3574 |  | False ceiling | 9.94d | 2027-04-20 | 2027-04-30 | 3558, 3573 |  |
| 3575 | 37200.37300.37500.38200.39100.40600.191100 | **Terrace Finishing** | 79.88d | 2026-07-27 | 2026-10-14 |  | start no earlier than 2026-07-27 |
| 3576 |  | Terrace waterproofing | 39.94d | 2026-07-27 | 2026-09-05 | 2969 |  |
| 3577 |  | Terrace finishing | 39.94d | 2026-09-05 | 2026-10-14 | 3576 |  |
| 3578 | 37200.37300.37500.38200.39100.40600.99400 | **Common Area Finishing** | 279.31d | 2025-09-26 | 2026-08-16 |  | start no earlier than 2025-09-26 |
| 3579 |  | Block Work | 39.94d | 2025-09-26 | 2025-12-20 | 2980FS+0.25d |  |
| 3580 |  | Internal Plaster | 119.94d | 2025-12-16 | 2026-04-15 | 3585SS+17.88d |  |
| 3581 |  | Staircase railing fixing | 149.94d | 2026-03-20 | 2026-08-16 | 3583SS+26.75d, 3582SS+26.75d |  |
| 3582 |  | Main staircase flooring | 149.94d | 2026-02-21 | 2026-07-21 | 3583SS+13.38d |  |
| 3583 |  | Fire staircase flooring | 149.94d | 2026-02-07 | 2026-07-07 | 3580SS+13.38d, 3587SS+26.75d |  |
| 3584 |  | Fire door work | 59.94d | 2026-03-20 | 2026-05-18 | 3582SS+26.75d, 3583SS+26.75d |  |
| 3585 |  | Electrical wiring work | 119.94d | 2025-10-14 | 2026-03-28 | 3579SS+17.88d |  |
| 3586 |  | Lobby flooring | 150d | 2025-10-17 | 2026-04-30 | 3585SS+3.38d |  |
| 3587 |  | Ceiling & wall putty-primer | 109.94d | 2026-01-12 | 2026-05-02 | 3580SS+26.75d |  |
| 3588 |  | Ceiling & wall painting | 99.94d | 2026-01-30 | 2026-05-09 | 3587SS+17.88d |  |
| 3589 |  | Light fixture supply & installation | 44.94d | 2026-03-24 | 2026-05-08 | 3588SS+53.38d |  |
| 3590 | 37200.37300.37500.38200.39100.40600.46600 | **Balcony Glass Railing** | 67.81d | 2027-05-31 | 2027-08-07 |  | start no earlier than 2027-05-31 |
| 3591 |  | 1st Floor | 1.94d | 2027-05-31 | 2027-06-02 | 3659 |  |
| 3592 |  | 2nd Floor | 1.94d | 2027-06-02 | 2027-06-04 | 3591 |  |
| 3593 |  | 3rd Floor | 1.94d | 2027-06-04 | 2027-06-06 | 3592 |  |
| 3594 |  | 4th Floor | 1.94d | 2027-06-06 | 2027-06-08 | 3593 |  |
| 3595 |  | 5th Floor | 1.94d | 2027-06-08 | 2027-06-10 | 3594 |  |
| 3596 |  | 6th Floor | 1.94d | 2027-06-10 | 2027-06-11 | 3595 |  |
| 3597 |  | 7th Floor | 1.94d | 2027-06-12 | 2027-06-13 | 3596 |  |
| 3598 |  | 8th Floor | 1.94d | 2027-06-13 | 2027-06-15 | 3597 |  |
| 3599 |  | 9th Floor | 1.94d | 2027-06-15 | 2027-06-17 | 3598 |  |
| 3600 |  | 10th Floor | 1.94d | 2027-06-17 | 2027-06-19 | 3599 |  |
| 3601 |  | 11th Floor | 1.94d | 2027-06-19 | 2027-06-21 | 3600 |  |
| 3602 |  | 12th Floor | 1.94d | 2027-06-21 | 2027-06-23 | 3601 |  |
| 3603 |  | 13th Floor | 1.94d | 2027-06-23 | 2027-06-25 | 3602 |  |
| 3604 |  | 14th Floor | 1.94d | 2027-06-25 | 2027-06-27 | 3603 |  |
| 3605 |  | 15th Floor | 1.94d | 2027-06-27 | 2027-06-29 | 3604 |  |
| 3606 |  | 16th Floor | 1.94d | 2027-06-29 | 2027-07-01 | 3605 |  |
| 3607 |  | 17th Floor | 1.94d | 2027-07-01 | 2027-07-03 | 3606 |  |
| 3608 |  | 18th Floor | 1.94d | 2027-07-03 | 2027-07-05 | 3607 |  |
| 3609 |  | 19th Floor | 1.94d | 2027-07-05 | 2027-07-07 | 3608 |  |
| 3610 |  | 20th Floor | 1.94d | 2027-07-07 | 2027-07-09 | 3609 |  |
| 3611 |  | 21st Floor | 1.94d | 2027-07-09 | 2027-07-11 | 3610 |  |
| 3612 |  | 22nd Floor | 1.94d | 2027-07-11 | 2027-07-12 | 3611 |  |
| 3613 |  | 23rd Floor | 1.94d | 2027-07-13 | 2027-07-14 | 3612 |  |
| 3614 |  | 24th Floor | 1.94d | 2027-07-14 | 2027-07-16 | 3613 |  |
| 3615 |  | 25th Floor | 1.94d | 2027-07-16 | 2027-07-18 | 3614 |  |
| 3616 |  | 26th Floor | 1.94d | 2027-07-18 | 2027-07-20 | 3615 |  |
| 3617 |  | 27th Floor | 1.94d | 2027-07-20 | 2027-07-22 | 3616 |  |
| 3618 |  | 28th Floor | 1.94d | 2027-07-22 | 2027-07-24 | 3617 |  |
| 3619 |  | 29th Floor | 1.94d | 2027-07-24 | 2027-07-26 | 3618 |  |
| 3620 |  | 30th Floor | 1.94d | 2027-07-26 | 2027-07-28 | 3619 |  |
| 3621 |  | 31st Floor | 1.94d | 2027-07-28 | 2027-07-30 | 3620 |  |
| 3622 |  | 32nd Floor | 1.94d | 2027-07-30 | 2027-08-01 | 3621 |  |
| 3623 |  | 33rd Floor | 1.94d | 2027-08-01 | 2027-08-03 | 3622 |  |
| 3624 |  | 34th Floor | 1.94d | 2027-08-03 | 2027-08-05 | 3623 |  |
| 3625 |  | 35th Floor | 1.94d | 2027-08-05 | 2027-08-07 | 3624 |  |
| 3626 | 37200.37300.37500.38200.95400 | **MEP work** | 634.12d | 2026-02-07 | 2027-12-18 |  | start no earlier than 2026-02-07 |
| 3627 | 37200.37300.37500.38200.95400.97500 | **Electrical work** | 233.25d | 2026-09-04 | 2027-06-09 |  | start no earlier than 2026-09-04 |
| 3628 |  | Cable Tray | 89.94d | 2026-09-04 | 2027-01-17 | 2974 |  |
| 3629 |  | Cable, main & sub main | 79.94d | 2026-10-14 | 2027-02-16 | 3628SS+40d |  |
| 3630 |  | LT panel & DB | 119.94d | 2027-01-17 | 2027-05-17 | 3628 |  |
| 3631 |  | Rising main | 89.94d | 2027-03-11 | 2027-06-09 | 3628FS+53.38d |  |
| 3632 |  | EARTHING Works | 59.94d | 2027-01-30 | 2027-03-31 | 3628FS+13.38d |  |
| 3633 |  | Advance lightening protection | 59.94d | 2026-10-15 | 2027-01-27 | 3577 |  |
| 3634 |  | Inverter | 34.94d | 2027-03-31 | 2027-05-05 | 3632 |  |
| 3635 |  | Energy meter | 59.94d | 2027-02-16 | 2027-04-17 | 3629 |  |
| 3636 |  | Exhast fan | 59.94d | 2027-02-07 | 2027-04-08 | 3569FF+4.5d |  |
| 3637 |  | FTTH | 59.94d | 2027-03-22 | 2027-05-21 | 3632FS-9d |  |
| 3638 |  | Security System - FA & PA | 54.94d | 2027-03-27 | 2027-05-21 | 3637FF |  |
| 3639 |  | Solar water heater | 59.94d | 2026-10-15 | 2027-01-27 | 3577 |  |
| 3640 | 37200.37300.37500.38200.95400.122300 | **Plumbing wrok** | 430.88d | 2026-03-06 | 2027-06-25 |  | start no earlier than 2026-03-06 |

| ID | WBS | Task | Duration | Start | Finish | Predecessors | Complete | Constraint |
| --- | --- | --- | --- | --- | --- | --- | --- | --- |
| 3641 |  | Terrace looping | 44.94d | 2026-09-05 | 2026-10-19 | 3576 |  |  |
| 3642 |  | Shaft Plumbing | 119.94d | 2026-10-20 | 2027-04-02 | 3641 |  |  |
| 3643 |  | CP sanitary fixture supply | 74.94d | 2027-04-11 | 2027-06-25 | 3564, 3567FS+53.38d |  |  |
| 3644 |  | Cold & flushing water supply | 89.94d | 2026-03-06 | 2026-06-04 | 3580SS+80d |  |  |
| 3645 |  | Misc work | 29.94d | 2026-05-26 | 2026-06-25 | 3644FS-9d |  |  |
| 3646 | 37200.37300.37500.38200.95400.128900 | **Fire fighting work** | 329.19d | 2026-02-07 | 2027-02-16 |  |  | start no earlier than 2026-02-07 |
| 3647 |  | Fire hydrant work | 89.94d | 2026-02-07 | 2026-05-08 | 3580SS+53.38d |  |  |
| 3648 |  | Sprinkler & piping work | 89.94d | 2026-06-04 | 2026-09-02 | 3647FS+26.75d |  |  |
| 3649 |  | Shaft Downtake works | 89.94d | 2026-09-05 | 2027-01-17 | 3576 |  |  |
| 3650 |  | Connection to pump room | 29.94d | 2027-01-18 | 2027-02-16 | 3649 |  |  |
| 3651 | 37200.37300.37500.38200.95400.183800 | **Lift work** | 169.81d | 2026-09-04 | 2027-04-07 |  |  | start no earlier than 2026-09-04 |
| 3652 |  | Lift Shaft Handover | 39.94d | 2026-09-04 | 2026-10-14 | 2974 |  |  |
| 3653 |  | Lift installation work | 44.94d | 2026-10-14 | 2027-01-12 | 3652 |  |  |
| 3654 |  | Lift testing and commissioning | 84.94d | 2027-01-12 | 2027-04-07 | 3653 |  |  |
| 3655 | 37200.37300.37500.38200.95400.193800 | **AC work** | 99.94d | 2027-09-09 | 2027-12-18 |  |  | start no earlier than 2027-09-09 |
| 3656 |  | Split AC | 99.94d | 2027-09-09 | 2027-12-18 | 3672FS-26.75d |  |  |
| 3657 | 37200.37300.37500.38200.126100 | **Tower Completion** | 253.88d | 2026-10-18 | 2027-08-13 |  |  | start no earlier than 2026-10-18 |
| 3658 |  | SURFACE PREPARATION | 79.94d | 2026-10-18 | 2027-02-20 | 3012FS+1.88d |  |  |
| 3659 |  | External Painting | 99.94d | 2027-02-20 | 2027-05-31 | 3658 |  |  |
| 3660 |  | Final coat of painting | 74d | 2027-05-31 | 2027-08-13 | 3659 |  |  |
| 3661 |  | Misc. work | 59.94d | 2027-05-31 | 2027-07-30 | 3659 |  |  |
| 3662 | 37200.37300.37500.38200.192900 | **Basement lobby** | 60d | 2026-04-30 | 2026-06-29 |  |  | start no earlier than 2026-04-30 |
| 3663 |  | Basement lobby | 60d | 2026-04-30 | 2026-06-29 | 3586 |  |  |
| 3664 | 37200.37300.37500.38200.114000 | **Post OC activities** | 333.94d | 2027-04-08 | 2028-03-07 |  |  | start no earlier than 2027-04-08 |
| 3665 |  | Wardrobe installation | 179.94d | 2027-09-09 | 2028-03-07 | 3672FS-26.75d |  |  |
| 3666 |  | CP & SANITARYWARE | 119.94d | 2027-09-09 | 2028-01-07 | 3672FS-26.75d |  |  |
| 3667 |  | Wooden Flooring | 179.94d | 2027-09-09 | 2028-03-07 | 3672FS-26.75d |  |  |
| 3668 |  | Electrical Fixtures And Fittings | 119.94d | 2027-04-08 | 2027-08-06 | 3572 |  |  |
| 3669 |  | Modular Kitchen | 179.94d | 2027-09-09 | 2028-03-07 | 3665SS |  |  |
| 3670 |  | Final Coat Paint | 89.94d | 2027-09-23 | 2027-12-22 | 3672FS-13.38d |  |  |
| 3671 |  | OC Application/Readiness | 0d | 2027-08-13 | 2027-08-13 | 2974, 3581FS+7.12d, 3643, 3589, 3574, 3584, 3625, 3630, 3631, 3633, 3634, 3635, 3636, 3638, 3639, 3642, 3645, 3648, 3650, 3654, 3660, 3661, 3663 |  |  |
| 3672 |  | OC Receipt | 0.94d | 2027-10-05 | 2027-10-06 | 3671FS+53.38d |  |  |
| 3673 |  | Offer To Possession | 29.94d | 2028-03-07 | 2028-04-06 | 3665, 3666, 3667, 3668, 3669, 3670 |  |  |
| 3674 | 37200.37300.37500.38300 | **Tower 1** | 1450.06d | 2023-09-30 | 2028-03-02 |  | 4% | start no earlier than 2023-09-30 |
| 3675 | 37200.37300.37500.38300.96900 | **Substructure** | 628.06d | 2023-09-30 | 2025-09-02 |  | 63% | start no earlier than 2023-09-30 |
| 3676 | 37200.37300.37500.38300.96900.114100 | **Soil Bed Preparation** | 553.5d | 2023-09-30 | 2025-06-19 |  | 77% | start no earlier than 2023-09-30 |
| 3677 |  | Test Piling | 74.94d | 2023-09-30 | 2024-01-27 |  | 100% | start no earlier than 2023-09-30 |
| 3678 |  | Excavation | 29.94d | 2024-01-10 | 2024-02-08 | 7SS+36.74d | 100% | start no earlier than 2024-01-10 |
| 3679 |  | Main Piling Work | 182.56d | 2024-04-12 | 2024-10-11 | 7FS+227.55d | 100% | start no earlier than 2024-04-12 |
| 3680 |  | Anti-termite | 4.94d | 2025-04-01 | 2025-04-05 | 3679FF-92.8d |  |  |
| 3681 |  | PCC | 9.81d | 2024-10-18 | 2024-10-27 | 3678FS+55.05d, 3680SS+12.95d | 100% | start no earlier than 2024-10-18 |
| 3682 |  | Backfilling | 20.06d | 2025-04-01 | 2025-04-21 |  |  | start no earlier than 2025-04-01 |
| 3683 |  | Backfilling | 59.94d | 2025-04-21 | 2025-06-19 | 3696, 3682 |  |  |
| 3684 | 37200.37300.37500.38300.96900.101800 | **RCC Structure** | 118.5d | 2024-12-05 | 2025-03-29 |  | 100% | start no earlier than 2024-12-05 |
| 3685 | 37200.37300.37500.38300.96900.101800.146700 | **Raft Foundation** | 30.5d | 2024-12-05 | 2024-12-31 |  | 100% | start no earlier than 2024-12-05 |
| 3686 |  | Reinforcement | 30d | 2024-12-05 | 2024-12-31 | 3681FS-29.5d | 100% | start no earlier than 2024-12-05 |
| 3687 |  | Formwork | 11d | 2024-12-17 | 2024-12-29 | 3686FF+5d | 100% | start no earlier than 2024-12-17 |
| 3688 |  | Concreting | 4d | 2024-12-28 | 2024-12-31 | 3687FF-2d | 100% | start no earlier than 2024-12-28 |
| 3689 | 37200.37300.37500.38300.96900.101800.146800 | **Basement 1 Slab** | 32d | 2025-01-01 | 2025-02-01 |  | 100% | start no earlier than 2025-01-01 |
| 3690 |  | Reinforcement | 23d | 2025-01-01 | 2025-02-01 | 3688FS+1d | 100% | start no earlier than 2025-01-01 |
| 3691 |  | Formwork | 23d | 2025-01-03 | 2025-02-01 | 3690FF | 100% | start no earlier than 2025-01-03 |
| 3692 |  | Concreting | 1.25d | 2025-01-25 | 2025-02-01 | 3691FF-0.75d | 100% | start no earlier than 2025-01-25 |
| 3693 | 37200.37300.37500.38300.96900.101800.146900 | **Basement 2 Slab/GF** | 26d | 2025-01-26 | 2025-02-20 |  | 100% | start no earlier than 2025-01-26 |
| 3694 |  | Reinforcement | 22d | 2025-01-26 | 2025-02-16 | 3692FS-6.25d | 100% | start no earlier than 2025-01-26 |
| 3695 |  | Formwork | 22d | 2025-01-29 | 2025-02-19 | 3694FF+3d | 100% | start no earlier than 2025-01-29 |
| 3696 |  | Concreting | 2d | 2025-02-19 | 2025-02-20 | 3695FS-1d | 100% | start no earlier than 2025-02-19 |
| 3697 | 37200.37300.37500.38300.96900.101800.147000 | **Podium /Ground Floor Slab** | 38d | 2025-02-20 | 2025-03-29 |  | 100% | start no earlier than 2025-02-20 |
| 3698 |  | Reinforcement | 20d | 2025-02-20 | 2025-03-27 | 3696 | 100% | start no earlier than 2025-02-20 |
| 3699 |  | Formwork | 18d | 2025-02-26 | 2025-03-28 | 3698FF+0.75d | 100% | start no earlier than 2025-02-26 |
| 3700 |  | Concreting | 2d | 2025-03-28 | 2025-03-29 | 3699 | 100% | start no earlier than 2025-03-28 |
| 3701 | 37200.37300.37500.38300.96900.129000 | **Substructure Finishing** | 129.81d | 2025-04-25 | 2025-09-02 |  |  | start no earlier than 2025-04-25 |
| 3702 |  | Masonary work | 44.94d | 2025-04-25 | 2025-06-09 | 3700FS+26.75d |  |  |
| 3703 |  | Plaster | 39.94d | 2025-06-09 | 2025-07-19 | 3702 |  |  |
| 3704 |  | Structural steel | 59.94d | 2025-05-22 | 2025-07-21 | 3700FS+53.38d |  |  |
| 3705 |  | White Wash | 44.94d | 2025-07-19 | 2025-09-02 | 3703 |  |  |
| 3706 | 37200.37300.37500.38300.38900 | **Superstructure** | 730.94d | 2025-03-31 | 2027-06-29 |  |  | start no earlier than 2025-03-31 |
| 3707 | 37200.37300.37500.38300.38900.43700 | **RCC structure** | 439.38d | 2025-03-31 | 2026-07-28 |  |  | start no earlier than 2025-03-31 |
| 3708 | 37200.37300.37500.38300.38900.43700.147100 | **1st floor slab** | 24d | 2025-03-31 | 2025-04-23 |  | 4% | start no earlier than 2025-03-31 |
| 3709 |  | Reinforcement | 20d | 2025-03-31 | 2025-04-19 | 3700FS+1d | 10% | start no earlier than 2025-03-31 |
| 3710 |  | Wall conduiting | 4d | 2025-04-01 | 2025-04-05 | 3709SS+2.75d |  |  |

| ID | WBS | Task | Duration | Start | Finish | Predecessors | Constraint |
| --- | --- | --- | --- | --- | --- | --- | --- |
| 3711 |  | Formwork | 21d | 2025-04-02 | 2025-04-22 | 3709SS+3d |  |
| 3712 |  | Concreting | 1d | 2025-04-23 | 2025-04-23 | 3711 |  |
| 3713 | 37200.37300.37500.38300.38900.43700.147200 | **2nd floor slab** | 21d | 2025-04-25 | 2025-05-15 |  | start no earlier than 2025-04-25 |
| 3714 |  | Reinforcement | 20d | 2025-04-25 | 2025-05-14 | 3712FS+1d |  |
| 3715 |  | Wall conduiting | 4d | 2025-04-27 | 2025-05-01 | 3710, 3714SS+2.75d |  |
| 3716 |  | Formwork | 17d | 2025-04-28 | 2025-05-14 | 3714SS+3d |  |
| 3717 |  | Concreting | 1d | 2025-05-15 | 2025-05-15 | 3716 |  |
| 3718 | 37200.37300.37500.38300.38900.43700.147300 | **3rd floor slab** | 15d | 2025-05-17 | 2025-05-31 |  | start no earlier than 2025-05-17 |
| 3719 |  | Reinforcement | 11d | 2025-05-17 | 2025-05-27 | 3717FS+1d |  |
| 3720 |  | Wall conduiting | 3d | 2025-05-19 | 2025-05-22 | 3715, 3719SS+2.75d |  |
| 3721 |  | Formwork | 11d | 2025-05-20 | 2025-05-30 | 3719SS+3d |  |
| 3722 |  | Concreting | 1d | 2025-05-31 | 2025-05-31 | 3721 |  |
| 3723 | 37200.37300.37500.38300.38900.43700.147400 | **4th floor slab** | 9d | 2025-06-02 | 2025-06-10 |  | start no earlier than 2025-06-02 |
| 3724 |  | Reinforcement | 8d | 2025-06-02 | 2025-06-09 | 3722FS+1d |  |
| 3725 |  | Wall conduiting | 3d | 2025-06-03 | 2025-06-05 | 3720, 3724SS+1d |  |
| 3726 |  | Formwork | 7d | 2025-06-03 | 2025-06-09 | 3724SS+1d |  |
| 3727 |  | Concreting | 1d | 2025-06-10 | 2025-06-10 | 3726 |  |
| 3728 | 37200.37300.37500.38300.38900.43700.147500 | **5th floor slab** | 9d | 2025-06-12 | 2025-06-20 |  | start no earlier than 2025-06-12 |
| 3729 |  | Reinforcement | 8d | 2025-06-12 | 2025-06-19 | 3727FS+1d |  |
| 3730 |  | Wall conduiting | 3d | 2025-06-13 | 2025-06-15 | 3725, 3729SS+1d |  |
| 3731 |  | Formwork | 7d | 2025-06-13 | 2025-06-19 | 3729SS+1d |  |
| 3732 |  | Concreting | 1d | 2025-06-20 | 2025-06-20 | 3731 |  |
| 3733 | 37200.37300.37500.38300.38900.43700.147600 | **6th floor slab** | 9d | 2025-06-22 | 2025-06-30 |  | start no earlier than 2025-06-22 |
| 3734 |  | Reinforcement | 8d | 2025-06-22 | 2025-06-29 | 3732FS+1d |  |
| 3735 |  | Wall conduiting | 3d | 2025-06-23 | 2025-06-25 | 3730, 3734SS+1d |  |
| 3736 |  | Formwork | 7d | 2025-06-23 | 2025-06-29 | 3734SS+1d |  |
| 3737 |  | Concreting | 1d | 2025-06-30 | 2025-06-30 | 3736 |  |
| 3738 | 37200.37300.37500.38300.38900.43700.147700 | **7th floor slab** | 9d | 2025-07-02 | 2025-07-10 |  | start no earlier than 2025-07-02 |
| 3739 |  | Reinforcement | 8d | 2025-07-02 | 2025-07-09 | 3737FS+1d |  |
| 3740 |  | Wall conduiting | 3d | 2025-07-03 | 2025-07-05 | 3735, 3739SS+1d |  |
| 3741 |  | Formwork | 7d | 2025-07-03 | 2025-07-09 | 3739SS+1d |  |
| 3742 |  | Concreting | 1d | 2025-07-10 | 2025-07-10 | 3741 |  |
| 3743 | 37200.37300.37500.38300.38900.43700.147800 | **8th floor slab** | 12d | 2025-07-12 | 2025-07-23 |  | start no earlier than 2025-07-12 |
| 3744 |  | Reinforcement | 10d | 2025-07-12 | 2025-07-21 | 3742FS+1d |  |
| 3745 |  | Wall conduiting | 3d | 2025-07-13 | 2025-07-15 | 3740, 3744SS+1d |  |
| 3746 |  | Formwork | 10d | 2025-07-13 | 2025-07-22 | 3744SS+1d |  |
| 3747 |  | Concreting | 1d | 2025-07-23 | 2025-07-23 | 3746 |  |
| 3748 | 37200.37300.37500.38300.38900.43700.147900 | **9th floor slab** | 9d | 2025-07-25 | 2025-08-02 |  | start no earlier than 2025-07-25 |
| 3749 |  | Reinforcement | 8d | 2025-07-25 | 2025-08-01 | 3747FS+1d |  |
| 3750 |  | Wall conduiting | 3d | 2025-07-26 | 2025-07-28 | 3745, 3749SS+1d |  |
| 3751 |  | Formwork | 7d | 2025-07-26 | 2025-08-01 | 3749SS+1d |  |
| 3752 |  | Concreting | 1d | 2025-08-02 | 2025-08-02 | 3751 |  |
| 3753 | 37200.37300.37500.38300.38900.43700.148000 | **10th floor slab** | 9d | 2025-08-04 | 2025-08-12 |  | start no earlier than 2025-08-04 |
| 3754 |  | Reinforcement | 8d | 2025-08-04 | 2025-08-11 | 3752FS+1d |  |
| 3755 |  | Wall conduiting | 3d | 2025-08-05 | 2025-08-07 | 3750, 3754SS+1d |  |
| 3756 |  | Formwork | 7d | 2025-08-05 | 2025-08-11 | 3754SS+1d |  |
| 3757 |  | Concreting | 1d | 2025-08-12 | 2025-08-12 | 3756 |  |
| 3758 | 37200.37300.37500.38300.38900.43700.148100 | **11th floor slab** | 9d | 2025-08-14 | 2025-08-22 |  | start no earlier than 2025-08-14 |
| 3759 |  | Reinforcement | 8d | 2025-08-14 | 2025-08-21 | 3757FS+1d |  |
| 3760 |  | Wall conduiting | 3d | 2025-08-15 | 2025-08-17 | 3755, 3759SS+1d |  |
| 3761 |  | Formwork | 7d | 2025-08-15 | 2025-08-21 | 3759SS+1d |  |
| 3762 |  | Concreting | 1d | 2025-08-22 | 2025-08-22 | 3761 |  |
| 3763 | 37200.37300.37500.38300.38900.43700.148200 | **12th floor slab** | 9d | 2025-08-24 | 2025-09-01 |  | start no earlier than 2025-08-24 |
| 3764 |  | Reinforcement | 8d | 2025-08-24 | 2025-08-31 | 3762FS+1d |  |
| 3765 |  | Wall conduiting | 3d | 2025-08-25 | 2025-08-27 | 3760, 3764SS+1d |  |
| 3766 |  | Formwork | 7d | 2025-08-25 | 2025-08-31 | 3764SS+1d |  |
| 3767 |  | Concreting | 1d | 2025-09-01 | 2025-09-01 | 3766 |  |
| 3768 | 37200.37300.37500.38300.38900.43700.148300 | **13th floor slab** | 9d | 2025-09-03 | 2025-09-11 |  | start no earlier than 2025-09-03 |
| 3769 |  | Reinforcement | 8d | 2025-09-03 | 2025-09-10 | 3767FS+1d |  |
| 3770 |  | Wall conduiting | 3d | 2025-09-04 | 2025-09-06 | 3765, 3769SS+1d |  |
| 3771 |  | Formwork | 7d | 2025-09-04 | 2025-09-10 | 3769SS+1d |  |
| 3772 |  | Concreting | 1d | 2025-09-11 | 2025-09-11 | 3771 |  |
| 3773 | 37200.37300.37500.38300.38900.43700.148400 | **14th floor slab** | 9d | 2025-09-13 | 2025-09-21 |  | start no earlier than 2025-09-13 |
| 3774 |  | Reinforcement | 8d | 2025-09-13 | 2025-09-20 | 3772FS+1d |  |
| 3775 |  | Wall conduiting | 3d | 2025-09-14 | 2025-09-16 | 3770, 3774SS+1d |  |
| 3776 |  | Formwork | 7d | 2025-09-14 | 2025-09-20 | 3774SS+1d |  |
| 3777 |  | Concreting | 1d | 2025-09-21 | 2025-09-21 | 3776 |  |
| 3778 | 37200.37300.37500.38300.38900.43700.148500 | **15th floor slab** | 9d | 2025-09-23 | 2025-10-01 |  | start no earlier than 2025-09-23 |
| 3779 |  | Reinforcement | 8d | 2025-09-23 | 2025-09-30 | 3777FS+1d |  |
| 3780 |  | Wall conduiting | 3d | 2025-09-24 | 2025-09-26 | 3775, 3779SS+1d |  |

| ID | WBS | Task | Duration | Start | Finish | Predecessors | Constraint |
| --- | --- | --- | --- | --- | --- | --- | --- |
| 3781 |  | Formwork | 7d | 2025-09-24 | 2025-09-30 | 3779SS+1d |  |
| 3782 |  | Concreting | 1d | 2025-10-01 | 2025-10-01 | 3781 |  |
| 3783 | 37200.37300.37500.38300.38900.43700.148600 | **16th floor slab** | 12d | 2025-10-03 | 2025-10-14 |  | start no earlier than 2025-10-03 |
| 3784 |  | Reinforcement | 10d | 2025-10-03 | 2025-10-12 | 3782FS+1d |  |
| 3785 |  | Wall conduiting | 3d | 2025-10-04 | 2025-10-06 | 3780, 3784SS+1d |  |
| 3786 |  | Formwork | 10d | 2025-10-04 | 2025-10-13 | 3784SS+1d |  |
| 3787 |  | Concreting | 1d | 2025-10-14 | 2025-10-14 | 3786 |  |
| 3788 | 37200.37300.37500.38300.38900.43700.148700 | **17th floor slab** | 9d | 2025-10-16 | 2025-10-24 |  | start no earlier than 2025-10-16 |
| 3789 |  | Reinforcement | 8d | 2025-10-16 | 2025-10-23 | 3787FS+1d |  |
| 3790 |  | Wall conduiting | 3d | 2025-10-17 | 2025-10-19 | 3785, 3789SS+1d |  |
| 3791 |  | Formwork | 7d | 2025-10-17 | 2025-10-23 | 3789SS+1d |  |
| 3792 |  | Concreting | 1d | 2025-10-24 | 2025-10-24 | 3791 |  |
| 3793 | 37200.37300.37500.38300.38900.43700.148800 | **18th floor slab** | 9d | 2025-10-26 | 2025-12-18 |  | start no earlier than 2025-10-26 |
| 3794 |  | Reinforcement | 8d | 2025-10-26 | 2025-12-17 | 3792FS+1d |  |
| 3795 |  | Wall conduiting | 3d | 2025-10-27 | 2025-10-29 | 3790, 3794SS+1d |  |
| 3796 |  | Formwork | 7d | 2025-10-27 | 2025-12-17 | 3794SS+1d |  |
| 3797 |  | Concreting | 1d | 2025-12-18 | 2025-12-18 | 3796 |  |
| 3798 | 37200.37300.37500.38300.38900.43700.148900 | **19th floor slab** | 8d | 2025-12-20 | 2025-12-27 |  | start no earlier than 2025-12-20 |
| 3799 |  | Reinforcement | 7d | 2025-12-20 | 2025-12-26 | 3797FS+1d |  |
| 3800 |  | Wall conduiting | 3d | 2025-12-21 | 2025-12-23 | 3795, 3799SS+1d |  |
| 3801 |  | Formwork | 6d | 2025-12-21 | 2025-12-26 | 3799SS+1d |  |
| 3802 |  | Concreting | 1d | 2025-12-27 | 2025-12-27 | 3801 |  |
| 3803 | 37200.37300.37500.38300.38900.43700.149000 | **20th floor slab** | 8d | 2025-12-30 | 2026-01-06 |  | start no earlier than 2025-12-30 |
| 3804 |  | Reinforcement | 7d | 2025-12-30 | 2026-01-05 | 3802FS+2d |  |
| 3805 |  | Wall conduiting | 3d | 2025-12-31 | 2026-01-02 | 3800, 3804SS+1d |  |
| 3806 |  | Formwork | 6d | 2025-12-31 | 2026-01-05 | 3804SS+1d |  |
| 3807 |  | Concreting | 1d | 2026-01-06 | 2026-01-06 | 3806 |  |
| 3808 | 37200.37300.37500.38300.38900.43700.149100 | **21st floor slab** | 8d | 2026-01-08 | 2026-01-15 |  | start no earlier than 2026-01-08 |
| 3809 |  | Reinforcement | 7d | 2026-01-08 | 2026-01-14 | 3807FS+1d |  |
| 3810 |  | Wall conduiting | 3d | 2026-01-09 | 2026-01-11 | 3805, 3809SS+1d |  |
| 3811 |  | Formwork | 6d | 2026-01-09 | 2026-01-14 | 3809SS+1d |  |
| 3812 |  | Concreting | 1d | 2026-01-15 | 2026-01-15 | 3811 |  |
| 3813 | 37200.37300.37500.38300.38900.43700.149200 | **22nd floor slab** | 8d | 2026-01-17 | 2026-01-24 |  | start no earlier than 2026-01-17 |
| 3814 |  | Reinforcement | 7d | 2026-01-17 | 2026-01-23 | 3812FS+1d |  |
| 3815 |  | Wall conduiting | 3d | 2026-01-18 | 2026-01-20 | 3810, 3814SS+1d |  |
| 3816 |  | Formwork | 6d | 2026-01-18 | 2026-01-23 | 3814SS+1d |  |
| 3817 |  | Concreting | 1d | 2026-01-24 | 2026-01-24 | 3816 |  |
| 3818 | 37200.37300.37500.38300.38900.43700.149300 | **23rd floor slab** | 8d | 2026-01-26 | 2026-02-02 |  | start no earlier than 2026-01-26 |
| 3819 |  | Reinforcement | 7d | 2026-01-26 | 2026-02-01 | 3817FS+1d |  |
| 3820 |  | Wall conduiting | 3d | 2026-01-27 | 2026-01-29 | 3815, 3819SS+1d |  |
| 3821 |  | Formwork | 6d | 2026-01-27 | 2026-02-01 | 3819SS+1d |  |
| 3822 |  | Concreting | 1d | 2026-02-02 | 2026-02-02 | 3821 |  |
| 3823 | 37200.37300.37500.38300.38900.43700.149400 | **24th floor slab** | 12d | 2026-02-04 | 2026-02-15 |  | start no earlier than 2026-02-04 |
| 3824 |  | Reinforcement | 10d | 2026-02-04 | 2026-02-13 | 3822FS+1d |  |
| 3825 |  | Wall conduiting | 3d | 2026-02-05 | 2026-02-07 | 3820, 3824SS+1d |  |
| 3826 |  | Formwork | 10d | 2026-02-05 | 2026-02-14 | 3824SS+1d |  |
| 3827 |  | Concreting | 1d | 2026-02-15 | 2026-02-15 | 3826 |  |
| 3828 | 37200.37300.37500.38300.38900.43700.149500 | **25th floor slab** | 12d | 2026-02-17 | 2026-02-28 |  | start no earlier than 2026-02-17 |
| 3829 |  | Reinforcement | 10d | 2026-02-17 | 2026-02-26 | 3827FS+1d |  |
| 3830 |  | Wall conduiting | 3d | 2026-02-18 | 2026-02-20 | 3825, 3829SS+1d |  |
| 3831 |  | Formwork | 10d | 2026-02-18 | 2026-02-27 | 3829SS+1d |  |
| 3832 |  | Concreting | 1d | 2026-02-28 | 2026-02-28 | 3831 |  |
| 3833 | 37200.37300.37500.38300.38900.43700.149600 | **26th floor slab** | 8d | 2026-03-02 | 2026-03-09 |  | start no earlier than 2026-03-02 |
| 3834 |  | Reinforcement | 7d | 2026-03-02 | 2026-03-08 | 3832FS+1d |  |
| 3835 |  | Wall conduiting | 3d | 2026-03-03 | 2026-03-05 | 3830, 3834SS+1d |  |
| 3836 |  | Formwork | 6d | 2026-03-03 | 2026-03-08 | 3834SS+1d |  |
| 3837 |  | Concreting | 1d | 2026-03-09 | 2026-03-09 | 3836 |  |
| 3838 | 37200.37300.37500.38300.38900.43700.149700 | **27th floor slab** | 8d | 2026-03-11 | 2026-03-18 |  | start no earlier than 2026-03-11 |
| 3839 |  | Reinforcement | 7d | 2026-03-11 | 2026-03-17 | 3837FS+1d |  |
| 3840 |  | Wall conduiting | 3d | 2026-03-12 | 2026-03-14 | 3835, 3839SS+1d |  |
| 3841 |  | Formwork | 6d | 2026-03-12 | 2026-03-17 | 3839SS+1d |  |
| 3842 |  | Concreting | 1d | 2026-03-18 | 2026-03-18 | 3841 |  |
| 3843 | 37200.37300.37500.38300.38900.43700.149800 | **28th floor slab** | 8d | 2026-03-20 | 2026-03-27 |  | start no earlier than 2026-03-20 |
| 3844 |  | Reinforcement | 7d | 2026-03-20 | 2026-03-26 | 3842FS+1d |  |
| 3845 |  | Wall conduiting | 3d | 2026-03-21 | 2026-03-23 | 3840, 3844SS+1d |  |
| 3846 |  | Formwork | 6d | 2026-03-21 | 2026-03-26 | 3844SS+1d |  |
| 3847 |  | Concreting | 1d | 2026-03-27 | 2026-03-27 | 3846 |  |
| 3848 | 37200.37300.37500.38300.38900.43700.149900 | **29th floor slab** | 8d | 2026-03-28 | 2026-04-04 |  | start no earlier than 2026-03-28 |
| 3849 |  | Reinforcement | 7d | 2026-03-28 | 2026-04-03 | 3847 |  |
| 3850 |  | Wall conduiting | 3d | 2026-03-29 | 2026-03-31 | 3845, 3849SS+1d |  |

| ID | WBS | Task | Duration | Start | Finish | Predecessors | Constraint |
| --- | --- | --- | --- | --- | --- | --- | --- |
| 3851 |  | Formwork | 6d | 2026-03-29 | 2026-04-03 | 3849SS+1d |  |
| 3852 |  | Concreting | 1d | 2026-04-04 | 2026-04-04 | 3851 |  |
| 3853 | 37200.37300.37500.38300.38900.43700.150000 | **30th floor slab** | 8d | 2026-04-05 | 2026-04-12 |  | start no earlier than 2026-04-05 |
| 3854 |  | Reinforcement | 7d | 2026-04-05 | 2026-04-11 | 3852 |  |
| 3855 |  | Wall conduiting | 3d | 2026-04-06 | 2026-04-08 | 3850, 3854SS+1d |  |
| 3856 |  | Formwork | 6d | 2026-04-06 | 2026-04-11 | 3854SS+1d |  |
| 3857 |  | Concreting | 1d | 2026-04-12 | 2026-04-12 | 3856 |  |
| 3858 | 37200.37300.37500.38300.38900.43700.150100 | **31st floor slab** | 10d | 2026-04-13 | 2026-04-22 |  | start no earlier than 2026-04-13 |
| 3859 |  | Reinforcement | 7d | 2026-04-13 | 2026-04-19 | 3857 |  |
| 3860 |  | Wall conduiting | 3d | 2026-04-14 | 2026-04-16 | 3855, 3859SS+1d |  |
| 3861 |  | Formwork | 8d | 2026-04-14 | 2026-04-21 | 3859SS+1d |  |
| 3862 |  | Concreting | 1d | 2026-04-22 | 2026-04-22 | 3861 |  |
| 3863 | 37200.37300.37500.38300.38900.43700.150200 | **32nd floor slab** | 10d | 2026-04-23 | 2026-05-02 |  | start no earlier than 2026-04-23 |
| 3864 |  | Reinforcement | 7d | 2026-04-23 | 2026-04-29 | 3862 |  |
| 3865 |  | Wall conduiting | 3d | 2026-04-24 | 2026-04-26 | 3860, 3864SS+1d |  |
| 3866 |  | Formwork | 8d | 2026-04-24 | 2026-05-01 | 3864SS+1d |  |
| 3867 |  | Concreting | 1d | 2026-05-02 | 2026-05-02 | 3866 |  |
| 3868 | 37200.37300.37500.38300.38900.43700.150300 | **33rd floor slab** | 10.88d | 2026-05-03 | 2026-05-13 |  | start no earlier than 2026-05-03 |
| 3869 |  | Reinforcement | 8.94d | 2026-05-03 | 2026-05-11 | 3867 |  |
| 3870 |  | Wall conduiting | 1.94d | 2026-05-04 | 2026-05-05 | 3865, 3869SS+1d |  |
| 3871 |  | Formwork | 8.94d | 2026-05-04 | 2026-05-12 | 3869SS+1d |  |
| 3872 |  | Concreting | 0.94d | 2026-05-12 | 2026-05-13 | 3871 |  |
| 3873 | 37200.37300.37500.38300.38900.43700.150400 | **34th floor slab** | 11.88d | 2026-05-13 | 2026-05-25 |  | start no earlier than 2026-05-13 |
| 3874 |  | Reinforcement | 9.94d | 2026-05-13 | 2026-05-23 | 3872 |  |
| 3875 |  | Wall conduiting | 1.94d | 2026-05-14 | 2026-05-16 | 3870, 3874SS+1d |  |
| 3876 |  | Formwork | 9.94d | 2026-05-14 | 2026-05-24 | 3874SS+1d |  |
| 3877 |  | Concreting | 0.94d | 2026-05-24 | 2026-05-25 | 3876 |  |
| 3878 | 37200.37300.37500.38300.38900.43700.150500 | **35th floor slab** | 10.88d | 2026-05-25 | 2026-06-05 |  | start no earlier than 2026-05-25 |
| 3879 |  | Reinforcement | 8.94d | 2026-05-25 | 2026-06-03 | 3877 |  |
| 3880 |  | Wall conduiting | 1.94d | 2026-05-26 | 2026-05-28 | 3875, 3879SS+1d |  |
| 3881 |  | Formwork | 7.94d | 2026-05-27 | 2026-06-04 | 3880SS+1d |  |
| 3882 |  | Concreting | 0.94d | 2026-06-04 | 2026-06-05 | 3881 |  |
| 3883 | 37200.37300.37500.38300.38900.43700.150600 | **Terrace floor slab** | 13.88d | 2026-06-05 | 2026-06-19 |  | start no earlier than 2026-06-05 |
| 3884 |  | Reinforcement | 10.94d | 2026-06-05 | 2026-06-16 | 3882 |  |
| 3885 |  | Wall conduiting | 1.94d | 2026-06-06 | 2026-06-08 | 3880, 3884SS+1d |  |
| 3886 |  | Formwork | 11.94d | 2026-06-06 | 2026-06-18 | 3884SS+1d |  |
| 3887 |  | Concreting | 0.94d | 2026-06-18 | 2026-06-19 | 3886 |  |
| 3888 | 37200.37300.37500.38300.38900.43700.150700 | **OHT & Mumty** | 38.88d | 2026-06-19 | 2026-07-28 |  | start no earlier than 2026-06-19 |
| 3889 |  | Reinforcement | 29.94d | 2026-06-19 | 2026-07-19 | 3887 |  |
| 3890 |  | Wall conduiting | 4.94d | 2026-06-20 | 2026-06-25 | 3885, 3889SS+1d |  |
| 3891 |  | Formwork | 32.94d | 2026-06-22 | 2026-07-25 | 3889SS+3d |  |
| 3892 |  | Concreting | 2.94d | 2026-07-25 | 2026-07-28 | 3891 |  |
| 3893 | 37200.37300.37500.38300.38900.45200 | **Post Pour Activities** | 419.12d | 2025-06-01 | 2026-09-08 |  | start no earlier than 2025-06-01 |
| 3894 |  | 1st Floor | 7d | 2025-06-01 | 2025-06-08 | 3722FS+0.25d |  |
| 3895 |  | 2nd Floor | 7d | 2025-07-11 | 2025-07-17 | 3894, 3742 |  |
| 3896 |  | 3rd Floor | 7d | 2025-07-24 | 2025-07-30 | 3895, 3747 |  |
| 3897 |  | 4th Floor | 7d | 2025-08-03 | 2025-08-09 | 3896, 3752 |  |
| 3898 |  | 5th Floor | 7d | 2025-08-13 | 2025-08-19 | 3897, 3757 |  |
| 3899 |  | 6th Floor | 7d | 2025-08-23 | 2025-08-29 | 3898, 3762 |  |
| 3900 |  | 7th Floor | 7d | 2025-09-02 | 2025-09-08 | 3899, 3767 |  |
| 3901 |  | 8th Floor | 7d | 2025-09-12 | 2025-09-18 | 3900, 3772 |  |
| 3902 |  | 9th Floor | 7d | 2025-09-22 | 2025-09-28 | 3901, 3777 |  |
| 3903 |  | 10th Floor | 7d | 2025-10-02 | 2025-10-08 | 3902, 3782 |  |
| 3904 |  | 11th Floor | 7d | 2025-10-15 | 2025-10-21 | 3903, 3787 |  |
| 3905 |  | 12th Floor | 7d | 2025-10-25 | 2025-10-31 | 3904, 3792 |  |
| 3906 |  | 13th Floor | 7d | 2025-12-19 | 2025-12-25 | 3905, 3797 |  |
| 3907 |  | 14th Floor | 7d | 2025-12-28 | 2026-01-03 | 3906, 3802 |  |
| 3908 |  | 15th Floor | 7d | 2026-01-07 | 2026-01-13 | 3907, 3807 |  |
| 3909 |  | 16th Floor | 7d | 2026-01-16 | 2026-01-22 | 3908, 3812 |  |
| 3910 |  | 17th Floor | 7d | 2026-01-25 | 2026-01-31 | 3909, 3817 |  |
| 3911 |  | 18th Floor | 7d | 2026-02-03 | 2026-02-09 | 3910, 3822 |  |
| 3912 |  | 19th Floor | 7d | 2026-02-16 | 2026-02-22 | 3911, 3827 |  |
| 3913 |  | 20th Floor | 7d | 2026-03-01 | 2026-03-07 | 3912, 3832 |  |
| 3914 |  | 21st Floor | 7d | 2026-03-10 | 2026-03-16 | 3913, 3837 |  |
| 3915 |  | 22nd Floor | 7d | 2026-03-19 | 2026-03-25 | 3914, 3842 |  |
| 3916 |  | 23rd Floor | 7d | 2026-03-28 | 2026-04-03 | 3915, 3847 |  |
| 3917 |  | 24th Floor | 7d | 2026-04-05 | 2026-04-11 | 3916, 3852 |  |
| 3918 |  | 25th Floor | 7d | 2026-04-13 | 2026-04-19 | 3917, 3857 |  |
| 3919 |  | 26th Floor | 7d | 2026-04-23 | 2026-04-29 | 3918, 3862 |  |
| 3920 |  | 27th Floor | 7d | 2026-05-03 | 2026-05-09 | 3919, 3867 |  |

| ID | WBS | Task | Duration | Start | Finish | Predecessors | Constraint |
| --- | --- | --- | --- | --- | --- | --- | --- |
| 3921 |  | 28th Floor | 7d | 2026-05-13 | 2026-05-20 | 3920, 3872 |  |
| 3922 |  | 29th Floor | 7d | 2026-05-25 | 2026-06-01 | 3921, 3877 |  |
| 3923 |  | 30th Floor | 7d | 2026-06-05 | 2026-06-12 | 3922, 3882 |  |
| 3924 |  | 31st Floor | 7d | 2026-06-19 | 2026-06-26 | 3923, 3887 |  |
| 3925 |  | 32nd Flood | 7d | 2026-07-28 | 2026-08-04 | 3924, 3892 |  |
| 3926 |  | 33rd Floor | 7d | 2026-08-04 | 2026-08-11 | 3925 |  |
| 3927 |  | 34th Floor | 7d | 2026-08-11 | 2026-08-18 | 3926 |  |
| 3928 |  | 35th Floor | 7d | 2026-08-18 | 2026-08-25 | 3927 |  |
| 3929 |  | Terrace | 7d | 2026-08-25 | 2026-09-01 | 3928 |  |
| 3930 |  | Mumty & Machine Room | 7d | 2026-09-01 | 2026-09-08 | 3929, 3890 |  |
| 3931 | 37200.37300.37500.38300.38900.40700 | **Finishing work** | 661.44d | 2025-06-08 | 2027-06-29 |  | start no earlier than 2025-06-08 |
| 3932 | 37200.37300.37500.38300.38900.40700.41700 | **Flat finishing** | 561.88d | 2025-06-08 | 2027-03-22 |  | start no earlier than 2025-06-08 |
| 3933 | 37200.37300.37500.38300.38900.40700.41700.62200 | **1st Floor** | 86d | 2025-06-08 | 2025-09-02 |  | start no earlier than 2025-06-08 |
| 3934 |  | Block Work | 8d | 2025-06-08 | 2025-06-16 | 3894FS+0.25d |  |
| 3935 |  | Door Frame Fixing | 9d | 2025-06-16 | 2025-06-25 | 3934 |  |
| 3936 |  | Internal Plumbing Works | 8d | 2025-06-16 | 2025-06-24 | 3934 |  |
| 3937 |  | Waterproofing | 10d | 2025-06-24 | 2025-07-04 | 3936 |  |
| 3938 |  | Internal Plaster | 8d | 2025-06-17 | 2025-06-25 | 3934FS+1d |  |
| 3939 |  | IPS flooring work | 10d | 2025-07-04 | 2025-07-14 | 3935, 3936, 3937 |  |
| 3940 |  | Toilet dado work | 8d | 2025-07-04 | 2025-07-12 | 3937, 3938 |  |
| 3941 |  | Toilet flooring work | 8d | 2025-07-12 | 2025-07-20 | 3940 |  |
| 3942 |  | Living dinning flooring | 12d | 2025-07-20 | 2025-08-01 | 3935, 3941 |  |
| 3943 |  | Aluminium door-window fixing | 12d | 2025-08-01 | 2025-08-13 | 3939, 3942 |  |
| 3944 |  | Putty primer coat | 6d | 2025-08-01 | 2025-08-07 | 3942 |  |
| 3945 |  | Door shutter fixing | 8d | 2025-08-01 | 2025-08-09 | 3942 |  |
| 3946 |  | Electrical wiring work | 8d | 2025-08-09 | 2025-08-17 | 3945 |  |
| 3947 |  | Painting 1st coat | 8d | 2025-08-17 | 2025-08-25 | 3944, 3945, 3946 |  |
| 3948 |  | False ceiling | 8d | 2025-08-25 | 2025-09-02 | 3947 |  |
| 3949 | 37200.37300.37500.38300.38900.40700.41700.62100 | **2nd Floor** | 86d | 2025-06-16 | 2025-09-10 |  | start no earlier than 2025-06-16 |
| 3950 |  | Block Work | 8d | 2025-06-16 | 2025-06-24 | 3934FS+0.25d |  |
| 3951 |  | Door Frame Fixing | 9d | 2025-06-25 | 2025-07-04 | 3935, 3950 |  |
| 3952 |  | Internal Plumbing Works | 8d | 2025-06-24 | 2025-07-02 | 3936, 3950 |  |
| 3953 |  | Waterproofing | 10d | 2025-07-04 | 2025-07-14 | 3937, 3952 |  |
| 3954 |  | Internal Plaster | 8d | 2025-06-25 | 2025-07-03 | 3938FS+0.25d |  |
| 3955 |  | IPS flooring work | 10d | 2025-07-14 | 2025-07-24 | 3939, 3951, 3952, 3953 |  |
| 3956 |  | Toilet dado work | 8d | 2025-07-14 | 2025-07-22 | 3940, 3953, 3954 |  |
| 3957 |  | Toilet flooring work | 8d | 2025-07-22 | 2025-07-30 | 3941, 3956 |  |
| 3958 |  | Living dinning flooring | 8d | 2025-08-01 | 2025-08-09 | 3942FS+0.25d |  |
| 3959 |  | Aluminium door-window fixing | 8d | 2025-08-13 | 2025-08-21 | 3943FS+0.25d |  |
| 3960 |  | Putty primer coat | 6d | 2025-08-09 | 2025-08-15 | 3944, 3958 |  |
| 3961 |  | Door shutter fixing | 8d | 2025-08-09 | 2025-08-17 | 3945, 3958 |  |
| 3962 |  | Electrical wiring work | 8d | 2025-08-17 | 2025-08-25 | 3946, 3961 |  |
| 3963 |  | Painting 1st coat | 8d | 2025-08-25 | 2025-09-02 | 3947, 3960, 3961, 3962 |  |
| 3964 |  | False ceiling | 8d | 2025-09-02 | 2025-09-10 | 3948, 3963 |  |
| 3965 | 37200.37300.37500.38300.38900.40700.41700.62000 | **3rd Floor** | 86d | 2025-06-25 | 2025-09-18 |  | start no earlier than 2025-06-25 |
| 3966 |  | Block Work | 8d | 2025-06-25 | 2025-07-02 | 3950FS+0.25d |  |
| 3967 |  | Door Frame Fixing | 9d | 2025-07-04 | 2025-07-13 | 3951, 3966 |  |
| 3968 |  | Internal Plumbing Works | 8d | 2025-07-03 | 2025-07-10 | 3952, 3966 |  |
| 3969 |  | Waterproofing | 10d | 2025-07-14 | 2025-07-24 | 3953, 3968 |  |
| 3970 |  | Internal Plaster | 8d | 2025-07-04 | 2025-07-11 | 3954FS+0.25d |  |
| 3971 |  | IPS flooring work | 10d | 2025-07-24 | 2025-08-03 | 3955, 3967, 3969, 3970 |  |
| 3972 |  | Toilet dado work | 8d | 2025-07-24 | 2025-08-01 | 3956, 3969, 3970 |  |
| 3973 |  | Toilet flooring work | 8d | 2025-08-01 | 2025-08-09 | 3957, 3972 |  |
| 3974 |  | Living dinning flooring | 8d | 2025-08-10 | 2025-08-17 | 3958FS+0.25d |  |
| 3975 |  | Aluminium door-window fixing | 8d | 2025-08-22 | 2025-08-29 | 3959FS+0.25d |  |
| 3976 |  | Putty primer coat | 6d | 2025-08-18 | 2025-08-23 | 3960, 3974 |  |
| 3977 |  | Door shutter fixing | 8d | 2025-08-18 | 2025-08-25 | 3961, 3974 |  |
| 3978 |  | Electrical wiring work | 8d | 2025-08-26 | 2025-09-02 | 3962, 3977 |  |
| 3979 |  | Painting 1st coat | 8d | 2025-09-03 | 2025-09-10 | 3963, 3976, 3977, 3978 |  |
| 3980 |  | False ceiling | 8d | 2025-09-11 | 2025-09-18 | 3964, 3979 |  |
| 3981 | 37200.37300.37500.38300.38900.40700.41700.61800 | **4th Floor** | 90d | 2025-07-03 | 2025-10-01 |  | start no earlier than 2025-07-03 |
| 3982 |  | Block Work | 8d | 2025-07-03 | 2025-07-11 | 3966FS+0.25d |  |
| 3983 |  | Door Frame Fixing | 9d | 2025-07-13 | 2025-07-22 | 3967, 3982 |  |
| 3984 |  | Internal Plumbing Works | 8d | 2025-07-11 | 2025-07-19 | 3968, 3982 |  |
| 3985 |  | Waterproofing | 10d | 2025-07-24 | 2025-08-03 | 3969, 3984 |  |
| 3986 |  | Internal Plaster | 8d | 2025-07-12 | 2025-07-20 | 3970FS+0.25d |  |
| 3987 |  | IPS flooring work | 10d | 2025-08-03 | 2025-08-13 | 3971, 3983, 3985, 3986 |  |
| 3988 |  | Toilet dado work | 8d | 2025-08-03 | 2025-08-11 | 3972, 3985, 3986 |  |
| 3989 |  | Toilet flooring work | 8d | 2025-08-11 | 2025-08-19 | 3973, 3988 |  |
| 3990 |  | Living dinning flooring | 12d | 2025-08-18 | 2025-08-30 | 3974FS+0.25d |  |

| ID | WBS | Task | Duration | Start | Finish | Predecessors | Constraint |
| --- | --- | --- | --- | --- | --- | --- | --- |
| 3991 |  | Aluminium door-window fixing | 12d | 2025-08-30 | 2025-09-11 | 3975FS+0.25d |  |
| 3992 |  | Putty primer coat | 6d | 2025-08-30 | 2025-09-05 | 3976, 3990 |  |
| 3993 |  | Door shutter fixing | 8d | 2025-08-30 | 2025-09-07 | 3977, 3990 |  |
| 3994 |  | Electrical wiring work | 8d | 2025-09-07 | 2025-09-15 | 3978, 3993 |  |
| 3995 |  | Painting 1st coat | 8d | 2025-09-15 | 2025-09-23 | 3979, 3992, 3993, 3994 |  |
| 3996 |  | False ceiling | 8d | 2025-09-23 | 2025-10-01 | 3980, 3995 |  |
| 3997 | 37200.37300.37500.38300.38900.40700.41700.61700 | **5th Floor** | 94d | 2025-07-11 | 2025-10-13 |  | start no earlier than 2025-07-11 |
| 3998 |  | Block Work | 8d | 2025-07-11 | 2025-07-19 | 3982FS+0.25d |  |
| 3999 |  | Door Frame Fixing | 9d | 2025-07-22 | 2025-07-31 | 3983, 3998 |  |
| 4000 |  | Internal Plumbing Works | 8d | 2025-07-19 | 2025-07-27 | 3984, 3998 |  |
| 4001 |  | Waterproofing | 10d | 2025-08-03 | 2025-08-13 | 3985, 4000 |  |
| 4002 |  | Internal Plaster | 8d | 2025-07-20 | 2025-07-28 | 3986FS+0.25d |  |
| 4003 |  | IPS flooring work | 10d | 2025-08-13 | 2025-08-23 | 3987, 3999, 4001, 4002 |  |
| 4004 |  | Toilet dado work | 8d | 2025-08-13 | 2025-08-21 | 3988, 4001, 4002 |  |
| 4005 |  | Toilet flooring work | 8d | 2025-08-21 | 2025-08-29 | 3989, 4004 |  |
| 4006 |  | Living dinning flooring | 12d | 2025-08-30 | 2025-09-11 | 3990FS+0.25d |  |
| 4007 |  | Aluminium door-window fixing | 12d | 2025-09-11 | 2025-09-23 | 3991FS+0.25d |  |
| 4008 |  | Putty primer coat | 6d | 2025-09-11 | 2025-09-17 | 3992, 4006 |  |
| 4009 |  | Door shutter fixing | 8d | 2025-09-11 | 2025-09-19 | 3993, 4006 |  |
| 4010 |  | Electrical wiring work | 8d | 2025-09-19 | 2025-09-27 | 3994, 4009 |  |
| 4011 |  | Painting 1st coat | 8d | 2025-09-27 | 2025-10-05 | 3995, 4008, 4009, 4010 |  |
| 4012 |  | False ceiling | 8d | 2025-10-05 | 2025-10-13 | 3996, 4011 |  |
| 4013 | 37200.37300.37500.38300.38900.40700.41700.61600 | **6th Floor** | 98d | 2025-07-19 | 2025-10-25 |  | start no earlier than 2025-07-19 |
| 4014 |  | Block Work | 8d | 2025-07-19 | 2025-07-27 | 3998FS+0.25d |  |
| 4015 |  | Door Frame Fixing | 9d | 2025-07-31 | 2025-08-09 | 3747, 3999 |  |
| 4016 |  | Internal Plumbing Works | 8d | 2025-07-27 | 2025-08-04 | 4000, 4014 |  |
| 4017 |  | Waterproofing | 10d | 2025-08-13 | 2025-08-23 | 4001, 4016 |  |
| 4018 |  | Internal Plaster | 8d | 2025-07-28 | 2025-08-05 | 4002FS+0.25d |  |
| 4019 |  | IPS flooring work | 10d | 2025-08-23 | 2025-09-02 | 4003, 4015, 4017, 4018 |  |
| 4020 |  | Toilet dado work | 8d | 2025-08-23 | 2025-08-31 | 4004, 4017, 4018 |  |
| 4021 |  | Toilet flooring work | 8d | 2025-08-31 | 2025-09-08 | 4005, 4020 |  |
| 4022 |  | Living dinning flooring | 12d | 2025-09-11 | 2025-09-23 | 4006FS+0.25d |  |
| 4023 |  | Aluminium door-window fixing | 12d | 2025-09-23 | 2025-10-05 | 4007FS+0.25d |  |
| 4024 |  | Putty primer coat | 6d | 2025-09-23 | 2025-09-29 | 4008, 4022 |  |
| 4025 |  | Door shutter fixing | 8d | 2025-09-23 | 2025-10-01 | 4009, 4022 |  |
| 4026 |  | Electrical wiring work | 8d | 2025-10-01 | 2025-10-09 | 4010, 4025 |  |
| 4027 |  | Painting 1st coat | 8d | 2025-10-09 | 2025-10-17 | 4011, 4024, 4025, 4026 |  |
| 4028 |  | False ceiling | 8d | 2025-10-17 | 2025-10-25 | 4012, 4027 |  |
| 4029 | 37200.37300.37500.38300.38900.40700.41700.61500 | **7th Floor** | 102d | 2025-07-28 | 2025-12-21 |  | start no earlier than 2025-07-28 |
| 4030 |  | Block Work | 8d | 2025-07-28 | 2025-08-04 | 4014FS+0.25d |  |
| 4031 |  | Door Frame Fixing | 9d | 2025-08-09 | 2025-08-18 | 4015, 4030 |  |
| 4032 |  | Internal Plumbing Works | 8d | 2025-08-05 | 2025-08-12 | 4016, 4030 |  |
| 4033 |  | Waterproofing | 10d | 2025-08-23 | 2025-09-02 | 4017, 4032 |  |
| 4034 |  | Internal Plaster | 8d | 2025-08-06 | 2025-08-13 | 4018FS+0.25d |  |
| 4035 |  | IPS flooring work | 10d | 2025-09-02 | 2025-09-12 | 4019, 4031, 4033, 4034 |  |
| 4036 |  | Toilet dado work | 8d | 2025-09-02 | 2025-09-10 | 4020, 4033, 4034 |  |
| 4037 |  | Toilet flooring work | 8d | 2025-09-10 | 2025-09-18 | 4021, 4036 |  |
| 4038 |  | Living dinning flooring | 12d | 2025-09-24 | 2025-10-05 | 4022FS+0.25d |  |
| 4039 |  | Aluminium door-window fixing | 12d | 2025-10-06 | 2025-10-17 | 4023FS+0.25d |  |
| 4040 |  | Putty primer coat | 6d | 2025-10-06 | 2025-10-11 | 4024, 4038 |  |
| 4041 |  | Door shutter fixing | 8d | 2025-10-06 | 2025-10-13 | 4025, 4038 |  |
| 4042 |  | Electrical wiring work | 8d | 2025-10-14 | 2025-10-21 | 4026, 4041 |  |
| 4043 |  | Painting 1st coat | 8d | 2025-10-22 | 2025-10-29 | 4027, 4040, 4041, 4042 |  |
| 4044 |  | False ceiling | 8d | 2025-10-30 | 2025-12-21 | 4028, 4043 |  |
| 4045 | 37200.37300.37500.38300.38900.40700.41700.61400 | **8th Floor** | 106d | 2025-08-05 | 2026-01-03 |  | start no earlier than 2025-08-05 |
| 4046 |  | Block Work | 8d | 2025-08-05 | 2025-08-13 | 4030FS+0.25d |  |
| 4047 |  | Door Frame Fixing | 9d | 2025-08-18 | 2025-08-27 | 4031, 4046 |  |
| 4048 |  | Internal Plumbing Works | 8d | 2025-08-13 | 2025-08-21 | 4032, 4046 |  |
| 4049 |  | Waterproofing | 10d | 2025-09-02 | 2025-09-12 | 4033, 4048 |  |
| 4050 |  | Internal Plaster | 8d | 2025-08-14 | 2025-08-22 | 4034FS+0.25d |  |
| 4051 |  | IPS flooring work | 10d | 2025-09-12 | 2025-09-22 | 4035, 4047, 4049, 4050 |  |
| 4052 |  | Toilet dado work | 8d | 2025-09-12 | 2025-09-20 | 4036, 4049, 4050 |  |
| 4053 |  | Toilet flooring work | 8d | 2025-09-20 | 2025-09-28 | 4037, 4052 |  |
| 4054 |  | Living dinning flooring | 12d | 2025-10-06 | 2025-10-18 | 4038FS+0.25d |  |
| 4055 |  | Aluminium door-window fixing | 12d | 2025-10-18 | 2025-10-30 | 4039FS+0.25d |  |
| 4056 |  | Putty primer coat | 6d | 2025-10-18 | 2025-10-24 | 4040, 4054 |  |
| 4057 |  | Door shutter fixing | 8d | 2025-10-18 | 2025-10-26 | 4041, 4054 |  |
| 4058 |  | Electrical wiring work | 8d | 2025-10-26 | 2025-12-18 | 4042, 4057 |  |
| 4059 |  | Painting 1st coat | 8d | 2025-12-18 | 2025-12-26 | 4043, 4056, 4057, 4058 |  |
| 4060 |  | False ceiling | 8d | 2025-12-26 | 2026-01-03 | 4044, 4059 |  |

| ID | WBS | Task | Duration | Start | Finish | Predecessors | Constraint |
| --- | --- | --- | --- | --- | --- | --- | --- |
| 4061 | 37200.37300.37500.38300.38900.40700.41700.61300 | **9th Floor** | 106d | 2025-08-13 | 2026-01-11 |  | start no earlier than 2025-08-13 |
| 4062 |  | Block Work | 7d | 2025-08-13 | 2025-08-20 | 4046FS+0.25d |  |
| 4063 |  | Door Frame Fixing | 9d | 2025-08-27 | 2025-09-05 | 4047, 4062 |  |
| 4064 |  | Internal Plumbing Works | 8d | 2025-08-21 | 2025-08-29 | 4048, 4062 |  |
| 4065 |  | Waterproofing | 10d | 2025-09-12 | 2025-09-22 | 4049, 4064 |  |
| 4066 |  | Internal Plaster | 7d | 2025-08-22 | 2025-08-29 | 4050FS+0.25d |  |
| 4067 |  | IPS flooring work | 10d | 2025-09-22 | 2025-10-02 | 4051, 4063, 4065, 4066 |  |
| 4068 |  | Toilet dado work | 8d | 2025-09-22 | 2025-09-30 | 4052, 4065, 4066 |  |
| 4069 |  | Toilet flooring work | 8d | 2025-09-30 | 2025-10-08 | 4053, 4068 |  |
| 4070 |  | Living dinning flooring | 8d | 2025-10-18 | 2025-10-26 | 4054FS+0.25d |  |
| 4071 |  | Aluminium door-window fixing | 8d | 2025-10-30 | 2025-12-22 | 4055FS+0.25d |  |
| 4072 |  | Putty primer coat | 6d | 2025-10-26 | 2025-12-16 | 4056, 4070 |  |
| 4073 |  | Door shutter fixing | 8d | 2025-10-26 | 2025-12-18 | 4057, 4070 |  |
| 4074 |  | Electrical wiring work | 8d | 2025-12-18 | 2025-12-26 | 4058, 4073 |  |
| 4075 |  | Painting 1st coat | 8d | 2025-12-26 | 2026-01-03 | 4059, 4072, 4073, 4074 |  |
| 4076 |  | False ceiling | 8d | 2026-01-03 | 2026-01-11 | 4060, 4075 |  |
| 4077 | 37200.37300.37500.38300.38900.40700.41700.61200 | **10th Floor** | 107d | 2025-08-20 | 2026-01-19 |  | start no earlier than 2025-08-20 |
| 4078 |  | Block Work | 7d | 2025-08-20 | 2025-08-27 | 4062FS+0.25d |  |
| 4079 |  | Door Frame Fixing | 9d | 2025-09-05 | 2025-09-14 | 4063, 4078 |  |
| 4080 |  | Internal Plumbing Works | 8d | 2025-08-29 | 2025-09-06 | 4064, 4078 |  |
| 4081 |  | Waterproofing | 10d | 2025-09-22 | 2025-10-02 | 4065, 4080 |  |
| 4082 |  | Internal Plaster | 7d | 2025-08-29 | 2025-09-05 | 4066FS+0.25d |  |
| 4083 |  | IPS flooring work | 10d | 2025-10-02 | 2025-10-12 | 4067, 4079, 4081, 4082 |  |
| 4084 |  | Toilet dado work | 8d | 2025-10-02 | 2025-10-10 | 4068, 4081, 4082 |  |
| 4085 |  | Toilet flooring work | 8d | 2025-10-10 | 2025-10-18 | 4069, 4084 |  |
| 4086 |  | Living dinning flooring | 8d | 2025-10-26 | 2025-12-18 | 4070FS+0.25d |  |
| 4087 |  | Aluminium door-window fixing | 8d | 2025-12-22 | 2025-12-30 | 4071FS+0.25d |  |
| 4088 |  | Putty primer coat | 6d | 2025-12-18 | 2025-12-24 | 4072, 4086 |  |
| 4089 |  | Door shutter fixing | 8d | 2025-12-18 | 2025-12-26 | 4073, 4086 |  |
| 4090 |  | Electrical wiring work | 8d | 2025-12-26 | 2026-01-03 | 4074, 4089 |  |
| 4091 |  | Painting 1st coat | 8d | 2026-01-03 | 2026-01-11 | 4075, 4088, 4089, 4090 |  |
| 4092 |  | False ceiling | 8d | 2026-01-11 | 2026-01-19 | 4076, 4091 |  |
| 4093 | 37200.37300.37500.38300.38900.40700.41700.61100 | **11th Floor** | 108d | 2025-08-28 | 2026-01-27 |  | start no earlier than 2025-08-28 |
| 4094 |  | Block Work | 7d | 2025-08-28 | 2025-09-03 | 4078FS+0.25d |  |
| 4095 |  | Door Frame Fixing | 9d | 2025-09-14 | 2025-09-23 | 4079, 4094 |  |
| 4096 |  | Internal Plumbing Works | 8d | 2025-09-06 | 2025-09-14 | 4080, 4094 |  |
| 4097 |  | Waterproofing | 10d | 2025-10-02 | 2025-10-12 | 4081, 4096 |  |
| 4098 |  | Internal Plaster | 7d | 2025-09-06 | 2025-09-12 | 4082FS+0.25d |  |
| 4099 |  | IPS flooring work | 10d | 2025-10-12 | 2025-10-22 | 4083, 4095, 4096, 4097 |  |
| 4100 |  | Toilet dado work | 8d | 2025-10-12 | 2025-10-20 | 4084, 4097, 4098 |  |
| 4101 |  | Toilet flooring work | 8d | 2025-10-20 | 2025-10-28 | 4085, 4100 |  |
| 4102 |  | Living dinning flooring | 8d | 2025-12-19 | 2025-12-26 | 4086FS+0.25d |  |
| 4103 |  | Aluminium door-window fixing | 8d | 2025-12-31 | 2026-01-07 | 4087FS+0.25d |  |
| 4104 |  | Putty primer coat | 6d | 2025-12-27 | 2026-01-01 | 4088, 4102 |  |
| 4105 |  | Door shutter fixing | 8d | 2025-12-27 | 2026-01-03 | 4089, 4102 |  |
| 4106 |  | Electrical wiring work | 8d | 2026-01-04 | 2026-01-11 | 4090, 4105 |  |
| 4107 |  | Painting 1st coat | 8d | 2026-01-12 | 2026-01-19 | 4091, 4104, 4105, 4106 |  |
| 4108 |  | False ceiling | 8d | 2026-01-20 | 2026-01-27 | 4092, 4107 |  |
| 4109 | 37200.37300.37500.38300.38900.40700.41700.61000 | **12th Floor** | 109d | 2025-09-04 | 2026-02-05 |  | start no earlier than 2025-09-04 |
| 4110 |  | Block Work | 7d | 2025-09-04 | 2025-09-11 | 4094FS+0.25d |  |
| 4111 |  | Door Frame Fixing | 9d | 2025-09-23 | 2025-10-02 | 4095, 4110 |  |
| 4112 |  | Internal Plumbing Works | 8d | 2025-09-14 | 2025-09-22 | 4096, 4110 |  |
| 4113 |  | Waterproofing | 10d | 2025-10-12 | 2025-10-22 | 4097, 4112 |  |
| 4114 |  | Internal Plaster | 7d | 2025-09-13 | 2025-09-20 | 4098FS+0.25d |  |
| 4115 |  | IPS flooring work | 10d | 2025-10-22 | 2025-12-16 | 4099, 4111, 4112, 4113 |  |
| 4116 |  | Toilet dado work | 8d | 2025-10-22 | 2025-10-30 | 4100, 4113, 4114 |  |
| 4117 |  | Toilet flooring work | 8d | 2025-10-30 | 2025-12-22 | 4101, 4116 |  |
| 4118 |  | Living dinning flooring | 8d | 2025-12-27 | 2026-01-04 | 4102FS+0.25d |  |
| 4119 |  | Aluminium door-window fixing | 8d | 2026-01-08 | 2026-01-16 | 4103FS+0.25d |  |
| 4120 |  | Putty primer coat | 6d | 2026-01-04 | 2026-01-10 | 4104, 4118 |  |
| 4121 |  | Door shutter fixing | 8d | 2026-01-04 | 2026-01-12 | 4105, 4118 |  |
| 4122 |  | Electrical wiring work | 8d | 2026-01-12 | 2026-01-20 | 4106, 4121 |  |
| 4123 |  | Painting 1st coat | 8d | 2026-01-20 | 2026-01-28 | 4107, 4120, 4121, 4122 |  |
| 4124 |  | False ceiling | 8d | 2026-01-28 | 2026-02-05 | 4108, 4123 |  |
| 4125 | 37200.37300.37500.38300.38900.40700.41700.60900 | **13th Floor** | 110d | 2025-09-11 | 2026-02-13 |  | start no earlier than 2025-09-11 |
| 4126 |  | Block Work | 7d | 2025-09-11 | 2025-09-18 | 4110FS+0.25d |  |
| 4127 |  | Door Frame Fixing | 9d | 2025-10-02 | 2025-10-11 | 4111, 4126 |  |
| 4128 |  | Internal Plumbing Works | 8d | 2025-09-22 | 2025-09-30 | 4112, 4126 |  |
| 4129 |  | Waterproofing | 10d | 2025-10-22 | 2025-12-16 | 4113, 4128 |  |
| 4130 |  | Internal Plaster | 7d | 2025-09-20 | 2025-09-27 | 4114FS+0.25d |  |

| ID | WBS | Task | Duration | Start | Finish | Predecessors | Constraint |
| --- | --- | --- | --- | --- | --- | --- | --- |
| 4131 |  | IPS flooring work | 10d | 2025-12-16 | 2025-12-26 | 4115, 4127, 4129, 4130 |  |
| 4132 |  | Toilet dado work | 8d | 2025-12-16 | 2025-12-24 | 4116, 4129, 4130 |  |
| 4133 |  | Toilet flooring work | 8d | 2025-12-24 | 2026-01-01 | 4117, 4132 |  |
| 4134 |  | Living dinning flooring | 8d | 2026-01-04 | 2026-01-12 | 4118FS+0.25d |  |
| 4135 |  | Aluminium door-window fixing | 8d | 2026-01-16 | 2026-01-24 | 4119FS+0.25d |  |
| 4136 |  | Putty primer coat | 6d | 2026-01-12 | 2026-01-18 | 4120, 4134 |  |
| 4137 |  | Door shutter fixing | 8d | 2026-01-12 | 2026-01-20 | 4121, 4134 |  |
| 4138 |  | Electrical wiring work | 8d | 2026-01-20 | 2026-01-28 | 4122, 4137 |  |
| 4139 |  | Painting 1st coat | 8d | 2026-01-28 | 2026-02-05 | 4123, 4136, 4137, 4138 |  |
| 4140 |  | False ceiling | 8d | 2026-02-05 | 2026-02-13 | 4124, 4139 |  |
| 4141 | 37200.37300.37500.38300.38900.40700.41700.60800 | **14th Floor** | 111d | 2025-09-18 | 2026-02-21 |  | start no earlier than 2025-09-18 |
| 4142 |  | Block Work | 8d | 2025-09-18 | 2025-09-26 | 4126FS+0.25d |  |
| 4143 |  | Door Frame Fixing | 9d | 2025-10-11 | 2025-10-20 | 4127, 4142 |  |
| 4144 |  | Internal Plumbing Works | 8d | 2025-09-30 | 2025-10-08 | 4128, 4142 |  |
| 4145 |  | Waterproofing | 10d | 2025-12-16 | 2025-12-26 | 4129, 4144 |  |
| 4146 |  | Internal Plaster | 8d | 2025-09-27 | 2025-10-05 | 4130FS+0.25d |  |
| 4147 |  | IPS flooring work | 10d | 2025-12-26 | 2026-01-05 | 4131, 4143, 4144, 4145 |  |
| 4148 |  | Toilet dado work | 8d | 2025-12-26 | 2026-01-03 | 4132, 4145, 4146 |  |
| 4149 |  | Toilet flooring work | 8d | 2026-01-03 | 2026-01-11 | 4133, 4148 |  |
| 4150 |  | Living dinning flooring | 8d | 2026-01-12 | 2026-01-20 | 4134FS+0.25d |  |
| 4151 |  | Aluminium door-window fixing | 8d | 2026-01-24 | 2026-02-01 | 4135FS+0.25d |  |
| 4152 |  | Putty primer coat | 6d | 2026-01-20 | 2026-01-26 | 4136, 4150 |  |
| 4153 |  | Door shutter fixing | 8d | 2026-01-20 | 2026-01-28 | 4137, 4150 |  |
| 4154 |  | Electrical wiring work | 8d | 2026-01-28 | 2026-02-05 | 4138, 4153 |  |
| 4155 |  | Painting 1st coat | 8d | 2026-02-05 | 2026-02-13 | 4139, 4152, 4153, 4154 |  |
| 4156 |  | False ceiling | 8d | 2026-02-13 | 2026-02-21 | 4140, 4155 |  |
| 4157 | 37200.37300.37500.38300.38900.40700.41700.60700 | **15th Floor** | 111d | 2025-09-27 | 2026-03-01 |  | start no earlier than 2025-09-27 |
| 4158 |  | Block Work | 8d | 2025-09-27 | 2025-10-04 | 4142FS+0.25d |  |
| 4159 |  | Door Frame Fixing | 9d | 2025-10-20 | 2025-10-29 | 4143, 4158 |  |
| 4160 |  | Internal Plumbing Works | 8d | 2025-10-08 | 2025-10-16 | 4144, 4158 |  |
| 4161 |  | Waterproofing | 10d | 2025-12-26 | 2026-01-05 | 4145, 4160 |  |
| 4162 |  | Internal Plaster | 8d | 2025-10-06 | 2025-10-13 | 4146FS+0.25d |  |
| 4163 |  | IPS flooring work | 10d | 2026-01-05 | 2026-01-15 | 4147, 4159, 4160, 4161 |  |
| 4164 |  | Toilet dado work | 8d | 2026-01-05 | 2026-01-13 | 4148, 4161, 4162 |  |
| 4165 |  | Toilet flooring work | 8d | 2026-01-13 | 2026-01-21 | 4149, 4164 |  |
| 4166 |  | Living dinning flooring | 8d | 2026-01-21 | 2026-01-28 | 4150FS+0.25d |  |
| 4167 |  | Aluminium door-window fixing | 8d | 2026-02-02 | 2026-02-09 | 4151FS+0.25d |  |
| 4168 |  | Putty primer coat | 6d | 2026-01-29 | 2026-02-03 | 4152, 4166 |  |
| 4169 |  | Door shutter fixing | 8d | 2026-01-29 | 2026-02-05 | 4153, 4166 |  |
| 4170 |  | Electrical wiring work | 8d | 2026-02-06 | 2026-02-13 | 4154, 4169 |  |
| 4171 |  | Painting 1st coat | 8d | 2026-02-14 | 2026-02-21 | 4155, 4168, 4169, 4170 |  |
| 4172 |  | False ceiling | 8d | 2026-02-22 | 2026-03-01 | 4156, 4171 |  |
| 4173 | 37200.37300.37500.38300.38900.40700.41700.60600 | **16th Floor** | 111d | 2025-10-05 | 2026-03-10 |  | start no earlier than 2025-10-05 |
| 4174 |  | Block Work | 8d | 2025-10-05 | 2025-10-13 | 4158FS+0.25d |  |
| 4175 |  | Door Frame Fixing | 9d | 2025-10-29 | 2025-12-22 | 4159, 4174 |  |
| 4176 |  | Internal Plumbing Works | 8d | 2025-10-16 | 2025-10-24 | 4160, 4174 |  |
| 4177 |  | Waterproofing | 10d | 2026-01-05 | 2026-01-15 | 4161, 4176 |  |
| 4178 |  | Internal Plaster | 8d | 2025-10-14 | 2025-10-22 | 4162FS+0.25d |  |
| 4179 |  | IPS flooring work | 10d | 2026-01-15 | 2026-01-25 | 4163, 4175, 4176, 4177 |  |
| 4180 |  | Toilet dado work | 12d | 2026-01-15 | 2026-01-27 | 4164, 4177, 4178 |  |
| 4181 |  | Toilet flooring work | 12d | 2026-01-27 | 2026-02-08 | 4165, 4180 |  |
| 4182 |  | Living dinning flooring | 8d | 2026-01-29 | 2026-02-06 | 4166FS+0.25d |  |
| 4183 |  | Aluminium door-window fixing | 8d | 2026-02-10 | 2026-02-18 | 4167FS+0.25d |  |
| 4184 |  | Putty primer coat | 6d | 2026-02-06 | 2026-02-12 | 4168, 4182 |  |
| 4185 |  | Door shutter fixing | 8d | 2026-02-06 | 2026-02-14 | 4169, 4182 |  |
| 4186 |  | Electrical wiring work | 8d | 2026-02-14 | 2026-02-22 | 4170, 4185 |  |
| 4187 |  | Painting 1st coat | 8d | 2026-02-22 | 2026-03-02 | 4171, 4184, 4185, 4186 |  |
| 4188 |  | False ceiling | 8d | 2026-03-02 | 2026-03-10 | 4172, 4187 |  |
| 4189 | 37200.37300.37500.38300.38900.40700.41700.60500 | **17th Floor** | 111d | 2025-10-13 | 2026-03-18 |  | start no earlier than 2025-10-13 |
| 4190 |  | Block Work | 7d | 2025-10-13 | 2025-10-20 | 4174FS+0.25d |  |
| 4191 |  | Door Frame Fixing | 9d | 2025-10-20 | 2025-10-29 | 4190FS+0.25d |  |
| 4192 |  | Internal Plumbing Works | 8d | 2025-10-24 | 2025-12-16 | 4176, 4190 |  |
| 4193 |  | Waterproofing | 10d | 2026-01-15 | 2026-01-25 | 4177, 4192 |  |
| 4194 |  | Internal Plaster | 7d | 2025-10-22 | 2025-10-29 | 4178FS+0.25d |  |
| 4195 |  | IPS flooring work | 10d | 2026-01-25 | 2026-02-04 | 4179, 4191, 4192, 4193 |  |
| 4196 |  | Toilet dado work | 8d | 2026-01-27 | 2026-02-04 | 4180, 4193, 4194 |  |
| 4197 |  | Toilet flooring work | 8d | 2026-02-08 | 2026-02-16 | 4181, 4196 |  |
| 4198 |  | Living dinning flooring | 8d | 2026-02-06 | 2026-02-14 | 4182FS+0.25d |  |
| 4199 |  | Aluminium door-window fixing | 8d | 2026-02-18 | 2026-02-26 | 4183FS+0.25d |  |
| 4200 |  | Putty primer coat | 6d | 2026-02-14 | 2026-02-20 | 4184, 4198 |  |

| ID | WBS | Task | Duration | Start | Finish | Predecessors | Constraint |
| --- | --- | --- | --- | --- | --- | --- | --- |
| 4201 |  | Door shutter fixing | 8d | 2026-02-14 | 2026-02-22 | 4185, 4198 |  |
| 4202 |  | Electrical wiring work | 8d | 2026-02-22 | 2026-03-02 | 4186, 4201 |  |
| 4203 |  | Painting 1st coat | 8d | 2026-03-02 | 2026-03-10 | 4187, 4200, 4201, 4202 |  |
| 4204 |  | False ceiling | 8d | 2026-03-10 | 2026-03-18 | 4188, 4203 |  |
| 4205 | 37200.37300.37500.38300.38900.40700.41700.60400 | **18th Floor** | 116d | 2025-10-20 | 2026-03-30 |  | start no earlier than 2025-10-20 |
| 4206 |  | Block Work | 8d | 2025-10-20 | 2025-10-28 | 4190FS+0.25d |  |
| 4207 |  | Door Frame Fixing | 9d | 2025-10-29 | 2025-12-22 | 4191, 4206 |  |
| 4208 |  | Internal Plumbing Works | 8d | 2025-12-16 | 2025-12-24 | 4192, 4206 |  |
| 4209 |  | Waterproofing | 10d | 2026-01-25 | 2026-02-04 | 4193, 4208 |  |
| 4210 |  | Internal Plaster | 8d | 2025-10-29 | 2025-12-21 | 4194FS+0.25d |  |
| 4211 |  | IPS flooring work | 10d | 2026-02-04 | 2026-02-14 | 4195, 4207, 4208, 4209 |  |
| 4212 |  | Toilet dado work | 8d | 2026-02-04 | 2026-02-12 | 4196, 4209, 4210 |  |
| 4213 |  | Toilet flooring work | 8d | 2026-02-16 | 2026-02-24 | 4197, 4212 |  |
| 4214 |  | Living dinning flooring | 12d | 2026-02-14 | 2026-02-26 | 4198FS+0.25d |  |
| 4215 |  | Aluminium door-window fixing | 12d | 2026-02-26 | 2026-03-10 | 4199FS+0.25d |  |
| 4216 |  | Putty primer coat | 6d | 2026-02-26 | 2026-03-04 | 4200, 4214 |  |
| 4217 |  | Door shutter fixing | 8d | 2026-02-26 | 2026-03-06 | 4201, 4214 |  |
| 4218 |  | Electrical wiring work | 8d | 2026-03-06 | 2026-03-14 | 4202, 4217 |  |
| 4219 |  | Painting 1st coat | 8d | 2026-03-14 | 2026-03-22 | 4203, 4216, 4217, 4218 |  |
| 4220 |  | False ceiling | 8d | 2026-03-22 | 2026-03-30 | 4204, 4219 |  |
| 4221 | 37200.37300.37500.38300.38900.40700.41700.60200 | **19th Floor** | 115.75d | 2025-10-29 | 2026-04-07 |  | start no earlier than 2025-10-29 |
| 4222 |  | Block Work | 8d | 2025-10-29 | 2025-12-20 | 4206FS+0.25d |  |
| 4223 |  | Door Frame Fixing | 9d | 2025-12-22 | 2025-12-31 | 4207, 4222 |  |
| 4224 |  | Internal Plumbing Works | 8d | 2025-12-24 | 2026-01-01 | 4208, 4222 |  |
| 4225 |  | Waterproofing | 10d | 2026-02-04 | 2026-02-14 | 4209, 4224 |  |
| 4226 |  | Internal Plaster | 8d | 2025-12-22 | 2025-12-29 | 4210FS+0.25d |  |
| 4227 |  | IPS flooring work | 10d | 2026-02-14 | 2026-02-24 | 4211, 4223, 4225, 4226 |  |
| 4228 |  | Toilet dado work | 8d | 2026-02-14 | 2026-02-22 | 4212, 4225, 4226 |  |
| 4229 |  | Toilet flooring work | 8d | 2026-02-24 | 2026-03-04 | 4213, 4228 |  |
| 4230 |  | Living dinning flooring | 7d | 2026-02-27 | 2026-03-05 | 4214FS+0.25d |  |
| 4231 |  | Aluminium door-window fixing | 12d | 2026-03-10 | 2026-03-22 | 4215, 4227, 4230 |  |
| 4232 |  | Putty primer coat | 6d | 2026-03-06 | 2026-03-11 | 4216, 4230 |  |
| 4233 |  | Door shutter fixing | 8d | 2026-03-06 | 2026-03-14 | 4217, 4230 |  |
| 4234 |  | Electrical wiring work | 8d | 2026-03-14 | 2026-03-22 | 4218, 4233 |  |
| 4235 |  | Painting 1st coat | 8d | 2026-03-22 | 2026-03-30 | 4219, 4232, 4233, 4234 |  |
| 4236 |  | False ceiling | 8d | 2026-03-30 | 2026-04-07 | 4220, 4235 |  |
| 4237 | 37200.37300.37500.38300.38900.40700.41700.60000 | **20th Floor** | 115.5d | 2025-12-21 | 2026-04-15 |  | start no earlier than 2025-12-21 |
| 4238 |  | Block Work | 8d | 2025-12-21 | 2025-12-29 | 4222FS+0.25d |  |
| 4239 |  | Door Frame Fixing | 9d | 2025-12-31 | 2026-01-09 | 4223, 4238 |  |
| 4240 |  | Internal Plumbing Works | 8d | 2026-01-01 | 2026-01-09 | 4224, 4238 |  |
| 4241 |  | Waterproofing | 10d | 2026-02-14 | 2026-02-24 | 4225, 4240 |  |
| 4242 |  | Internal Plaster | 8d | 2025-12-30 | 2026-01-07 | 4226FS+0.25d |  |
| 4243 |  | IPS flooring work | 10d | 2026-02-24 | 2026-03-06 | 4227, 4239, 4241, 4242 |  |
| 4244 |  | Toilet dado work | 8d | 2026-02-24 | 2026-03-04 | 4228, 4241, 4242 |  |
| 4245 |  | Toilet flooring work | 8d | 2026-03-04 | 2026-03-12 | 4229, 4244 |  |
| 4246 |  | Living dinning flooring | 8d | 2026-03-06 | 2026-03-14 | 4230FS+0.25d |  |
| 4247 |  | Aluminium door-window fixing | 12d | 2026-03-22 | 2026-04-03 | 4231, 4243, 4246 |  |
| 4248 |  | Putty primer coat | 6d | 2026-03-14 | 2026-03-20 | 4232, 4246 |  |
| 4249 |  | Door shutter fixing | 8d | 2026-03-14 | 2026-03-22 | 4233, 4246 |  |
| 4250 |  | Electrical wiring work | 8d | 2026-03-22 | 2026-03-30 | 4234, 4249 |  |
| 4251 |  | Painting 1st coat | 8d | 2026-03-30 | 2026-04-07 | 4235, 4248, 4249, 4250 |  |
| 4252 |  | False ceiling | 8d | 2026-04-07 | 2026-04-15 | 4236, 4251 |  |
| 4253 | 37200.37300.37500.38300.38900.40700.41700.59800 | **21st Floor** | 115.25d | 2025-12-29 | 2026-04-23 |  | start no earlier than 2025-12-29 |
| 4254 |  | Block Work | 8d | 2025-12-29 | 2026-01-06 | 4238FS+0.25d |  |
| 4255 |  | Door Frame Fixing | 9d | 2026-01-09 | 2026-01-18 | 4239, 4254 |  |
| 4256 |  | Internal Plumbing Works | 8d | 2026-01-09 | 2026-01-17 | 4240, 4254 |  |
| 4257 |  | Waterproofing | 10d | 2026-02-24 | 2026-03-06 | 4241, 4256 |  |
| 4258 |  | Internal Plaster | 8d | 2026-01-07 | 2026-01-15 | 4242FS+0.25d |  |
| 4259 |  | IPS flooring work | 10d | 2026-03-06 | 2026-03-16 | 4243, 4255, 4257, 4258 |  |
| 4260 |  | Toilet dado work | 8d | 2026-03-06 | 2026-03-14 | 4244, 4257, 4258 |  |
| 4261 |  | Toilet flooring work | 8d | 2026-03-14 | 2026-03-22 | 4245, 4260 |  |
| 4262 |  | Living dinning flooring | 7d | 2026-03-14 | 2026-03-21 | 4246FS+0.25d |  |
| 4263 |  | Aluminium door-window fixing | 12d | 2026-04-03 | 2026-04-15 | 4247, 4259, 4262 |  |
| 4264 |  | Putty primer coat | 6d | 2026-03-21 | 2026-03-27 | 4248, 4262 |  |
| 4265 |  | Door shutter fixing | 8d | 2026-03-22 | 2026-03-30 | 4249, 4262 |  |
| 4266 |  | Electrical wiring work | 8d | 2026-03-30 | 2026-04-07 | 4250, 4265 |  |
| 4267 |  | Painting 1st coat | 8d | 2026-04-07 | 2026-04-15 | 4251, 4264, 4265, 4266 |  |
| 4268 |  | False ceiling | 8d | 2026-04-15 | 2026-04-23 | 4252, 4267 |  |
| 4269 | 37200.37300.37500.38300.38900.40700.41700.59700 | **22nd Floor** | 115d | 2026-01-06 | 2026-05-01 |  | start no earlier than 2026-01-06 |
| 4270 |  | Block Work | 8d | 2026-01-06 | 2026-01-14 | 4254FS+0.25d |  |

| ID | WBS | Task | Duration | Start | Finish | Predecessors | Constraint |
| --- | --- | --- | --- | --- | --- | --- | --- |
| 4271 |  | Door Frame Fixing | 9d | 2026-01-18 | 2026-01-27 | 4255, 4270 |  |
| 4272 |  | Internal Plumbing Works | 8d | 2026-01-17 | 2026-01-25 | 4256, 4270 |  |
| 4273 |  | Waterproofing | 10d | 2026-03-06 | 2026-03-16 | 4257, 4272 |  |
| 4274 |  | Internal Plaster | 8d | 2026-01-15 | 2026-01-23 | 4258FS+0.25d |  |
| 4275 |  | IPS flooring work | 10d | 2026-03-16 | 2026-03-26 | 4259, 4271, 4273, 4274 |  |
| 4276 |  | Toilet dado work | 8d | 2026-03-16 | 2026-03-24 | 4260, 4273, 4274 |  |
| 4277 |  | Toilet flooring work | 8d | 2026-03-24 | 2026-04-01 | 4261, 4276 |  |
| 4278 |  | Living dinning flooring | 8d | 2026-03-21 | 2026-03-29 | 4262FS+0.25d |  |
| 4279 |  | Aluminium door-window fixing | 12d | 2026-04-15 | 2026-04-27 | 4263, 4275, 4278 |  |
| 4280 |  | Putty primer coat | 6d | 2026-03-29 | 2026-04-04 | 4264, 4278 |  |
| 4281 |  | Door shutter fixing | 8d | 2026-03-30 | 2026-04-07 | 4265, 4278 |  |
| 4282 |  | Electrical wiring work | 8d | 2026-04-07 | 2026-04-15 | 4266, 4281 |  |
| 4283 |  | Painting 1st coat | 8d | 2026-04-15 | 2026-04-23 | 4267, 4280, 4281, 4282 |  |
| 4284 |  | False ceiling | 8d | 2026-04-23 | 2026-05-01 | 4268, 4283 |  |
| 4285 | 37200.37300.37500.38300.38900.40700.41700.59600 | **23rd Floor** | 130.5d | 2026-01-15 | 2026-05-25 |  | start no earlier than 2026-01-15 |
| 4286 |  | Block Work | 8d | 2026-01-15 | 2026-01-22 | 4270FS+0.25d |  |
| 4287 |  | Door Frame Fixing | 9d | 2026-01-27 | 2026-02-05 | 4271, 4286 |  |
| 4288 |  | Internal Plumbing Works | 8d | 2026-01-25 | 2026-02-02 | 4272, 4286 |  |
| 4289 |  | Waterproofing | 10d | 2026-03-16 | 2026-03-26 | 4273, 4288 |  |
| 4290 |  | Internal Plaster | 8d | 2026-01-24 | 2026-01-31 | 4274FS+0.25d |  |
| 4291 |  | IPS flooring work | 10d | 2026-03-26 | 2026-04-05 | 4275, 4287, 4289, 4290 |  |
| 4292 |  | Toilet dado work | 8d | 2026-03-26 | 2026-04-03 | 4276, 4289, 4290 |  |
| 4293 |  | Toilet flooring work | 8d | 2026-04-03 | 2026-04-11 | 4277, 4292 |  |
| 4294 |  | Living dinning flooring | 12d | 2026-04-11 | 2026-04-23 | 4278, 4287, 4293 |  |
| 4295 |  | Aluminium door-window fixing | 12d | 2026-04-27 | 2026-05-09 | 4279, 4291, 4294 |  |
| 4296 |  | Putty primer coat | 6d | 2026-04-23 | 2026-04-29 | 4280, 4294 |  |
| 4297 |  | Door shutter fixing | 8d | 2026-04-23 | 2026-05-01 | 4281, 4294 |  |
| 4298 |  | Electrical wiring work | 8d | 2026-05-01 | 2026-05-09 | 4282, 4297 |  |
| 4299 |  | Painting 1st coat | 8d | 2026-05-09 | 2026-05-17 | 4283, 4296, 4297, 4298 |  |
| 4300 |  | False ceiling | 8d | 2026-05-17 | 2026-05-25 | 4284, 4299 |  |
| 4301 | 37200.37300.37500.38300.38900.40700.41700.59500 | **24th Floor** | 146.94d | 2026-01-23 | 2026-06-19 |  | start no earlier than 2026-01-23 |
| 4302 |  | Block Work | 7.94d | 2026-01-23 | 2026-01-31 | 4286FS+0.25d |  |
| 4303 |  | Door Frame Fixing | 8.94d | 2026-02-05 | 2026-02-14 | 4287, 4302 |  |
| 4304 |  | Internal Plumbing Works | 9.94d | 2026-02-02 | 2026-02-12 | 4288, 4302 |  |
| 4305 |  | Waterproofing | 11.94d | 2026-03-26 | 2026-04-07 | 4289, 4304 |  |
| 4306 |  | Internal Plaster | 8.94d | 2026-02-01 | 2026-02-10 | 4290FS+0.25d |  |
| 4307 |  | IPS flooring work | 8.94d | 2026-04-07 | 2026-04-16 | 4291, 4303, 4305, 4306 |  |
| 4308 |  | Toilet dado work | 7.94d | 2026-04-07 | 2026-04-15 | 4292, 4305, 4306 |  |
| 4309 |  | Toilet flooring work | 6.94d | 2026-04-15 | 2026-04-22 | 4293, 4308 |  |
| 4310 |  | Living dinning flooring | 14.94d | 2026-04-23 | 2026-05-08 | 4294, 4303, 4309 |  |
| 4311 |  | Aluminium door-window fixing | 14.94d | 2026-05-09 | 2026-05-24 | 4295, 4307, 4310 |  |
| 4312 |  | Putty primer coat | 5.94d | 2026-05-08 | 2026-05-14 | 4296, 4310 |  |
| 4313 |  | Door shutter fixing | 7.94d | 2026-05-08 | 2026-05-16 | 4297, 4310 |  |
| 4314 |  | Electrical wiring work | 11.94d | 2026-05-16 | 2026-05-28 | 4298, 4313 |  |
| 4315 |  | Painting 1st coat | 11.94d | 2026-05-28 | 2026-06-09 | 4299, 4312, 4313, 4314 |  |
| 4316 |  | False ceiling | 9.94d | 2026-06-09 | 2026-06-19 | 4300, 4315 |  |
| 4317 | 37200.37300.37500.38300.38900.40700.41700.59400 | **25th Floor** | 153.69d | 2026-01-31 | 2026-07-04 |  | start no earlier than 2026-01-31 |
| 4318 |  | Block Work | 7.94d | 2026-01-31 | 2026-02-08 | 4302FS+0.25d |  |
| 4319 |  | Door Frame Fixing | 8.94d | 2026-02-14 | 2026-02-23 | 4303, 4318 |  |
| 4320 |  | Internal Plumbing Works | 9.94d | 2026-02-12 | 2026-02-22 | 4304, 4318 |  |
| 4321 |  | Waterproofing | 11.94d | 2026-04-07 | 2026-04-19 | 4305, 4320 |  |
| 4322 |  | Internal Plaster | 8.94d | 2026-02-10 | 2026-02-19 | 4306FS+0.25d |  |
| 4323 |  | IPS flooring work | 8.94d | 2026-04-19 | 2026-04-28 | 4307, 4319, 4321, 4322 |  |
| 4324 |  | Toilet dado work | 7.94d | 2026-04-19 | 2026-04-27 | 4308, 4321, 4322 |  |
| 4325 |  | Toilet flooring work | 6.94d | 2026-04-27 | 2026-05-04 | 4309, 4324 |  |
| 4326 |  | Living dinning flooring | 14.94d | 2026-05-08 | 2026-05-23 | 4310, 4319, 4325 |  |
| 4327 |  | Aluminium door-window fixing | 14.94d | 2026-05-24 | 2026-06-08 | 4311, 4323, 4326 |  |
| 4328 |  | Putty primer coat | 5.94d | 2026-05-23 | 2026-05-29 | 4312, 4326 |  |
| 4329 |  | Door shutter fixing | 7.94d | 2026-05-23 | 2026-05-31 | 4313, 4326 |  |
| 4330 |  | Electrical wiring work | 11.94d | 2026-05-31 | 2026-06-12 | 4314, 4329 |  |
| 4331 |  | Painting 1st coat | 11.94d | 2026-06-12 | 2026-06-24 | 4315, 4328, 4329, 4330 |  |
| 4332 |  | False ceiling | 9.94d | 2026-06-24 | 2026-07-04 | 4316, 4331 |  |
| 4333 | 37200.37300.37500.38300.38900.40700.41700.90400 | **26th Floor** | 191.88d | 2026-02-19 | 2026-08-30 |  | start no earlier than 2026-02-19 |
| 4334 |  | Block Work | 7.94d | 2026-05-21 | 2026-05-29 | 3921FS+0.25d, 4318FS+0.25d |  |
| 4335 |  | Door Frame Fixing | 8.94d | 2026-05-29 | 2026-06-06 | 4319, 4334 |  |
| 4336 |  | Internal Plumbing Works | 9.94d | 2026-05-29 | 2026-06-07 | 4320, 4334 |  |
| 4337 |  | Waterproofing | 11.94d | 2026-06-08 | 2026-06-19 | 4321, 4336 |  |
| 4338 |  | Internal Plaster | 8.94d | 2026-02-19 | 2026-02-28 | 4322FS+0.25d |  |
| 4339 |  | IPS flooring work | 8.94d | 2026-06-19 | 2026-06-28 | 4323, 4335, 4337, 4338 |  |
| 4340 |  | Toilet dado work | 7.94d | 2026-06-19 | 2026-06-27 | 4324, 4337, 4338 |  |

| ID | WBS | Task | Duration | Start | Finish | Predecessors | Constraint |
| --- | --- | --- | --- | --- | --- | --- | --- |
| 4341 |  | Toilet flooring work | 6.94d | 2026-06-27 | 2026-07-04 | 4325, 4340 |  |
| 4342 |  | Living dinning flooring | 14.94d | 2026-07-04 | 2026-07-19 | 4326, 4335, 4341 |  |
| 4343 |  | Aluminium door-window fixing | 14.94d | 2026-07-19 | 2026-08-03 | 4327, 4339, 4342 |  |
| 4344 |  | Putty primer coat | 5.94d | 2026-07-19 | 2026-07-25 | 4328, 4342 |  |
| 4345 |  | Door shutter fixing | 7.94d | 2026-07-19 | 2026-07-27 | 4329, 4342 |  |
| 4346 |  | Electrical wiring work | 11.94d | 2026-07-27 | 2026-08-08 | 4330, 4345 |  |
| 4347 |  | Painting 1st coat | 11.94d | 2026-08-08 | 2026-08-20 | 4331, 4344, 4345, 4346 |  |
| 4348 |  | False ceiling | 9.94d | 2026-08-20 | 2026-08-30 | 4332, 4347 |  |
| 4349 | 37200.37300.37500.38300.38900.40700.41700.90500 | **27th Floor** | 110.62d | 2026-06-01 | 2026-09-20 |  | start no earlier than 2026-06-01 |
| 4350 |  | Block Work | 7.94d | 2026-06-01 | 2026-06-09 | 3922, 4334 |  |
| 4351 |  | Door Frame Fixing | 8.94d | 2026-06-09 | 2026-06-18 | 4335, 4350 |  |
| 4352 |  | Internal Plumbing Works | 9.94d | 2026-06-09 | 2026-06-19 | 4336, 4350 |  |
| 4353 |  | Waterproofing | 11.94d | 2026-06-19 | 2026-07-01 | 4337, 4352 |  |
| 4354 |  | Internal Plaster | 8.94d | 2026-07-01 | 2026-07-10 | 4338, 4351, 4352, 4353 |  |
| 4355 |  | IPS flooring work | 8.94d | 2026-07-10 | 2026-07-19 | 4339, 4351, 4353, 4354 |  |
| 4356 |  | Toilet dado work | 7.94d | 2026-07-10 | 2026-07-18 | 4340, 4353, 4354 |  |
| 4357 |  | Toilet flooring work | 6.94d | 2026-07-18 | 2026-07-25 | 4341, 4356 |  |
| 4358 |  | Living dinning flooring | 14.94d | 2026-07-25 | 2026-08-09 | 4342, 4351, 4357 |  |
| 4359 |  | Aluminium door-window fixing | 14.94d | 2026-08-09 | 2026-08-24 | 4343, 4355, 4358 |  |
| 4360 |  | Putty primer coat | 5.94d | 2026-08-09 | 2026-08-15 | 4344, 4358 |  |
| 4361 |  | Door shutter fixing | 7.94d | 2026-08-09 | 2026-08-17 | 4345, 4358 |  |
| 4362 |  | Electrical wiring work | 11.94d | 2026-08-17 | 2026-08-29 | 4346, 4361 |  |
| 4363 |  | Painting 1st coat | 11.94d | 2026-08-29 | 2026-09-10 | 4347, 4360, 4361, 4362 |  |
| 4364 |  | False ceiling | 9.94d | 2026-09-10 | 2026-09-20 | 4348, 4363 |  |
| 4365 | 37200.37300.37500.38300.38900.40700.41700.90600 | **28th Floor** | 114.69d | 2026-06-12 | 2026-10-05 |  | start no earlier than 2026-06-12 |
| 4366 |  | Block Work | 7.94d | 2026-06-12 | 2026-06-20 | 3923, 4350 |  |
| 4367 |  | Door Frame Fixing | 8.94d | 2026-06-20 | 2026-06-29 | 4351, 4366 |  |
| 4368 |  | Internal Plumbing Works | 9.94d | 2026-06-20 | 2026-06-30 | 4352, 4366 |  |
| 4369 |  | Waterproofing | 11.94d | 2026-07-01 | 2026-07-13 | 4353, 4368 |  |
| 4370 |  | Internal Plaster | 8.94d | 2026-07-13 | 2026-07-22 | 4354, 4367, 4368, 4369 |  |
| 4371 |  | IPS flooring work | 8.94d | 2026-07-22 | 2026-07-31 | 4355, 4367, 4369, 4370 |  |
| 4372 |  | Toilet dado work | 7.94d | 2026-07-22 | 2026-07-30 | 4356, 4369, 4370 |  |
| 4373 |  | Toilet flooring work | 6.94d | 2026-07-30 | 2026-08-06 | 4357, 4372 |  |
| 4374 |  | Living dinning flooring | 14.94d | 2026-08-09 | 2026-08-24 | 4358, 4367, 4373 |  |
| 4375 |  | Aluminium door-window fixing | 14.94d | 2026-08-24 | 2026-09-08 | 4359, 4371, 4374 |  |
| 4376 |  | Putty primer coat | 5.94d | 2026-08-24 | 2026-08-30 | 4360, 4374 |  |
| 4377 |  | Door shutter fixing | 7.94d | 2026-08-24 | 2026-09-01 | 4361, 4374 |  |
| 4378 |  | Electrical wiring work | 11.94d | 2026-09-01 | 2026-09-13 | 4362, 4377 |  |
| 4379 |  | Painting 1st coat | 11.94d | 2026-09-13 | 2026-09-25 | 4363, 4376, 4377, 4378 |  |
| 4380 |  | False ceiling | 9.94d | 2026-09-25 | 2026-10-05 | 4364, 4379 |  |
| 4381 | 37200.37300.37500.38300.38900.40700.41700.90700 | **29th Floor** | 115.75d | 2026-06-26 | 2026-10-20 |  | start no earlier than 2026-06-26 |
| 4382 |  | Block Work | 7.94d | 2026-06-26 | 2026-07-04 | 3924, 4366 |  |
| 4383 |  | Door Frame Fixing | 8.94d | 2026-07-04 | 2026-07-13 | 4367, 4382 |  |
| 4384 |  | Internal Plumbing Works | 9.94d | 2026-07-04 | 2026-07-14 | 4368, 4382 |  |
| 4385 |  | Waterproofing | 11.94d | 2026-07-14 | 2026-07-26 | 4369, 4384 |  |
| 4386 |  | Internal Plaster | 8.94d | 2026-07-26 | 2026-08-04 | 4370, 4383, 4384, 4385 |  |
| 4387 |  | IPS flooring work | 8.94d | 2026-08-04 | 2026-08-13 | 4371, 4383, 4385, 4386 |  |
| 4388 |  | Toilet dado work | 7.94d | 2026-08-04 | 2026-08-12 | 4372, 4385, 4386 |  |
| 4389 |  | Toilet flooring work | 6.94d | 2026-08-12 | 2026-08-19 | 4373, 4388 |  |
| 4390 |  | Living dinning flooring | 14.94d | 2026-08-24 | 2026-09-08 | 4374, 4383, 4389 |  |
| 4391 |  | Aluminium door-window fixing | 14.94d | 2026-09-08 | 2026-09-23 | 4375, 4387, 4390 |  |
| 4392 |  | Putty primer coat | 5.94d | 2026-09-08 | 2026-09-14 | 4376, 4390 |  |
| 4393 |  | Door shutter fixing | 7.94d | 2026-09-08 | 2026-09-16 | 4377, 4390 |  |
| 4394 |  | Electrical wiring work | 11.94d | 2026-09-16 | 2026-09-28 | 4378, 4393 |  |
| 4395 |  | Painting 1st coat | 11.94d | 2026-09-28 | 2026-10-10 | 4379, 4392, 4393, 4394 |  |
| 4396 |  | False ceiling | 9.94d | 2026-10-10 | 2026-10-20 | 4380, 4395 |  |
| 4397 | 37200.37300.37500.38300.38900.40700.41700.90800 | **30th Floor** | 116.31d | 2026-08-04 | 2027-01-12 |  | start no earlier than 2026-08-04 |
| 4398 |  | Block Work | 7.94d | 2026-08-04 | 2026-08-12 | 3925, 4382 |  |
| 4399 |  | Door Frame Fixing | 8.94d | 2026-08-12 | 2026-08-21 | 4383, 4398 |  |
| 4400 |  | Internal Plumbing Works | 9.94d | 2026-08-12 | 2026-08-22 | 4384, 4398 |  |
| 4401 |  | Waterproofing | 11.94d | 2026-08-22 | 2026-09-03 | 4385, 4400 |  |
| 4402 |  | Internal Plaster | 8.94d | 2026-09-03 | 2026-09-12 | 4386, 4399, 4400, 4401 |  |
| 4403 |  | IPS flooring work | 8.94d | 2026-09-12 | 2026-09-21 | 4387, 4399, 4401, 4402 |  |
| 4404 |  | Toilet dado work | 7.94d | 2026-09-12 | 2026-09-20 | 4388, 4401, 4402 |  |
| 4405 |  | Toilet flooring work | 6.94d | 2026-09-20 | 2026-09-26 | 4389, 4404 |  |
| 4406 |  | Living dinning flooring | 14.94d | 2026-09-27 | 2026-10-11 | 4390, 4399, 4405 |  |
| 4407 |  | Aluminium door-window fixing | 14.94d | 2026-10-11 | 2026-10-26 | 4391, 4403, 4406 |  |
| 4408 |  | Putty primer coat | 5.94d | 2026-10-11 | 2026-10-17 | 4392, 4406 |  |
| 4409 |  | Door shutter fixing | 7.94d | 2026-10-11 | 2026-10-19 | 4393, 4406 |  |
| 4410 |  | Electrical wiring work | 14.94d | 2026-10-19 | 2026-12-18 | 4394, 4409 |  |

| ID | WBS | Task | Duration | Start | Finish | Predecessors | Constraint |
| --- | --- | --- | --- | --- | --- | --- | --- |
| 4411 |  | Painting 1st coat | 14.94d | 2026-12-18 | 2027-01-02 | 4395, 4408, 4409, 4410 |  |
| 4412 |  | False ceiling | 9.94d | 2027-01-02 | 2027-01-12 | 4396, 4411 |  |
| 4413 | 37200.37300.37500.38300.38900.40700.41700.90900 | **31st Floor** | 123.31d | 2026-08-12 | 2027-01-27 |  | start no earlier than 2026-08-12 |
| 4414 |  | Block Work | 7.94d | 2026-08-12 | 2026-08-20 | 3926, 4398 |  |
| 4415 |  | Door Frame Fixing | 8.94d | 2026-08-21 | 2026-08-30 | 4399, 4414 |  |
| 4416 |  | Internal Plumbing Works | 9.94d | 2026-08-22 | 2026-09-01 | 4400, 4414 |  |
| 4417 |  | Waterproofing | 11.94d | 2026-09-03 | 2026-09-15 | 4401, 4416 |  |
| 4418 |  | Internal Plaster | 8.94d | 2026-09-15 | 2026-09-24 | 4402, 4415, 4416, 4417 |  |
| 4419 |  | IPS flooring work | 8.94d | 2026-09-24 | 2026-10-02 | 4403, 4415, 4417, 4418 |  |
| 4420 |  | Toilet dado work | 7.94d | 2026-09-24 | 2026-10-01 | 4404, 4417, 4418 |  |
| 4421 |  | Toilet flooring work | 6.94d | 2026-10-02 | 2026-10-08 | 4405, 4420 |  |
| 4422 |  | Living dinning flooring | 14.94d | 2026-10-11 | 2026-10-26 | 4406, 4415, 4421 |  |
| 4423 |  | Aluminium door-window fixing | 11.94d | 2026-10-26 | 2026-12-22 | 4407, 4419, 4422 |  |
| 4424 |  | Putty primer coat | 5.94d | 2026-10-26 | 2026-12-16 | 4408, 4422 |  |
| 4425 |  | Door shutter fixing | 7.94d | 2026-10-26 | 2026-12-18 | 4409, 4422 |  |
| 4426 |  | Electrical wiring work | 14.94d | 2026-12-18 | 2027-01-02 | 4410, 4425 |  |
| 4427 |  | Painting 1st coat | 14.94d | 2027-01-02 | 2027-01-17 | 4411, 4424, 4425, 4426 |  |
| 4428 |  | False ceiling | 9.94d | 2027-01-17 | 2027-01-27 | 4412, 4427 |  |
| 4429 | 37200.37300.37500.38300.38900.40700.41700.91000 | **32nd Floor** | 130.31d | 2026-08-20 | 2027-02-11 |  | start no earlier than 2026-08-20 |
| 4430 |  | Block Work | 7.94d | 2026-08-20 | 2026-08-28 | 3927, 4414 |  |
| 4431 |  | Door Frame Fixing | 8.94d | 2026-08-30 | 2026-09-08 | 4415, 4430 |  |
| 4432 |  | Internal Plumbing Works | 9.94d | 2026-09-01 | 2026-09-11 | 4416, 4430 |  |
| 4433 |  | Waterproofing | 11.94d | 2026-09-15 | 2026-09-27 | 4417, 4432 |  |
| 4434 |  | Internal Plaster | 8.94d | 2026-09-27 | 2026-10-05 | 4418, 4431, 4432, 4433 |  |
| 4435 |  | IPS flooring work | 8.94d | 2026-10-06 | 2026-10-14 | 4419, 4431, 4433, 4434 |  |
| 4436 |  | Toilet dado work | 7.94d | 2026-10-06 | 2026-10-13 | 4420, 4433, 4434 |  |
| 4437 |  | Toilet flooring work | 6.94d | 2026-10-13 | 2026-10-20 | 4421, 4436 |  |
| 4438 |  | Living dinning flooring | 14.94d | 2026-10-26 | 2026-12-25 | 4422, 4431, 4437 |  |
| 4439 |  | Aluminium door-window fixing | 11.94d | 2026-12-25 | 2027-01-06 | 4423, 4435, 4438 |  |
| 4440 |  | Putty primer coat | 5.94d | 2026-12-25 | 2026-12-31 | 4424, 4438 |  |
| 4441 |  | Door shutter fixing | 7.94d | 2026-12-25 | 2027-01-02 | 4425, 4438 |  |
| 4442 |  | Electrical wiring work | 14.94d | 2027-01-02 | 2027-01-17 | 4426, 4441 |  |
| 4443 |  | Painting 1st coat | 14.94d | 2027-01-17 | 2027-02-01 | 4427, 4440, 4441, 4442 |  |
| 4444 |  | False ceiling | 9.94d | 2027-02-01 | 2027-02-11 | 4428, 4443 |  |
| 4445 | 37200.37300.37500.38300.38900.40700.41700.91100 | **33rd Floor** | 134.31d | 2026-08-28 | 2027-02-23 |  | start no earlier than 2026-08-28 |
| 4446 |  | Block Work | 7.94d | 2026-08-28 | 2026-09-05 | 3928, 4430 |  |
| 4447 |  | Door Frame Fixing | 8.94d | 2026-09-08 | 2026-09-17 | 4431, 4446 |  |
| 4448 |  | Internal Plumbing Works | 9.94d | 2026-09-11 | 2026-09-21 | 4432, 4446 |  |
| 4449 |  | Waterproofing | 11.94d | 2026-09-27 | 2026-10-08 | 4433, 4448 |  |
| 4450 |  | Internal Plaster | 8.94d | 2026-10-09 | 2026-10-17 | 4434, 4447, 4448, 4449 |  |
| 4451 |  | IPS flooring work | 8.94d | 2026-10-17 | 2026-10-26 | 4435, 4447, 4449, 4450 |  |
| 4452 |  | Toilet dado work | 7.94d | 2026-10-17 | 2026-10-25 | 4436, 4449, 4450 |  |
| 4453 |  | Toilet flooring work | 6.94d | 2026-10-25 | 2026-12-16 | 4437, 4452 |  |
| 4454 |  | Living dinning flooring | 14.94d | 2026-12-25 | 2027-01-09 | 4438, 4447, 4453 |  |
| 4455 |  | Aluminium door-window fixing | 14.94d | 2027-01-09 | 2027-01-24 | 4439, 4451, 4454 |  |
| 4456 |  | Putty primer coat | 5.94d | 2027-01-09 | 2027-01-15 | 4440, 4454 |  |
| 4457 |  | Door shutter fixing | 7.94d | 2027-01-09 | 2027-01-17 | 4441, 4454 |  |
| 4458 |  | Electrical wiring work | 11.94d | 2027-01-17 | 2027-01-29 | 4442, 4457 |  |
| 4459 |  | Painting 1st coat | 11.94d | 2027-02-01 | 2027-02-13 | 4443, 4456, 4457, 4458 |  |
| 4460 |  | False ceiling | 9.94d | 2027-02-13 | 2027-02-23 | 4444, 4459 |  |
| 4461 | 37200.37300.37500.38300.38900.40700.41700.91200 | **34th Floor** | 138.31d | 2026-09-05 | 2027-03-07 |  | start no earlier than 2026-09-05 |
| 4462 |  | Block Work | 7.94d | 2026-09-05 | 2026-09-13 | 3929, 4446 |  |
| 4463 |  | Door Frame Fixing | 8.94d | 2026-09-17 | 2026-09-25 | 4447, 4462 |  |
| 4464 |  | Internal Plumbing Works | 9.94d | 2026-09-21 | 2026-09-30 | 4448, 4462 |  |
| 4465 |  | Waterproofing | 11.94d | 2026-10-09 | 2026-10-20 | 4449, 4464 |  |
| 4466 |  | Internal Plaster | 8.94d | 2026-10-20 | 2026-10-29 | 4450, 4463, 4464, 4465 |  |
| 4467 |  | IPS flooring work | 8.94d | 2026-10-29 | 2026-12-22 | 4451, 4463, 4465, 4466 |  |
| 4468 |  | Toilet dado work | 7.94d | 2026-10-29 | 2026-12-21 | 4452, 4465, 4466 |  |
| 4469 |  | Toilet flooring work | 6.94d | 2026-12-21 | 2026-12-28 | 4453, 4468 |  |
| 4470 |  | Living dinning flooring | 14.94d | 2027-01-09 | 2027-01-24 | 4454, 4463, 4469 |  |
| 4471 |  | Aluminium door-window fixing | 14.94d | 2027-01-24 | 2027-02-08 | 4455, 4467, 4470 |  |
| 4472 |  | Putty primer coat | 5.94d | 2027-01-24 | 2027-01-30 | 4456, 4470 |  |
| 4473 |  | Door shutter fixing | 7.94d | 2027-01-24 | 2027-02-01 | 4457, 4470 |  |
| 4474 |  | Electrical wiring work | 11.94d | 2027-02-01 | 2027-02-13 | 4458, 4473 |  |
| 4475 |  | Painting 1st coat | 11.94d | 2027-02-13 | 2027-02-25 | 4459, 4472, 4473, 4474 |  |
| 4476 |  | False ceiling | 9.94d | 2027-02-25 | 2027-03-07 | 4460, 4475 |  |
| 4477 | 37200.37300.37500.38300.38900.40700.41700.91300 | **35th Floor** | 145.31d | 2026-09-13 | 2027-03-22 |  | start no earlier than 2026-09-13 |
| 4478 |  | Block Work | 7.94d | 2026-09-13 | 2026-09-20 | 3930, 4462 |  |
| 4479 |  | Door Frame Fixing | 8.94d | 2026-09-26 | 2026-10-04 | 4463, 4478 |  |
| 4480 |  | Internal Plumbing Works | 9.94d | 2026-10-01 | 2026-10-10 | 4464, 4478 |  |

| ID | WBS | Task | Duration | Start | Finish | Predecessors | Constraint |
| --- | --- | --- | --- | --- | --- | --- | --- |
| 4481 |  | Waterproofing | 11.94d | 2026-10-20 | 2026-12-16 | 4465, 4480 |  |
| 4482 |  | Internal Plaster | 8.94d | 2026-12-16 | 2026-12-25 | 4466, 4479, 4480, 4481 |  |
| 4483 |  | IPS flooring work | 8.94d | 2026-12-25 | 2027-01-03 | 4467, 4479, 4481, 4482 |  |
| 4484 |  | Toilet dado work | 7.94d | 2026-12-25 | 2027-01-02 | 4468, 4481, 4482 |  |
| 4485 |  | Toilet flooring work | 6.94d | 2027-01-02 | 2027-01-09 | 4469, 4484 |  |
| 4486 |  | Living dinning flooring | 14.94d | 2027-01-24 | 2027-02-08 | 4470, 4479, 4485 |  |
| 4487 |  | Aluminium door-window fixing | 14.94d | 2027-02-08 | 2027-02-23 | 4471, 4483, 4486 |  |
| 4488 |  | Putty primer coat | 5.94d | 2027-02-08 | 2027-02-14 | 4472, 4486 |  |
| 4489 |  | Door shutter fixing | 7.94d | 2027-02-08 | 2027-02-16 | 4473, 4486 |  |
| 4490 |  | Electrical wiring work | 11.94d | 2027-02-16 | 2027-02-28 | 4474, 4489 |  |
| 4491 |  | Painting 1st coat | 11.94d | 2027-02-28 | 2027-03-12 | 4475, 4488, 4489, 4490 |  |
| 4492 |  | False ceiling | 9.94d | 2027-03-12 | 2027-03-22 | 4476, 4491 |  |
| 4493 | 37200.37300.37500.38300.38900.40700.190800 | **Terrace Finishing** | 79.88d | 2026-06-19 | 2026-09-07 |  | start no earlier than 2026-06-19 |
| 4494 |  | Terrace waterproofing | 39.94d | 2026-06-19 | 2026-07-29 | 3887 |  |
| 4495 |  | Terrace finishing | 39.94d | 2026-07-29 | 2026-09-07 | 4494 |  |
| 4496 | 37200.37300.37500.38300.38900.40700.99300 | **Common Area Finishing** | 279.31d | 2025-08-20 | 2026-07-10 |  | start no earlier than 2025-08-20 |
| 4497 |  | Block Work | 39.94d | 2025-08-20 | 2025-09-29 | 3898FS+0.25d |  |
| 4498 |  | Internal Plaster | 119.94d | 2025-09-25 | 2026-03-08 | 4503SS+17.88d |  |
| 4499 |  | Staircase railing fixing | 149.94d | 2026-02-10 | 2026-07-10 | 4501SS+26.75d, 4500SS+26.75d |  |
| 4500 |  | Main staircase flooring | 149.94d | 2026-01-14 | 2026-06-13 | 4501SS+13.38d |  |
| 4501 |  | Fire staircase flooring | 149.94d | 2026-01-01 | 2026-05-31 | 4498SS+13.38d, 4505SS+26.75d |  |
| 4502 |  | Fire door work | 59.94d | 2026-02-10 | 2026-04-11 | 4500SS+26.75d, 4501SS+26.75d |  |
| 4503 |  | Electrical wiring work | 119.94d | 2025-09-07 | 2026-02-19 | 4497SS+17.88d |  |
| 4504 |  | Lobby flooring | 150d | 2025-09-10 | 2026-03-24 | 4503SS+3.38d |  |
| 4505 |  | Ceiling & wall putty-primer | 109.94d | 2025-10-21 | 2026-03-25 | 4498SS+26.75d |  |
| 4506 |  | Ceiling & wall painting | 99.94d | 2025-12-23 | 2026-04-02 | 4505SS+17.88d |  |
| 4507 |  | Light fixture supply & installation | 44.94d | 2026-02-15 | 2026-03-31 | 4506SS+53.38d |  |
| 4508 | 37200.37300.37500.38300.38900.40700.46500 | **Balcony Glass Railing** | 67.81d | 2027-04-23 | 2027-06-29 |  | start no earlier than 2027-04-23 |
| 4509 |  | 1st Floor | 1.94d | 2027-04-23 | 2027-04-25 | 4577 |  |
| 4510 |  | 2nd Floor | 1.94d | 2027-04-25 | 2027-04-26 | 4509 |  |
| 4511 |  | 3rd Floor | 1.94d | 2027-04-27 | 2027-04-28 | 4510 |  |
| 4512 |  | 4th Floor | 1.94d | 2027-04-28 | 2027-04-30 | 4511 |  |
| 4513 |  | 5th Floor | 1.94d | 2027-04-30 | 2027-05-02 | 4512 |  |
| 4514 |  | 6th Floor | 1.94d | 2027-05-02 | 2027-05-04 | 4513 |  |
| 4515 |  | 7th Floor | 1.94d | 2027-05-04 | 2027-05-06 | 4514 |  |
| 4516 |  | 8th Floor | 1.94d | 2027-05-06 | 2027-05-08 | 4515 |  |
| 4517 |  | 9th Floor | 1.94d | 2027-05-08 | 2027-05-10 | 4516 |  |
| 4518 |  | 10th Floor | 1.94d | 2027-05-10 | 2027-05-12 | 4517 |  |
| 4519 |  | 11th Floor | 1.94d | 2027-05-12 | 2027-05-14 | 4518 |  |
| 4520 |  | 12th Floor | 1.94d | 2027-05-14 | 2027-05-16 | 4519 |  |
| 4521 |  | 13th Floor | 1.94d | 2027-05-16 | 2027-05-18 | 4520 |  |
| 4522 |  | 14th Floor | 1.94d | 2027-05-18 | 2027-05-20 | 4521 |  |
| 4523 |  | 15th Floor | 1.94d | 2027-05-20 | 2027-05-22 | 4522 |  |
| 4524 |  | 16th Floor | 1.94d | 2027-05-22 | 2027-05-24 | 4523 |  |
| 4525 |  | 17th Floor | 1.94d | 2027-05-24 | 2027-05-26 | 4524 |  |
| 4526 |  | 18th Floor | 1.94d | 2027-05-26 | 2027-05-27 | 4525 |  |
| 4527 |  | 19th Floor | 1.94d | 2027-05-28 | 2027-05-29 | 4526 |  |
| 4528 |  | 20th Floor | 1.94d | 2027-05-29 | 2027-05-31 | 4527 |  |
| 4529 |  | 21st Floor | 1.94d | 2027-05-31 | 2027-06-02 | 4528 |  |
| 4530 |  | 22nd Floor | 1.94d | 2027-06-02 | 2027-06-04 | 4529 |  |
| 4531 |  | 23rd Floor | 1.94d | 2027-06-04 | 2027-06-06 | 4530 |  |
| 4532 |  | 24th Floor | 1.94d | 2027-06-06 | 2027-06-08 | 4531 |  |
| 4533 |  | 25th Floor | 1.94d | 2027-06-08 | 2027-06-10 | 4532 |  |
| 4534 |  | 26th Floor | 1.94d | 2027-06-10 | 2027-06-12 | 4533 |  |
| 4535 |  | 27th Floor | 1.94d | 2027-06-12 | 2027-06-14 | 4534 |  |
| 4536 |  | 28th Floor | 1.94d | 2027-06-14 | 2027-06-16 | 4535 |  |
| 4537 |  | 29th Floor | 1.94d | 2027-06-16 | 2027-06-18 | 4536 |  |
| 4538 |  | 30th Floor | 1.94d | 2027-06-18 | 2027-06-20 | 4537 |  |
| 4539 |  | 31st Floor | 1.94d | 2027-06-20 | 2027-06-22 | 4538 |  |
| 4540 |  | 32nd Floor | 1.94d | 2027-06-22 | 2027-06-24 | 4539 |  |
| 4541 |  | 33rd Floor | 1.94d | 2027-06-24 | 2027-06-26 | 4540 |  |
| 4542 |  | 34th Floor | 1.94d | 2027-06-26 | 2027-06-27 | 4541 |  |
| 4543 |  | 35th Floor | 1.94d | 2027-06-28 | 2027-06-29 | 4542 |  |
| 4544 | 37200.37300.37500.38300.95500 | **MEP work** | 636.25d | 2026-01-01 | 2027-11-13 |  | start no earlier than 2026-01-01 |
| 4545 | 37200.37300.37500.38300.95500.97600 | **Electrical work** | 233.25d | 2026-07-28 | 2027-05-02 |  | start no earlier than 2026-07-28 |
| 4546 |  | Cable Tray | 89.94d | 2026-07-28 | 2026-10-26 | 3892 |  |
| 4547 |  | Cable, main & sub main | 79.94d | 2026-09-06 | 2027-01-09 | 4546SS+40d |  |
| 4548 |  | LT panel & DB | 119.94d | 2026-10-26 | 2027-04-09 | 4546 |  |
| 4549 |  | Rising main | 89.94d | 2027-02-01 | 2027-05-02 | 4546FS+53.38d |  |
| 4550 |  | EARTHING Works | 59.94d | 2026-12-23 | 2027-02-21 | 4546FS+13.38d |  |

| ID | WBS | Task | Duration | Start | Finish | Predecessors | Complete | Constraint |
| --- | --- | --- | --- | --- | --- | --- | --- | --- |
| 4551 |  | Advance lightening protection | 59.94d | 2026-09-07 | 2026-12-21 | 4495 |  |  |
| 4552 |  | Inverter | 34.94d | 2027-02-21 | 2027-03-28 | 4550 |  |  |
| 4553 |  | Energy meter | 59.94d | 2027-01-09 | 2027-03-10 | 4547 |  |  |
| 4554 |  | Exhast fan | 59.94d | 2026-12-30 | 2027-02-28 | 4487FF+4.5d |  |  |
| 4555 |  | FTTH | 59.94d | 2027-02-12 | 2027-04-13 | 4550FS-9d |  |  |
| 4556 |  | Security System - FA & PA | 54.94d | 2027-02-17 | 2027-04-13 | 4555FF |  |  |
| 4557 |  | Solar water heater | 59.94d | 2026-09-07 | 2026-12-21 | 4495 |  |  |
| 4558 | 37200.37300.37500.38300.95500.122400 | **Plumbing wrok** | 430d | 2026-01-28 | 2027-05-17 |  |  | start no earlier than 2026-01-28 |
| 4559 |  | Terrace looping | 44.94d | 2026-07-29 | 2026-09-12 | 4494 |  |  |
| 4560 |  | Shaft Plumbing | 119.94d | 2026-09-12 | 2027-02-24 | 4559 |  |  |
| 4561 |  | CP sanitary fixture supply | 74.94d | 2027-03-04 | 2027-05-17 | 4482, 4485FS+53.38d |  |  |
| 4562 |  | Cold & flushing water supply | 89.94d | 2026-01-28 | 2026-04-27 | 4498SS+80d |  |  |
| 4563 |  | Misc work | 29.94d | 2026-04-18 | 2026-05-18 | 4562FS-9d |  |  |
| 4564 | 37200.37300.37500.38300.95500.129100 | **Fire fighting work** | 328.94d | 2026-01-01 | 2027-01-10 |  |  | start no earlier than 2026-01-01 |
| 4565 |  | Fire hydrant work | 89.94d | 2026-01-01 | 2026-04-01 | 4498SS+53.38d |  |  |
| 4566 |  | Sprinkler & piping work | 89.94d | 2026-04-28 | 2026-07-26 | 4565FS+26.75d |  |  |
| 4567 |  | Shaft Downtake works | 89.94d | 2026-07-29 | 2026-10-27 | 4494 |  |  |
| 4568 |  | Connection to pump room | 29.94d | 2026-10-27 | 2027-01-10 | 4567 |  |  |
| 4569 | 37200.37300.37500.38300.95500.184000 | **Lift work** | 169.81d | 2026-07-28 | 2027-02-28 |  |  | start no earlier than 2026-07-28 |
| 4570 |  | Lift Shaft Handover | 39.94d | 2026-07-28 | 2026-09-06 | 3892 |  |  |
| 4571 |  | Lift installation work | 44.94d | 2026-09-06 | 2026-10-21 | 4570 |  |  |
| 4572 |  | Lift testing and commissioning | 84.94d | 2026-10-21 | 2027-02-28 | 4571 |  |  |
| 4573 | 37200.37300.37500.38300.95500.193900 | **AC work** | 89.94d | 2027-08-15 | 2027-11-13 |  |  | start no earlier than 2027-08-15 |
| 4574 |  | Split AC | 89.94d | 2027-08-15 | 2027-11-13 | 4590FS-26.75d |  |  |
| 4575 | 37200.37300.37500.38300.126200 | **Tower Completion** | 266.88d | 2026-09-10 | 2027-07-19 |  |  | start no earlier than 2026-09-10 |
| 4576 |  | SURFACE PREPARATION | 79.94d | 2026-09-10 | 2027-01-13 | 3930FS+1.88d |  |  |
| 4577 |  | External Painting | 99.94d | 2027-01-13 | 2027-04-23 | 4576 |  |  |
| 4578 |  | Final coat of painting | 87d | 2027-04-23 | 2027-07-19 | 4577 |  |  |
| 4579 |  | Misc. work | 59.94d | 2027-04-23 | 2027-06-22 | 4577 |  |  |
| 4580 | 37200.37300.37500.38300.192800 | **Basement lobby** | 60d | 2026-03-24 | 2026-05-23 |  |  | start no earlier than 2026-03-24 |
| 4581 |  | Basement lobby | 60d | 2026-03-24 | 2026-05-23 | 4504 |  |  |
| 4582 | 37200.37300.37500.38300.113900 | **Post OC activities** | 338.12d | 2027-02-28 | 2028-02-01 |  |  | start no earlier than 2027-02-28 |
| 4583 |  | Wardrobe installation | 169.94d | 2027-08-15 | 2028-02-01 | 4590FS-26.75d |  |  |
| 4584 |  | CP & SANITARYWARE | 109.94d | 2027-08-15 | 2027-12-03 | 4590FS-26.75d |  |  |
| 4585 |  | Wooden Flooring | 169.94d | 2027-08-15 | 2028-02-01 | 4590FS-26.75d |  |  |
| 4586 |  | Electrical Fixtures And Fittings | 86d | 2027-02-28 | 2027-05-25 | 4490 |  |  |
| 4587 |  | Modular Kitchen | 169.94d | 2027-08-15 | 2028-02-01 | 4583SS |  |  |
| 4588 |  | Final Coat Paint | 89.94d | 2027-08-29 | 2027-11-26 | 4590FS-13.38d, 4507 |  |  |
| 4589 |  | OC Application/Readiness | 0d | 2027-07-19 | 2027-07-19 | 3892, 4499FS+7.12d, 4561, 4618, 3683, 3704, 3705, 4581, 4578, 4579, 4572, 4568, 4566, 4563, 4560, 4557, 4556, 4554, 4553, 4552, 4551, 4549, 4548, 4543, 4502, 4492 |  |  |
| 4590 |  | OC Receipt | 0.94d | 2027-09-10 | 2027-09-11 | 4589FS+53.38d |  |  |
| 4591 |  | Offer To Possession | 29.94d | 2028-02-01 | 2028-03-02 | 4583, 4584, 4585, 4586, 4587, 4588, 4574 |  |  |
| 4592 | 37200.37300.37500.101600 | **External Infrastructure** | 280.5d | 2026-06-19 | 2027-05-10 |  |  | start no earlier than 2026-06-19 |
| 4593 | 37200.37300.37500.101600.192700 | **External Firefightning Work** | 209.94d | 2026-07-07 | 2027-03-19 |  |  | start no earlier than 2026-07-07 |
| 4594 |  | Excavation, Pipe Laying, Hyderent errection , Fitting , Testing & Commissioning | 209.94d | 2026-07-07 | 2027-03-19 | 4601FF |  |  |
| 4595 | 37200.37300.37500.101600.112900 | **External Plumbing** | 236.81d | 2026-06-19 | 2027-03-28 |  |  | start no earlier than 2026-06-19 |
| 4596 | 37200.37300.37500.101600.112900.194000 | **External Plumbing - Sewer** | 209.94d | 2026-06-19 | 2027-03-01 |  |  | start no earlier than 2026-06-19 |
| 4597 |  | Excavation, Pipe Laying, Filling , Testing & Commissioning | 209.94d | 2026-06-19 | 2027-03-01 | 3887 |  |  |
| 4598 | 37200.37300.37500.101600.112900.194100 | **External Plumbing - Watersupply** | 209.94d | 2026-07-16 | 2027-03-28 |  |  | start no earlier than 2026-07-16 |
| 4599 |  | Excavation, Pipe Laying, Filling , Testing & Commissioning | 209.94d | 2026-07-16 | 2027-03-28 | 4594FF+9d |  |  |
| 4600 | 37200.37300.37500.101600.112900.194200 | **External Plumbing - Storm Water** | 209.94d | 2026-07-07 | 2027-03-19 |  |  | start no earlier than 2026-07-07 |
| 4601 |  | Excavation, PCC, BBM , IPS, Cover fixing, Curing | 209.94d | 2026-07-07 | 2027-03-19 | 4597SS+17.88d |  |  |
| 4602 | 37200.37300.37500.101600.112900.194300 | **Rain water Harvesting work** | 209.94d | 2026-07-07 | 2027-03-19 |  |  | start no earlier than 2026-07-07 |
| 4603 |  | Rain water Harvesting work | 209.94d | 2026-07-07 | 2027-03-19 | 4601FF |  |  |
| 4604 | 37200.37300.37500.101600.112700 | **External Electrical Work** | 253.75d | 2026-07-16 | 2027-05-10 |  |  | start no earlier than 2026-07-16 |
| 4605 |  | HV INSTALLATION | 89.94d | 2026-07-16 | 2026-10-14 | 3887FS+26.75d |  |  |
| 4606 |  | HT CABLES & LT CONTROL CABLES | 89.94d | 2026-10-14 | 2027-02-26 | 4605 |  |  |
| 4607 |  | Street Light Fixing | 37.44d | 2026-10-23 | 2027-01-13 | 4606SS+9d |  |  |
| 4608 |  | Street Light Fixing | 37.38d | 2027-01-13 | 2027-02-19 | 4607 |  |  |
| 4609 |  | External Road | 89.94d | 2026-10-26 | 2027-03-10 | 4613FF, 12, 931, 1848 |  |  |
| 4610 |  | Completion of External Infrastructure | 0.94d | 2027-03-28 | 2027-03-29 | 4612, 4609, 4599, 4603 |  |  |
| 4611 |  | D.G Set supply and installation | 5.94d | 2027-05-05 | 2027-05-10 |  |  | start no earlier than 2027-05-05 |
| 4612 |  | Soft Scape Work | 119.94d | 2026-10-04 | 2027-03-18 | 4608FF+26.75d |  |  |
| 4613 |  | Hard Scape Work | 209.94d | 2026-06-28 | 2027-03-10 | 4637FS+26.75d |  |  |
| 4614 | 37200.37300.37500.48400 | **NTA works** | 1035.99d | 2024-06-01 | 2027-08-01 |  | 23% | start no earlier than 2024-06-01 |
| 4615 |  | Excavation | 139.94d | 2024-06-01 | 2025-06-09 |  | 50% | start no earlier than 2024-06-01 |
| 4616 |  | Main Pile Work | 199.94d | 2025-04-01 | 2025-10-17 | 3679SS+30d |  |  |
| 4617 |  | Backfilling | 89.94d | 2025-04-07 | 2025-07-06 | 4630SS+6.25d |  |  |
| 4618 |  | Boundary Wall | 198.94d | 2025-07-06 | 2026-03-07 | 4617 |  |  |
| 4619 | 37200.37300.37500.48400.101700 | **RCC Works - Nontower area** | 748.39d | 2024-07-01 | 2026-10-02 |  | 31% | start no earlier than 2024-07-01 |
| 4620 | 37200.37300.37500.48400.101700.115000 | **NTA Raft/Footing** | 748.39d | 2024-07-01 | 2026-10-02 |  | 63% | start no earlier than 2024-07-01 |

| ID | WBS | Task | Duration | Start | Finish | Predecessors | Complete | Constraint |
| --- | --- | --- | --- | --- | --- | --- | --- | --- |
| 4621 |  | Anti Termite | 14.94d | 2025-04-01 | 2025-04-15 | 4615FS-273.44d |  |  |
| 4622 |  | PCC | 565.94d | 2024-07-01 | 2026-09-12 | 4615FS-365.14d | 69% | start no earlier than 2024-07-01 |
| 4623 |  | Reinforcement | 669.94d | 2024-08-06 | 2026-09-30 | 4622SS+25d | 59% | start no earlier than 2024-08-06 |
| 4624 |  | Shuttering | 662.73d | 2024-08-23 | 2026-10-02 | 4623SS+44.6d | 60% | start no earlier than 2024-08-23 |
| 4625 |  | Concreting | 478.75d | 2024-09-17 | 2026-04-04 | 4624SS+25d, 4625FS-488.71d | 69% | start no earlier than 2024-09-17 |
| 4626 | 37200.37300.37500.48400.101700.129200 | **Retaining wall** | 506.94d | 2025-02-01 | 2026-08-06 |  | 14% | start no earlier than 2025-02-01 |
| 4627 |  | Reinforcement | 389.94d | 2025-02-01 | 2026-08-06 | 4622SS+30d | 25% | must start on 2025-07-22 |
| 4628 |  | Shuttering | 339.94d | 2025-03-03 | 2026-06-11 | 4627SS+20d | 18% | must start on 2025-07-14 |
| 4629 |  | Concreting | 321.94d | 2025-03-10 | 2026-03-22 | 4622SS+20d, 4628SS+5d | 8% | start no earlier than 2025-03-10 |
| 4630 |  | Retaining wall waterproofing | 278.94d | 2025-04-01 | 2026-02-18 | 4629SS+9d |  |  |
| 4631 | 37200.37300.37500.48400.101700.129300 | **NTA Basement B2 slab** | 642.38d | 2024-09-30 | 2026-09-17 |  | 14% | start no earlier than 2024-09-30 |
| 4632 |  | Reinforcement | 227.94d | 2025-02-13 | 2026-04-03 |  | 12% | start no earlier than 2025-02-13 |
| 4633 |  | Reinforcement | 157.5d | 2024-10-02 | 2026-08-31 | 4629SS-451.26d, 4625SS-37.1d, 4632 | 4% |  |
| 4634 |  | Shuttering | 367.94d | 2024-09-30 | 2026-07-23 |  | 26% | start no earlier than 2024-09-30 |
| 4635 |  | Shuttering | 55.94d | 2026-07-23 | 2026-09-17 | 4632FF+26.75d, 4634 |  | must start on 2026-04-02 |
| 4636 |  | Concreting | 77.94d | 2025-07-15 | 2025-09-30 |  | 8% | start no earlier than 2025-07-15 |
| 4637 |  | Concreting | 41.94d | 2026-04-20 | 2026-06-01 | 4635FF+4.5d, 4636 |  |  |
| 4638 |  | Concreting | 101.4d | 2024-10-16 | 2026-09-04 | 4637 | 6% |  |
| 4639 | 37200.37300.37500.48400.101700.184100 | **NTA Basement B1 slab** | 372.19d | 2025-07-01 | 2026-08-22 |  | 1% | start no earlier than 2025-07-01 |
| 4640 |  | Reinforcement | 41.94d | 2025-07-01 | 2025-08-12 | 4637FS-23.62d | 9% | must start on 2025-07-01 |
| 4641 |  | Reinforcement | 50.64d | 2025-08-13 | 2025-10-02 | 4640 |  |  |
| 4642 |  | Reinforcement | 3.16d | 2025-10-02 | 2025-10-05 | 4641 |  |  |
| 4643 |  | Reinforcement | 26d | 2025-12-16 | 2026-01-10 | 4642 |  |  |
| 4644 |  | Reinforcement | 113d | 2026-01-11 | 2026-05-03 | 4643 |  |  |
| 4645 |  | Shuttering | 210.94d | 2026-01-23 | 2026-08-22 | 4644FF-1.88d | 1% |  |
| 4646 |  | Concreting | 44.14d | 2025-07-01 | 2025-08-14 |  |  | must start on 2025-06-30 |
| 4647 |  | Concreting | 35.37d | 2025-08-14 | 2025-09-18 | 4646 |  |  |
| 4648 |  | Concreting | 67d | 2025-09-18 | 2026-01-08 | 4647 |  | must start on 2025-09-14 |
| 4649 |  | Concreting | 45.05d | 2026-01-08 | 2026-02-22 | 4648 |  | must start on 2026-01-05 |
| 4650 |  | Concreting | 97d | 2026-02-22 | 2026-05-30 | 4645FF+4.5d, 4649 |  |  |
| 4651 | 37200.37300.37500.48400.101700.184200 | **NTA Podium slab** | 185.62d | 2026-03-21 | 2026-09-22 |  |  | start no earlier than 2026-03-21 |
| 4652 |  | Reinforcement | 180d | 2026-03-21 | 2026-09-17 | 4650SS+30d |  |  |
| 4653 |  | Shuttering | 180d | 2026-03-21 | 2026-09-17 | 4652FF+0.62d |  |  |
| 4654 |  | Concreting | 180d | 2026-03-26 | 2026-09-22 | 4653FF+5d |  |  |
| 4655 | 37200.37300.37500.48400.126300 | **Basement and Podium Block work and Plaster finishing** | 523.49d | 2025-07-01 | 2027-03-06 |  |  | start no earlier than 2025-07-01 |
| 4656 |  | Brick work/plaster | 100d | 2025-09-20 | 2026-02-12 | 4648SS+5.43d |  |  |
| 4657 |  | Finishing work-White Goods | 60d | 2027-01-05 | 2027-03-06 | 4658 |  |  |
| 4658 |  | Painting (1st Coat) | 60d | 2026-09-22 | 2027-01-05 | 4659, 4654 |  |  |
| 4659 |  | Vacuum Dewatered Flooring | 90d | 2025-07-01 | 2025-09-29 | 4654FS+26.75d |  | must start on 2025-07-01 |
| 4660 | 37200.37300.37500.48400.102700 | **Basement and Podium services** | 490.06d | 2026-02-12 | 2027-08-01 |  |  | start no earlier than 2026-02-12 |
| 4661 |  | Waterproofing | 165d | 2026-09-22 | 2027-04-20 | 4654FS+0.25d |  |  |
| 4662 |  | Plumbing | 240d | 2026-02-25 | 2026-10-23 | 4656FS+13.38d |  |  |
| 4663 |  | Fire fighting | 240d | 2026-02-12 | 2026-10-10 | 4656 |  |  |
| 4664 |  | Ventilation | 240d | 2026-10-19 | 2027-07-31 | 4658SS+26.75d |  |  |
| 4665 |  | Electrification | 250d | 2026-03-11 | 2026-12-31 | 4663SS+26.75d |  |  |
| 4666 |  | Security installations | 90d | 2026-12-31 | 2027-03-31 | 4665 |  |  |
| 4667 |  | Stack parking (no of car parks) | 120d | 2027-02-09 | 2027-06-09 | 4665FS+40d |  |  |
| 4668 |  | Completion of NTA | 1d | 2027-07-31 | 2027-08-01 | 4657, 4661, 4662, 4664, 4666, 4667 |  |  |
| 4669 | 37200.37300.37500.191500 | **CLUB HOUSE** | 372.4d | 2025-07-07 | 2026-08-28 |  |  | start no earlier than 2025-07-07 |
| 4670 |  | Club house Structure | 79.6d | 2025-07-07 | 2025-09-24 |  |  | must start on 2025-07-07 |
| 4671 |  | Club house Structure | 119.34d | 2026-04-05 | 2026-08-02 | 4670 |  |  |
| 4672 |  | Club Finishing | 180d | 2026-03-01 | 2026-08-28 |  |  | start no earlier than 2026-03-01 |
| 4673 | 37200.37300.107100 | **OC of Whole Project** | 1134.06d | 2025-04-01 | 2028-08-07 |  |  | start no earlier than 2025-04-01 |
| 4674 |  | OC of Plot A all 5 Towers | 1d | 2027-10-06 | 2027-10-07 | 921, 1838, 2755, 3672, 4590, 4668, 4610 |  |  |
| 4675 |  | OC Reciept | 24.56d | 2025-07-29 | 2025-08-22 |  |  | start no earlier than 2025-07-29 |
| 4676 |  | OC Reciept | 1d | 2027-11-30 | 2027-12-01 | 4674FS+53.38d, 4675 |  |  |
| 4677 |  | Possession | 90d | 2028-05-09 | 2028-08-07 | 4676FS+160d |  |  |
| 4678 |  | On Completion of MEP Services for retail Unit (Installation of unit electric points) | 5.44d | 2025-04-01 | 2025-04-06 |  |  | start no earlier than 2025-04-01 |
| 4679 |  | On Application of Occupancy Certificate | 9.94d | 2025-04-01 | 2025-04-10 |  |  | start no earlier than 2025-04-01 |
| 4680 |  | On Notice of Possession | 21.19d | 2025-04-01 | 2025-04-22 |  |  | start no earlier than 2025-04-01 |
| 4681 |  | On completion of Retail structure | 9.94d | 2025-04-01 | 2025-04-10 |  |  | start no earlier than 2025-04-01 |
| 4682 |  | Escalation | 51.94d | 2025-04-01 | 2025-05-22 |  |  | start no earlier than 2025-04-01 |
| 4683 |  | Additional Pile | 99.81d | 2024-09-03 | 2025-05-20 | 4682SS-179.5d | 49% |  |
| 4684 |  | Additional Pile | 4.94d | 2025-05-20 | 2025-05-25 | 4683 |  |  |
| 4685 |  | Soilder Piling | 552.44d | 2024-10-10 | 2027-03-26 | 4683SS-68d | 4% | must start on 2025-07-15 |
| 4686 |  | MS Bucket Work | 90d | 2025-01-01 | 2025-05-01 |  | 70% | start no earlier than 2025-01-01 |
| 4690 | 37200.40200 | **Milestones** | 1d | 2025-04-10 | 2025-04-10 |  |  | start no earlier than 2025-04-10 |
| 4691 |  | On Completion of Tower Raft for Tower 1 | 1d | 2025-04-10 | 2025-04-10 |  |  | start no earlier than 2025-04-10 |
| 4692 |  | On Completion of Ground Floor for Tower 1 | 1d | 2025-04-10 | 2025-04-10 |  |  | start no earlier than 2025-04-10 |
| 4693 |  | On Completion of 10th Floor Slab for Tower 1 | 1d | 2025-04-10 | 2025-04-10 |  |  | start no earlier than 2025-04-10 |

| ID | Task | Duration | Start | Finish | Constraint |
| --- | --- | --- | --- | --- | --- |
| 4694 | On Completion of 15th Floor slab for Tower 1 | 1d | 2025-04-10 | 2025-04-10 | start no earlier than 2025-04-10 |
| 4695 | On Completion of 20th Floor slab for Tower 1 | 1d | 2025-04-10 | 2025-04-10 | start no earlier than 2025-04-10 |
| 4696 | On Completion of 25th Floor Slab for Tower 1 | 1d | 2025-04-10 | 2025-04-10 | start no earlier than 2025-04-10 |
| 4697 | On Completion of Terrace Slab for Tower 1 | 1d | 2025-04-10 | 2025-04-10 | start no earlier than 2025-04-10 |
| 4698 | On Completion of Unit Internal plaster for Tower 1 | 1d | 2025-04-10 | 2025-04-10 | start no earlier than 2025-04-10 |
| 4699 | On Completion of unit Flooring for Tower 1 | 1d | 2025-04-10 | 2025-04-10 | start no earlier than 2025-04-10 |
| 4700 | On Application of Occupancy Certificate for Tower 1 | 1d | 2025-04-10 | 2025-04-10 | start no earlier than 2025-04-10 |
| 4701 | On Offer of Possession for Tower 1 | 1d | 2025-04-10 | 2025-04-10 | start no earlier than 2025-04-10 |
| 4702 | On Completion of Tower Raft for Tower 2 | 1d | 2025-04-10 | 2025-04-10 | start no earlier than 2025-04-10 |
| 4703 | On Completion of Ground Floor for Tower 2 | 1d | 2025-04-10 | 2025-04-10 | start no earlier than 2025-04-10 |
| 4704 | On Completion of 10th Floor Slab for Tower 2 | 1d | 2025-04-10 | 2025-04-10 | start no earlier than 2025-04-10 |
| 4705 | On Completion of 15th Floor slab for Tower 2 | 1d | 2025-04-10 | 2025-04-10 | start no earlier than 2025-04-10 |
| 4706 | On Completion of 20th Floor slab for Tower 2 | 1d | 2025-04-10 | 2025-04-10 | start no earlier than 2025-04-10 |
| 4707 | On Completion of 25th Floor Slab for Tower 2 | 1d | 2025-04-10 | 2025-04-10 | start no earlier than 2025-04-10 |
| 4708 | On Completion of Terrace Slab for Tower 2 | 1d | 2025-04-10 | 2025-04-10 | start no earlier than 2025-04-10 |
| 4709 | On Completion of Unit Internal plaster for Tower 2 | 1d | 2025-04-10 | 2025-04-10 | start no earlier than 2025-04-10 |
| 4710 | On Completion of unit Flooring for Tower 2 | 1d | 2025-04-10 | 2025-04-10 | start no earlier than 2025-04-10 |
| 4711 | On Application of Occupancy Certificate for Tower 2 | 1d | 2025-04-10 | 2025-04-10 | start no earlier than 2025-04-10 |
| 4712 | On Offer of Possession for Tower 2 | 1d | 2025-04-10 | 2025-04-10 | start no earlier than 2025-04-10 |
| 4713 | On Completion of Tower Raft for Tower 3 | 1d | 2025-04-10 | 2025-04-10 | start no earlier than 2025-04-10 |
| 4714 | On Completion of Ground Floor for Tower 3 | 1d | 2025-04-10 | 2025-04-10 | start no earlier than 2025-04-10 |
| 4715 | On Completion of 10th Floor Slab for Tower 3 | 1d | 2025-04-10 | 2025-04-10 | start no earlier than 2025-04-10 |
| 4716 | On Completion of 15th Floor slab for Tower 3 | 1d | 2025-04-10 | 2025-04-10 | start no earlier than 2025-04-10 |
| 4717 | On Completion of 20th Floor slab for Tower 3 | 1d | 2025-04-10 | 2025-04-10 | start no earlier than 2025-04-10 |
| 4718 | On Completion of 25th Floor Slab for Tower 3 | 1d | 2025-04-10 | 2025-04-10 | start no earlier than 2025-04-10 |
| 4719 | On Completion of Terrace Slab for Tower 3 | 1d | 2025-04-10 | 2025-04-10 | start no earlier than 2025-04-10 |
| 4720 | On Completion of Unit Internal plaster for Tower 3 | 1d | 2025-04-10 | 2025-04-10 | start no earlier than 2025-04-10 |
| 4721 | On Completion of unit Flooring for Tower 3 | 1d | 2025-04-10 | 2025-04-10 | start no earlier than 2025-04-10 |
| 4722 | On Application of Occupancy Certificate for Tower 3 | 1d | 2025-04-10 | 2025-04-10 | start no earlier than 2025-04-10 |
| 4723 | On Offer of Possession for Tower 3 | 1d | 2025-04-10 | 2025-04-10 | start no earlier than 2025-04-10 |
| 4724 | On Completion of Tower Raft for Tower 4 | 1d | 2025-04-10 | 2025-04-10 | start no earlier than 2025-04-10 |
| 4725 | On Completion of Ground Floor for Tower 4 | 1d | 2025-04-10 | 2025-04-10 | start no earlier than 2025-04-10 |
| 4726 | On Completion of 10th Floor Slab for Tower 4 | 1d | 2025-04-10 | 2025-04-10 | start no earlier than 2025-04-10 |
| 4727 | On Completion of 15th Floor slab for Tower 4 | 1d | 2025-04-10 | 2025-04-10 | start no earlier than 2025-04-10 |
| 4728 | On Completion of 20th Floor slab for Tower 4 | 1d | 2025-04-10 | 2025-04-10 | start no earlier than 2025-04-10 |
| 4729 | On Completion of 25th Floor Slab for Tower 4 | 1d | 2025-04-10 | 2025-04-10 | start no earlier than 2025-04-10 |
| 4730 | On Completion of Terrace Slab for Tower 4 | 1d | 2025-04-10 | 2025-04-10 | start no earlier than 2025-04-10 |
| 4731 | On Completion of Unit Internal plaster for Tower 4 | 1d | 2025-04-10 | 2025-04-10 | start no earlier than 2025-04-10 |
| 4732 | On Completion of unit Flooring for Tower 4 | 1d | 2025-04-10 | 2025-04-10 | start no earlier than 2025-04-10 |
| 4733 | On Application of Occupancy Certificate for Tower 4 | 1d | 2025-04-10 | 2025-04-10 | start no earlier than 2025-04-10 |
| 4734 | On Offer of Possession for Tower 4 | 1d | 2025-04-10 | 2025-04-10 | start no earlier than 2025-04-10 |
| 4735 | On Completion of Tower Raft for Tower 5 | 1d | 2025-04-10 | 2025-04-10 | start no earlier than 2025-04-10 |
| 4736 | On Completion of Ground Floor for Tower 5 | 1d | 2025-04-10 | 2025-04-10 | start no earlier than 2025-04-10 |
| 4737 | On Completion of 10th Floor Slab for Tower 5 | 1d | 2025-04-10 | 2025-04-10 | start no earlier than 2025-04-10 |
| 4738 | On Completion of 15th Floor slab for Tower 5 | 1d | 2025-04-10 | 2025-04-10 | start no earlier than 2025-04-10 |
| 4739 | On Completion of 20th Floor slab for Tower 5 | 1d | 2025-04-10 | 2025-04-10 | start no earlier than 2025-04-10 |
| 4740 | On Completion of 25th Floor Slab for Tower 5 | 1d | 2025-04-10 | 2025-04-10 | start no earlier than 2025-04-10 |
| 4741 | On Completion of Terrace Slab for Tower 5 | 1d | 2025-04-10 | 2025-04-10 | start no earlier than 2025-04-10 |
| 4742 | On Completion of Unit Internal plaster for Tower 5 | 1d | 2025-04-10 | 2025-04-10 | start no earlier than 2025-04-10 |
| 4743 | On Completion of unit Flooring for Tower 5 | 1d | 2025-04-10 | 2025-04-10 | start no earlier than 2025-04-10 |
| 4744 | On Application of Occupancy Certificate for Tower 5 | 1d | 2025-04-10 | 2025-04-10 | start no earlier than 2025-04-10 |
| 4745 | On Offer of Possession for Tower 5 | 1d | 2025-04-10 | 2025-04-10 | start no earlier than 2025-04-10 |

## Version 2 (saved 2025-12-11, file Jardinia.xml)

Note of the change: Integrate Sprint enrichment into main ETL pipeline

Last finish 2028-08-07 → 2028-11-08 (+93d). Complete tasks 69 → 11.

Added:

| ID | Task | Duration | Start | Finish | Predecessors | Constraint |
| --- | --- | --- | --- | --- | --- | --- |
| 883 | Exhaust fan | 67.5d | 2027-05-25 | 2027-07-23 | 816FF+5.62d |  |
| 1860 | **Podium /Ground Floor Slab** | 28.12d | 2025-06-16 | 2025-07-10 |  | start no earlier than 2025-06-16 |
| 2777 | **Podium /Ground Floor Slab** | 28.12d | 2025-06-24 | 2025-07-19 |  | start no earlier than 2025-06-24 |
| 3694 | **Podium /Ground Floor Slab** | 28.12d | 2025-06-16 | 2025-07-10 |  | start no earlier than 2025-06-16 |
| 4555 | **Plumbing work** | 281.25d | 2026-12-24 | 2027-08-30 |  | start no earlier than 2026-12-24 |
| 4651 | **Club House** | 25.88d | 2027-02-01 | 2027-02-24 |  | start no earlier than 2027-02-01 |
| 4652 | Structure Work | 7.88d | 2027-02-01 | 2027-02-08 | 4616, 221FF |  |
| 4653 | Finishing Work | 2.25d | 2027-02-08 | 2027-02-10 | 4652 |  |
| 4654 | Mep Work | 6.75d | 2027-02-08 | 2027-02-14 | 4652 |  |
| 4655 | Furnitures | 1.12d | 2027-02-14 | 2027-02-15 | 4653, 4654 |  |
| 4656 | Gym equipments | 10.12d | 2027-02-15 | 2027-02-24 | 4653, 4655 |  |
| 4657 | **Fire NOC** | 2.25d | 2027-08-11 | 2027-08-12 |  | start no earlier than 2027-08-11 |
| 4658 | Fire NOC | 2.25d | 2027-08-11 | 2027-08-12 | 4596FF, 4656, 4650, 4640, 4641 |  |
| 4660 | OC of Plot B all 5 Towers | 1.12d | 2027-08-13 | 2027-08-14 | 4658FS+0.25d |  |
| 4664 | Solider Piling | 282.31d | 2024-12-05 | 2025-08-29 |  | start no earlier than 2024-12-05 |
| 4665 | Solider Piling | 1d | 2025-07-01 | 2025-07-01 |  | start no earlier than 2025-07-01 |
| 4666 | MS Bucket | 275.44d | 2024-11-04 | 2025-09-12 | 4664SS-34.69d |  |

Removed: 945 Podium; 1862 Podium; 2779 Podium; 4498 Internal Plaster; 4554 Exhast fan; 4558 Plumbing wrok; 4608 Street Light Fixing; 4611 D.G Set supply and installation; 4616 Main Pile Work; 4617 Backfilling; 4638 Concreting; 4641 Reinforcement; 4642 Reinforcement; 4643 Reinforcement; 4644 Reinforcement; 4646 Concreting; 4647 Concreting; 4648 Concreting; 4649 Concreting; 4650 Concreting; 4652 Reinforcement; 4653 Shuttering; 4654 Concreting; 4669 CLUB HOUSE; 4670 Club house Structure; 4671 Club house Structure; 4672 Club Finishing; 4674 OC of Plot A all 5 Towers; 4675 OC Reciept; 4676 OC Reciept; 4678 On Completion of MEP Services for retail Unit (Installation of unit electric points); 4679 On Application of Occupancy Certificate; 4680 On Notice of Possession; 4681 On completion of Retail structure; 4684 Additional Pile; 4685 Soilder Piling; 4686 MS Bucket Work

Changed:

| ID | Task | Start | Finish | Duration | Complete | Predecessors | Other |
| --- | --- | --- | --- | --- | --- | --- | --- |
| 1 | **Jardinia** | 2023-09-29 → 2024-05-14 (+228d) | 2028-08-07 → 2028-11-08 (+93d) | 1773.65ed → 1639.17ed | 6% → 2% |  | was named Tropical Isle 146; constraint start no earlier than 2023-09-29 → start no earlier than 2024-05-14 |
| 2 | **Godrej Jardinia 146** | 2023-09-29 → 2024-05-14 (+228d) | 2028-08-07 → 2028-11-08 (+93d) | 1607.56d → 1692.44d | 6% → 2% |  | was named Tropical Isle 146; constraint start no earlier than 2023-09-29 → start no earlier than 2024-05-14 |
| 3 | **Phase-1** | 2023-09-29 → 2024-05-14 (+228d) | 2028-04-06 → 2028-11-08 (+216d) | 1485.31d → 1692.44d | 6% → 2% |  | constraint start no earlier than 2023-09-29 → start no earlier than 2024-05-14 |
| 4 | **Tower 5** | 2023-09-29 → 2024-05-14 (+228d) | 2028-01-23 → 2028-10-22 (+273d) | 1410.69d → 1673.75d | 3% → 2% |  | constraint start no earlier than 2023-09-29 → start no earlier than 2024-05-14 |
| 5 | **Substructure** | 2023-09-29 → 2024-05-14 (+228d) | 2025-10-23 → 2026-03-03 (+131d) | 678.69d → 690.5d | 57% → 36% |  | constraint start no earlier than 2023-09-29 → start no earlier than 2024-05-14 |
| 6 | **Soil Bed Preparation** | 2023-09-29 → 2024-05-14 (+228d) | 2025-05-30 → 2025-09-14 (+107d) | 533.44d → 549.88d | 78% → 74% |  | constraint start no earlier than 2023-09-29 → start no earlier than 2024-05-14 |
| 7 | Test Piling | 2023-09-29 → 2024-05-14 (+228d) | 2023-10-24 → 2024-08-16 (+297d) | 24.94d → 106.69d |  |  | constraint start no earlier than 2023-09-29 → start no earlier than 2024-05-14 |
| 8 | Excavation | 2024-01-10 → 2024-06-05 (+147d) | 2024-02-08 → 2024-07-04 (+147d) | 29.94d → 33.56d |  | 7SS+15.74d → 7SS+22d | constraint start no earlier than 2024-01-10 → start no earlier than 2024-06-05 |
| 9 | Main Piling Work | 2024-04-12 → 2024-09-25 (+166d) | 2025-01-13 → 2025-04-20 (+97d) | 169.94d → 169.19d | 100% → 86% | 7FS-12.45d → 7FS+35d | constraint start no earlier than 2024-04-12 → start no earlier than 2024-09-25 |
| 10 | Anti-termite | 2025-04-01 → 2025-04-17 (+16d) | 2025-04-05 → 2025-04-22 (+17d) | 4.94d → 5.62d |  | 9FF+1.88d → 9FF+2d |  |
| 11 | PCC | 2024-10-15 → 2025-04-22 (+189d) | 2024-10-28 → 2025-04-26 (+180d) | 13.86d → 4.5d | 100% → 0% | 8FS-14.7d, 10SS+10.93d → 10SS+5.62d, 8 | constraint start no earlier than 2024-10-15 → none |
| 12 | Backfilling | 2025-04-01 → 2025-07-16 (+106d) | 2025-05-30 → 2025-09-14 (+107d) | 59.94d → 67.5d |  | 29FS-4.38d, 17FS-1d, 21FS-2d → 25, 17, 21 |  |
| 13 | **RCC Structure** | 2024-12-17 → 2025-05-01 (+135d) | 2025-04-06 → 2025-08-10 (+126d) | 111d → 113.62d | 97% → 0% |  | constraint start no earlier than 2024-12-17 → start no earlier than 2025-05-01 |
| 14 | **Raft Foundation** | 2024-12-17 → 2025-05-01 (+135d) | 2025-01-16 → 2025-05-27 (+131d) | 31d → 29.25d | 100% → 0% |  | constraint start no earlier than 2024-12-17 → start no earlier than 2025-05-01 |
| 15 | Reinforcement | 2024-12-17 → 2025-05-01 (+135d) | 2025-01-11 → 2025-05-19 (+128d) | 26d → 20.25d | 100% → 0% | 11FS-7.91d → 11FS+5.62d | constraint must finish on 2025-01-13 → none |
| 16 | Formwork | 2024-12-31 → 2025-05-14 (+134d) | 2025-01-13 → 2025-05-26 (+133d) | 14d → 13.5d | 100% → 0% | 15FF-2d → 15FF+7.88d | constraint start no earlier than 2024-12-31 → none |
| 17 | Concreting | 2025-01-13 → 2025-05-24 (+131d) | 2025-01-16 → 2025-05-27 (+131d) | 4d → 3.38d | 100% → 0% | 16FS-1d → 16FF+1.12d | constraint start no earlier than 2025-01-13 → none |
| 18 | **Basement 1 Slab** | 2025-01-16 → 2025-05-27 (+131d) | 2025-02-11 → 2025-06-21 (+130d) | 27d → 28.12d | 100% → 0% |  | constraint start no earlier than 2025-01-16 → start no earlier than 2025-05-27 |
| 19 | Reinforcement | 2025-01-16 → 2025-05-27 (+131d) | 2025-02-06 → 2025-06-16 (+130d) | 22d → 22.5d | 100% → 0% | 17FS-1d → 17 | constraint start no earlier than 2025-01-16 → none |
| 20 | Formwork | 2025-01-19 → 2025-05-28 (+129d) | 2025-02-09 → 2025-06-17 (+128d) | 22d → 22.5d | 100% → 0% | 19SS+3d → 19SS+1.12d | constraint start no earlier than 2025-01-19 → none |
| 21 | Concreting | 2025-02-09 → 2025-06-17 (+128d) | 2025-02-11 → 2025-06-21 (+130d) | 2d → 4.5d | 100% → 0% | 20FS-1d → 20 | constraint start no earlier than 2025-02-09 → none |
| 22 | **Basement 2 Slab/GF** | 2025-02-10 → 2025-06-21 (+131d) | 2025-03-06 → 2025-07-16 (+132d) | 24.38d → 28.12d | 100% → 0% |  | constraint start no earlier than 2025-02-10 → start no earlier than 2025-06-21 |
| 23 | Reinforcement | 2025-03-10 → 2025-06-21 (+103d) | 2025-04-05 → 2025-07-11 (+97d) | 20d → 22.5d | 85% → 0% | 29FS+2.38d → 21 | constraint start no earlier than 2025-03-10 → none |
| 24 | Formwork | 2025-02-13 → 2025-06-22 (+129d) | 2025-03-01 → 2025-07-12 (+133d) | 13d → 22.5d | 100% → 0% | 27SS+3d → 23SS+1.12d | constraint start no earlier than 2025-02-13 → none |
| 25 | Concreting | 2025-02-25 → 2025-07-12 (+137d) | 2025-03-05 → 2025-07-16 (+133d) | 3.5d → 4.5d | 100% → 0% |  | constraint start no earlier than 2025-02-25 → none |
| 26 | **Podium /Ground Floor Slab** | 2025-03-10 → 2025-07-16 (+128d) | 2025-04-06 → 2025-08-10 (+126d) | 28d → 28.12d | 90% → 0% |  | constraint start no earlier than 2025-03-10 → start no earlier than 2025-07-16 |
| 27 | Reinforcement | 2025-02-10 → 2025-07-16 (+156d) | 2025-03-01 → 2025-08-05 (+157d) | 18d → 22.5d | 100% → 0% | 21FS-2d → 25 | constraint start no earlier than 2025-02-10 → none |
| 28 | Formwork | 2025-03-10 → 2025-07-17 (+129d) | 2025-04-06 → 2025-08-06 (+122d) | 22d → 22.5d | 100% → 0% | 23FF → 27SS+1.12d | constraint start no earlier than 2025-03-10 → none |
| 29 | Concreting | 2025-02-27 → 2025-08-06 (+160d) | 2025-03-06 → 2025-08-10 (+157d) | 3.5d → 4.5d | 100% → 0% | 25 → 28 |  |
| 30 | **Substructure Finishing** | 2025-05-01 → 2025-09-09 (+131d) | 2025-10-23 → 2026-03-03 (+131d) | 174.81d → 146.25d |  |  | constraint start no earlier than 2025-05-01 → start no earlier than 2025-09-09 |
| 31 | Masonary work | 2025-05-01 → 2025-09-09 (+131d) | 2025-07-30 → 2025-10-24 (+86d) | 89.94d → 50.62d |  | 41FS+26.75d → 29FS+33.75d |  |
| 32 | Plaster | 2025-07-30 → 2025-10-24 (+86d) | 2025-09-08 → 2026-01-17 (+131d) | 39.94d → 45d |  |  |  |
| 33 | Structural steel | 2025-05-28 → 2025-10-09 (+134d) | 2025-07-26 → 2026-01-22 (+180d) | 59.94d → 67.5d |  | 41FS+53.38d → 29FS+67.5d |  |
| 34 | White Wash | 2025-09-08 → 2026-01-17 (+131d) | 2025-10-23 → 2026-03-03 (+131d) | 44.94d → 50.62d |  |  |  |
| 35 | **Superstructure** | 2025-04-06 → 2025-08-10 (+126d) | 2027-07-14 → 2028-02-03 (+204d) | 739.12d → 868.5d |  |  | constraint start no earlier than 2025-04-06 → start no earlier than 2025-08-10 |
| 36 | **RCC structure** | 2025-04-06 → 2025-08-10 (+126d) | 2026-08-12 → 2027-02-08 (+180d) | 447.56d → 514.12d |  |  | constraint start no earlier than 2025-04-06 → start no earlier than 2025-08-10 |
| 37 | **1st floor slab** | 2025-04-06 → 2025-08-10 (+126d) | 2025-04-30 → 2025-09-04 (+127d) | 24d → 28.12d |  |  | constraint start no earlier than 2025-04-06 → start no earlier than 2025-08-10 |
| 38 | Reinforcement | 2025-04-06 → 2025-08-10 (+126d) | 2025-04-26 → 2025-09-01 (+128d) | 20d → 24.75d |  | 41FS+1.88d → 29 |  |
| 39 | Wall conduiting | 2025-04-09 → 2025-08-13 (+126d) | 2025-04-13 → 2025-08-16 (+125d) | 4d → 3.38d |  | 38SS+2.75d → 38SS+3.38d |  |
| 40 | Formwork | 2025-04-09 → 2025-08-13 (+126d) | 2025-04-29 → 2025-09-03 (+127d) | 20d → 23.62d |  | 38SS+3d → 38SS+3.38d |  |
| 41 | Concreting | 2025-04-03 → 2025-09-03 (+153d) | 2025-04-04 → 2025-09-04 (+153d) | 1d → 1.12d |  | 28FF+3.62d → 40 |  |
| 42 | **2nd floor slab** | 2025-05-01 → 2025-09-04 (+126d) | 2025-05-22 → 2025-09-25 (+126d) | 21d → 23.62d |  |  | constraint start no earlier than 2025-05-01 → start no earlier than 2025-09-04 |
| 43 | Reinforcement | 2025-05-01 → 2025-09-04 (+126d) | 2025-05-19 → 2025-09-22 (+126d) | 18d → 20.25d |  | 46FS+1d → 41 |  |
| 44 | Wall conduiting | 2025-05-04 → 2025-09-06 (+125d) | 2025-05-08 → 2025-09-09 (+124d) | 4d → 3.38d |  | 39, 43SS+2.75d → 39FS+0.25d, 43SS+2.25d |  |
| 45 | Formwork | 2025-05-04 → 2025-09-07 (+126d) | 2025-05-21 → 2025-09-24 (+126d) | 17d → 19.12d |  | 43SS+3d → 43SS+3.38d |  |
| 46 | Concreting | 2025-04-29 → 2025-09-24 (+148d) | 2025-04-30 → 2025-09-25 (+148d) | 1d → 1.12d |  | 40 → 45 |  |
| 47 | **3rd floor slab** | 2025-05-23 → 2025-09-25 (+125d) | 2025-06-07 → 2025-10-10 (+125d) | 15d → 16.88d |  |  | constraint start no earlier than 2025-05-23 → start no earlier than 2025-09-25 |
| 48 | Reinforcement | 2025-05-23 → 2025-09-25 (+125d) | 2025-06-03 → 2025-10-06 (+125d) | 11d → 12.38d |  | 51FS+1d → 46 |  |
| 49 | Wall conduiting | 2025-05-26 → 2025-09-28 (+125d) | 2025-05-29 → 2025-10-01 (+125d) | 3d → 3.38d |  | 44, 48SS+2.75d → 44, 48SS+3.38d |  |
| 50 | Formwork | 2025-05-26 → 2025-09-29 (+126d) | 2025-06-06 → 2025-10-09 (+125d) | 11d → 11.25d |  | 48SS+3d → 48SS+4.5d |  |
| 51 | Concreting | 2025-05-21 → 2025-10-09 (+141d) | 2025-05-22 → 2025-10-10 (+141d) | 1d → 1.12d |  | 45 → 50 |  |
| 52 | **4th floor slab** | 2025-06-08 → 2025-10-10 (+124d) | 2025-06-17 → 2025-10-19 (+124d) | 9d → 10.12d |  |  | constraint start no earlier than 2025-06-08 → start no earlier than 2025-10-10 |
| 53 | Reinforcement | 2025-06-08 → 2025-10-10 (+124d) | 2025-06-16 → 2025-10-17 (+123d) | 8d → 7.88d |  | 56FS+1d → 51 |  |
| 54 | Wall conduiting | 2025-06-09 → 2025-10-11 (+124d) | 2025-06-12 → 2025-10-13 (+123d) | 3d → 2.25d |  | 49, 53SS+1d → 49, 53SS+1.12d |  |
| 55 | Formwork | 2025-06-09 → 2025-10-12 (+125d) | 2025-06-16 → 2025-10-18 (+124d) | 7d → 6.75d |  | 53SS+1d → 53SS+2.25d |  |
| 56 | Concreting | 2025-06-06 → 2025-10-18 (+134d) | 2025-06-07 → 2025-10-19 (+134d) | 1d → 1.12d |  | 50 → 55 |  |
| 57 | **5th floor slab** | 2025-06-18 → 2025-10-19 (+123d) | 2025-06-27 → 2025-10-28 (+123d) | 9d → 10.12d |  |  | constraint start no earlier than 2025-06-18 → start no earlier than 2025-10-19 |
| 58 | Reinforcement | 2025-06-18 → 2025-10-19 (+123d) | 2025-06-26 → 2025-10-26 (+122d) | 8d → 7.88d |  | 61FS+1d → 56 |  |
| 59 | Wall conduiting | 2025-06-19 → 2025-10-20 (+123d) | 2025-06-22 → 2025-10-22 (+122d) | 3d → 2.25d |  | 54, 58SS+1d → 54, 58SS+1.12d |  |
| 60 | Formwork | 2025-06-19 → 2025-10-21 (+124d) | 2025-06-26 → 2025-10-27 (+123d) | 7d → 6.75d |  | 58SS+1d → 58SS+2.25d |  |
| 61 | Concreting | 2025-06-16 → 2025-10-27 (+133d) | 2025-06-17 → 2025-10-28 (+133d) | 1d → 1.12d |  | 55 → 60 |  |
| 62 | **6th floor slab** | 2025-06-28 → 2025-10-28 (+122d) | 2025-07-07 → 2025-12-21 (+167d) | 9d → 10.12d |  |  | constraint start no earlier than 2025-06-28 → start no earlier than 2025-10-28 |
| 63 | Reinforcement | 2025-06-28 → 2025-10-28 (+122d) | 2025-07-06 → 2025-12-19 (+166d) | 8d → 7.88d |  | 66FS+1d → 61 |  |
| 64 | Wall conduiting | 2025-06-29 → 2025-10-29 (+122d) | 2025-07-02 → 2025-10-31 (+121d) | 3d → 2.25d |  | 59, 63SS+1d → 59, 63SS+1.12d |  |
| 65 | Formwork | 2025-06-29 → 2025-10-30 (+123d) | 2025-07-06 → 2025-12-20 (+167d) | 7d → 6.75d |  | 63SS+1d → 63SS+2.25d |  |
| 66 | Concreting | 2025-06-26 → 2025-12-20 (+177d) | 2025-06-27 → 2025-12-21 (+177d) | 1d → 1.12d |  | 60 → 65 |  |
| 67 | **7th floor slab** | 2025-07-08 → 2025-12-21 (+166d) | 2025-07-17 → 2025-12-30 (+166d) | 9d → 10.12d |  |  | constraint start no earlier than 2025-07-08 → start no earlier than 2025-12-21 |
| 68 | Reinforcement | 2025-07-08 → 2025-12-21 (+166d) | 2025-07-16 → 2025-12-28 (+165d) | 8d → 7.88d |  | 71FS+1d → 66 |  |
| 69 | Wall conduiting | 2025-07-09 → 2025-12-22 (+166d) | 2025-07-12 → 2025-12-24 (+165d) | 3d → 2.25d |  | 64, 68SS+1d → 64, 68SS+1.12d |  |
| 70 | Formwork | 2025-07-09 → 2025-12-23 (+167d) | 2025-07-16 → 2025-12-29 (+166d) | 7d → 6.75d |  | 68SS+1d → 68SS+2.25d |  |

| ID | Task | Start | Finish | Duration | Predecessors | Other |
| --- | --- | --- | --- | --- | --- | --- |
| 71 | Concreting | 2025-07-06 → 2025-12-29 (+176d) | 2025-07-07 → 2025-12-30 (+176d) | 1d → 1.12d | 65 → 70 |  |
| 72 | **8th floor slab** | 2025-07-18 → 2025-12-30 (+165d) | 2025-07-30 → 2026-01-11 (+165d) | 12d → 13.5d |  | constraint start no earlier than 2025-07-18 → start no earlier than 2025-12-30 |
| 73 | Reinforcement | 2025-07-18 → 2025-12-30 (+165d) | 2025-07-28 → 2026-01-09 (+165d) | 10d → 11.25d | 76FS+1d → 71 |  |
| 74 | Wall conduiting | 2025-07-19 → 2025-12-31 (+165d) | 2025-07-22 → 2026-01-02 (+164d) | 3d → 2.25d | 69, 73SS+1d → 69, 73SS+1.12d |  |
| 75 | Formwork | 2025-07-19 → 2026-01-01 (+166d) | 2025-07-29 → 2026-01-10 (+165d) | 10d → 10.12d | 73SS+1d → 73SS+2.25d |  |
| 76 | Concreting | 2025-07-16 → 2026-01-10 (+178d) | 2025-07-17 → 2026-01-11 (+178d) | 1d → 1.12d | 70 → 75 |  |
| 77 | **9th floor slab** | 2025-07-31 → 2026-01-11 (+164d) | 2025-08-09 → 2026-01-20 (+164d) | 9d → 10.12d |  | constraint start no earlier than 2025-07-31 → start no earlier than 2026-01-11 |
| 78 | Reinforcement | 2025-07-31 → 2026-01-11 (+164d) | 2025-08-08 → 2026-01-18 (+163d) | 8d → 7.88d | 81FS+1d → 76 |  |
| 79 | Wall conduiting | 2025-08-01 → 2026-01-12 (+164d) | 2025-08-04 → 2026-01-14 (+163d) | 3d → 2.25d | 74, 78SS+1d → 74, 78SS+1.12d |  |
| 80 | Formwork | 2025-08-01 → 2026-01-13 (+165d) | 2025-08-08 → 2026-01-19 (+164d) | 7d → 6.75d | 78SS+1d → 78SS+2.25d |  |
| 81 | Concreting | 2025-07-29 → 2026-01-19 (+174d) | 2025-07-30 → 2026-01-20 (+174d) | 1d → 1.12d | 75 → 80 |  |
| 82 | **10th floor slab** | 2025-08-10 → 2026-01-20 (+163d) | 2025-08-19 → 2026-01-29 (+163d) | 9d → 10.12d |  | constraint start no earlier than 2025-08-10 → start no earlier than 2026-01-20 |
| 83 | Reinforcement | 2025-08-10 → 2026-01-20 (+163d) | 2025-08-18 → 2026-01-27 (+162d) | 8d → 7.88d | 86FS+1d → 81 |  |
| 84 | Wall conduiting | 2025-08-11 → 2026-01-21 (+163d) | 2025-08-14 → 2026-01-23 (+162d) | 3d → 2.25d | 79, 83SS+1d → 79, 83SS+1.12d |  |
| 85 | Formwork | 2025-08-11 → 2026-01-22 (+164d) | 2025-08-18 → 2026-01-28 (+163d) | 7d → 6.75d | 83SS+1d → 83SS+2.25d |  |
| 86 | Concreting | 2025-08-08 → 2026-01-28 (+173d) | 2025-08-09 → 2026-01-29 (+173d) | 1d → 1.12d | 80 → 85 |  |
| 87 | **11th floor slab** | 2025-08-20 → 2026-01-29 (+162d) | 2025-08-29 → 2026-02-07 (+162d) | 9d → 10.12d |  | constraint start no earlier than 2025-08-20 → start no earlier than 2026-01-29 |
| 88 | Reinforcement | 2025-08-20 → 2026-01-29 (+162d) | 2025-08-28 → 2026-02-05 (+161d) | 8d → 7.88d | 91FS+1d → 86 |  |
| 89 | Wall conduiting | 2025-08-21 → 2026-01-30 (+162d) | 2025-08-24 → 2026-02-01 (+161d) | 3d → 2.25d | 84, 88SS+1d → 84, 88SS+1.12d |  |
| 90 | Formwork | 2025-08-21 → 2026-01-31 (+163d) | 2025-08-28 → 2026-02-06 (+162d) | 7d → 6.75d | 88SS+1d → 88SS+2.25d |  |
| 91 | Concreting | 2025-08-18 → 2026-02-06 (+172d) | 2025-08-19 → 2026-02-07 (+172d) | 1d → 1.12d | 85 → 90 |  |
| 92 | **12th floor slab** | 2025-08-30 → 2026-02-07 (+161d) | 2025-09-08 → 2026-02-16 (+161d) | 9d → 10.12d |  | constraint start no earlier than 2025-08-30 → start no earlier than 2026-02-07 |
| 93 | Reinforcement | 2025-08-30 → 2026-02-07 (+161d) | 2025-09-07 → 2026-02-14 (+160d) | 8d → 7.88d | 96FS+1d → 91 |  |
| 94 | Wall conduiting | 2025-08-31 → 2026-02-08 (+161d) | 2025-09-03 → 2026-02-10 (+160d) | 3d → 2.25d | 89, 93SS+1d → 89, 93SS+1.12d |  |
| 95 | Formwork | 2025-08-31 → 2026-02-09 (+162d) | 2025-09-07 → 2026-02-15 (+161d) | 7d → 6.75d | 93SS+1d → 93SS+2.25d |  |
| 96 | Concreting | 2025-08-28 → 2026-02-15 (+171d) | 2025-08-29 → 2026-02-16 (+171d) | 1d → 1.12d | 90 → 95 |  |
| 97 | **13th floor slab** | 2025-09-09 → 2026-02-16 (+160d) | 2025-09-18 → 2026-02-25 (+160d) | 9d → 10.12d |  | constraint start no earlier than 2025-09-09 → start no earlier than 2026-02-16 |
| 98 | Reinforcement | 2025-09-09 → 2026-02-16 (+160d) | 2025-09-17 → 2026-02-23 (+159d) | 8d → 7.88d | 101FS+1d → 96 |  |
| 99 | Wall conduiting | 2025-09-10 → 2026-02-17 (+160d) | 2025-09-13 → 2026-02-19 (+159d) | 3d → 2.25d | 94, 98SS+1d → 94, 98SS+1.12d |  |
| 100 | Formwork | 2025-09-10 → 2026-02-18 (+161d) | 2025-09-17 → 2026-02-24 (+160d) | 7d → 6.75d | 98SS+1d → 98SS+2.25d |  |
| 101 | Concreting | 2025-09-07 → 2026-02-24 (+170d) | 2025-09-08 → 2026-02-25 (+170d) | 1d → 1.12d | 95 → 100 |  |
| 102 | **14th floor slab** | 2025-09-19 → 2026-02-25 (+159d) | 2025-09-28 → 2026-03-06 (+159d) | 9d → 10.12d |  | constraint start no earlier than 2025-09-19 → start no earlier than 2026-02-25 |
| 103 | Reinforcement | 2025-09-19 → 2026-02-25 (+159d) | 2025-09-27 → 2026-03-04 (+158d) | 8d → 7.88d | 106FS+1d → 101 |  |
| 104 | Wall conduiting | 2025-09-20 → 2026-02-26 (+159d) | 2025-09-23 → 2026-02-28 (+158d) | 3d → 2.25d | 99, 103SS+1d → 99, 103SS+1.12d |  |
| 105 | Formwork | 2025-09-20 → 2026-02-27 (+160d) | 2025-09-27 → 2026-03-05 (+159d) | 7d → 6.75d | 103SS+1d → 103SS+2.25d |  |
| 106 | Concreting | 2025-09-17 → 2026-03-05 (+169d) | 2025-09-18 → 2026-03-06 (+169d) | 1d → 1.12d | 100 → 105 |  |
| 107 | **15th floor slab** | 2025-09-29 → 2026-03-06 (+158d) | 2025-10-08 → 2026-03-15 (+158d) | 9d → 10.12d |  | constraint start no earlier than 2025-09-29 → start no earlier than 2026-03-06 |
| 108 | Reinforcement | 2025-09-29 → 2026-03-06 (+158d) | 2025-10-07 → 2026-03-13 (+157d) | 8d → 7.88d | 111FS+1d → 106 |  |
| 109 | Wall conduiting | 2025-09-30 → 2026-03-07 (+158d) | 2025-10-03 → 2026-03-09 (+157d) | 3d → 2.25d | 104, 108SS+1d → 104, 108SS+1.12d |  |
| 110 | Formwork | 2025-09-30 → 2026-03-08 (+159d) | 2025-10-07 → 2026-03-14 (+158d) | 7d → 6.75d | 108SS+1d → 108SS+2.25d |  |
| 111 | Concreting | 2025-09-27 → 2026-03-14 (+168d) | 2025-09-28 → 2026-03-15 (+168d) | 1d → 1.12d | 105 → 110 |  |
| 112 | **16th floor slab** | 2025-10-09 → 2026-03-15 (+157d) | 2025-10-21 → 2026-03-27 (+157d) | 12d → 13.5d |  | constraint start no earlier than 2025-10-09 → start no earlier than 2026-03-15 |
| 113 | Reinforcement | 2025-10-09 → 2026-03-15 (+157d) | 2025-10-19 → 2026-03-25 (+157d) | 10d → 11.25d | 116FS+1d → 111 |  |
| 114 | Wall conduiting | 2025-10-10 → 2026-03-16 (+157d) | 2025-10-13 → 2026-03-18 (+156d) | 3d → 2.25d | 109, 113SS+1d → 109, 113SS+1.12d |  |
| 115 | Formwork | 2025-10-10 → 2026-03-16 (+157d) | 2025-10-20 → 2026-03-26 (+157d) | 10d → 11.25d | 113SS+1d → 113SS+1.12d |  |
| 116 | Concreting | 2025-10-07 → 2026-03-26 (+170d) | 2025-10-08 → 2026-03-27 (+170d) | 1d → 1.12d | 110 → 115 |  |
| 117 | **17th floor slab** | 2025-10-22 → 2026-03-27 (+156d) | 2025-10-31 → 2026-04-06 (+157d) | 9d → 11.25d |  | constraint start no earlier than 2025-10-22 → start no earlier than 2026-03-27 |
| 118 | Reinforcement | 2025-10-22 → 2026-03-27 (+156d) | 2025-10-30 → 2026-04-04 (+156d) | 8d → 9d | 121FS+1d → 116 |  |
| 119 | Wall conduiting | 2025-10-23 → 2026-03-28 (+156d) | 2025-10-26 → 2026-03-30 (+155d) | 3d → 2.25d | 114, 118SS+1d → 114, 118SS+1.12d |  |
| 120 | Formwork | 2025-10-23 → 2026-03-29 (+157d) | 2025-10-30 → 2026-04-05 (+157d) | 7d → 7.88d | 118SS+1d → 118SS+2.25d |  |
| 121 | Concreting | 2025-10-20 → 2026-04-05 (+167d) | 2025-10-21 → 2026-04-06 (+167d) | 1d → 1.12d | 115 → 120 |  |
| 122 | **18th floor slab** | 2025-12-16 → 2026-04-06 (+111d) | 2025-12-25 → 2026-04-16 (+112d) | 9d → 11.25d |  | constraint start no earlier than 2025-12-16 → start no earlier than 2026-04-06 |
| 123 | Reinforcement | 2025-12-16 → 2026-04-06 (+111d) | 2025-12-24 → 2026-04-14 (+111d) | 8d → 9d | 126FS+1d → 121 |  |
| 124 | Wall conduiting | 2025-12-17 → 2026-04-07 (+111d) | 2025-12-20 → 2026-04-09 (+110d) | 3d → 2.25d | 119, 123SS+1d → 119, 123SS+1.12d |  |
| 125 | Formwork | 2025-12-17 → 2026-04-08 (+112d) | 2025-12-24 → 2026-04-15 (+112d) | 7d → 7.88d | 123SS+1d → 123SS+2.25d |  |
| 126 | Concreting | 2025-10-30 → 2026-04-15 (+167d) | 2025-10-31 → 2026-04-16 (+167d) | 1d → 1.12d | 120 → 125 |  |
| 127 | **19th floor slab** | 2025-12-26 → 2026-04-16 (+111d) | 2026-01-03 → 2026-04-26 (+113d) | 8d → 11.25d |  | constraint start no earlier than 2025-12-26 → start no earlier than 2026-04-16 |
| 128 | Reinforcement | 2025-12-26 → 2026-04-16 (+111d) | 2026-01-02 → 2026-04-24 (+112d) | 7d → 9d | 131FS+1d → 126 |  |
| 129 | Wall conduiting | 2025-12-27 → 2026-04-17 (+111d) | 2025-12-30 → 2026-04-19 (+110d) | 3d → 2.25d | 124, 128SS+1d → 124, 128SS+1.12d |  |
| 130 | Formwork | 2025-12-27 → 2026-04-18 (+112d) | 2026-01-02 → 2026-04-25 (+113d) | 6d → 7.88d | 128SS+1d → 128SS+2.25d |  |
| 131 | Concreting | 2025-12-24 → 2026-04-25 (+122d) | 2025-12-25 → 2026-04-26 (+122d) | 1d → 1.12d | 125 → 130 |  |
| 132 | **20th floor slab** | 2026-01-04 → 2026-04-26 (+112d) | 2026-01-12 → 2026-05-06 (+114d) | 8d → 11.25d |  | constraint start no earlier than 2026-01-04 → start no earlier than 2026-04-26 |
| 133 | Reinforcement | 2026-01-04 → 2026-04-26 (+112d) | 2026-01-11 → 2026-05-04 (+113d) | 7d → 9d | 136FS+1d → 131 |  |
| 134 | Wall conduiting | 2026-01-05 → 2026-04-27 (+112d) | 2026-01-08 → 2026-04-29 (+111d) | 3d → 2.25d | 129, 133SS+1d → 129, 133SS+1.12d |  |
| 135 | Formwork | 2026-01-05 → 2026-04-28 (+113d) | 2026-01-11 → 2026-05-05 (+114d) | 6d → 7.88d | 133SS+1d → 133SS+2.25d |  |
| 136 | Concreting | 2026-01-02 → 2026-05-05 (+123d) | 2026-01-03 → 2026-05-06 (+123d) | 1d → 1.12d | 130 → 135 |  |
| 137 | **21st floor slab** | 2026-01-13 → 2026-05-06 (+113d) | 2026-01-21 → 2026-05-16 (+115d) | 8d → 11.25d |  | constraint start no earlier than 2026-01-13 → start no earlier than 2026-05-06 |
| 138 | Reinforcement | 2026-01-13 → 2026-05-06 (+113d) | 2026-01-20 → 2026-05-14 (+114d) | 7d → 9d | 141FS+1d → 136 |  |
| 139 | Wall conduiting | 2026-01-14 → 2026-05-07 (+113d) | 2026-01-17 → 2026-05-09 (+112d) | 3d → 2.25d | 134, 138SS+1d → 134, 138SS+1.12d |  |
| 140 | Formwork | 2026-01-14 → 2026-05-08 (+114d) | 2026-01-20 → 2026-05-15 (+115d) | 6d → 7.88d | 138SS+1d → 138SS+2.25d |  |

| ID | Task | Start | Finish | Duration | Predecessors | Other |
| --- | --- | --- | --- | --- | --- | --- |
| 141 | Concreting | 2026-01-11 → 2026-05-15 (+124d) | 2026-01-12 → 2026-05-16 (+124d) | 1d → 1.12d | 135 → 140 |  |
| 142 | **22nd floor slab** | 2026-01-22 → 2026-05-16 (+114d) | 2026-01-30 → 2026-05-26 (+116d) | 8d → 11.25d |  | constraint start no earlier than 2026-01-22 → start no earlier than 2026-05-16 |
| 143 | Reinforcement | 2026-01-22 → 2026-05-16 (+114d) | 2026-01-29 → 2026-05-24 (+115d) | 7d → 9d | 146FS+1d → 141 |  |
| 144 | Wall conduiting | 2026-01-23 → 2026-05-17 (+114d) | 2026-01-26 → 2026-05-19 (+113d) | 3d → 2.25d | 139, 143SS+1d → 139, 143SS+1.12d |  |
| 145 | Formwork | 2026-01-23 → 2026-05-18 (+115d) | 2026-01-29 → 2026-05-25 (+116d) | 6d → 7.88d | 143SS+1d → 143SS+2.25d |  |
| 146 | Concreting | 2026-01-20 → 2026-05-25 (+125d) | 2026-01-21 → 2026-05-26 (+125d) | 1d → 1.12d | 140 → 145 |  |
| 147 | **23rd floor slab** | 2026-01-31 → 2026-05-26 (+115d) | 2026-02-08 → 2026-06-05 (+117d) | 8d → 11.25d |  | constraint start no earlier than 2026-01-31 → start no earlier than 2026-05-26 |
| 148 | Reinforcement | 2026-01-31 → 2026-05-26 (+115d) | 2026-02-07 → 2026-06-03 (+116d) | 7d → 9d | 151FS+1d → 146 |  |
| 149 | Wall conduiting | 2026-02-01 → 2026-05-27 (+115d) | 2026-02-04 → 2026-05-29 (+114d) | 3d → 2.25d | 144, 148SS+1d → 144, 148SS+1.12d |  |
| 150 | Formwork | 2026-02-01 → 2026-05-28 (+116d) | 2026-02-07 → 2026-06-04 (+117d) | 6d → 7.88d | 148SS+1d → 148SS+2.25d |  |
| 151 | Concreting | 2026-01-29 → 2026-06-04 (+126d) | 2026-01-30 → 2026-06-05 (+126d) | 1d → 1.12d | 145 → 150 |  |
| 152 | **24th floor slab** | 2026-02-09 → 2026-06-05 (+116d) | 2026-02-21 → 2026-06-19 (+118d) | 12d → 15.75d |  | constraint start no earlier than 2026-02-09 → start no earlier than 2026-06-05 |
| 153 | Reinforcement | 2026-02-09 → 2026-06-05 (+116d) | 2026-02-19 → 2026-06-16 (+117d) | 10d → 12.38d | 156FS+1d → 151 |  |
| 154 | Wall conduiting | 2026-02-10 → 2026-06-06 (+116d) | 2026-02-13 → 2026-06-08 (+115d) | 3d → 2.25d | 149, 153SS+1d → 149, 153SS+1.12d |  |
| 155 | Formwork | 2026-02-10 → 2026-06-07 (+117d) | 2026-02-20 → 2026-06-18 (+118d) | 10d → 12.38d | 153SS+1d → 153SS+2.25d |  |
| 156 | Concreting | 2026-02-07 → 2026-06-18 (+131d) | 2026-02-08 → 2026-06-19 (+131d) | 1d → 1.12d | 150 → 155 |  |
| 157 | **25th floor slab** | 2026-02-22 → 2026-06-19 (+117d) | 2026-03-06 → 2026-07-04 (+120d) | 12d → 16.88d |  | constraint start no earlier than 2026-02-22 → start no earlier than 2026-06-19 |
| 158 | Reinforcement | 2026-02-22 → 2026-06-19 (+117d) | 2026-03-04 → 2026-06-30 (+118d) | 10d → 12.38d | 161FS+1d → 156 |  |
| 159 | Wall conduiting | 2026-02-23 → 2026-06-20 (+117d) | 2026-02-26 → 2026-06-22 (+116d) | 3d → 2.25d | 154, 158SS+1d → 154, 158SS+1.12d |  |
| 160 | Formwork | 2026-02-23 → 2026-06-22 (+119d) | 2026-03-05 → 2026-07-03 (+120d) | 10d → 12.38d | 158SS+1d → 158SS+3.38d |  |
| 161 | Concreting | 2026-02-20 → 2026-07-03 (+133d) | 2026-02-21 → 2026-07-04 (+133d) | 1d → 1.12d | 155 → 160 |  |
| 162 | **26th floor slab** | 2026-03-07 → 2026-07-04 (+119d) | 2026-03-15 → 2026-07-14 (+121d) | 8d → 11.25d |  | constraint start no earlier than 2026-03-07 → start no earlier than 2026-07-04 |
| 163 | Reinforcement | 2026-03-07 → 2026-07-04 (+119d) | 2026-03-14 → 2026-07-12 (+120d) | 7d → 9d | 166FS+1d → 161 |  |
| 164 | Wall conduiting | 2026-03-08 → 2026-07-05 (+119d) | 2026-03-11 → 2026-07-07 (+118d) | 3d → 2.25d | 159, 163SS+1d → 159, 163SS+1.12d |  |
| 165 | Formwork | 2026-03-08 → 2026-07-06 (+120d) | 2026-03-14 → 2026-07-13 (+121d) | 6d → 7.88d | 163SS+1d → 163SS+2.25d |  |
| 166 | Concreting | 2026-03-05 → 2026-07-13 (+130d) | 2026-03-06 → 2026-07-14 (+130d) | 1d → 1.12d | 160 → 165 |  |
| 167 | **27th floor slab** | 2026-03-16 → 2026-07-14 (+120d) | 2026-03-24 → 2026-07-24 (+122d) | 8d → 11.25d |  | constraint start no earlier than 2026-03-16 → start no earlier than 2026-07-14 |
| 168 | Reinforcement | 2026-03-16 → 2026-07-14 (+120d) | 2026-03-23 → 2026-07-22 (+121d) | 7d → 9d | 171FS+1d → 166 |  |
| 169 | Wall conduiting | 2026-03-17 → 2026-07-15 (+120d) | 2026-03-20 → 2026-07-17 (+119d) | 3d → 2.25d | 164, 168SS+1d → 164, 168SS+1.12d |  |
| 170 | Formwork | 2026-03-17 → 2026-07-16 (+121d) | 2026-03-23 → 2026-07-23 (+122d) | 6d → 7.88d | 168SS+1d → 168SS+2.25d |  |
| 171 | Concreting | 2026-03-14 → 2026-07-23 (+131d) | 2026-03-15 → 2026-07-24 (+131d) | 1d → 1.12d | 165 → 170 |  |
| 172 | **28th floor slab** | 2026-03-25 → 2026-07-24 (+121d) | 2026-04-02 → 2026-08-03 (+123d) | 8d → 11.25d |  | constraint start no earlier than 2026-03-25 → start no earlier than 2026-07-24 |
| 173 | Reinforcement | 2026-03-25 → 2026-07-24 (+121d) | 2026-04-01 → 2026-08-01 (+122d) | 7d → 9d | 176FS+1d → 171 |  |
| 174 | Wall conduiting | 2026-03-26 → 2026-07-25 (+121d) | 2026-03-29 → 2026-07-27 (+120d) | 3d → 2.25d | 169, 173SS+1d → 169, 173SS+1.12d |  |
| 175 | Formwork | 2026-03-26 → 2026-07-26 (+122d) | 2026-04-01 → 2026-08-02 (+123d) | 6d → 7.88d | 173SS+1d → 173SS+2.25d |  |
| 176 | Concreting | 2026-03-23 → 2026-08-02 (+132d) | 2026-03-24 → 2026-08-03 (+132d) | 1d → 1.12d | 170 → 175 |  |
| 177 | **29th floor slab** | 2026-04-02 → 2026-08-03 (+123d) | 2026-04-10 → 2026-08-13 (+125d) | 8d → 11.25d |  | constraint start no earlier than 2026-04-02 → start no earlier than 2026-08-03 |
| 178 | Reinforcement | 2026-04-02 → 2026-08-03 (+123d) | 2026-04-09 → 2026-08-11 (+124d) | 7d → 9d | 181 → 176 |  |
| 179 | Wall conduiting | 2026-04-03 → 2026-08-04 (+123d) | 2026-04-06 → 2026-08-06 (+122d) | 3d → 2.25d | 174, 178SS+1d → 174, 178SS+1.12d |  |
| 180 | Formwork | 2026-04-03 → 2026-08-05 (+124d) | 2026-04-09 → 2026-08-12 (+125d) | 6d → 7.88d | 178SS+1d → 178SS+2.25d |  |
| 181 | Concreting | 2026-04-01 → 2026-08-12 (+133d) | 2026-04-02 → 2026-08-13 (+133d) | 1d → 1.12d | 175 → 180 |  |
| 182 | **30th floor slab** | 2026-04-10 → 2026-08-13 (+125d) | 2026-04-18 → 2026-08-23 (+127d) | 8d → 11.25d |  | constraint start no earlier than 2026-04-10 → start no earlier than 2026-08-13 |
| 183 | Reinforcement | 2026-04-10 → 2026-08-13 (+125d) | 2026-04-17 → 2026-08-21 (+126d) | 7d → 9d | 186 → 181 |  |
| 184 | Wall conduiting | 2026-04-11 → 2026-08-14 (+125d) | 2026-04-14 → 2026-08-16 (+124d) | 3d → 2.25d | 179, 183SS+1d → 179, 183SS+1.12d |  |
| 185 | Formwork | 2026-04-11 → 2026-08-15 (+126d) | 2026-04-17 → 2026-08-22 (+127d) | 6d → 7.88d | 183SS+1d → 183SS+2.25d |  |
| 186 | Concreting | 2026-04-09 → 2026-08-22 (+135d) | 2026-04-10 → 2026-08-23 (+135d) | 1d → 1.12d | 180 → 185 |  |
| 187 | **31st floor slab** | 2026-04-18 → 2026-08-23 (+127d) | 2026-04-28 → 2026-09-04 (+129d) | 10d → 13.5d |  | constraint start no earlier than 2026-04-18 → start no earlier than 2026-08-23 |
| 188 | Reinforcement | 2026-04-18 → 2026-08-23 (+127d) | 2026-04-25 → 2026-09-01 (+129d) | 7d → 10.12d | 191 → 186 |  |
| 189 | Wall conduiting | 2026-04-19 → 2026-08-24 (+127d) | 2026-04-22 → 2026-08-26 (+126d) | 3d → 2.25d | 184, 188SS+1d → 184, 188SS+1.12d |  |
| 190 | Formwork | 2026-04-19 → 2026-08-25 (+128d) | 2026-04-27 → 2026-09-03 (+129d) | 8d → 10.12d | 188SS+1d → 188SS+2.25d |  |
| 191 | Concreting | 2026-04-17 → 2026-09-03 (+139d) | 2026-04-18 → 2026-09-04 (+139d) | 1d → 1.12d | 185 → 190 |  |
| 192 | **32nd floor slab** | 2026-04-28 → 2026-09-04 (+129d) | 2026-05-11 → 2026-09-17 (+129d) | 12.75d → 14.62d |  | constraint start no earlier than 2026-04-28 → start no earlier than 2026-09-04 |
| 193 | Reinforcement | 2026-04-28 → 2026-09-04 (+129d) | 2026-05-08 → 2026-09-14 (+129d) | 9.94d → 11.25d | 196 → 191 |  |
| 194 | Wall conduiting | 2026-04-29 → 2026-09-05 (+129d) | 2026-05-01 → 2026-09-07 (+129d) | 1.94d → 2.25d | 189, 193SS+1d → 189, 193SS+1.12d |  |
| 195 | Formwork | 2026-04-30 → 2026-09-06 (+129d) | 2026-05-10 → 2026-09-16 (+129d) | 9.94d → 11.25d | 193SS+1.88d → 193SS+2.25d |  |
| 196 | Concreting | 2026-04-27 → 2026-09-16 (+142d) | 2026-04-28 → 2026-09-17 (+142d) | 1d → 1.12d | 190 → 195 |  |
| 197 | **33rd floor slab** | 2026-05-11 → 2026-09-17 (+129d) | 2026-05-22 → 2026-09-30 (+131d) | 11.75d → 14.62d |  | constraint start no earlier than 2026-05-11 → start no earlier than 2026-09-17 |
| 198 | Reinforcement | 2026-05-11 → 2026-09-17 (+129d) | 2026-05-20 → 2026-09-27 (+130d) | 8.94d → 11.25d | 201 → 196 |  |
| 199 | Wall conduiting | 2026-05-12 → 2026-09-18 (+129d) | 2026-05-14 → 2026-09-20 (+129d) | 1.94d → 2.25d | 194, 198SS+1d → 194, 198SS+1.12d |  |
| 200 | Formwork | 2026-05-13 → 2026-09-19 (+129d) | 2026-05-22 → 2026-09-29 (+130d) | 8.94d → 11.25d | 198SS+1.88d → 198SS+2.25d |  |
| 201 | Concreting | 2026-05-10 → 2026-09-29 (+142d) | 2026-05-11 → 2026-09-30 (+142d) | 0.94d → 1.12d | 195 → 200 |  |
| 202 | **34th floor slab** | 2026-05-23 → 2026-09-30 (+130d) | 2026-06-04 → 2026-10-13 (+131d) | 12.75d → 14.62d |  | constraint start no earlier than 2026-05-23 → start no earlier than 2026-09-30 |
| 203 | Reinforcement | 2026-05-23 → 2026-09-30 (+130d) | 2026-06-01 → 2026-10-10 (+131d) | 9.94d → 11.25d | 206 → 201 |  |
| 204 | Wall conduiting | 2026-05-24 → 2026-10-01 (+130d) | 2026-05-25 → 2026-10-03 (+131d) | 1.94d → 2.25d | 199, 203SS+1d → 199, 203SS+1.12d |  |
| 205 | Formwork | 2026-05-24 → 2026-10-02 (+131d) | 2026-06-03 → 2026-10-12 (+131d) | 9.94d → 11.25d | 203SS+1.88d → 203SS+2.25d |  |
| 206 | Concreting | 2026-05-22 → 2026-10-12 (+143d) | 2026-05-22 → 2026-10-13 (+144d) | 0.94d → 1.12d | 200 → 205 |  |
| 207 | **35th floor slab** | 2026-06-04 → 2026-10-13 (+131d) | 2026-06-16 → 2026-10-27 (+133d) | 11.75d → 15.75d |  | constraint start no earlier than 2026-06-04 → start no earlier than 2026-10-13 |
| 208 | Reinforcement | 2026-06-04 → 2026-10-13 (+131d) | 2026-06-13 → 2026-10-23 (+132d) | 8.94d → 11.25d | 211 → 206 |  |
| 209 | Wall conduiting | 2026-06-05 → 2026-10-14 (+131d) | 2026-06-07 → 2026-10-16 (+131d) | 1.94d → 2.25d | 204, 208SS+1d → 204, 208SS+1.12d |  |
| 210 | Formwork | 2026-06-07 → 2026-10-16 (+131d) | 2026-06-15 → 2026-10-26 (+133d) | 7.94d → 11.25d | 209SS+1.88d → 209SS+2.25d |  |

| ID | Task | Start | Finish | Duration | Predecessors | Other |
| --- | --- | --- | --- | --- | --- | --- |
| 211 | Concreting | 2026-06-03 → 2026-10-26 (+145d) | 2026-06-04 → 2026-10-27 (+145d) | 0.94d → 1.12d | 205 → 210 |  |
| 212 | **Terrace floor slab** | 2026-06-16 → 2026-10-27 (+133d) | 2026-07-01 → 2026-12-28 (+180d) | 14.75d → 19.12d |  | constraint start no earlier than 2026-06-16 → start no earlier than 2026-10-27 |
| 213 | Reinforcement | 2026-06-16 → 2026-10-27 (+133d) | 2026-06-27 → 2026-12-24 (+180d) | 10.94d → 14.62d | 216 → 211 |  |
| 214 | Wall conduiting | 2026-06-17 → 2026-10-28 (+133d) | 2026-06-19 → 2026-10-30 (+133d) | 1.94d → 2.25d | 209, 213SS+1d → 209, 213SS+1.12d |  |
| 215 | Formwork | 2026-06-18 → 2026-10-30 (+134d) | 2026-06-30 → 2026-12-27 (+180d) | 11.94d → 14.62d | 213SS+1.88d → 213SS+3.38d |  |
| 216 | Concreting | 2026-06-15 → 2026-12-27 (+195d) | 2026-06-16 → 2026-12-28 (+195d) | 0.94d → 1.12d | 210 → 215 |  |
| 217 | **OHT & Mumty** | 2026-07-01 → 2026-12-28 (+180d) | 2026-08-12 → 2027-02-08 (+180d) | 41.81d → 47.25d |  | constraint start no earlier than 2026-07-01 → start no earlier than 2026-12-28 |
| 218 | Reinforcement | 2026-07-01 → 2026-12-28 (+180d) | 2026-07-31 → 2027-01-27 (+180d) | 29.94d → 33.75d | 221 → 216 |  |
| 219 | Wall conduiting | 2026-07-02 → 2026-12-29 (+180d) | 2026-07-07 → 2027-01-03 (+180d) | 4.94d → 5.62d | 214, 218SS+1d → 214, 218SS+1.12d |  |
| 220 | Formwork | 2026-07-07 → 2027-01-03 (+180d) | 2026-08-09 → 2027-02-05 (+180d) | 32.94d → 37.12d | 218SS+3.62d, 219 → 218SS+4.5d, 219 |  |
| 221 | Concreting | 2026-06-30 → 2027-02-05 (+220d) | 2026-07-01 → 2027-02-08 (+222d) | 0.94d → 3.38d | 215 → 220 |  |
| 222 | **Post Pour Activities** | 2025-06-07 → 2025-10-20 (+135d) | 2026-09-23 → 2027-03-24 (+182d) | 427.31d → 484.88d |  | constraint start no earlier than 2025-06-07 → start no earlier than 2025-10-20 |
| 223 | 1st Floor | 2025-06-07 → 2025-10-20 (+135d) | 2025-06-14 → 2025-10-30 (+138d) | 7d → 12.38d |  |  |
| 224 | 2nd Floor | 2025-06-17 → 2025-10-31 (+136d) | 2025-06-24 → 2025-12-25 (+184d) | 7d → 12.38d | 223FS+0.25d, 61FS+0.25d → 223, 61 |  |
| 225 | 3rd Floor | 2025-06-27 → 2025-12-26 (+182d) | 2025-07-04 → 2026-01-05 (+185d) | 7d → 12.38d | 224FS+0.25d, 66FS+0.25d → 224, 66 |  |
| 226 | 4th Floor | 2025-07-07 → 2026-01-06 (+183d) | 2025-07-14 → 2026-01-16 (+186d) | 7d → 12.38d | 225FS+0.25d, 71FS+0.25d → 225, 71 |  |
| 227 | 5th Floor | 2025-07-17 → 2026-01-17 (+184d) | 2025-07-24 → 2026-01-27 (+187d) | 7d → 12.38d | 226FS+0.25d, 76FS+0.25d → 226, 76 |  |
| 228 | 6th Floor | 2025-07-30 → 2026-01-28 (+182d) | 2025-08-06 → 2026-02-07 (+185d) | 7d → 12.38d | 227FS+0.25d, 81FS+0.25d → 227, 81 |  |
| 229 | 7th Floor | 2025-08-09 → 2026-02-08 (+183d) | 2025-08-16 → 2026-02-18 (+186d) | 7d → 12.38d | 228FS+0.25d, 86FS+0.25d → 228, 86 |  |
| 230 | 8th Floor | 2025-08-19 → 2026-02-19 (+184d) | 2025-08-26 → 2026-03-01 (+187d) | 7d → 12.38d | 229FS+0.25d, 91FS+0.25d → 229, 91 |  |
| 231 | 9th Floor | 2025-08-29 → 2026-03-02 (+185d) | 2025-09-05 → 2026-03-12 (+188d) | 7d → 12.38d | 230FS+0.25d, 96FS+0.25d → 230, 96 |  |
| 232 | 10th Floor | 2025-09-08 → 2026-03-13 (+186d) | 2025-09-15 → 2026-03-23 (+189d) | 7d → 12.38d | 231FS+0.25d, 101FS+0.25d → 231, 101 |  |
| 233 | 11th Floor | 2025-09-18 → 2026-03-24 (+187d) | 2025-09-25 → 2026-04-03 (+190d) | 7d → 12.38d | 232FS+0.25d, 106FS+0.25d → 232, 106 |  |
| 234 | 12th Floor | 2025-09-28 → 2026-04-04 (+188d) | 2025-10-05 → 2026-04-14 (+191d) | 7d → 12.38d | 233FS+0.25d, 111FS+0.25d → 233, 111 |  |
| 235 | 13th Floor | 2025-10-08 → 2026-04-15 (+189d) | 2025-10-15 → 2026-04-25 (+192d) | 7d → 12.38d | 234FS+0.25d, 116FS+0.25d → 234, 116 |  |
| 236 | 14th Floor | 2026-01-03 → 2026-04-26 (+113d) | 2026-01-10 → 2026-05-07 (+117d) | 7d → 13.5d | 235, 136 → 235, 121 |  |
| 237 | 15th Floor | 2026-01-12 → 2026-05-08 (+116d) | 2026-01-19 → 2026-05-19 (+120d) | 7d → 13.5d | 236, 141 → 236, 126 |  |
| 238 | 16th Floor | 2026-01-21 → 2026-05-20 (+119d) | 2026-01-28 → 2026-05-31 (+123d) | 7d → 13.5d | 237, 146 → 237, 131 |  |
| 239 | 17th Floor | 2026-01-30 → 2026-06-01 (+122d) | 2026-02-06 → 2026-06-12 (+126d) | 7d → 13.5d | 238, 151 → 238, 136 |  |
| 240 | 18th Floor | 2026-02-08 → 2026-06-13 (+125d) | 2026-02-15 → 2026-06-24 (+129d) | 7d → 13.5d | 239, 156 → 239, 141 |  |
| 241 | 19th Floor | 2026-02-21 → 2026-06-25 (+124d) | 2026-02-28 → 2026-07-06 (+128d) | 7d → 13.5d | 240, 161 → 240, 146 |  |
| 242 | 20th Floor | 2026-03-06 → 2026-07-07 (+123d) | 2026-03-13 → 2026-07-18 (+127d) | 7d → 13.5d | 241, 166 → 241, 151 |  |
| 243 | 21st Floor | 2026-03-15 → 2026-07-19 (+126d) | 2026-03-22 → 2026-07-30 (+130d) | 7d → 13.5d | 242, 171 → 242, 156 |  |
| 244 | 22nd Floor | 2026-03-24 → 2026-07-31 (+129d) | 2026-03-31 → 2026-08-11 (+133d) | 7d → 13.5d | 243, 176 → 243, 161 |  |
| 245 | 23rd Floor | 2026-04-02 → 2026-08-12 (+132d) | 2026-04-09 → 2026-08-23 (+136d) | 7d → 13.5d | 244, 181 → 244, 166 |  |
| 246 | 24th Floor | 2026-04-10 → 2026-08-24 (+136d) | 2026-04-17 → 2026-09-04 (+140d) | 7d → 13.5d | 245, 186 → 245, 171 |  |
| 247 | 25th Floor | 2026-04-18 → 2026-09-05 (+140d) | 2026-04-25 → 2026-09-16 (+144d) | 7d → 13.5d | 246, 191 → 246, 176 |  |
| 248 | 26th Floor | 2026-04-28 → 2026-09-17 (+142d) | 2026-05-05 → 2026-09-28 (+146d) | 7d → 13.5d | 247, 196 → 247, 181 |  |
| 249 | 27th Floor | 2026-05-11 → 2026-09-29 (+141d) | 2026-05-18 → 2026-10-10 (+145d) | 7d → 13.5d | 248, 201 → 248, 186 |  |
| 250 | 28th Floor | 2026-05-23 → 2026-10-11 (+141d) | 2026-05-29 → 2026-10-22 (+146d) | 7d → 13.5d | 249, 206 → 249, 191 |  |
| 251 | 29th Floor | 2026-06-04 → 2026-10-23 (+141d) | 2026-06-11 → 2026-12-18 (+190d) | 7d → 13.5d | 250, 211 → 250, 201 |  |
| 252 | 30th Floor | 2026-06-16 → 2026-12-19 (+186d) | 2026-06-23 → 2026-12-30 (+190d) | 7d → 13.5d | 251, 216 → 251, 206 |  |
| 253 | 31st Floor | 2026-07-01 → 2026-12-31 (+183d) | 2026-07-08 → 2027-01-11 (+187d) | 7d → 13.5d | 252, 221 → 252, 211 |  |
| 254 | 32nd Flood | 2026-08-12 → 2027-01-12 (+153d) | 2026-08-19 → 2027-01-23 (+157d) | 7d → 13.5d | 253, 934 → 253, 216 |  |
| 255 | 33rd Floor | 2026-08-19 → 2027-01-24 (+158d) | 2026-08-26 → 2027-02-04 (+162d) | 7d → 13.5d |  |  |
| 256 | 34th Floor | 2026-08-26 → 2027-02-05 (+163d) | 2026-09-02 → 2027-02-16 (+167d) | 7d → 13.5d |  |  |
| 257 | 35th Floor | 2026-09-02 → 2027-02-17 (+168d) | 2026-09-09 → 2027-02-28 (+172d) | 7d → 13.5d |  |  |
| 258 | Terrace | 2026-09-09 → 2027-03-01 (+173d) | 2026-09-16 → 2027-03-12 (+177d) | 7d → 13.5d |  |  |
| 259 | Mumty & Machine Room | 2026-09-16 → 2027-03-13 (+178d) | 2026-09-23 → 2027-03-24 (+182d) | 7d → 13.5d |  |  |
| 260 | **Finishing work** | 2025-06-14 → 2025-10-31 (+139d) | 2027-07-14 → 2028-02-03 (+204d) | 669.88d → 777.12d |  | constraint start no earlier than 2025-06-14 → start no earlier than 2025-10-31 |
| 261 | **Flat finishing** | 2025-06-14 → 2025-10-31 (+139d) | 2027-02-10 → 2027-07-27 (+167d) | 515.31d → 613.12d |  | constraint start no earlier than 2025-06-14 → start no earlier than 2025-10-31 |
| 262 | **1st Floor** | 2025-06-14 → 2025-10-31 (+139d) | 2025-08-31 → 2026-03-18 (+199d) | 78.25d → 105.75d |  | constraint start no earlier than 2025-06-14 → start no earlier than 2025-10-31 |
| 263 | Block Work | 2025-06-14 → 2025-10-31 (+139d) | 2025-06-19 → 2025-12-23 (+187d) | 5d → 10.12d |  |  |
| 264 | Door Frame Fixing | 2025-06-19 → 2025-12-24 (+188d) | 2025-06-28 → 2025-12-29 (+184d) | 9d → 6.75d |  |  |
| 265 | Internal Plumbing Works | 2025-06-19 → 2025-12-24 (+188d) | 2025-06-27 → 2025-12-30 (+186d) | 8d → 7.88d |  |  |
| 266 | Waterproofing | 2025-06-27 → 2025-12-31 (+187d) | 2025-07-07 → 2026-01-08 (+185d) | 10d → 10.12d |  |  |
| 267 | Internal Plaster | 2025-06-15 → 2026-01-09 (+208d) | 2025-06-19 → 2026-01-13 (+208d) | 5d → 5.62d | 263SS+0.25d → 264, 265, 266 |  |
| 268 | IPS flooring work | 2025-07-07 → 2026-01-09 (+186d) | 2025-07-17 → 2026-01-15 (+182d) | 10d → 7.88d |  |  |
| 269 | Toilet dado work | 2025-07-07 → 2026-01-14 (+191d) | 2025-07-15 → 2026-01-20 (+189d) | 8d → 7.88d |  |  |
| 270 | Toilet flooring work | 2025-07-16 → 2026-01-21 (+189d) | 2025-07-23 → 2026-01-26 (+187d) | 8d → 6.75d | 269FS+0.25d → 269 |  |
| 271 | Living dinning flooring | 2025-07-24 → 2026-01-27 (+187d) | 2025-07-30 → 2026-02-04 (+189d) | 7d → 10.12d |  |  |
| 272 | Aluminium door-window fixing | 2025-07-31 → 2026-02-05 (+189d) | 2025-08-06 → 2026-02-17 (+195d) | 7d → 14.62d |  |  |
| 273 | Putty primer coat | 2025-07-31 → 2026-02-05 (+189d) | 2025-08-05 → 2026-02-10 (+189d) | 6d → 6.75d |  |  |
| 274 | Door shutter fixing | 2025-07-31 → 2026-02-05 (+189d) | 2025-08-07 → 2026-02-12 (+189d) | 8d → 9d |  |  |
| 275 | Electrical wiring work | 2025-08-08 → 2026-02-13 (+189d) | 2025-08-15 → 2026-02-24 (+193d) | 8d → 13.5d |  |  |
| 276 | Painting 1st coat | 2025-08-16 → 2026-02-25 (+193d) | 2025-08-23 → 2026-03-08 (+197d) | 8d → 13.5d |  |  |
| 277 | False Cieling panel fixing | 2025-08-24 → 2026-03-09 (+197d) | 2025-08-31 → 2026-03-18 (+199d) | 8d → 11.25d |  |  |
| 278 | **2nd Floor** | 2025-06-21 → 2025-12-24 (+186d) | 2025-09-10 → 2026-03-30 (+201d) | 81.75d → 108.88d |  | constraint start no earlier than 2025-06-21 → start no earlier than 2025-12-24 |
| 279 | Block Work | 2025-06-24 → 2025-12-24 (+183d) | 2025-06-29 → 2026-01-02 (+187d) | 5d → 10.12d | 224, 263 → 263FS+0.25d |  |
| 280 | Door Frame Fixing | 2025-06-29 → 2026-01-02 (+187d) | 2025-07-08 → 2026-01-08 (+184d) | 9d → 6.75d |  |  |

| ID | Task | Start | Finish | Duration | Predecessors | Other |
| --- | --- | --- | --- | --- | --- | --- |
| 281 | Internal Plumbing Works | 2025-06-29 → 2026-01-02 (+187d) | 2025-07-07 → 2026-01-09 (+186d) | 8d → 7.88d |  |  |
| 282 | Waterproofing | 2025-07-07 → 2026-01-09 (+186d) | 2025-07-17 → 2026-01-18 (+185d) | 10d → 10.12d |  |  |
| 283 | Internal Plaster | 2025-06-21 → 2026-01-14 (+207d) | 2025-06-25 → 2026-01-19 (+208d) | 5d → 5.62d | 267FS+1d → 267FS+0.25d, 280FS+0.25d |  |
| 284 | IPS flooring work | 2025-07-17 → 2026-01-18 (+185d) | 2025-07-27 → 2026-01-25 (+182d) | 10d → 7.88d |  |  |
| 285 | Toilet dado work | 2025-07-17 → 2026-01-21 (+188d) | 2025-07-25 → 2026-01-27 (+186d) | 8d → 7.88d |  |  |
| 286 | Toilet flooring work | 2025-07-25 → 2026-01-28 (+187d) | 2025-08-02 → 2026-02-02 (+184d) | 8d → 6.75d |  |  |
| 287 | Living dinning flooring | 2025-08-02 → 2026-02-05 (+187d) | 2025-08-09 → 2026-02-14 (+189d) | 7d → 10.12d | 271, 280, 286 → 271FS+0.25d, 280FS+0.25d |  |
| 288 | Aluminium door-window fixing | 2025-08-09 → 2026-02-18 (+193d) | 2025-08-16 → 2026-03-03 (+199d) | 7d → 14.62d | 272, 284, 287 → 272FS+0.25d, 287FS+0.25d |  |
| 289 | Putty primer coat | 2025-08-09 → 2026-02-14 (+189d) | 2025-08-15 → 2026-02-20 (+189d) | 6d → 6.75d |  |  |
| 290 | Door shutter fixing | 2025-08-09 → 2026-02-14 (+189d) | 2025-08-17 → 2026-02-22 (+189d) | 8d → 9d |  |  |
| 291 | Electrical wiring work | 2025-08-17 → 2026-02-25 (+192d) | 2025-08-25 → 2026-03-08 (+195d) | 8d → 13.5d |  |  |
| 292 | Painting 1st coat | 2025-08-25 → 2026-03-09 (+196d) | 2025-09-02 → 2026-03-20 (+199d) | 8d → 13.5d |  |  |
| 293 | False ceiling | 2025-09-02 → 2026-03-21 (+200d) | 2025-09-10 → 2026-03-30 (+201d) | 8d → 11.25d |  |  |
| 294 | **3rd Floor** | 2025-06-26 → 2026-01-02 (+190d) | 2025-09-18 → 2026-04-11 (+205d) | 84.75d → 112d |  | constraint start no earlier than 2025-06-26 → start no earlier than 2026-01-02 |
| 295 | Block Work | 2025-06-30 → 2026-01-02 (+186d) | 2025-07-04 → 2026-01-11 (+191d) | 5d → 10.12d |  |  |
| 296 | Door Frame Fixing | 2025-07-08 → 2026-01-11 (+187d) | 2025-07-17 → 2026-01-17 (+184d) | 9d → 6.75d |  |  |
| 297 | Internal Plumbing Works | 2025-07-07 → 2026-01-11 (+188d) | 2025-07-15 → 2026-01-18 (+187d) | 8d → 7.88d |  |  |
| 298 | Waterproofing | 2025-07-17 → 2026-01-18 (+185d) | 2025-07-27 → 2026-01-27 (+184d) | 10d → 10.12d |  |  |
| 299 | Internal Plaster | 2025-06-26 → 2026-01-19 (+207d) | 2025-07-01 → 2026-01-24 (+207d) | 5d → 5.62d | 283FS+0.25d → 283FS+0.25d, 296FS+0.25d |  |
| 300 | IPS flooring work | 2025-07-27 → 2026-01-27 (+184d) | 2025-08-06 → 2026-02-03 (+181d) | 10d → 7.88d |  |  |
| 301 | Toilet dado work | 2025-07-26 → 2026-01-28 (+186d) | 2025-08-02 → 2026-02-03 (+185d) | 8d → 7.88d | 285FS+0.25d → 285, 298, 299 |  |
| 302 | Toilet flooring work | 2025-08-03 → 2026-02-04 (+185d) | 2025-08-10 → 2026-02-09 (+183d) | 8d → 6.75d |  |  |
| 303 | Living dinning flooring | 2025-08-11 → 2026-02-14 (+187d) | 2025-08-17 → 2026-02-23 (+190d) | 7d → 10.12d | 287, 296, 302 → 287FS+0.25d, 296FS+0.25d |  |
| 304 | Aluminium door-window fixing | 2025-08-18 → 2026-03-03 (+197d) | 2025-08-24 → 2026-03-16 (+204d) | 7d → 14.62d | 288, 300, 303 → 288FS+0.25d, 303FS+0.25d |  |
| 305 | Putty primer coat | 2025-08-18 → 2026-02-23 (+189d) | 2025-08-23 → 2026-03-01 (+190d) | 6d → 6.75d |  |  |
| 306 | Door shutter fixing | 2025-08-18 → 2026-02-23 (+189d) | 2025-08-25 → 2026-03-03 (+190d) | 8d → 9d |  |  |
| 307 | Electrical wiring work | 2025-08-26 → 2026-03-09 (+195d) | 2025-09-02 → 2026-03-20 (+199d) | 8d → 13.5d |  |  |
| 308 | Painting 1st coat | 2025-09-03 → 2026-03-21 (+199d) | 2025-09-10 → 2026-04-01 (+203d) | 8d → 13.5d |  |  |
| 309 | False ceiling | 2025-09-11 → 2026-04-02 (+203d) | 2025-09-18 → 2026-04-11 (+205d) | 8d → 11.25d |  |  |
| 310 | **4th Floor** | 2025-07-14 → 2026-01-11 (+181d) | 2025-09-26 → 2026-04-23 (+209d) | 74.25d → 115.12d |  | constraint start no earlier than 2025-07-14 → start no earlier than 2026-01-11 |
| 311 | Block Work | 2025-07-14 → 2026-01-11 (+181d) | 2025-07-19 → 2026-01-20 (+185d) | 5d → 10.12d | 226, 295 → 295FS+0.25d |  |
| 312 | Door Frame Fixing | 2025-07-19 → 2026-01-20 (+185d) | 2025-07-28 → 2026-01-26 (+182d) | 9d → 6.75d |  |  |
| 313 | Internal Plumbing Works | 2025-07-19 → 2026-01-20 (+185d) | 2025-07-27 → 2026-01-27 (+184d) | 8d → 7.88d |  |  |
| 314 | Waterproofing | 2025-07-27 → 2026-01-27 (+184d) | 2025-08-06 → 2026-02-05 (+183d) | 10d → 10.12d |  |  |
| 315 | Internal Plaster | 2025-08-06 → 2026-01-26 (+173d) | 2025-08-11 → 2026-01-31 (+173d) | 5d → 5.62d | 299, 312, 313, 314 → 299FS+0.25d, 312FS+0.25d |  |
| 316 | IPS flooring work | 2025-08-11 → 2026-02-05 (+178d) | 2025-08-21 → 2026-02-12 (+175d) | 10d → 7.88d |  |  |
| 317 | Toilet dado work | 2025-08-11 → 2026-02-05 (+178d) | 2025-08-19 → 2026-02-12 (+177d) | 8d → 7.88d |  |  |
| 318 | Toilet flooring work | 2025-08-19 → 2026-02-12 (+177d) | 2025-08-27 → 2026-02-18 (+175d) | 8d → 6.75d |  |  |
| 319 | Living dinning flooring | 2025-08-18 → 2026-02-23 (+189d) | 2025-08-25 → 2026-03-01 (+188d) | 7d → 6.75d | 303FS+0.25d → 303FS+0.25d, 312FS+0.25d |  |
| 320 | Aluminium door-window fixing | 2025-08-25 → 2026-03-16 (+203d) | 2025-09-01 → 2026-03-29 (+209d) | 7d → 14.62d | 304, 316, 319 → 304FS+0.25d, 319FS+0.25d |  |
| 321 | Putty primer coat | 2025-08-25 → 2026-03-01 (+188d) | 2025-08-31 → 2026-03-07 (+188d) | 6d → 6.75d |  |  |
| 322 | Door shutter fixing | 2025-08-26 → 2026-03-03 (+189d) | 2025-09-02 → 2026-03-11 (+190d) | 8d → 9d |  |  |
| 323 | Electrical wiring work | 2025-09-03 → 2026-03-21 (+199d) | 2025-09-10 → 2026-04-01 (+203d) | 8d → 13.5d |  |  |
| 324 | Painting 1st coat | 2025-09-11 → 2026-04-02 (+203d) | 2025-09-18 → 2026-04-13 (+207d) | 8d → 13.5d |  |  |
| 325 | False ceiling | 2025-09-19 → 2026-04-14 (+207d) | 2025-09-26 → 2026-04-23 (+209d) | 8d → 11.25d |  |  |
| 326 | **5th Floor** | 2025-07-24 → 2026-01-20 (+180d) | 2025-10-15 → 2026-05-05 (+202d) | 83d → 118.25d |  | constraint start no earlier than 2025-07-24 → start no earlier than 2026-01-20 |
| 327 | Block Work | 2025-07-24 → 2026-01-20 (+180d) | 2025-07-29 → 2026-01-29 (+184d) | 5d → 10.12d | 227, 311 → 311FS+0.25d |  |
| 328 | Door Frame Fixing | 2025-07-29 → 2026-01-29 (+184d) | 2025-08-07 → 2026-02-04 (+181d) | 9d → 6.75d |  |  |
| 329 | Internal Plumbing Works | 2025-07-29 → 2026-01-29 (+184d) | 2025-08-06 → 2026-02-05 (+183d) | 8d → 7.88d |  |  |
| 330 | Waterproofing | 2025-08-06 → 2026-02-05 (+183d) | 2025-08-16 → 2026-02-14 (+182d) | 10d → 10.12d |  |  |
| 331 | Internal Plaster | 2025-08-16 → 2026-02-05 (+173d) | 2025-08-21 → 2026-02-10 (+173d) | 5d → 5.62d | 315, 328, 329, 330 → 315FS+0.25d, 328FS+0.25d |  |
| 332 | IPS flooring work | 2025-08-21 → 2026-02-14 (+177d) | 2025-08-31 → 2026-02-21 (+174d) | 10d → 7.88d |  |  |
| 333 | Toilet dado work | 2025-08-21 → 2026-02-14 (+177d) | 2025-08-29 → 2026-02-21 (+176d) | 8d → 7.88d |  |  |
| 334 | Toilet flooring work | 2025-08-29 → 2026-02-21 (+176d) | 2025-09-06 → 2026-02-27 (+174d) | 8d → 6.75d |  |  |
| 335 | Living dinning flooring | 2025-09-06 → 2026-03-01 (+176d) | 2025-09-13 → 2026-03-07 (+175d) | 7d → 6.75d | 319, 328, 334 → 319FS+0.25d, 328FS+0.25d |  |
| 336 | Aluminium door-window fixing | 2025-09-13 → 2026-03-29 (+197d) | 2025-09-20 → 2026-04-11 (+203d) | 7d → 14.62d | 320, 332, 335 → 320FS+0.25d, 335FS+0.25d |  |
| 337 | Putty primer coat | 2025-09-13 → 2026-03-07 (+175d) | 2025-09-19 → 2026-03-13 (+175d) | 6d → 6.75d |  |  |
| 338 | Door shutter fixing | 2025-09-13 → 2026-03-11 (+179d) | 2025-09-21 → 2026-03-19 (+179d) | 8d → 9d |  |  |
| 339 | Electrical wiring work | 2025-09-21 → 2026-04-02 (+193d) | 2025-09-29 → 2026-04-13 (+196d) | 8d → 13.5d |  |  |
| 340 | Painting 1st coat | 2025-09-29 → 2026-04-14 (+197d) | 2025-10-07 → 2026-04-25 (+200d) | 8d → 13.5d |  |  |
| 341 | False ceiling | 2025-10-07 → 2026-04-26 (+201d) | 2025-10-15 → 2026-05-05 (+202d) | 8d → 11.25d |  |  |
| 342 | **6th Floor** | 2025-08-06 → 2026-01-30 (+177d) | 2025-10-28 → 2026-05-17 (+201d) | 83d → 121.38d |  | constraint start no earlier than 2025-08-06 → start no earlier than 2026-01-30 |
| 343 | Block Work | 2025-08-06 → 2026-01-30 (+177d) | 2025-08-11 → 2026-02-08 (+181d) | 5d → 10.12d | 228, 327 → 327FS+0.25d |  |
| 344 | Door Frame Fixing | 2025-08-07 → 2026-02-04 (+181d) | 2025-08-16 → 2026-02-10 (+178d) | 9d → 6.75d | 81, 328 → 76, 328 |  |
| 345 | Internal Plumbing Works | 2025-08-11 → 2026-02-08 (+181d) | 2025-08-19 → 2026-02-15 (+180d) | 8d → 7.88d |  |  |
| 346 | Waterproofing | 2025-08-19 → 2026-02-15 (+180d) | 2025-08-29 → 2026-02-24 (+179d) | 10d → 10.12d |  |  |
| 347 | Internal Plaster | 2025-08-29 → 2026-02-11 (+166d) | 2025-09-03 → 2026-02-16 (+166d) | 5d → 5.62d | 331, 344, 345, 346 → 331FS+0.25d, 344FS+0.25d |  |
| 348 | IPS flooring work | 2025-09-03 → 2026-02-24 (+174d) | 2025-09-13 → 2026-03-03 (+171d) | 10d → 7.88d |  |  |
| 349 | Toilet dado work | 2025-09-03 → 2026-02-24 (+174d) | 2025-09-11 → 2026-03-03 (+173d) | 8d → 7.88d |  |  |
| 350 | Toilet flooring work | 2025-09-11 → 2026-03-03 (+173d) | 2025-09-19 → 2026-03-09 (+171d) | 8d → 6.75d |  |  |

| ID | Task | Start | Finish | Duration | Predecessors | Other |
| --- | --- | --- | --- | --- | --- | --- |
| 351 | Living dinning flooring | 2025-09-19 → 2026-03-08 (+170d) | 2025-09-26 → 2026-03-14 (+169d) | 7d → 6.75d | 335, 344, 350 → 335FS+0.25d, 344FS+0.25d |  |
| 352 | Aluminium door-window fixing | 2025-09-26 → 2026-04-12 (+198d) | 2025-10-03 → 2026-04-27 (+206d) | 7d → 16.88d | 336, 348, 351 → 336FS+0.25d, 351FS+0.25d |  |
| 353 | Putty primer coat | 2025-09-26 → 2026-03-14 (+169d) | 2025-10-02 → 2026-03-20 (+169d) | 6d → 6.75d |  |  |
| 354 | Door shutter fixing | 2025-09-26 → 2026-03-19 (+174d) | 2025-10-04 → 2026-03-27 (+174d) | 8d → 9d |  |  |
| 355 | Electrical wiring work | 2025-10-04 → 2026-04-14 (+192d) | 2025-10-12 → 2026-04-25 (+195d) | 8d → 13.5d |  |  |
| 356 | Painting 1st coat | 2025-10-12 → 2026-04-26 (+196d) | 2025-10-20 → 2026-05-07 (+199d) | 8d → 13.5d |  |  |
| 357 | False ceiling | 2025-10-20 → 2026-05-08 (+200d) | 2025-10-28 → 2026-05-17 (+201d) | 8d → 11.25d |  |  |
| 358 | **7th Floor** | 2025-08-16 → 2026-02-08 (+176d) | 2025-12-22 → 2026-05-29 (+158d) | 83d → 124.5d |  | constraint start no earlier than 2025-08-16 → start no earlier than 2026-02-08 |
| 359 | Block Work | 2025-08-16 → 2026-02-08 (+176d) | 2025-08-21 → 2026-02-17 (+180d) | 5d → 10.12d | 229, 343 → 343FS+0.25d |  |
| 360 | Door Frame Fixing | 2025-08-21 → 2026-02-17 (+180d) | 2025-08-30 → 2026-02-23 (+177d) | 9d → 6.75d |  |  |
| 361 | Internal Plumbing Works | 2025-08-21 → 2026-02-17 (+180d) | 2025-08-29 → 2026-02-24 (+179d) | 8d → 7.88d |  |  |
| 362 | Waterproofing | 2025-08-29 → 2026-02-24 (+179d) | 2025-09-08 → 2026-03-05 (+178d) | 10d → 10.12d |  |  |
| 363 | Internal Plaster | 2025-09-08 → 2026-02-23 (+168d) | 2025-09-13 → 2026-02-28 (+168d) | 5d → 5.62d | 347, 360, 361, 362 → 347FS+0.25d, 360FS+0.25d |  |
| 364 | IPS flooring work | 2025-09-13 → 2026-03-05 (+173d) | 2025-09-23 → 2026-03-12 (+170d) | 10d → 7.88d |  |  |
| 365 | Toilet dado work | 2025-09-13 → 2026-03-05 (+173d) | 2025-09-21 → 2026-03-12 (+172d) | 8d → 7.88d |  |  |
| 366 | Toilet flooring work | 2025-09-21 → 2026-03-12 (+172d) | 2025-09-29 → 2026-03-18 (+170d) | 8d → 6.75d |  |  |
| 367 | Living dinning flooring | 2025-09-29 → 2026-03-14 (+166d) | 2025-10-06 → 2026-03-20 (+165d) | 7d → 6.75d | 351, 360, 366 → 351FS+0.25d, 360FS+0.25d |  |
| 368 | Aluminium door-window fixing | 2025-10-06 → 2026-04-27 (+203d) | 2025-10-13 → 2026-05-12 (+211d) | 7d → 16.88d | 352, 364, 367 → 352FS+0.25d, 367FS+0.25d |  |
| 369 | Putty primer coat | 2025-10-06 → 2026-03-20 (+165d) | 2025-10-12 → 2026-03-26 (+165d) | 6d → 6.75d |  |  |
| 370 | Door shutter fixing | 2025-10-06 → 2026-03-27 (+172d) | 2025-10-14 → 2026-04-04 (+172d) | 8d → 9d |  |  |
| 371 | Electrical wiring work | 2025-10-14 → 2026-04-26 (+194d) | 2025-10-22 → 2026-05-07 (+197d) | 8d → 13.5d |  |  |
| 372 | Painting 1st coat | 2025-10-22 → 2026-05-08 (+198d) | 2025-10-30 → 2026-05-19 (+201d) | 8d → 13.5d |  |  |
| 373 | False ceiling | 2025-10-30 → 2026-05-20 (+202d) | 2025-12-22 → 2026-05-29 (+158d) | 8d → 11.25d |  |  |
| 374 | **8th Floor** | 2025-08-26 → 2026-02-17 (+175d) | 2026-01-04 → 2026-06-10 (+157d) | 86d → 127.62d |  | constraint start no earlier than 2025-08-26 → start no earlier than 2026-02-17 |
| 375 | Block Work | 2025-08-26 → 2026-02-17 (+175d) | 2025-09-03 → 2026-02-26 (+176d) | 8d → 10.12d | 230, 359 → 359FS+0.25d |  |
| 376 | Door Frame Fixing | 2025-09-03 → 2026-02-26 (+176d) | 2025-09-12 → 2026-03-04 (+173d) | 9d → 6.75d |  |  |
| 377 | Internal Plumbing Works | 2025-09-03 → 2026-02-26 (+176d) | 2025-09-11 → 2026-03-05 (+175d) | 8d → 7.88d |  |  |
| 378 | Waterproofing | 2025-09-11 → 2026-03-05 (+175d) | 2025-09-21 → 2026-03-14 (+174d) | 10d → 10.12d |  |  |
| 379 | Internal Plaster | 2025-09-21 → 2026-03-04 (+164d) | 2025-09-26 → 2026-03-09 (+164d) | 5d → 5.62d | 363, 376, 377, 378 → 363FS+0.25d, 376FS+0.25d |  |
| 380 | IPS flooring work | 2025-09-26 → 2026-03-14 (+169d) | 2025-10-06 → 2026-03-21 (+166d) | 10d → 7.88d |  |  |
| 381 | Toilet dado work | 2025-09-26 → 2026-03-14 (+169d) | 2025-10-04 → 2026-03-21 (+168d) | 8d → 7.88d |  |  |
| 382 | Toilet flooring work | 2025-10-04 → 2026-03-21 (+168d) | 2025-10-12 → 2026-03-27 (+166d) | 8d → 6.75d |  |  |
| 383 | Living dinning flooring | 2025-10-12 → 2026-03-20 (+159d) | 2025-10-19 → 2026-03-26 (+158d) | 7d → 6.75d | 367, 376, 382 → 367FS+0.25d, 376FS+0.25d |  |
| 384 | Aluminium door-window fixing | 2025-10-19 → 2026-05-12 (+205d) | 2025-10-29 → 2026-05-27 (+210d) | 10d → 16.88d | 368, 380, 383 → 368FS+0.25d, 383FS+0.25d |  |
| 385 | Putty primer coat | 2025-10-19 → 2026-03-26 (+158d) | 2025-10-25 → 2026-04-01 (+158d) | 6d → 6.75d |  |  |
| 386 | Door shutter fixing | 2025-10-19 → 2026-04-04 (+167d) | 2025-10-27 → 2026-04-12 (+167d) | 8d → 9d |  |  |
| 387 | Electrical wiring work | 2025-10-27 → 2026-05-08 (+193d) | 2025-12-19 → 2026-05-19 (+151d) | 8d → 13.5d |  |  |
| 388 | Painting 1st coat | 2025-12-19 → 2026-05-20 (+152d) | 2025-12-27 → 2026-05-31 (+155d) | 8d → 13.5d |  |  |
| 389 | False ceiling | 2025-12-27 → 2026-06-01 (+156d) | 2026-01-04 → 2026-06-10 (+157d) | 8d → 11.25d |  |  |
| 390 | **9th Floor** | 2025-09-05 → 2026-02-26 (+174d) | 2026-01-14 → 2026-06-22 (+159d) | 86d → 130.75d |  | constraint start no earlier than 2025-09-05 → start no earlier than 2026-02-26 |
| 391 | Block Work | 2025-09-05 → 2026-02-26 (+174d) | 2025-09-13 → 2026-03-07 (+175d) | 8d → 10.12d | 231, 375 → 375FS+0.25d |  |
| 392 | Door Frame Fixing | 2025-09-13 → 2026-03-07 (+175d) | 2025-09-22 → 2026-03-13 (+172d) | 9d → 6.75d |  |  |
| 393 | Internal Plumbing Works | 2025-09-13 → 2026-03-07 (+175d) | 2025-09-21 → 2026-03-14 (+174d) | 8d → 7.88d |  |  |
| 394 | Waterproofing | 2025-09-21 → 2026-03-14 (+174d) | 2025-10-01 → 2026-03-23 (+173d) | 10d → 10.12d |  |  |
| 395 | Internal Plaster | 2025-10-01 → 2026-03-14 (+164d) | 2025-10-06 → 2026-03-18 (+163d) | 5d → 5.62d | 379, 392, 393, 394 → 379FS+0.25d, 392FS+0.25d |  |
| 396 | IPS flooring work | 2025-10-06 → 2026-03-23 (+168d) | 2025-10-16 → 2026-03-30 (+165d) | 10d → 7.88d |  |  |
| 397 | Toilet dado work | 2025-10-06 → 2026-03-23 (+168d) | 2025-10-14 → 2026-03-30 (+167d) | 8d → 7.88d |  |  |
| 398 | Toilet flooring work | 2025-10-14 → 2026-03-30 (+167d) | 2025-10-22 → 2026-04-05 (+165d) | 8d → 6.75d |  |  |
| 399 | Living dinning flooring | 2025-10-22 → 2026-03-26 (+155d) | 2025-10-29 → 2026-04-04 (+157d) | 7d → 10.12d | 383, 392, 398 → 383FS+0.25d, 392FS+0.25d |  |
| 400 | Aluminium door-window fixing | 2025-10-29 → 2026-05-27 (+210d) | 2025-12-23 → 2026-06-11 (+170d) | 10d → 16.88d | 384, 396, 399 → 384FS+0.25d, 399FS+0.25d |  |
| 401 | Putty primer coat | 2025-10-29 → 2026-04-04 (+157d) | 2025-12-19 → 2026-04-10 (+112d) | 6d → 6.75d |  |  |
| 402 | Door shutter fixing | 2025-10-29 → 2026-04-12 (+165d) | 2025-12-21 → 2026-04-20 (+120d) | 8d → 9d |  |  |
| 403 | Electrical wiring work | 2025-12-21 → 2026-05-20 (+150d) | 2025-12-29 → 2026-05-31 (+153d) | 8d → 13.5d |  |  |
| 404 | Painting 1st coat | 2025-12-29 → 2026-06-01 (+154d) | 2026-01-06 → 2026-06-12 (+157d) | 8d → 13.5d |  |  |
| 405 | False ceiling | 2026-01-06 → 2026-06-13 (+158d) | 2026-01-14 → 2026-06-22 (+159d) | 8d → 11.25d |  |  |
| 406 | **10th Floor** | 2025-09-15 → 2026-03-08 (+174d) | 2026-01-24 → 2026-07-04 (+161d) | 86d → 133.88d |  | constraint start no earlier than 2025-09-15 → start no earlier than 2026-03-08 |
| 407 | Block Work | 2025-09-15 → 2026-03-08 (+174d) | 2025-09-23 → 2026-03-16 (+174d) | 8d → 10.12d | 232, 391 → 391FS+0.25d |  |
| 408 | Door Frame Fixing | 2025-09-23 → 2026-03-17 (+175d) | 2025-10-02 → 2026-03-22 (+171d) | 9d → 6.75d |  |  |
| 409 | Internal Plumbing Works | 2025-09-23 → 2026-03-17 (+175d) | 2025-10-01 → 2026-03-23 (+173d) | 8d → 7.88d |  |  |
| 410 | Waterproofing | 2025-10-01 → 2026-03-24 (+174d) | 2025-10-11 → 2026-04-01 (+172d) | 10d → 10.12d |  |  |
| 411 | Internal Plaster | 2025-10-11 → 2026-03-23 (+163d) | 2025-10-16 → 2026-03-28 (+163d) | 5d → 5.62d | 395, 408, 409, 410 → 395FS+0.25d, 408FS+0.25d |  |
| 412 | IPS flooring work | 2025-10-16 → 2026-04-02 (+168d) | 2025-10-26 → 2026-04-08 (+164d) | 10d → 7.88d |  |  |
| 413 | Toilet dado work | 2025-10-16 → 2026-04-02 (+168d) | 2025-10-24 → 2026-04-08 (+166d) | 8d → 7.88d |  |  |
| 414 | Toilet flooring work | 2025-10-24 → 2026-04-09 (+167d) | 2025-12-16 → 2026-04-14 (+119d) | 8d → 6.75d |  |  |
| 415 | Living dinning flooring | 2025-12-16 → 2026-04-05 (+110d) | 2025-12-23 → 2026-04-13 (+111d) | 7d → 10.12d | 399, 408, 414 → 399FS+0.25d, 408FS+0.25d |  |
| 416 | Aluminium door-window fixing | 2025-12-23 → 2026-06-12 (+171d) | 2026-01-02 → 2026-06-26 (+175d) | 10d → 16.88d | 400, 412, 415 → 400FS+0.25d, 415FS+0.25d |  |
| 417 | Putty primer coat | 2025-12-23 → 2026-04-14 (+112d) | 2025-12-29 → 2026-04-19 (+111d) | 6d → 6.75d |  |  |
| 418 | Door shutter fixing | 2025-12-23 → 2026-04-20 (+118d) | 2025-12-31 → 2026-04-28 (+118d) | 8d → 9d |  |  |
| 419 | Electrical wiring work | 2025-12-31 → 2026-06-01 (+152d) | 2026-01-08 → 2026-06-12 (+155d) | 8d → 13.5d |  |  |
| 420 | Painting 1st coat | 2026-01-08 → 2026-06-13 (+156d) | 2026-01-16 → 2026-06-24 (+159d) | 8d → 13.5d |  |  |

| ID | Task | Start | Finish | Duration | Predecessors | Other |
| --- | --- | --- | --- | --- | --- | --- |
| 421 | False ceiling | 2026-01-16 → 2026-06-25 (+160d) | 2026-01-24 → 2026-07-04 (+161d) | 8d → 11.25d |  |  |
| 422 | **11th Floor** | 2025-09-25 → 2026-03-17 (+173d) | 2026-02-03 → 2026-07-16 (+163d) | 86d → 137d |  | constraint start no earlier than 2025-09-25 → start no earlier than 2026-03-17 |
| 423 | Block Work | 2025-09-25 → 2026-03-17 (+173d) | 2025-10-03 → 2026-03-26 (+174d) | 8d → 10.12d | 233, 407 → 407FS+0.25d |  |
| 424 | Door Frame Fixing | 2025-10-03 → 2026-03-26 (+174d) | 2025-10-12 → 2026-03-30 (+169d) | 9d → 4.5d |  |  |
| 425 | Internal Plumbing Works | 2025-10-03 → 2026-03-26 (+174d) | 2025-10-11 → 2026-04-02 (+173d) | 8d → 7.88d |  |  |
| 426 | Waterproofing | 2025-10-11 → 2026-04-02 (+173d) | 2025-10-21 → 2026-04-11 (+172d) | 10d → 10.12d |  |  |
| 427 | Internal Plaster | 2025-10-21 → 2026-03-30 (+160d) | 2025-10-26 → 2026-04-04 (+160d) | 5d → 5.62d | 411, 424, 425, 426 → 411FS+0.25d, 424FS+0.25d |  |
| 428 | IPS flooring work | 2025-10-26 → 2026-04-11 (+167d) | 2025-12-20 → 2026-04-18 (+119d) | 10d → 7.88d |  |  |
| 429 | Toilet dado work | 2025-10-26 → 2026-04-11 (+167d) | 2025-12-18 → 2026-04-18 (+121d) | 8d → 7.88d |  |  |
| 430 | Toilet flooring work | 2025-12-18 → 2026-04-18 (+121d) | 2025-12-26 → 2026-04-24 (+119d) | 8d → 6.75d |  |  |
| 431 | Living dinning flooring | 2025-12-26 → 2026-04-24 (+119d) | 2026-01-02 → 2026-05-03 (+121d) | 7d → 10.12d |  |  |
| 432 | Aluminium door-window fixing | 2026-01-02 → 2026-06-27 (+176d) | 2026-01-12 → 2026-07-11 (+180d) | 10d → 16.88d |  |  |
| 433 | Putty primer coat | 2026-01-02 → 2026-05-03 (+121d) | 2026-01-08 → 2026-05-09 (+121d) | 6d → 6.75d |  |  |
| 434 | Door shutter fixing | 2026-01-02 → 2026-05-03 (+121d) | 2026-01-10 → 2026-05-11 (+121d) | 8d → 9d |  |  |
| 435 | Electrical wiring work | 2026-01-10 → 2026-06-13 (+154d) | 2026-01-18 → 2026-06-24 (+157d) | 8d → 13.5d |  |  |
| 436 | Painting 1st coat | 2026-01-18 → 2026-06-25 (+158d) | 2026-01-26 → 2026-07-06 (+161d) | 8d → 13.5d |  |  |
| 437 | False ceiling | 2026-01-26 → 2026-07-07 (+162d) | 2026-02-03 → 2026-07-16 (+163d) | 8d → 11.25d |  |  |
| 438 | **12th Floor** | 2025-10-05 → 2026-03-26 (+172d) | 2026-02-13 → 2026-07-28 (+165d) | 86d → 140.12d |  | constraint start no earlier than 2025-10-05 → start no earlier than 2026-03-26 |
| 439 | Block Work | 2025-10-05 → 2026-03-26 (+172d) | 2025-10-13 → 2026-04-04 (+173d) | 8d → 10.12d | 234, 423 → 423FS+0.25d |  |
| 440 | Door Frame Fixing | 2025-10-13 → 2026-04-04 (+173d) | 2025-10-22 → 2026-04-10 (+170d) | 9d → 6.75d |  |  |
| 441 | Internal Plumbing Works | 2025-10-13 → 2026-04-04 (+173d) | 2025-10-21 → 2026-04-12 (+173d) | 8d → 9d |  |  |
| 442 | Waterproofing | 2025-10-21 → 2026-04-12 (+173d) | 2025-10-31 → 2026-04-22 (+173d) | 10d → 11.25d |  |  |
| 443 | Internal Plaster | 2025-10-31 → 2026-04-22 (+173d) | 2025-12-20 → 2026-04-30 (+131d) | 5d → 9d |  |  |
| 444 | IPS flooring work | 2025-12-20 → 2026-04-22 (+123d) | 2025-12-30 → 2026-04-30 (+121d) | 10d → 9d |  |  |
| 445 | Toilet dado work | 2025-12-20 → 2026-04-30 (+131d) | 2025-12-28 → 2026-05-08 (+131d) | 8d → 9d |  |  |
| 446 | Toilet flooring work | 2025-12-28 → 2026-05-08 (+131d) | 2026-01-05 → 2026-05-15 (+130d) | 8d → 7.88d |  |  |
| 447 | Living dinning flooring | 2026-01-05 → 2026-05-15 (+130d) | 2026-01-12 → 2026-05-25 (+133d) | 7d → 11.25d |  |  |
| 448 | Aluminium door-window fixing | 2026-01-12 → 2026-07-12 (+181d) | 2026-01-22 → 2026-07-23 (+182d) | 10d → 13.5d |  |  |
| 449 | Putty primer coat | 2026-01-12 → 2026-05-25 (+133d) | 2026-01-18 → 2026-05-31 (+133d) | 6d → 6.75d |  |  |
| 450 | Door shutter fixing | 2026-01-12 → 2026-05-25 (+133d) | 2026-01-20 → 2026-06-02 (+133d) | 8d → 9d |  |  |
| 451 | Electrical wiring work | 2026-01-20 → 2026-06-25 (+156d) | 2026-01-28 → 2026-07-06 (+159d) | 8d → 13.5d |  |  |
| 452 | Painting 1st coat | 2026-01-28 → 2026-07-07 (+160d) | 2026-02-05 → 2026-07-18 (+163d) | 8d → 13.5d |  |  |
| 453 | False ceiling | 2026-02-05 → 2026-07-19 (+164d) | 2026-02-13 → 2026-07-28 (+165d) | 8d → 11.25d |  |  |
| 454 | **13th Floor** | 2025-10-15 → 2026-04-26 (+193d) | 2026-02-23 → 2026-08-10 (+168d) | 86d → 120.38d |  | constraint start no earlier than 2025-10-15 → start no earlier than 2026-04-26 |
| 455 | Block Work | 2025-10-15 → 2026-04-26 (+193d) | 2025-10-23 → 2026-04-29 (+188d) | 8d → 4.5d |  |  |
| 456 | Door Frame Fixing | 2025-10-23 → 2026-04-30 (+189d) | 2025-12-16 → 2026-05-08 (+143d) | 9d → 10.12d |  |  |
| 457 | Internal Plumbing Works | 2025-10-23 → 2026-04-30 (+189d) | 2025-10-31 → 2026-05-09 (+190d) | 8d → 11.25d |  |  |
| 458 | Waterproofing | 2025-10-31 → 2026-05-10 (+191d) | 2025-12-25 → 2026-05-21 (+147d) | 10d → 13.5d |  |  |
| 459 | Internal Plaster | 2025-12-25 → 2026-05-22 (+148d) | 2025-12-30 → 2026-05-30 (+151d) | 5d → 10.12d |  |  |
| 460 | IPS flooring work | 2025-12-30 → 2026-05-31 (+152d) | 2026-01-09 → 2026-06-08 (+150d) | 10d → 10.12d |  |  |
| 461 | Toilet dado work | 2025-12-30 → 2026-05-31 (+152d) | 2026-01-07 → 2026-06-07 (+151d) | 8d → 9d |  |  |
| 462 | Toilet flooring work | 2026-01-07 → 2026-06-08 (+152d) | 2026-01-15 → 2026-06-14 (+150d) | 8d → 7.88d |  |  |
| 463 | Living dinning flooring | 2026-01-15 → 2026-06-15 (+151d) | 2026-01-22 → 2026-06-29 (+158d) | 7d → 16.88d |  |  |
| 464 | Aluminium door-window fixing | 2026-01-22 → 2026-07-24 (+183d) | 2026-02-03 → 2026-08-07 (+185d) | 12d → 16.88d |  |  |
| 465 | Putty primer coat | 2026-01-22 → 2026-06-30 (+159d) | 2026-01-28 → 2026-07-05 (+158d) | 6d → 6.75d |  |  |
| 466 | Door shutter fixing | 2026-01-22 → 2026-06-30 (+159d) | 2026-01-30 → 2026-07-07 (+158d) | 8d → 9d |  |  |
| 467 | Electrical wiring work | 2026-01-30 → 2026-07-08 (+159d) | 2026-02-07 → 2026-07-19 (+162d) | 8d → 13.5d |  |  |
| 468 | Painting 1st coat | 2026-02-07 → 2026-07-20 (+163d) | 2026-02-15 → 2026-07-31 (+166d) | 8d → 13.5d |  |  |
| 469 | False ceiling | 2026-02-15 → 2026-08-01 (+167d) | 2026-02-23 → 2026-08-10 (+168d) | 8d → 11.25d |  |  |
| 470 | **14th Floor** | 2025-10-24 → 2026-05-08 (+196d) | 2026-03-03 → 2026-08-25 (+175d) | 85.75d → 123.75d |  | constraint start no earlier than 2025-10-24 → start no earlier than 2026-05-08 |
| 471 | Block Work | 2025-10-24 → 2026-05-08 (+196d) | 2025-10-28 → 2026-05-11 (+195d) | 5d → 4.5d | 455FS+0.25d → 236, 455 |  |
| 472 | Door Frame Fixing | 2025-12-16 → 2026-05-12 (+147d) | 2025-12-25 → 2026-05-20 (+146d) | 9d → 10.12d |  |  |
| 473 | Internal Plumbing Works | 2025-10-31 → 2026-05-12 (+193d) | 2025-12-23 → 2026-05-21 (+149d) | 8d → 11.25d |  |  |
| 474 | Waterproofing | 2025-12-25 → 2026-05-22 (+148d) | 2026-01-04 → 2026-06-02 (+149d) | 10d → 13.5d |  |  |
| 475 | Internal Plaster | 2025-12-31 → 2026-06-03 (+154d) | 2026-01-04 → 2026-06-11 (+158d) | 5d → 10.12d | 459FS+0.25d → 459, 472, 473, 474 |  |
| 476 | IPS flooring work | 2026-01-10 → 2026-06-09 (+150d) | 2026-01-19 → 2026-06-17 (+149d) | 10d → 10.12d | 460FS+0.25d → 460, 472, 473, 474 |  |
| 477 | Toilet dado work | 2026-01-07 → 2026-06-12 (+156d) | 2026-01-15 → 2026-06-19 (+155d) | 8d → 9d |  |  |
| 478 | Toilet flooring work | 2026-01-15 → 2026-06-20 (+156d) | 2026-01-23 → 2026-06-26 (+154d) | 8d → 7.88d |  |  |
| 479 | Living dinning flooring | 2026-01-23 → 2026-06-30 (+158d) | 2026-01-29 → 2026-07-14 (+166d) | 7d → 16.88d | 463FS+0.25d → 463, 472, 478 |  |
| 480 | Aluminium door-window fixing | 2026-02-04 → 2026-08-08 (+185d) | 2026-02-13 → 2026-08-22 (+190d) | 10d → 16.88d | 464FS+0.25d → 464, 476, 479 |  |
| 481 | Putty primer coat | 2026-01-30 → 2026-07-15 (+166d) | 2026-02-04 → 2026-07-20 (+166d) | 6d → 6.75d |  |  |
| 482 | Door shutter fixing | 2026-01-30 → 2026-07-15 (+166d) | 2026-02-07 → 2026-07-22 (+165d) | 8d → 9d |  |  |
| 483 | Electrical wiring work | 2026-02-07 → 2026-07-23 (+166d) | 2026-02-15 → 2026-08-03 (+169d) | 8d → 13.5d |  |  |
| 484 | Painting 1st coat | 2026-02-15 → 2026-08-04 (+170d) | 2026-02-23 → 2026-08-15 (+173d) | 8d → 13.5d |  |  |
| 485 | False ceiling | 2026-02-23 → 2026-08-16 (+174d) | 2026-03-03 → 2026-08-25 (+175d) | 8d → 11.25d |  |  |
| 486 | **15th Floor** | 2025-10-29 → 2026-05-20 (+203d) | 2026-03-16 → 2026-09-06 (+174d) | 92.81d → 123.75d |  | constraint start no earlier than 2025-10-29 → start no earlier than 2026-05-20 |
| 487 | Block Work | 2025-10-29 → 2026-05-20 (+203d) | 2025-12-21 → 2026-05-27 (+157d) | 8d → 9d | 471FS+0.25d → 237, 471 |  |
| 488 | Door Frame Fixing | 2025-12-25 → 2026-05-28 (+154d) | 2026-01-03 → 2026-06-05 (+153d) | 9d → 10.12d |  |  |
| 489 | Internal Plumbing Works | 2025-12-23 → 2026-05-28 (+156d) | 2025-12-31 → 2026-06-06 (+157d) | 8d → 11.25d |  |  |
| 490 | Waterproofing | 2026-01-04 → 2026-06-07 (+154d) | 2026-01-14 → 2026-06-18 (+155d) | 10d → 13.5d |  |  |

| ID | Task | Start | Finish | Duration | Predecessors | Other |
| --- | --- | --- | --- | --- | --- | --- |
| 491 | Internal Plaster | 2026-01-05 → 2026-06-19 (+165d) | 2026-02-28 → 2026-06-27 (+119d) | 53.81d → 10.12d | 475FS+0.25d → 475, 488, 489, 490 |  |
| 492 | IPS flooring work | 2026-01-20 → 2026-06-19 (+150d) | 2026-01-29 → 2026-06-27 (+149d) | 10d → 10.12d |  |  |
| 493 | Toilet dado work | 2026-02-28 → 2026-06-28 (+120d) | 2026-03-08 → 2026-07-05 (+119d) | 8d → 9d |  |  |
| 494 | Toilet flooring work | 2026-03-08 → 2026-07-06 (+120d) | 2026-03-16 → 2026-07-12 (+118d) | 8d → 7.88d |  |  |
| 495 | Living dinning flooring | 2026-01-30 → 2026-07-15 (+166d) | 2026-02-06 → 2026-07-26 (+170d) | 7d → 13.5d | 479FS+0.25d → 479, 488, 494 |  |
| 496 | Aluminium door-window fixing | 2026-02-14 → 2026-08-23 (+190d) | 2026-02-24 → 2026-09-03 (+191d) | 10d → 13.5d | 480FS+0.25d → 480, 492, 495 |  |
| 497 | Putty primer coat | 2026-02-06 → 2026-07-27 (+171d) | 2026-02-12 → 2026-08-01 (+170d) | 6d → 6.75d |  |  |
| 498 | Door shutter fixing | 2026-02-07 → 2026-07-27 (+170d) | 2026-02-15 → 2026-08-03 (+169d) | 8d → 9d |  |  |
| 499 | Electrical wiring work | 2026-02-15 → 2026-08-04 (+170d) | 2026-02-23 → 2026-08-15 (+173d) | 8d → 13.5d |  |  |
| 500 | Painting 1st coat | 2026-02-23 → 2026-08-16 (+174d) | 2026-03-03 → 2026-08-27 (+177d) | 8d → 13.5d |  |  |
| 501 | False ceiling | 2026-03-03 → 2026-08-28 (+178d) | 2026-03-11 → 2026-09-06 (+179d) | 8d → 11.25d |  |  |
| 502 | **16th Floor** | 2025-12-21 → 2026-06-01 (+162d) | 2026-03-24 → 2026-09-18 (+178d) | 92.56d → 123.75d |  | constraint start no earlier than 2025-12-21 → start no earlier than 2026-06-01 |
| 503 | Block Work | 2025-12-21 → 2026-06-01 (+162d) | 2025-12-29 → 2026-06-08 (+161d) | 8d → 9d | 487FS+0.25d → 238, 487 |  |
| 504 | Door Frame Fixing | 2026-01-03 → 2026-06-09 (+157d) | 2026-01-12 → 2026-06-17 (+156d) | 9d → 10.12d |  |  |
| 505 | Internal Plumbing Works | 2025-12-31 → 2026-06-09 (+160d) | 2026-01-08 → 2026-06-18 (+161d) | 8d → 11.25d |  |  |
| 506 | Waterproofing | 2026-01-14 → 2026-06-19 (+156d) | 2026-01-24 → 2026-06-30 (+157d) | 10d → 13.5d |  |  |
| 507 | Internal Plaster | 2026-02-28 → 2026-07-01 (+123d) | 2026-03-05 → 2026-07-09 (+126d) | 5d → 10.12d | 491FS+0.25d → 491, 504, 505, 506 |  |
| 508 | IPS flooring work | 2026-01-30 → 2026-07-01 (+152d) | 2026-02-08 → 2026-07-09 (+151d) | 10d → 10.12d |  |  |
| 509 | Toilet dado work | 2026-03-08 → 2026-07-10 (+124d) | 2026-03-16 → 2026-07-17 (+123d) | 8d → 9d |  |  |
| 510 | Toilet flooring work | 2026-03-16 → 2026-07-18 (+124d) | 2026-03-24 → 2026-07-24 (+122d) | 8d → 7.88d |  |  |
| 511 | Living dinning flooring | 2026-02-06 → 2026-07-27 (+171d) | 2026-02-13 → 2026-08-07 (+175d) | 7d → 13.5d | 495FS+0.25d → 495, 504, 510 |  |
| 512 | Aluminium door-window fixing | 2026-02-24 → 2026-09-04 (+192d) | 2026-03-06 → 2026-09-15 (+193d) | 10d → 13.5d | 496FS+0.25d → 496, 508, 511 |  |
| 513 | Putty primer coat | 2026-02-13 → 2026-08-08 (+176d) | 2026-02-19 → 2026-08-13 (+175d) | 6d → 6.75d |  |  |
| 514 | Door shutter fixing | 2026-02-15 → 2026-08-08 (+174d) | 2026-02-23 → 2026-08-15 (+173d) | 8d → 9d |  |  |
| 515 | Electrical wiring work | 2026-02-23 → 2026-08-16 (+174d) | 2026-03-03 → 2026-08-27 (+177d) | 8d → 13.5d |  |  |
| 516 | Painting 1st coat | 2026-03-03 → 2026-08-28 (+178d) | 2026-03-11 → 2026-09-08 (+181d) | 8d → 13.5d |  |  |
| 517 | False ceiling | 2026-03-11 → 2026-09-09 (+182d) | 2026-03-19 → 2026-09-18 (+183d) | 8d → 11.25d |  |  |
| 518 | **17th Floor** | 2025-12-29 → 2026-06-13 (+166d) | 2026-04-01 → 2026-09-30 (+182d) | 92.31d → 123.75d |  | constraint start no earlier than 2025-12-29 → start no earlier than 2026-06-13 |
| 519 | Block Work | 2025-12-29 → 2026-06-13 (+166d) | 2026-01-06 → 2026-06-20 (+165d) | 8d → 9d | 503FS+0.25d → 239, 503 |  |
| 520 | Door Frame Fixing | 2026-01-12 → 2026-06-21 (+160d) | 2026-01-21 → 2026-06-29 (+159d) | 9d → 10.12d |  |  |
| 521 | Internal Plumbing Works | 2026-01-08 → 2026-06-21 (+164d) | 2026-01-16 → 2026-06-30 (+165d) | 8d → 11.25d |  |  |
| 522 | Waterproofing | 2026-01-24 → 2026-07-01 (+158d) | 2026-02-03 → 2026-07-12 (+159d) | 10d → 13.5d |  |  |
| 523 | Internal Plaster | 2026-03-05 → 2026-07-13 (+130d) | 2026-03-10 → 2026-07-21 (+133d) | 5d → 10.12d | 507FS+0.25d → 507, 520, 521, 522 |  |
| 524 | IPS flooring work | 2026-02-09 → 2026-07-13 (+154d) | 2026-02-18 → 2026-07-21 (+153d) | 10d → 10.12d |  |  |
| 525 | Toilet dado work | 2026-03-16 → 2026-07-22 (+128d) | 2026-03-24 → 2026-07-29 (+127d) | 8d → 9d |  |  |
| 526 | Toilet flooring work | 2026-03-24 → 2026-07-30 (+128d) | 2026-04-01 → 2026-08-05 (+126d) | 8d → 7.88d |  |  |
| 527 | Living dinning flooring | 2026-02-13 → 2026-08-08 (+176d) | 2026-02-20 → 2026-08-19 (+180d) | 7d → 13.5d | 511FS+0.25d → 511, 520, 526 |  |
| 528 | Aluminium door-window fixing | 2026-03-06 → 2026-09-16 (+194d) | 2026-03-16 → 2026-09-27 (+195d) | 10d → 13.5d | 512FS+0.25d → 512, 524, 527 |  |
| 529 | Putty primer coat | 2026-02-20 → 2026-08-20 (+181d) | 2026-02-26 → 2026-08-25 (+180d) | 6d → 6.75d |  |  |
| 530 | Door shutter fixing | 2026-02-23 → 2026-08-20 (+178d) | 2026-03-03 → 2026-08-27 (+177d) | 8d → 9d |  |  |
| 531 | Electrical wiring work | 2026-03-03 → 2026-08-28 (+178d) | 2026-03-11 → 2026-09-08 (+181d) | 8d → 13.5d |  |  |
| 532 | Painting 1st coat | 2026-03-11 → 2026-09-09 (+182d) | 2026-03-19 → 2026-09-20 (+185d) | 8d → 13.5d |  |  |
| 533 | False ceiling | 2026-03-19 → 2026-09-21 (+186d) | 2026-03-27 → 2026-09-30 (+187d) | 8d → 11.25d |  |  |
| 534 | **18th Floor** | 2026-01-07 → 2026-06-25 (+169d) | 2026-04-09 → 2026-10-12 (+186d) | 92.06d → 123.75d |  | constraint start no earlier than 2026-01-07 → start no earlier than 2026-06-25 |
| 535 | Block Work | 2026-01-07 → 2026-06-25 (+169d) | 2026-01-14 → 2026-07-02 (+169d) | 8d → 9d | 519FS+0.25d → 240, 519 |  |
| 536 | Door Frame Fixing | 2026-01-21 → 2026-07-03 (+163d) | 2026-01-30 → 2026-07-11 (+162d) | 9d → 10.12d |  |  |
| 537 | Internal Plumbing Works | 2026-01-16 → 2026-07-03 (+168d) | 2026-01-24 → 2026-07-12 (+169d) | 8d → 11.25d |  |  |
| 538 | Waterproofing | 2026-02-03 → 2026-07-13 (+160d) | 2026-02-13 → 2026-07-24 (+161d) | 10d → 13.5d |  |  |
| 539 | Internal Plaster | 2026-03-10 → 2026-07-25 (+137d) | 2026-03-15 → 2026-08-02 (+140d) | 5d → 10.12d | 523FS+0.25d → 523, 536, 537, 538 |  |
| 540 | IPS flooring work | 2026-02-19 → 2026-07-25 (+156d) | 2026-02-28 → 2026-08-02 (+155d) | 10d → 10.12d |  |  |
| 541 | Toilet dado work | 2026-03-24 → 2026-08-03 (+132d) | 2026-04-01 → 2026-08-10 (+131d) | 8d → 9d |  |  |
| 542 | Toilet flooring work | 2026-04-01 → 2026-08-11 (+132d) | 2026-04-09 → 2026-08-17 (+130d) | 8d → 7.88d |  |  |
| 543 | Living dinning flooring | 2026-02-21 → 2026-08-20 (+180d) | 2026-02-27 → 2026-08-31 (+185d) | 7d → 13.5d | 527FS+0.25d → 527, 536, 542 |  |
| 544 | Aluminium door-window fixing | 2026-03-16 → 2026-09-28 (+196d) | 2026-03-23 → 2026-10-09 (+200d) | 7d → 13.5d |  |  |
| 545 | Putty primer coat | 2026-02-28 → 2026-09-01 (+185d) | 2026-03-05 → 2026-09-06 (+185d) | 6d → 6.75d |  |  |
| 546 | Door shutter fixing | 2026-03-03 → 2026-09-01 (+182d) | 2026-03-11 → 2026-09-08 (+181d) | 8d → 9d |  |  |
| 547 | Electrical wiring work | 2026-03-11 → 2026-09-09 (+182d) | 2026-03-19 → 2026-09-20 (+185d) | 8d → 13.5d |  |  |
| 548 | Painting 1st coat | 2026-03-19 → 2026-09-21 (+186d) | 2026-03-27 → 2026-10-02 (+189d) | 8d → 13.5d |  |  |
| 549 | False ceiling | 2026-03-27 → 2026-10-03 (+190d) | 2026-04-04 → 2026-10-12 (+191d) | 8d → 11.25d |  |  |
| 550 | **19th Floor** | 2026-01-15 → 2026-07-07 (+173d) | 2026-04-22 → 2026-10-24 (+185d) | 96.81d → 123.75d |  | constraint start no earlier than 2026-01-15 → start no earlier than 2026-07-07 |
| 551 | Block Work | 2026-01-15 → 2026-07-07 (+173d) | 2026-01-23 → 2026-07-14 (+172d) | 8d → 9d | 535FS+0.25d → 241, 535 |  |
| 552 | Door Frame Fixing | 2026-01-30 → 2026-07-15 (+166d) | 2026-02-08 → 2026-07-23 (+165d) | 9d → 10.12d |  |  |
| 553 | Internal Plumbing Works | 2026-01-24 → 2026-07-15 (+172d) | 2026-02-01 → 2026-07-24 (+173d) | 8d → 11.25d |  |  |
| 554 | Waterproofing | 2026-02-13 → 2026-07-25 (+162d) | 2026-02-23 → 2026-08-05 (+163d) | 10d → 13.5d |  |  |
| 555 | Internal Plaster | 2026-03-16 → 2026-08-06 (+143d) | 2026-03-24 → 2026-08-14 (+143d) | 8d → 10.12d | 539FS+0.25d → 539, 552, 553, 554 |  |
| 556 | IPS flooring work | 2026-04-02 → 2026-08-15 (+135d) | 2026-04-12 → 2026-08-23 (+133d) | 10d → 10.12d | 540, 552, 554, 571 → 540, 552, 554, 555 |  |
| 557 | Toilet dado work | 2026-04-02 → 2026-08-15 (+135d) | 2026-04-10 → 2026-08-22 (+134d) | 8d → 9d | 541, 554, 571 → 541, 554, 555 |  |
| 558 | Toilet flooring work | 2026-04-10 → 2026-08-23 (+135d) | 2026-04-18 → 2026-08-29 (+133d) | 8d → 7.88d |  |  |
| 559 | Living dinning flooring | 2026-02-28 → 2026-09-01 (+185d) | 2026-03-07 → 2026-09-12 (+189d) | 7d → 13.5d | 543FS+0.25d → 543, 552, 558 |  |
| 560 | Aluminium door-window fixing | 2026-04-12 → 2026-10-10 (+181d) | 2026-04-22 → 2026-10-21 (+182d) | 10d → 13.5d |  |  |

| ID | Task | Start | Finish | Duration | Predecessors | Other |
| --- | --- | --- | --- | --- | --- | --- |
| 561 | Putty primer coat | 2026-03-07 → 2026-09-13 (+190d) | 2026-03-13 → 2026-09-18 (+189d) | 6d → 6.75d |  |  |
| 562 | Door shutter fixing | 2026-03-11 → 2026-09-13 (+186d) | 2026-03-19 → 2026-09-20 (+185d) | 8d → 9d |  |  |
| 563 | Electrical wiring work | 2026-03-19 → 2026-09-21 (+186d) | 2026-03-27 → 2026-10-02 (+189d) | 8d → 13.5d |  |  |
| 564 | Painting 1st coat | 2026-03-27 → 2026-10-03 (+190d) | 2026-04-04 → 2026-10-14 (+193d) | 8d → 13.5d |  |  |
| 565 | False ceiling | 2026-04-04 → 2026-10-15 (+194d) | 2026-04-12 → 2026-10-24 (+195d) | 8d → 11.25d |  |  |
| 566 | **20th Floor** | 2026-01-23 → 2026-07-19 (+177d) | 2026-04-29 → 2026-12-20 (+235d) | 95.56d → 123.75d |  | constraint start no earlier than 2026-01-23 → start no earlier than 2026-07-19 |
| 567 | Block Work | 2026-01-23 → 2026-07-19 (+177d) | 2026-01-31 → 2026-07-26 (+176d) | 8d → 9d | 551FS+0.25d → 242, 551 |  |
| 568 | Door Frame Fixing | 2026-02-08 → 2026-07-27 (+169d) | 2026-02-17 → 2026-08-04 (+168d) | 9d → 10.12d |  |  |
| 569 | Internal Plumbing Works | 2026-02-01 → 2026-07-27 (+176d) | 2026-02-09 → 2026-08-05 (+177d) | 8d → 11.25d |  |  |
| 570 | Waterproofing | 2026-02-23 → 2026-08-06 (+164d) | 2026-03-05 → 2026-08-17 (+165d) | 10d → 13.5d |  |  |
| 571 | Internal Plaster | 2026-03-24 → 2026-08-18 (+147d) | 2026-04-02 → 2026-08-26 (+146d) | 9d → 10.12d | 539, 552, 553, 554, 555 → 555, 568, 569, 570 |  |
| 572 | IPS flooring work | 2026-04-12 → 2026-08-27 (+137d) | 2026-04-22 → 2026-09-04 (+135d) | 10d → 10.12d | 556, 568, 570, 587 → 556, 568, 570, 571 |  |
| 573 | Toilet dado work | 2026-04-10 → 2026-08-27 (+139d) | 2026-04-18 → 2026-09-03 (+138d) | 8d → 9d | 557, 570, 587 → 557, 570, 571 |  |
| 574 | Toilet flooring work | 2026-04-18 → 2026-09-04 (+139d) | 2026-04-26 → 2026-09-10 (+137d) | 8d → 7.88d |  |  |
| 575 | Living dinning flooring | 2026-03-07 → 2026-09-13 (+190d) | 2026-03-14 → 2026-09-24 (+194d) | 7d → 13.5d | 559FS+0.25d → 559, 568, 574 |  |
| 576 | Aluminium door-window fixing | 2026-04-22 → 2026-10-22 (+183d) | 2026-04-29 → 2026-12-17 (+232d) | 7d → 13.5d |  |  |
| 577 | Putty primer coat | 2026-03-14 → 2026-09-25 (+195d) | 2026-03-20 → 2026-09-30 (+194d) | 6d → 6.75d |  |  |
| 578 | Door shutter fixing | 2026-03-19 → 2026-09-25 (+190d) | 2026-03-27 → 2026-10-02 (+189d) | 8d → 9d |  |  |
| 579 | Electrical wiring work | 2026-03-27 → 2026-10-03 (+190d) | 2026-04-04 → 2026-10-14 (+193d) | 8d → 13.5d |  |  |
| 580 | Painting 1st coat | 2026-04-04 → 2026-10-15 (+194d) | 2026-04-12 → 2026-10-26 (+197d) | 8d → 13.5d |  |  |
| 581 | False ceiling | 2026-04-12 → 2026-10-27 (+198d) | 2026-04-20 → 2026-12-20 (+244d) | 8d → 11.25d |  |  |
| 582 | **21st Floor** | 2026-01-31 → 2026-07-31 (+181d) | 2026-05-14 → 2027-01-01 (+232d) | 102.56d → 123.75d |  | constraint start no earlier than 2026-01-31 → start no earlier than 2026-07-31 |
| 583 | Block Work | 2026-01-31 → 2026-07-31 (+181d) | 2026-02-08 → 2026-08-07 (+180d) | 8d → 9d | 567FS+0.25d → 243, 567 |  |
| 584 | Door Frame Fixing | 2026-02-17 → 2026-08-08 (+172d) | 2026-02-26 → 2026-08-16 (+171d) | 9d → 10.12d |  |  |
| 585 | Internal Plumbing Works | 2026-02-10 → 2026-08-08 (+179d) | 2026-02-17 → 2026-08-17 (+181d) | 8d → 11.25d | 569FS+0.25d → 569, 583 |  |
| 586 | Waterproofing | 2026-03-05 → 2026-08-18 (+166d) | 2026-03-15 → 2026-08-29 (+167d) | 10d → 13.5d |  |  |
| 587 | Internal Plaster | 2026-04-02 → 2026-08-30 (+150d) | 2026-04-07 → 2026-09-07 (+153d) | 5d → 10.12d | 571FS+0.25d → 571, 584, 585, 586 |  |
| 588 | IPS flooring work | 2026-04-22 → 2026-09-08 (+139d) | 2026-05-02 → 2026-09-16 (+137d) | 10d → 10.12d | 572FS+0.25d → 572, 584, 586, 587 |  |
| 589 | Toilet dado work | 2026-04-18 → 2026-09-08 (+143d) | 2026-04-26 → 2026-09-15 (+142d) | 8d → 9d | 573, 586, 603 → 573, 586, 587 |  |
| 590 | Toilet flooring work | 2026-04-26 → 2026-09-16 (+143d) | 2026-05-04 → 2026-09-22 (+141d) | 8d → 7.88d |  |  |
| 591 | Living dinning flooring | 2026-03-14 → 2026-09-25 (+195d) | 2026-03-26 → 2026-10-06 (+194d) | 12d → 13.5d | 575FS+0.25d → 575, 584, 590 |  |
| 592 | Aluminium door-window fixing | 2026-05-02 → 2026-12-18 (+230d) | 2026-05-14 → 2026-12-29 (+229d) | 12d → 13.5d |  |  |
| 593 | Putty primer coat | 2026-03-26 → 2026-10-07 (+195d) | 2026-04-01 → 2026-10-12 (+194d) | 6d → 6.75d |  |  |
| 594 | Door shutter fixing | 2026-03-27 → 2026-10-07 (+194d) | 2026-04-04 → 2026-10-14 (+193d) | 8d → 9d |  |  |
| 595 | Electrical wiring work | 2026-04-04 → 2026-10-15 (+194d) | 2026-04-12 → 2026-10-26 (+197d) | 8d → 13.5d |  |  |
| 596 | Painting 1st coat | 2026-04-12 → 2026-10-27 (+198d) | 2026-04-20 → 2026-12-22 (+246d) | 8d → 13.5d |  |  |
| 597 | False ceiling | 2026-04-20 → 2026-12-23 (+247d) | 2026-04-28 → 2027-01-01 (+248d) | 8d → 11.25d |  |  |
| 598 | **22nd Floor** | 2026-02-09 → 2026-08-12 (+184d) | 2026-06-20 → 2027-01-13 (+207d) | 131.06d → 123.75d |  | constraint start no earlier than 2026-02-09 → start no earlier than 2026-08-12 |
| 599 | Block Work | 2026-02-09 → 2026-08-12 (+184d) | 2026-02-16 → 2026-08-19 (+184d) | 8d → 9d | 583FS+0.25d → 244, 583 |  |
| 600 | Door Frame Fixing | 2026-02-26 → 2026-08-20 (+175d) | 2026-03-07 → 2026-08-28 (+174d) | 9d → 10.12d |  |  |
| 601 | Internal Plumbing Works | 2026-02-18 → 2026-08-20 (+183d) | 2026-02-25 → 2026-08-29 (+185d) | 8d → 11.25d |  |  |
| 602 | Waterproofing | 2026-03-15 → 2026-08-30 (+168d) | 2026-03-25 → 2026-09-10 (+169d) | 10d → 13.5d |  |  |
| 603 | Internal Plaster | 2026-02-09 → 2026-09-11 (+214d) | 2026-02-16 → 2026-09-19 (+215d) | 8d → 10.12d | 583FS+0.25d → 587, 600, 601, 602 |  |
| 604 | IPS flooring work | 2026-05-02 → 2026-09-20 (+141d) | 2026-05-12 → 2026-09-28 (+139d) | 10d → 10.12d | 588, 600, 602, 619 → 588, 600, 602, 603 |  |
| 605 | Toilet dado work | 2026-04-26 → 2026-09-20 (+147d) | 2026-05-04 → 2026-09-27 (+146d) | 8d → 9d | 589, 602, 619 → 589, 602, 603 |  |
| 606 | Toilet flooring work | 2026-05-04 → 2026-09-28 (+147d) | 2026-05-12 → 2026-10-04 (+145d) | 8d → 7.88d |  |  |
| 607 | Living dinning flooring | 2026-05-12 → 2026-10-07 (+148d) | 2026-05-19 → 2026-10-18 (+152d) | 7d → 13.5d |  |  |
| 608 | Aluminium door-window fixing | 2026-05-19 → 2026-12-30 (+225d) | 2026-05-26 → 2027-01-10 (+229d) | 7d → 13.5d |  |  |
| 609 | Putty primer coat | 2026-05-19 → 2026-10-19 (+153d) | 2026-05-25 → 2026-10-24 (+152d) | 6d → 6.75d |  |  |
| 610 | Door shutter fixing | 2026-05-19 → 2026-10-19 (+153d) | 2026-05-27 → 2026-10-26 (+152d) | 8d → 9d |  |  |
| 611 | Electrical wiring work | 2026-05-27 → 2026-10-27 (+153d) | 2026-06-04 → 2026-12-22 (+201d) | 8d → 13.5d |  |  |
| 612 | Painting 1st coat | 2026-06-04 → 2026-12-23 (+202d) | 2026-06-12 → 2027-01-03 (+205d) | 8d → 13.5d |  |  |
| 613 | False ceiling | 2026-06-12 → 2027-01-04 (+206d) | 2026-06-20 → 2027-01-13 (+207d) | 8d → 11.25d |  |  |
| 614 | **23rd Floor** | 2026-02-17 → 2026-08-24 (+188d) | 2026-06-28 → 2027-01-28 (+214d) | 130.81d → 127.12d |  | constraint start no earlier than 2026-02-17 → start no earlier than 2026-08-24 |
| 615 | Block Work | 2026-02-17 → 2026-08-24 (+188d) | 2026-02-25 → 2026-08-31 (+187d) | 8d → 9d | 599FS+0.25d → 245, 599 |  |
| 616 | Door Frame Fixing | 2026-03-07 → 2026-09-01 (+178d) | 2026-03-16 → 2026-09-09 (+177d) | 9d → 10.12d |  |  |
| 617 | Internal Plumbing Works | 2026-02-26 → 2026-09-01 (+187d) | 2026-03-05 → 2026-09-10 (+189d) | 8d → 11.25d |  |  |
| 618 | Waterproofing | 2026-03-25 → 2026-09-11 (+170d) | 2026-04-04 → 2026-09-22 (+171d) | 10d → 13.5d |  |  |
| 619 | Internal Plaster | 2026-02-17 → 2026-09-23 (+218d) | 2026-02-22 → 2026-10-01 (+221d) | 5d → 10.12d | 603FS+0.25d → 603, 616, 617, 618 |  |
| 620 | IPS flooring work | 2026-05-12 → 2026-10-02 (+143d) | 2026-05-22 → 2026-10-10 (+141d) | 10d → 10.12d | 604, 616, 618, 635 → 604, 616, 618, 619 |  |
| 621 | Toilet dado work | 2026-05-04 → 2026-10-02 (+151d) | 2026-05-12 → 2026-10-09 (+150d) | 8d → 9d | 605, 618, 635 → 605, 618, 619 |  |
| 622 | Toilet flooring work | 2026-05-12 → 2026-10-10 (+151d) | 2026-05-20 → 2026-10-16 (+149d) | 8d → 7.88d |  |  |
| 623 | Living dinning flooring | 2026-05-20 → 2026-10-19 (+152d) | 2026-05-27 → 2026-12-17 (+204d) | 7d → 16.88d |  |  |
| 624 | Aluminium door-window fixing | 2026-05-27 → 2027-01-11 (+229d) | 2026-06-03 → 2027-01-25 (+236d) | 7d → 16.88d |  |  |
| 625 | Putty primer coat | 2026-05-27 → 2026-12-18 (+205d) | 2026-06-02 → 2026-12-23 (+204d) | 6d → 6.75d |  |  |
| 626 | Door shutter fixing | 2026-05-27 → 2026-12-18 (+205d) | 2026-06-04 → 2026-12-25 (+204d) | 8d → 9d |  |  |
| 627 | Electrical wiring work | 2026-06-04 → 2026-12-26 (+205d) | 2026-06-12 → 2027-01-06 (+208d) | 8d → 13.5d |  |  |
| 628 | Painting 1st coat | 2026-06-12 → 2027-01-07 (+209d) | 2026-06-20 → 2027-01-18 (+212d) | 8d → 13.5d |  |  |
| 629 | False ceiling | 2026-06-20 → 2027-01-19 (+213d) | 2026-06-28 → 2027-01-28 (+214d) | 8d → 11.25d |  |  |
| 630 | **24th Floor** | 2026-02-25 → 2026-09-05 (+192d) | 2026-07-11 → 2027-02-12 (+216d) | 135.56d → 130.5d |  | constraint start no earlier than 2026-02-25 → start no earlier than 2026-09-05 |

| ID | Task | Start | Finish | Duration | Predecessors | Other |
| --- | --- | --- | --- | --- | --- | --- |
| 631 | Block Work | 2026-02-25 → 2026-09-05 (+192d) | 2026-03-05 → 2026-09-12 (+191d) | 8d → 9d | 615FS+0.25d → 246, 615 |  |
| 632 | Door Frame Fixing | 2026-03-16 → 2026-09-13 (+181d) | 2026-03-25 → 2026-09-21 (+180d) | 9d → 10.12d |  |  |
| 633 | Internal Plumbing Works | 2026-03-06 → 2026-09-13 (+191d) | 2026-03-13 → 2026-09-22 (+193d) | 8d → 11.25d |  |  |
| 634 | Waterproofing | 2026-04-04 → 2026-09-23 (+172d) | 2026-04-14 → 2026-10-04 (+173d) | 10d → 13.5d |  |  |
| 635 | Internal Plaster | 2026-02-22 → 2026-10-05 (+225d) | 2026-02-27 → 2026-10-13 (+228d) | 5d → 10.12d | 619FS+0.25d → 619, 632, 633, 634 |  |
| 636 | IPS flooring work | 2026-05-22 → 2026-10-14 (+145d) | 2026-06-01 → 2026-10-22 (+143d) | 10d → 10.12d | 620, 632, 634, 651 → 620, 632, 634, 635 |  |
| 637 | Toilet dado work | 2026-05-12 → 2026-10-14 (+155d) | 2026-05-20 → 2026-10-21 (+154d) | 8d → 9d | 621, 634, 651 → 621, 634, 635 |  |
| 638 | Toilet flooring work | 2026-05-20 → 2026-10-22 (+155d) | 2026-05-28 → 2026-10-28 (+153d) | 8d → 7.88d |  |  |
| 639 | Living dinning flooring | 2026-05-28 → 2026-12-18 (+204d) | 2026-06-09 → 2027-01-01 (+206d) | 12d → 16.88d |  |  |
| 640 | Aluminium door-window fixing | 2026-06-09 → 2027-01-26 (+231d) | 2026-06-21 → 2027-02-09 (+233d) | 12d → 16.88d |  |  |
| 641 | Putty primer coat | 2026-06-09 → 2027-01-02 (+207d) | 2026-06-15 → 2027-01-07 (+206d) | 6d → 6.75d |  |  |
| 642 | Door shutter fixing | 2026-06-09 → 2027-01-02 (+207d) | 2026-06-17 → 2027-01-09 (+206d) | 8d → 9d |  |  |
| 643 | Electrical wiring work | 2026-06-17 → 2027-01-10 (+207d) | 2026-06-25 → 2027-01-21 (+210d) | 8d → 13.5d |  |  |
| 644 | Painting 1st coat | 2026-06-25 → 2027-01-22 (+211d) | 2026-07-03 → 2027-02-02 (+214d) | 8d → 13.5d |  |  |
| 645 | False ceiling | 2026-07-03 → 2027-02-03 (+215d) | 2026-07-11 → 2027-02-12 (+216d) | 8d → 11.25d |  |  |
| 646 | **25th Floor** | 2026-04-25 → 2026-09-17 (+145d) | 2026-07-28 → 2027-02-27 (+214d) | 94d → 133.88d |  | constraint start no earlier than 2026-04-25 → start no earlier than 2026-09-17 |
| 647 | Block Work | 2026-04-25 → 2026-09-17 (+145d) | 2026-05-03 → 2026-09-24 (+144d) | 8d → 9d |  |  |
| 648 | Door Frame Fixing | 2026-05-03 → 2026-09-25 (+145d) | 2026-05-12 → 2026-10-03 (+144d) | 9d → 10.12d |  |  |
| 649 | Internal Plumbing Works | 2026-05-03 → 2026-09-25 (+145d) | 2026-05-11 → 2026-10-04 (+146d) | 8d → 11.25d |  |  |
| 650 | Waterproofing | 2026-05-11 → 2026-10-05 (+147d) | 2026-05-21 → 2026-10-16 (+148d) | 10d → 13.5d |  |  |
| 651 | Internal Plaster | 2026-04-14 → 2026-10-17 (+186d) | 2026-04-22 → 2026-10-25 (+186d) | 8d → 10.12d | 635, 632, 633, 634 → 635, 648, 649, 650 |  |
| 652 | IPS flooring work | 2026-06-01 → 2026-10-26 (+147d) | 2026-06-11 → 2026-12-18 (+190d) | 10d → 10.12d | 636, 648, 650, 667 → 636, 648, 650, 651 |  |
| 653 | Toilet dado work | 2026-05-29 → 2026-10-26 (+150d) | 2026-06-06 → 2026-12-17 (+194d) | 8d → 9d | 637, 650, 667 → 637, 650, 651 |  |
| 654 | Toilet flooring work | 2026-06-06 → 2026-12-18 (+195d) | 2026-06-14 → 2026-12-24 (+193d) | 8d → 7.88d |  |  |
| 655 | Living dinning flooring | 2026-06-14 → 2027-01-02 (+202d) | 2026-06-26 → 2027-01-16 (+204d) | 12d → 16.88d |  |  |
| 656 | Aluminium door-window fixing | 2026-06-26 → 2027-02-10 (+229d) | 2026-07-08 → 2027-02-24 (+231d) | 12d → 16.88d |  |  |
| 657 | Putty primer coat | 2026-06-26 → 2027-01-17 (+205d) | 2026-07-02 → 2027-01-22 (+204d) | 6d → 6.75d |  |  |
| 658 | Door shutter fixing | 2026-06-26 → 2027-01-17 (+205d) | 2026-07-04 → 2027-01-24 (+204d) | 8d → 9d |  |  |
| 659 | Electrical wiring work | 2026-07-04 → 2027-01-25 (+205d) | 2026-07-12 → 2027-02-05 (+208d) | 8d → 13.5d |  |  |
| 660 | Painting 1st coat | 2026-07-12 → 2027-02-06 (+209d) | 2026-07-20 → 2027-02-17 (+212d) | 8d → 13.5d |  |  |
| 661 | False ceiling | 2026-07-20 → 2027-02-18 (+213d) | 2026-07-28 → 2027-02-27 (+214d) | 8d → 11.25d |  |  |
| 662 | **26th Floor** | 2026-05-05 → 2026-09-29 (+147d) | 2026-08-09 → 2027-03-14 (+217d) | 96d → 137.25d |  | constraint start no earlier than 2026-05-05 → start no earlier than 2026-09-29 |
| 663 | Block Work | 2026-05-05 → 2026-09-29 (+147d) | 2026-05-13 → 2026-10-06 (+146d) | 8d → 9d |  |  |
| 664 | Door Frame Fixing | 2026-05-13 → 2026-10-07 (+147d) | 2026-05-22 → 2026-10-15 (+146d) | 9d → 10.12d |  |  |
| 665 | Internal Plumbing Works | 2026-05-13 → 2026-10-07 (+147d) | 2026-05-21 → 2026-10-16 (+148d) | 8d → 11.25d |  |  |
| 666 | Waterproofing | 2026-05-21 → 2026-10-17 (+149d) | 2026-05-31 → 2026-10-28 (+150d) | 10d → 13.5d |  |  |
| 667 | Internal Plaster | 2026-05-21 → 2026-10-29 (+161d) | 2026-05-29 → 2026-12-21 (+206d) | 8d → 10.12d | 651, 648, 649, 650 → 651, 664, 665, 666 |  |
| 668 | IPS flooring work | 2026-06-11 → 2026-12-22 (+194d) | 2026-06-21 → 2026-12-30 (+192d) | 10d → 10.12d | 652, 664, 666, 683 → 652, 664, 666, 667 |  |
| 669 | Toilet dado work | 2026-06-08 → 2026-12-22 (+197d) | 2026-06-16 → 2026-12-29 (+196d) | 8d → 9d | 653, 666, 683 → 653, 666, 667 |  |
| 670 | Toilet flooring work | 2026-06-16 → 2026-12-30 (+197d) | 2026-06-24 → 2027-01-05 (+195d) | 8d → 7.88d |  |  |
| 671 | Living dinning flooring | 2026-06-26 → 2027-01-17 (+205d) | 2026-07-08 → 2027-01-31 (+207d) | 12d → 16.88d |  |  |
| 672 | Aluminium door-window fixing | 2026-07-08 → 2027-02-25 (+232d) | 2026-07-20 → 2027-03-11 (+234d) | 12d → 16.88d |  |  |
| 673 | Putty primer coat | 2026-07-08 → 2027-02-01 (+208d) | 2026-07-14 → 2027-02-06 (+207d) | 6d → 6.75d |  |  |
| 674 | Door shutter fixing | 2026-07-08 → 2027-02-01 (+208d) | 2026-07-16 → 2027-02-08 (+207d) | 8d → 9d |  |  |
| 675 | Electrical wiring work | 2026-07-16 → 2027-02-09 (+208d) | 2026-07-24 → 2027-02-20 (+211d) | 8d → 13.5d |  |  |
| 676 | Painting 1st coat | 2026-07-24 → 2027-02-21 (+212d) | 2026-08-01 → 2027-03-04 (+215d) | 8d → 13.5d |  |  |
| 677 | False ceiling | 2026-08-01 → 2027-03-05 (+216d) | 2026-08-09 → 2027-03-14 (+217d) | 8d → 11.25d |  |  |
| 678 | **27th Floor** | 2026-05-18 → 2026-10-11 (+146d) | 2026-08-21 → 2027-03-29 (+220d) | 95.25d → 140.62d |  | constraint start no earlier than 2026-05-18 → start no earlier than 2026-10-11 |
| 679 | Block Work | 2026-05-18 → 2026-10-11 (+146d) | 2026-05-26 → 2026-10-18 (+145d) | 8d → 9d |  |  |
| 680 | Door Frame Fixing | 2026-05-26 → 2026-10-19 (+146d) | 2026-06-04 → 2026-10-27 (+145d) | 9d → 10.12d |  |  |
| 681 | Internal Plumbing Works | 2026-05-26 → 2026-10-19 (+146d) | 2026-06-03 → 2026-10-28 (+147d) | 8d → 11.25d |  |  |
| 682 | Waterproofing | 2026-06-03 → 2026-10-29 (+148d) | 2026-06-13 → 2026-12-24 (+194d) | 10d → 13.5d |  |  |
| 683 | Internal Plaster | 2026-05-31 → 2026-12-25 (+208d) | 2026-06-08 → 2027-01-02 (+208d) | 8d → 10.12d | 667, 664, 665, 666 → 667, 680, 681, 682 |  |
| 684 | IPS flooring work | 2026-06-21 → 2027-01-03 (+196d) | 2026-07-01 → 2027-01-11 (+194d) | 10d → 10.12d | 668, 680, 682, 699 → 668, 680, 682, 683 |  |
| 685 | Toilet dado work | 2026-06-21 → 2027-01-03 (+196d) | 2026-06-29 → 2027-01-10 (+195d) | 8d → 9d | 669, 682, 699 → 669, 682, 683 |  |
| 686 | Toilet flooring work | 2026-06-29 → 2027-01-11 (+196d) | 2026-07-07 → 2027-01-17 (+194d) | 8d → 7.88d |  |  |
| 687 | Living dinning flooring | 2026-07-08 → 2027-02-01 (+208d) | 2026-07-20 → 2027-02-15 (+210d) | 12d → 16.88d |  |  |
| 688 | Aluminium door-window fixing | 2026-07-20 → 2027-03-12 (+235d) | 2026-08-01 → 2027-03-26 (+237d) | 12d → 16.88d |  |  |
| 689 | Putty primer coat | 2026-07-20 → 2027-02-16 (+211d) | 2026-07-26 → 2027-02-21 (+210d) | 6d → 6.75d |  |  |
| 690 | Door shutter fixing | 2026-07-20 → 2027-02-16 (+211d) | 2026-07-28 → 2027-02-23 (+210d) | 8d → 9d |  |  |
| 691 | Electrical wiring work | 2026-07-28 → 2027-02-24 (+211d) | 2026-08-05 → 2027-03-07 (+214d) | 8d → 13.5d |  |  |
| 692 | Painting 1st coat | 2026-08-05 → 2027-03-08 (+215d) | 2026-08-13 → 2027-03-19 (+218d) | 8d → 13.5d |  |  |
| 693 | False ceiling | 2026-08-13 → 2027-03-20 (+219d) | 2026-08-21 → 2027-03-29 (+220d) | 8d → 11.25d |  |  |
| 694 | **28th Floor** | 2026-05-30 → 2026-10-23 (+146d) | 2026-09-02 → 2027-04-13 (+223d) | 95.5d → 144d |  | constraint start no earlier than 2026-05-30 → start no earlier than 2026-10-23 |
| 695 | Block Work | 2026-05-30 → 2026-10-23 (+146d) | 2026-06-06 → 2026-10-30 (+146d) | 8d → 9d |  |  |
| 696 | Door Frame Fixing | 2026-06-07 → 2026-10-31 (+146d) | 2026-06-15 → 2026-12-23 (+191d) | 9d → 10.12d |  |  |
| 697 | Internal Plumbing Works | 2026-06-07 → 2026-10-31 (+146d) | 2026-06-14 → 2026-12-24 (+193d) | 8d → 11.25d |  |  |
| 698 | Waterproofing | 2026-06-15 → 2026-12-25 (+193d) | 2026-06-24 → 2027-01-05 (+195d) | 10d → 13.5d |  |  |
| 699 | Internal Plaster | 2026-06-13 → 2027-01-06 (+207d) | 2026-06-21 → 2027-01-14 (+207d) | 8d → 10.12d | 683, 680, 681, 682 → 683, 696, 697, 698 |  |
| 700 | IPS flooring work | 2026-07-03 → 2027-01-15 (+196d) | 2026-07-12 → 2027-01-23 (+195d) | 10d → 10.12d | 684, 696, 698, 715 → 684, 696, 698, 699 |  |

| ID | Task | Start | Finish | Duration | Predecessors | Other |
| --- | --- | --- | --- | --- | --- | --- |
| 701 | Toilet dado work | 2026-07-03 → 2027-01-15 (+196d) | 2026-07-10 → 2027-01-22 (+196d) | 8d → 9d | 685, 698, 715 → 685, 698, 699 |  |
| 702 | Toilet flooring work | 2026-07-11 → 2027-01-23 (+196d) | 2026-07-18 → 2027-01-29 (+195d) | 8d → 7.88d |  |  |
| 703 | Living dinning flooring | 2026-07-20 → 2027-02-16 (+211d) | 2026-08-01 → 2027-03-02 (+213d) | 12d → 16.88d |  |  |
| 704 | Aluminium door-window fixing | 2026-08-01 → 2027-03-27 (+238d) | 2026-08-13 → 2027-04-10 (+240d) | 12d → 16.88d |  |  |
| 705 | Putty primer coat | 2026-08-01 → 2027-03-03 (+214d) | 2026-08-07 → 2027-03-08 (+213d) | 6d → 6.75d |  |  |
| 706 | Door shutter fixing | 2026-08-01 → 2027-03-03 (+214d) | 2026-08-09 → 2027-03-10 (+213d) | 8d → 9d |  |  |
| 707 | Electrical wiring work | 2026-08-09 → 2027-03-11 (+214d) | 2026-08-17 → 2027-03-22 (+217d) | 8d → 13.5d |  |  |
| 708 | Painting 1st coat | 2026-08-17 → 2027-03-23 (+218d) | 2026-08-25 → 2027-04-03 (+221d) | 8d → 13.5d |  |  |
| 709 | False ceiling | 2026-08-25 → 2027-04-04 (+222d) | 2026-09-02 → 2027-04-13 (+223d) | 8d → 11.25d |  |  |
| 710 | **29th Floor** | 2026-06-11 → 2026-12-19 (+191d) | 2026-09-14 → 2027-04-28 (+226d) | 94.75d → 147.38d |  | constraint start no earlier than 2026-06-11 → start no earlier than 2026-12-19 |
| 711 | Block Work | 2026-06-11 → 2026-12-19 (+191d) | 2026-06-19 → 2026-12-26 (+190d) | 8d → 9d |  |  |
| 712 | Door Frame Fixing | 2026-06-19 → 2026-12-27 (+191d) | 2026-06-28 → 2027-01-04 (+190d) | 9d → 10.12d |  |  |
| 713 | Internal Plumbing Works | 2026-06-19 → 2026-12-27 (+191d) | 2026-06-27 → 2027-01-05 (+192d) | 8d → 11.25d |  |  |
| 714 | Waterproofing | 2026-06-27 → 2027-01-06 (+193d) | 2026-07-07 → 2027-01-17 (+194d) | 10d → 13.5d |  |  |
| 715 | Internal Plaster | 2026-06-25 → 2027-01-18 (+207d) | 2026-07-02 → 2027-01-26 (+208d) | 8d → 10.12d | 699, 696, 697, 698 → 699, 712, 713, 714 |  |
| 716 | IPS flooring work | 2026-07-15 → 2027-01-27 (+196d) | 2026-07-25 → 2027-02-04 (+194d) | 10d → 10.12d | 700, 712, 714, 731 → 700, 712, 714, 715 |  |
| 717 | Toilet dado work | 2026-07-15 → 2027-01-27 (+196d) | 2026-07-23 → 2027-02-03 (+195d) | 8d → 9d | 701, 714, 731 → 701, 714, 715 |  |
| 718 | Toilet flooring work | 2026-07-23 → 2027-02-04 (+196d) | 2026-07-31 → 2027-02-10 (+194d) | 8d → 7.88d |  |  |
| 719 | Living dinning flooring | 2026-08-01 → 2027-03-03 (+214d) | 2026-08-13 → 2027-03-17 (+216d) | 12d → 16.88d |  |  |
| 720 | Aluminium door-window fixing | 2026-08-13 → 2027-04-11 (+241d) | 2026-08-25 → 2027-04-25 (+243d) | 12d → 16.88d |  |  |
| 721 | Putty primer coat | 2026-08-13 → 2027-03-18 (+217d) | 2026-08-19 → 2027-03-23 (+216d) | 6d → 6.75d |  |  |
| 722 | Door shutter fixing | 2026-08-13 → 2027-03-18 (+217d) | 2026-08-21 → 2027-03-25 (+216d) | 8d → 9d |  |  |
| 723 | Electrical wiring work | 2026-08-21 → 2027-03-26 (+217d) | 2026-08-29 → 2027-04-06 (+220d) | 8d → 13.5d |  |  |
| 724 | Painting 1st coat | 2026-08-29 → 2027-04-07 (+221d) | 2026-09-06 → 2027-04-18 (+224d) | 8d → 13.5d |  |  |
| 725 | False ceiling | 2026-09-06 → 2027-04-19 (+225d) | 2026-09-14 → 2027-04-28 (+226d) | 8d → 11.25d |  |  |
| 726 | **30th Floor** | 2026-06-23 → 2026-12-31 (+191d) | 2026-09-26 → 2027-05-19 (+235d) | 95d → 157.5d |  | constraint start no earlier than 2026-06-23 → start no earlier than 2026-12-31 |
| 727 | Block Work | 2026-06-23 → 2026-12-31 (+191d) | 2026-07-01 → 2027-01-07 (+190d) | 8d → 9d |  |  |
| 728 | Door Frame Fixing | 2026-07-01 → 2027-01-08 (+191d) | 2026-07-10 → 2027-01-16 (+190d) | 9d → 10.12d |  |  |
| 729 | Internal Plumbing Works | 2026-07-01 → 2027-01-08 (+191d) | 2026-07-09 → 2027-01-17 (+192d) | 8d → 11.25d |  |  |
| 730 | Waterproofing | 2026-07-09 → 2027-01-18 (+193d) | 2026-07-19 → 2027-01-29 (+194d) | 10d → 13.5d |  |  |
| 731 | Internal Plaster | 2026-07-07 → 2027-01-30 (+207d) | 2026-07-15 → 2027-02-07 (+207d) | 8d → 10.12d | 715, 712, 713, 714 → 715, 728, 729, 730 |  |
| 732 | IPS flooring work | 2026-07-27 → 2027-02-08 (+196d) | 2026-08-06 → 2027-02-16 (+194d) | 10d → 10.12d | 716, 728, 730, 747 → 716, 728, 730, 731 |  |
| 733 | Toilet dado work | 2026-07-27 → 2027-02-08 (+196d) | 2026-08-04 → 2027-02-15 (+195d) | 8d → 9d | 717, 730, 747 → 717, 730, 731 |  |
| 734 | Toilet flooring work | 2026-08-04 → 2027-02-16 (+196d) | 2026-08-12 → 2027-02-22 (+194d) | 8d → 7.88d |  |  |
| 735 | Living dinning flooring | 2026-08-13 → 2027-03-18 (+217d) | 2026-08-25 → 2027-04-01 (+219d) | 12d → 16.88d |  |  |
| 736 | Aluminium door-window fixing | 2026-08-25 → 2027-04-26 (+244d) | 2026-09-06 → 2027-05-10 (+246d) | 12d → 16.88d |  |  |
| 737 | Putty primer coat | 2026-08-25 → 2027-04-02 (+220d) | 2026-08-31 → 2027-04-07 (+219d) | 6d → 6.75d |  |  |
| 738 | Door shutter fixing | 2026-08-25 → 2027-04-02 (+220d) | 2026-09-02 → 2027-04-09 (+219d) | 8d → 9d |  |  |
| 739 | Electrical wiring work | 2026-09-02 → 2027-04-10 (+220d) | 2026-09-10 → 2027-04-24 (+226d) | 8d → 16.88d |  |  |
| 740 | Painting 1st coat | 2026-09-10 → 2027-04-25 (+227d) | 2026-09-18 → 2027-05-09 (+233d) | 8d → 16.88d |  |  |
| 741 | False ceiling | 2026-09-18 → 2027-05-10 (+234d) | 2026-09-26 → 2027-05-19 (+235d) | 8d → 11.25d |  |  |
| 742 | **31st Floor** | 2026-07-08 → 2027-01-12 (+188d) | 2026-10-10 → 2027-06-03 (+236d) | 94d → 160.88d |  | constraint start no earlier than 2026-07-08 → start no earlier than 2027-01-12 |
| 743 | Block Work | 2026-07-08 → 2027-01-12 (+188d) | 2026-07-16 → 2027-01-19 (+187d) | 8d → 9d |  |  |
| 744 | Door Frame Fixing | 2026-07-16 → 2027-01-20 (+188d) | 2026-07-25 → 2027-01-28 (+187d) | 9d → 10.12d |  |  |
| 745 | Internal Plumbing Works | 2026-07-16 → 2027-01-20 (+188d) | 2026-07-24 → 2027-01-29 (+189d) | 8d → 11.25d |  |  |
| 746 | Waterproofing | 2026-07-24 → 2027-01-30 (+190d) | 2026-08-03 → 2027-02-10 (+191d) | 10d → 13.5d |  |  |
| 747 | Internal Plaster | 2026-07-19 → 2027-02-11 (+207d) | 2026-07-27 → 2027-02-19 (+207d) | 8d → 10.12d | 731, 728, 729, 730 → 731, 744, 745, 746 |  |
| 748 | IPS flooring work | 2026-08-11 → 2027-02-20 (+193d) | 2026-08-21 → 2027-02-28 (+191d) | 10d → 10.12d | 732, 744, 746, 763 → 732, 744, 746, 747 |  |
| 749 | Toilet dado work | 2026-08-11 → 2027-02-20 (+193d) | 2026-08-19 → 2027-02-27 (+192d) | 8d → 9d | 733, 746, 763 → 733, 746, 747 |  |
| 750 | Toilet flooring work | 2026-08-19 → 2027-02-28 (+193d) | 2026-08-27 → 2027-03-06 (+191d) | 8d → 7.88d |  |  |
| 751 | Living dinning flooring | 2026-08-27 → 2027-04-02 (+218d) | 2026-09-08 → 2027-04-16 (+220d) | 12d → 16.88d |  |  |
| 752 | Aluminium door-window fixing | 2026-09-08 → 2027-05-11 (+245d) | 2026-09-20 → 2027-05-22 (+244d) | 12d → 13.5d |  |  |
| 753 | Putty primer coat | 2026-09-08 → 2027-04-17 (+221d) | 2026-09-14 → 2027-04-22 (+220d) | 6d → 6.75d |  |  |
| 754 | Door shutter fixing | 2026-09-08 → 2027-04-17 (+221d) | 2026-09-16 → 2027-04-24 (+220d) | 8d → 9d |  |  |
| 755 | Electrical wiring work | 2026-09-16 → 2027-04-25 (+221d) | 2026-09-24 → 2027-05-09 (+227d) | 8d → 16.88d |  |  |
| 756 | Painting 1st coat | 2026-09-24 → 2027-05-10 (+228d) | 2026-10-02 → 2027-05-24 (+234d) | 8d → 16.88d |  |  |
| 757 | False ceiling | 2026-10-02 → 2027-05-25 (+235d) | 2026-10-10 → 2027-06-03 (+236d) | 8d → 11.25d |  |  |
| 758 | **32nd Floor** | 2026-08-19 → 2027-01-24 (+158d) | 2027-01-05 → 2027-06-18 (+164d) | 94d → 164.25d |  | constraint start no earlier than 2026-08-19 → start no earlier than 2027-01-24 |
| 759 | Block Work | 2026-08-19 → 2027-01-24 (+158d) | 2026-08-27 → 2027-01-31 (+157d) | 8d → 9d |  |  |
| 760 | Door Frame Fixing | 2026-08-27 → 2027-02-01 (+158d) | 2026-09-05 → 2027-02-09 (+157d) | 9d → 10.12d |  |  |
| 761 | Internal Plumbing Works | 2026-08-27 → 2027-02-01 (+158d) | 2026-09-04 → 2027-02-10 (+159d) | 8d → 11.25d |  |  |
| 762 | Waterproofing | 2026-09-04 → 2027-02-11 (+160d) | 2026-09-14 → 2027-02-22 (+161d) | 10d → 13.5d |  |  |
| 763 | Internal Plaster | 2026-08-03 → 2027-02-23 (+204d) | 2026-08-11 → 2027-03-03 (+204d) | 8d → 10.12d | 747, 744, 745, 746 → 747, 760, 761, 762 |  |
| 764 | IPS flooring work | 2026-09-22 → 2027-03-04 (+163d) | 2026-10-02 → 2027-03-12 (+161d) | 10d → 10.12d | 748, 760, 762, 779 → 748, 760, 762, 763 |  |
| 765 | Toilet dado work | 2026-09-22 → 2027-03-04 (+163d) | 2026-09-30 → 2027-03-11 (+162d) | 8d → 9d | 749, 762, 779 → 749, 762, 763 |  |
| 766 | Toilet flooring work | 2026-09-30 → 2027-03-12 (+163d) | 2026-10-08 → 2027-03-18 (+161d) | 8d → 7.88d |  |  |
| 767 | Living dinning flooring | 2026-10-08 → 2027-04-17 (+191d) | 2026-10-20 → 2027-05-01 (+193d) | 12d → 16.88d |  |  |
| 768 | Aluminium door-window fixing | 2026-10-20 → 2027-05-23 (+215d) | 2026-12-16 → 2027-06-03 (+169d) | 12d → 13.5d |  |  |
| 769 | Putty primer coat | 2026-10-20 → 2027-05-02 (+194d) | 2026-10-26 → 2027-05-07 (+193d) | 6d → 6.75d |  |  |
| 770 | Door shutter fixing | 2026-10-20 → 2027-05-02 (+194d) | 2026-10-28 → 2027-05-09 (+193d) | 8d → 9d |  |  |

| ID | Task | Start | Finish | Duration | Predecessors | Other |
| --- | --- | --- | --- | --- | --- | --- |
| 771 | Electrical wiring work | 2026-10-28 → 2027-05-10 (+194d) | 2026-12-20 → 2027-05-24 (+155d) | 8d → 16.88d |  |  |
| 772 | Painting 1st coat | 2026-12-20 → 2027-05-25 (+156d) | 2026-12-28 → 2027-06-08 (+162d) | 8d → 16.88d |  |  |
| 773 | False ceiling | 2026-12-28 → 2027-06-09 (+163d) | 2027-01-05 → 2027-06-18 (+164d) | 8d → 11.25d |  |  |
| 774 | **33rd Floor** | 2026-08-27 → 2027-02-05 (+162d) | 2027-01-17 → 2027-06-30 (+164d) | 98d → 164.25d |  | constraint start no earlier than 2026-08-27 → start no earlier than 2027-02-05 |
| 775 | Block Work | 2026-08-27 → 2027-02-05 (+162d) | 2026-09-04 → 2027-02-12 (+161d) | 8d → 9d |  |  |
| 776 | Door Frame Fixing | 2026-09-05 → 2027-02-13 (+161d) | 2026-09-14 → 2027-02-21 (+160d) | 9d → 10.12d |  |  |
| 777 | Internal Plumbing Works | 2026-09-04 → 2027-02-13 (+162d) | 2026-09-12 → 2027-02-22 (+163d) | 8d → 11.25d |  |  |
| 778 | Waterproofing | 2026-09-14 → 2027-02-23 (+162d) | 2026-09-24 → 2027-03-06 (+163d) | 10d → 13.5d |  |  |
| 779 | Internal Plaster | 2026-09-14 → 2027-03-07 (+174d) | 2026-09-22 → 2027-03-15 (+174d) | 8d → 10.12d | 763, 760, 761, 762 → 763, 776, 777, 778 |  |
| 780 | IPS flooring work | 2026-10-02 → 2027-03-16 (+165d) | 2026-10-12 → 2027-03-24 (+163d) | 10d → 10.12d | 764, 776, 778, 795 → 764, 776, 778, 779 |  |
| 781 | Toilet dado work | 2026-10-02 → 2027-03-16 (+165d) | 2026-10-10 → 2027-03-23 (+164d) | 8d → 9d | 765, 778, 795 → 765, 778, 779 |  |
| 782 | Toilet flooring work | 2026-10-10 → 2027-03-24 (+165d) | 2026-10-18 → 2027-03-30 (+163d) | 8d → 7.88d |  |  |
| 783 | Living dinning flooring | 2026-10-20 → 2027-05-02 (+194d) | 2026-12-16 → 2027-05-16 (+151d) | 12d → 16.88d |  |  |
| 784 | Aluminium door-window fixing | 2026-12-16 → 2027-06-04 (+170d) | 2026-12-28 → 2027-06-18 (+172d) | 12d → 16.88d |  |  |
| 785 | Putty primer coat | 2026-12-16 → 2027-05-17 (+152d) | 2026-12-22 → 2027-05-22 (+151d) | 6d → 6.75d |  |  |
| 786 | Door shutter fixing | 2026-12-16 → 2027-05-17 (+152d) | 2026-12-24 → 2027-05-24 (+151d) | 8d → 9d |  |  |
| 787 | Electrical wiring work | 2026-12-24 → 2027-05-25 (+152d) | 2027-01-01 → 2027-06-05 (+155d) | 8d → 13.5d |  |  |
| 788 | Painting 1st coat | 2027-01-01 → 2027-06-09 (+159d) | 2027-01-09 → 2027-06-20 (+162d) | 8d → 13.5d |  |  |
| 789 | False ceiling | 2027-01-09 → 2027-06-21 (+163d) | 2027-01-17 → 2027-06-30 (+164d) | 8d → 11.25d |  |  |
| 790 | **34th Floor** | 2026-09-04 → 2027-02-17 (+166d) | 2027-01-29 → 2027-07-12 (+164d) | 102d → 164.25d |  | constraint start no earlier than 2026-09-04 → start no earlier than 2027-02-17 |
| 791 | Block Work | 2026-09-04 → 2027-02-17 (+166d) | 2026-09-12 → 2027-02-24 (+165d) | 8d → 9d |  |  |
| 792 | Door Frame Fixing | 2026-09-14 → 2027-02-25 (+164d) | 2026-09-23 → 2027-03-05 (+163d) | 9d → 10.12d |  |  |
| 793 | Internal Plumbing Works | 2026-09-12 → 2027-02-25 (+166d) | 2026-09-20 → 2027-03-06 (+167d) | 8d → 11.25d |  |  |
| 794 | Waterproofing | 2026-09-24 → 2027-03-07 (+164d) | 2026-10-04 → 2027-03-18 (+165d) | 10d → 13.5d |  |  |
| 795 | Internal Plaster | 2026-09-24 → 2027-03-19 (+176d) | 2026-10-02 → 2027-03-27 (+176d) | 8d → 10.12d | 779, 776, 777, 778 → 779, 792, 793, 794 |  |
| 796 | IPS flooring work | 2026-10-12 → 2027-03-28 (+167d) | 2026-10-22 → 2027-04-05 (+165d) | 10d → 10.12d | 780, 792, 794, 811 → 780, 792, 794, 795 |  |
| 797 | Toilet dado work | 2026-10-12 → 2027-03-28 (+167d) | 2026-10-20 → 2027-04-04 (+166d) | 8d → 9d | 781, 794, 811 → 781, 794, 795 |  |
| 798 | Toilet flooring work | 2026-10-20 → 2027-04-05 (+167d) | 2026-10-28 → 2027-04-11 (+165d) | 8d → 7.88d |  |  |
| 799 | Living dinning flooring | 2026-12-16 → 2027-05-17 (+152d) | 2026-12-28 → 2027-05-31 (+154d) | 12d → 16.88d |  |  |
| 800 | Aluminium door-window fixing | 2026-12-28 → 2027-06-19 (+173d) | 2027-01-09 → 2027-07-03 (+175d) | 12d → 16.88d |  |  |
| 801 | Putty primer coat | 2026-12-28 → 2027-06-01 (+155d) | 2027-01-03 → 2027-06-06 (+154d) | 6d → 6.75d |  |  |
| 802 | Door shutter fixing | 2026-12-28 → 2027-06-01 (+155d) | 2027-01-05 → 2027-06-08 (+154d) | 8d → 9d |  |  |
| 803 | Electrical wiring work | 2027-01-05 → 2027-06-09 (+155d) | 2027-01-13 → 2027-06-20 (+158d) | 8d → 13.5d |  |  |
| 804 | Painting 1st coat | 2027-01-13 → 2027-06-21 (+159d) | 2027-01-21 → 2027-07-02 (+162d) | 8d → 13.5d |  |  |
| 805 | False ceiling | 2027-01-21 → 2027-07-03 (+163d) | 2027-01-29 → 2027-07-12 (+164d) | 8d → 11.25d |  |  |
| 806 | **35th Floor** | 2026-09-12 → 2027-03-01 (+170d) | 2027-02-10 → 2027-07-27 (+167d) | 106d → 167.62d |  | constraint start no earlier than 2026-09-12 → start no earlier than 2027-03-01 |
| 807 | Block Work | 2026-09-12 → 2027-03-01 (+170d) | 2026-09-20 → 2027-03-08 (+169d) | 8d → 9d |  |  |
| 808 | Door Frame Fixing | 2026-09-23 → 2027-03-09 (+167d) | 2026-10-02 → 2027-03-17 (+166d) | 9d → 10.12d |  |  |
| 809 | Internal Plumbing Works | 2026-09-20 → 2027-03-09 (+170d) | 2026-09-28 → 2027-03-18 (+171d) | 8d → 11.25d |  |  |
| 810 | Waterproofing | 2026-10-04 → 2027-03-19 (+166d) | 2026-10-14 → 2027-03-30 (+167d) | 10d → 13.5d |  |  |
| 811 | Internal Plaster | 2026-10-04 → 2027-03-31 (+178d) | 2026-10-12 → 2027-04-08 (+178d) | 8d → 10.12d | 795, 792, 793, 794 → 795, 808, 809, 810 |  |
| 812 | IPS flooring work | 2026-10-22 → 2027-04-09 (+169d) | 2026-12-16 → 2027-04-17 (+122d) | 10d → 10.12d | 796, 808, 810, 827 → 796, 808, 810, 811 |  |
| 813 | Toilet dado work | 2026-10-22 → 2027-04-09 (+169d) | 2026-10-30 → 2027-04-16 (+168d) | 8d → 9d | 797, 810, 827 → 797, 810, 811 |  |
| 814 | Toilet flooring work | 2026-10-30 → 2027-04-17 (+169d) | 2026-12-22 → 2027-04-23 (+122d) | 8d → 7.88d |  |  |
| 815 | Living dinning flooring | 2026-12-28 → 2027-06-01 (+155d) | 2027-01-09 → 2027-06-15 (+157d) | 12d → 16.88d | 799, 808, 814 → 799, 808 |  |
| 816 | Aluminium door-window fixing | 2027-01-09 → 2027-07-04 (+176d) | 2027-01-21 → 2027-07-18 (+178d) | 12d → 16.88d |  |  |
| 817 | Putty primer coat | 2027-01-09 → 2027-06-16 (+158d) | 2027-01-15 → 2027-06-21 (+157d) | 6d → 6.75d |  |  |
| 818 | Door shutter fixing | 2027-01-09 → 2027-06-16 (+158d) | 2027-01-17 → 2027-06-23 (+157d) | 8d → 9d |  |  |
| 819 | Electrical wiring work | 2027-01-17 → 2027-06-24 (+158d) | 2027-01-25 → 2027-07-05 (+161d) | 8d → 13.5d |  |  |
| 820 | Painting 1st coat | 2027-01-25 → 2027-07-06 (+162d) | 2027-02-02 → 2027-07-17 (+165d) | 8d → 13.5d |  |  |
| 821 | False ceiling | 2027-02-02 → 2027-07-18 (+166d) | 2027-02-10 → 2027-07-27 (+167d) | 8d → 11.25d |  |  |
| 822 | **Terrace Finishing** | 2026-07-01 → 2026-12-28 (+180d) | 2026-09-19 → 2027-03-18 (+180d) | 79.88d → 90d |  | constraint start no earlier than 2026-07-01 → start no earlier than 2026-12-28 |
| 823 | Terrace waterproofing | 2026-07-01 → 2026-12-28 (+180d) | 2026-08-10 → 2027-02-06 (+180d) | 39.94d → 45d | 221 → 216 |  |
| 824 | Terrace finishing | 2026-08-10 → 2027-02-06 (+180d) | 2026-09-19 → 2027-03-18 (+180d) | 39.94d → 45d |  |  |
| 825 | **Common Area Finishing** | 2025-07-25 → 2027-02-08 (+563d) | 2026-06-14 → 2028-02-03 (+599d) | 279.31d → 354.38d |  | constraint start no earlier than 2025-07-25 → start no earlier than 2027-02-08 |
| 826 | Block Work | 2025-07-25 → 2027-02-08 (+563d) | 2025-09-02 → 2027-04-09 (+584d) | 39.94d → 67.5d | 227FS+0.25d → 221 |  |
| 827 | Internal Plaster | 2026-10-14 → 2027-04-09 (+177d) | 2026-10-22 → 2027-08-07 (+289d) | 8d → 135d | 811, 808, 809, 810 → 832SS+45d |  |
| 828 | Staircase railing fixing | 2026-01-15 → 2027-07-23 (+554d) | 2026-06-14 → 2028-02-03 (+599d) | 149.94d → 168.75d | 830SS+26.75d, 829SS+26.75d → 830SS+33.75d, 829SS+33.75d |  |
| 829 | Main staircase flooring | 2025-12-19 → 2027-06-23 (+551d) | 2026-05-18 → 2028-01-04 (+596d) | 149.94d → 168.75d | 830SS+13.38d → 830SS+16.88d |  |
| 830 | Fire staircase flooring | 2025-10-22 → 2027-06-08 (+594d) | 2026-05-05 → 2027-12-20 (+594d) | 149.94d → 168.75d | 1184SS+13.38d, 834SS+26.75d → 827SS+16.88d, 834SS+33.75d |  |
| 831 | Fire door work | 2026-01-15 → 2027-07-23 (+554d) | 2026-03-16 → 2027-09-21 (+554d) | 59.94d → 67.5d | 829SS+26.75d, 830SS+26.75d → 829SS+33.75d, 830SS+33.75d |  |
| 832 | Electrical wiring work | 2025-08-11 → 2027-02-28 (+566d) | 2026-01-23 → 2027-06-28 (+521d) | 119.94d → 135d | 826SS+17.88d → 826SS+22.5d |  |
| 833 | Lobby flooring | 2025-08-15 → 2027-03-04 (+566d) | 2026-02-26 → 2027-08-01 (+521d) | 150d → 168.75d | 832SS+3.38d → 832SS+4.12d |  |
| 834 | Ceiling & wall putty-primer | 2025-09-25 → 2027-05-09 (+591d) | 2026-02-27 → 2027-08-27 (+546d) | 109.94d → 123.75d | 1184SS+26.75d → 827SS+33.75d |  |
| 835 | Ceiling & wall painting | 2025-10-13 → 2027-05-29 (+593d) | 2026-03-07 → 2027-09-06 (+548d) | 99.94d → 112.5d | 834SS+17.88d → 834SS+22.5d |  |
| 836 | Light fixture supply & installation | 2026-01-19 → 2027-07-28 (+555d) | 2026-03-05 → 2027-09-11 (+555d) | 44.94d → 50.62d | 835SS+53.38d → 835SS+67.5d |  |
| 837 | **Balcony Glass Railing** | 2027-05-07 → 2027-09-23 (+139d) | 2027-07-14 → 2028-01-15 (+185d) | 67.81d → 78.75d |  | constraint start no earlier than 2027-05-07 → start no earlier than 2027-09-23 |
| 838 | 1st Floor | 2027-05-07 → 2027-09-23 (+139d) | 2027-05-09 → 2027-09-24 (+138d) | 1.94d → 2.25d |  |  |
| 839 | 2nd Floor | 2027-05-09 → 2027-09-25 (+139d) | 2027-05-11 → 2027-09-26 (+138d) | 1.94d → 2.25d |  |  |
| 840 | 3rd Floor | 2027-05-11 → 2027-09-27 (+139d) | 2027-05-13 → 2027-09-28 (+138d) | 1.94d → 2.25d |  |  |

| ID | Task | Start | Finish | Duration | Predecessors | Other |
| --- | --- | --- | --- | --- | --- | --- |
| 841 | 4th Floor | 2027-05-13 → 2027-09-29 (+139d) | 2027-05-15 → 2027-09-30 (+138d) | 1.94d → 2.25d |  |  |
| 842 | 5th Floor | 2027-05-15 → 2027-10-01 (+139d) | 2027-05-17 → 2027-10-02 (+138d) | 1.94d → 2.25d |  |  |
| 843 | 6th Floor | 2027-05-17 → 2027-10-03 (+139d) | 2027-05-19 → 2027-10-04 (+138d) | 1.94d → 2.25d |  |  |
| 844 | 7th Floor | 2027-05-19 → 2027-10-05 (+139d) | 2027-05-21 → 2027-10-06 (+138d) | 1.94d → 2.25d |  |  |
| 845 | 8th Floor | 2027-05-21 → 2027-10-07 (+139d) | 2027-05-23 → 2027-10-08 (+138d) | 1.94d → 2.25d |  |  |
| 846 | 9th Floor | 2027-05-23 → 2027-10-09 (+139d) | 2027-05-25 → 2027-10-10 (+138d) | 1.94d → 2.25d |  |  |
| 847 | 10th Floor | 2027-05-25 → 2027-10-11 (+139d) | 2027-05-27 → 2027-10-12 (+138d) | 1.94d → 2.25d |  |  |
| 848 | 11th Floor | 2027-05-27 → 2027-10-13 (+139d) | 2027-05-29 → 2027-10-14 (+138d) | 1.94d → 2.25d |  |  |
| 849 | 12th Floor | 2027-05-29 → 2027-10-15 (+139d) | 2027-05-31 → 2027-10-16 (+138d) | 1.94d → 2.25d |  |  |
| 850 | 13th Floor | 2027-05-31 → 2027-10-17 (+139d) | 2027-06-01 → 2027-10-18 (+139d) | 1.94d → 2.25d |  |  |
| 851 | 14th Floor | 2027-06-02 → 2027-10-19 (+139d) | 2027-06-03 → 2027-10-20 (+139d) | 1.94d → 2.25d |  |  |
| 852 | 15th Floor | 2027-06-03 → 2027-10-21 (+140d) | 2027-06-05 → 2027-10-22 (+139d) | 1.94d → 2.25d |  |  |
| 853 | 16th Floor | 2027-06-05 → 2027-10-23 (+140d) | 2027-06-07 → 2027-10-24 (+139d) | 1.94d → 2.25d |  |  |
| 854 | 17th Floor | 2027-06-07 → 2027-10-25 (+140d) | 2027-06-09 → 2027-10-26 (+139d) | 1.94d → 2.25d |  |  |
| 855 | 18th Floor | 2027-06-09 → 2027-10-27 (+140d) | 2027-06-11 → 2027-10-28 (+139d) | 1.94d → 2.25d |  |  |
| 856 | 19th Floor | 2027-06-11 → 2027-10-29 (+140d) | 2027-06-13 → 2027-10-30 (+139d) | 1.94d → 2.25d |  |  |
| 857 | 20th Floor | 2027-06-13 → 2027-10-31 (+140d) | 2027-06-15 → 2027-12-16 (+184d) | 1.94d → 2.25d |  |  |
| 858 | 21st Floor | 2027-06-15 → 2027-12-17 (+185d) | 2027-06-17 → 2027-12-18 (+184d) | 1.94d → 2.25d |  |  |
| 859 | 22nd Floor | 2027-06-17 → 2027-12-19 (+185d) | 2027-06-19 → 2027-12-20 (+184d) | 1.94d → 2.25d |  |  |
| 860 | 23rd Floor | 2027-06-19 → 2027-12-21 (+185d) | 2027-06-21 → 2027-12-22 (+184d) | 1.94d → 2.25d |  |  |
| 861 | 24th Floor | 2027-06-21 → 2027-12-23 (+185d) | 2027-06-23 → 2027-12-24 (+184d) | 1.94d → 2.25d |  |  |
| 862 | 25th Floor | 2027-06-23 → 2027-12-25 (+185d) | 2027-06-25 → 2027-12-26 (+184d) | 1.94d → 2.25d |  |  |
| 863 | 26th Floor | 2027-06-25 → 2027-12-27 (+185d) | 2027-06-27 → 2027-12-28 (+184d) | 1.94d → 2.25d |  |  |
| 864 | 27th Floor | 2027-06-27 → 2027-12-29 (+185d) | 2027-06-29 → 2027-12-30 (+184d) | 1.94d → 2.25d |  |  |
| 865 | 28th Floor | 2027-06-29 → 2027-12-31 (+185d) | 2027-07-01 → 2028-01-01 (+184d) | 1.94d → 2.25d |  |  |
| 866 | 29th Floor | 2027-07-01 → 2028-01-02 (+185d) | 2027-07-02 → 2028-01-03 (+185d) | 1.94d → 2.25d |  |  |
| 867 | 30th Floor | 2027-07-03 → 2028-01-04 (+185d) | 2027-07-04 → 2028-01-05 (+185d) | 1.94d → 2.25d |  |  |
| 868 | 31st Floor | 2027-07-04 → 2028-01-06 (+186d) | 2027-07-06 → 2028-01-07 (+185d) | 1.94d → 2.25d |  |  |
| 869 | 32nd Floor | 2027-07-06 → 2028-01-08 (+186d) | 2027-07-08 → 2028-01-09 (+185d) | 1.94d → 2.25d |  |  |
| 870 | 33rd Floor | 2027-07-08 → 2028-01-10 (+186d) | 2027-07-10 → 2028-01-11 (+185d) | 1.94d → 2.25d |  |  |
| 871 | 34th Floor | 2027-07-10 → 2028-01-12 (+186d) | 2027-07-12 → 2028-01-13 (+185d) | 1.94d → 2.25d |  |  |
| 872 | 35th Floor | 2027-07-12 → 2028-01-14 (+186d) | 2027-07-14 → 2028-01-15 (+185d) | 1.94d → 2.25d |  |  |
| 873 | **MEP work** | 2025-10-22 → 2027-02-06 (+472d) | 2027-10-05 → 2028-07-04 (+273d) | 623.12d → 527.62d |  | constraint start no earlier than 2025-10-22 → start no earlier than 2027-02-06 |
| 874 | **Electrical work** | 2026-08-12 → 2027-02-08 (+180d) | 2027-06-21 → 2028-02-23 (+247d) | 268.19d → 376.88d |  | constraint start no earlier than 2026-08-12 → start no earlier than 2027-02-08 |
| 875 | Cable Tray | 2026-08-12 → 2027-02-08 (+180d) | 2026-12-24 → 2027-06-08 (+166d) | 89.94d → 135d | 934 → 221 |  |
| 876 | Cable, main & sub main | 2026-09-21 → 2027-03-25 (+185d) | 2027-01-23 → 2027-06-13 (+141d) | 79.94d → 90d | 875SS+40d → 875SS+50.62d |  |
| 877 | LT panel & DB | 2026-12-25 → 2027-06-08 (+165d) | 2027-04-23 → 2027-10-06 (+166d) | 119.94d → 135d |  |  |
| 878 | Rising main | 2027-02-16 → 2027-08-07 (+172d) | 2027-05-17 → 2028-01-19 (+247d) | 89.94d → 135d | 875FS+53.38d → 875FS+67.5d |  |
| 879 | EARTHING Works | 2027-01-07 → 2027-06-23 (+167d) | 2027-03-08 → 2027-08-22 (+167d) | 59.94d → 67.5d | 875FS+13.38d → 875FS+16.88d |  |
| 880 | Advance lightening protection | 2026-09-19 → 2027-03-18 (+180d) | 2027-01-02 → 2027-05-17 (+135d) | 59.94d → 67.5d |  |  |
| 881 | Inverter | 2027-05-17 → 2028-01-19 (+247d) | 2027-06-21 → 2028-02-23 (+247d) | 34.94d → 39.38d |  |  |
| 882 | Energy meter | 2027-01-24 → 2027-06-13 (+140d) | 2027-03-24 → 2027-08-12 (+141d) | 59.94d → 67.5d |  |  |
| 884 | FTTH | 2027-02-27 → 2027-08-12 (+166d) | 2027-04-28 → 2027-10-11 (+166d) | 59.94d → 67.5d | 879FS-9d → 879FS-11.25d |  |
| 885 | Security System - FA & PA | 2027-04-23 → 2027-10-06 (+166d) | 2027-06-17 → 2028-01-14 (+211d) | 54.94d → 61.88d |  |  |
| 886 | Solar water heater | 2026-09-19 → 2027-03-18 (+180d) | 2027-01-02 → 2027-05-17 (+135d) | 59.94d → 67.5d |  |  |
| 887 | **Plumbing wrok** | 2026-01-01 → 2027-02-06 (+401d) | 2027-04-29 → 2027-10-26 (+180d) | 437.69d → 294.75d |  | constraint start no earlier than 2026-01-01 → start no earlier than 2027-02-06 |
| 888 | Terrace looping | 2026-08-10 → 2027-02-06 (+180d) | 2026-09-24 → 2027-03-23 (+180d) | 44.94d → 50.62d |  |  |
| 889 | Shaft Plumbing | 2026-09-24 → 2027-03-23 (+180d) | 2027-03-08 → 2027-07-21 (+135d) | 119.94d → 135d |  |  |
| 890 | CP sanitary fixture supply | 2027-02-13 → 2027-06-23 (+130d) | 2027-04-29 → 2027-09-05 (+129d) | 75d → 84.38d | 827, 814FS+53.38d → 811, 814FS+67.5d |  |
| 891 | Cold & flushing water supply | 2026-01-01 → 2027-07-08 (+553d) | 2026-04-01 → 2027-10-06 (+553d) | 89.94d → 101.25d | 1184SS+80d → 827SS+101.25d |  |
| 892 | Misc work | 2026-03-23 → 2027-09-26 (+552d) | 2026-04-22 → 2027-10-26 (+552d) | 29.94d → 33.75d | 891FS-9d → 891FS-11.25d |  |
| 893 | **Fire fighting work** | 2025-10-22 → 2027-02-06 (+472d) | 2027-01-22 → 2028-02-18 (+392d) | 366.94d → 373.5d |  | constraint start no earlier than 2025-10-22 → start no earlier than 2027-02-06 |
| 894 | Fire hydrant work | 2025-10-22 → 2027-06-08 (+594d) | 2026-03-06 → 2027-09-06 (+549d) | 89.94d → 101.25d | 1184SS+53.38d → 827SS+67.5d |  |
| 895 | Sprinkler & piping work | 2026-04-01 → 2027-10-06 (+553d) | 2026-06-30 → 2028-02-18 (+598d) | 89.94d → 101.25d | 894FS+26.75d → 894FS+33.75d |  |
| 896 | Shaft Downtake works | 2026-08-10 → 2027-02-06 (+180d) | 2026-12-23 → 2027-05-07 (+135d) | 89.94d → 101.25d |  |  |
| 897 | Connection to pump room | 2026-12-23 → 2027-05-07 (+135d) | 2027-01-22 → 2027-06-06 (+135d) | 29.94d → 33.75d |  |  |
| 898 | **Lift work** | 2026-08-12 → 2027-02-08 (+180d) | 2027-03-14 → 2027-07-28 (+136d) | 169.81d → 191.25d |  | constraint start no earlier than 2026-08-12 → start no earlier than 2027-02-08 |
| 899 | Lift Shaft Handover | 2026-08-12 → 2027-02-08 (+180d) | 2026-09-20 → 2027-03-20 (+181d) | 39.94d → 45d | 934 → 221 |  |
| 900 | Lift installation work | 2026-09-21 → 2027-03-20 (+180d) | 2026-12-19 → 2027-05-04 (+136d) | 44.94d → 50.62d |  |  |
| 901 | Lift testing and commissioning | 2026-12-19 → 2027-05-04 (+136d) | 2027-03-14 → 2027-07-28 (+136d) | 84.94d → 95.62d |  |  |
| 902 | **AC work** | 2027-08-03 → 2028-03-26 (+236d) | 2027-10-05 → 2028-07-04 (+273d) | 62.94d → 112.5d |  | constraint start no earlier than 2027-08-03 → start no earlier than 2028-03-26 |
| 903 | Split AC | 2027-08-03 → 2028-03-26 (+236d) | 2027-10-05 → 2028-07-04 (+273d) | 62.94d → 112.5d | 919FS-26.75d → 919FS-33.75d |  |
| 904 | **Tower Completion** | 2026-09-24 → 2027-03-27 (+184d) | 2027-08-01 → 2028-02-04 (+187d) | 265.88d → 303.75d |  | constraint start no earlier than 2026-09-24 → start no earlier than 2027-03-27 |
| 905 | SURFACE PREPARATION | 2026-09-24 → 2027-03-27 (+184d) | 2027-01-27 → 2027-06-14 (+138d) | 79.94d → 90d | 259FS+1.88d → 259FS+2.25d |  |
| 906 | External Painting | 2027-01-27 → 2027-06-15 (+139d) | 2027-05-07 → 2027-09-22 (+138d) | 99.94d → 112.5d |  |  |
| 907 | Final coat of painting | 2027-05-07 → 2027-09-23 (+139d) | 2027-08-01 → 2028-02-04 (+187d) | 86d → 101.25d |  |  |
| 908 | Misc. work | 2027-05-07 → 2027-09-23 (+139d) | 2027-07-06 → 2028-01-05 (+183d) | 59.94d → 67.5d |  |  |
| 909 | **Basement lobby** | 2026-02-26 → 2027-08-01 (+521d) | 2026-04-27 → 2028-01-13 (+626d) | 60d → 135d |  | constraint start no earlier than 2026-02-26 → start no earlier than 2027-08-01 |
| 910 | Basement lobby | 2026-02-26 → 2027-08-01 (+521d) | 2026-04-27 → 2028-01-13 (+626d) | 60d → 135d |  |  |
| 911 | **Post OC activities** | 2027-01-25 → 2027-07-06 (+162d) | 2027-12-24 → 2028-09-22 (+273d) | 333.19d → 449.75d |  | constraint start no earlier than 2027-01-25 → start no earlier than 2027-07-06 |

| ID | Task | Start | Finish | Duration | Complete | Predecessors | Other |
| --- | --- | --- | --- | --- | --- | --- | --- |
| 912 | Wardrobe installation | 2027-08-03 → 2028-03-26 (+236d) | 2027-12-24 → 2028-09-22 (+273d) | 142.94d → 202.5d |  | 919FS-26.75d → 919FS-33.75d |  |
| 913 | CP & SANITARYWARE | 2027-08-03 → 2028-03-26 (+236d) | 2027-10-25 → 2028-07-24 (+273d) | 82.94d → 135d |  | 919FS-26.75d, 890 → 919FS-33.75d, 890 |  |
| 914 | Wooden Flooring | 2027-08-03 → 2028-03-26 (+236d) | 2027-12-24 → 2028-09-22 (+273d) | 142.94d → 202.5d |  | 919FS-26.75d → 919FS-33.75d |  |
| 915 | Electrical Fixtures And Fittings | 2027-01-25 → 2027-07-06 (+162d) | 2027-04-14 → 2027-12-17 (+247d) | 79.94d → 135d |  |  |  |
| 916 | Modular Kitchen | 2027-08-03 → 2028-03-26 (+236d) | 2027-12-24 → 2028-09-22 (+273d) | 142.94d → 202.5d |  |  |  |
| 917 | Final Coat Paint | 2027-08-16 → 2028-04-10 (+238d) | 2027-10-23 → 2028-07-09 (+260d) | 67.94d → 101.25d |  | 919FS-13.38d, 836 → 919FS-16.88d, 836 |  |
| 918 | OC Application/Readiness | 2027-07-06 → 2028-02-23 (+232d) | 2027-07-07 → 2028-02-24 (+232d) | 0.94d → 1.12d |  | 934, 828FS+7.12d, 901, 821, 1800, 885, 886, 881, 880, 872FS-44.5d, 33, 831, 889, 892, 895, 897, 908 → 221, 828FS+9d, 901, 33, 821, 831, 872, 880, 881, 883, 885, 886, 889, 892, 895, 897, 908 |  |
| 919 | OC Receipt | 2027-08-30 → 2028-04-24 (+238d) | 2027-08-30 → 2028-04-25 (+239d) | 0d → 1.12d |  | 918FS+53.38d, 907, 910 → 918FS+67.5d, 907, 910 |  |
| 920 | Offer To Possession | 2027-12-24 → 2028-09-22 (+273d) | 2028-01-23 → 2028-10-22 (+273d) | 29.94d → 33.75d |  |  |  |
| 921 | **Tower 4** | 2023-09-30 → 2024-05-14 (+227d) | 2027-12-30 → 2028-09-15 (+260d) | 1386.94d → 1632.38d | 3% → 2% |  | constraint start no earlier than 2023-09-30 → start no earlier than 2024-05-14 |
| 922 | **Substructure** | 2023-09-30 → 2024-05-14 (+227d) | 2025-09-12 → 2026-02-05 (+146d) | 638.06d → 661.5d | 58% → 38% |  | constraint start no earlier than 2023-09-30 → start no earlier than 2024-05-14 |
| 923 | **Soil Bed Preparation** | 2023-09-30 → 2024-05-14 (+227d) | 2025-05-30 → 2025-08-19 (+81d) | 533.44d → 520.88d |  |  | constraint start no earlier than 2023-09-30 → start no earlier than 2024-05-14 |
| 924 | Test Piling | 2023-09-30 → 2024-05-14 (+227d) | 2023-10-24 → 2024-08-16 (+297d) | 24.94d → 106.69d |  | none → 7SS | constraint start no earlier than 2023-09-30 → start no earlier than 2024-05-14 |
| 925 | Excavation | 2024-01-10 → 2024-06-26 (+168d) | 2024-02-08 → 2024-07-25 (+168d) | 29.94d → 33.56d |  | 7SS+36.74d → 924SS+43d | constraint start no earlier than 2024-01-10 → start no earlier than 2024-06-26 |
| 926 | Main Piling Work | 2024-04-12 → 2024-09-01 (+142d) | 2024-12-23 → 2025-04-05 (+103d) | 168.94d → 168.75d | 100% → 96% | 7FS-7.45d → 924FS+15d | constraint start no earlier than 2024-04-12 → start no earlier than 2024-09-01 |
| 927 | Anti-termite | 2025-04-01 → 2025-04-02 (+1d) | 2025-04-05 → 2025-04-07 (+2d) | 5d → 5.62d |  | 926FS+13.38d → 926FF+2d |  |
| 928 | PCC | 2024-10-25 → 2025-03-23 (+149d) | 2024-10-28 → 2025-04-07 (+161d) | 3.01d → 9d | 100% → 12% | 925FS-14.7d, 927SS+2.98d → 925FS+0.25d | constraint start no earlier than 2024-10-25 → start no earlier than 2025-03-23 |
| 929 | Backfilling | 2025-04-01 → 2025-06-21 (+81d) | 2025-05-30 → 2025-08-19 (+81d) | 59.94d → 67.5d |  | 946FS-0.94d → 942 |  |
| 930 | **RCC Structure** | 2024-12-21 → 2025-04-06 (+106d) | 2025-04-08 → 2025-07-15 (+98d) | 108.5d → 113.62d | 92% → 0% |  | constraint start no earlier than 2024-12-21 → start no earlier than 2025-04-06 |
| 931 | **Raft Foundation** | 2024-12-21 → 2025-04-06 (+106d) | 2025-01-26 → 2025-05-01 (+95d) | 36.5d → 29.25d | 100% → 0% |  | constraint start no earlier than 2024-12-21 → start no earlier than 2025-04-06 |
| 932 | Reinforcement | 2024-12-21 → 2025-04-06 (+106d) | 2025-01-22 → 2025-04-22 (+90d) | 23d → 19.12d | 100% → 0% | 928FS-31.15d → 928FS-2.25d | constraint start no earlier than 2024-12-21 → none |
| 933 | Formwork | 2024-12-31 → 2025-04-18 (+108d) | 2025-01-23 → 2025-04-29 (+96d) | 24d → 13.5d | 100% → 0% | 932FF+2d → 932FF+7.88d | constraint start no earlier than 2024-12-31 → none |
| 934 | Concreting | 2026-08-09 → 2025-04-30 (-466d) | 2026-08-12 → 2025-05-01 (-468d) | 2.94d → 2.25d |  | 220 → 933 |  |
| 935 | **Basement 1 Slab** | 2025-01-25 → 2025-05-02 (+97d) | 2025-02-19 → 2025-05-26 (+96d) | 26d → 28.12d | 100% → 0% |  | constraint start no earlier than 2025-01-25 → start no earlier than 2025-05-02 |
| 936 | Reinforcement | 2025-01-25 → 2025-05-02 (+97d) | 2025-02-15 → 2025-05-21 (+95d) | 22d → 22.5d | 100% → 0% | 938 → 934 | constraint start no earlier than 2025-01-25 → none |
| 937 | Formwork | 2025-02-20 → 2025-05-03 (+72d) | 2025-03-09 → 2025-05-22 (+74d) | 18d → 22.5d | 100% → 0% | 940SS+3d → 936SS+1.12d | constraint start no earlier than 2025-02-20 → none |
| 938 | Concreting | 2025-01-23 → 2025-05-23 (+120d) | 2025-01-26 → 2025-05-26 (+120d) | 4d → 4.5d | 100% → 0% | 933FS-1d → 937 | constraint start no earlier than 2025-01-23 → none |
| 939 | **Basement 2 Slab/GF** | 2025-02-17 → 2025-05-27 (+99d) | 2025-03-10 → 2025-06-20 (+102d) | 21.94d → 28.12d | 100% → 0% |  | constraint start no earlier than 2025-02-17 → start no earlier than 2025-05-27 |
| 940 | Reinforcement | 2025-02-17 → 2025-05-27 (+99d) | 2025-03-09 → 2025-06-15 (+98d) | 19d → 22.5d | 100% → 0% | 942FS-1d → 938 | constraint start no earlier than 2025-02-17 → none |
| 941 | Formwork | 2025-01-31 → 2025-05-28 (+117d) | 2025-02-18 → 2025-06-16 (+118d) | 19d → 22.5d | 100% → 0% | 936SS+3d → 940SS+1.12d | constraint start no earlier than 2025-01-31 → none |
| 942 | Concreting | 2025-02-16 → 2025-06-17 (+121d) | 2025-02-19 → 2025-06-20 (+121d) | 4d → 4.5d | 100% → 0% | 941FS+6.4d → 941 | constraint start no earlier than 2025-02-16 → none |
| 943 | **Podium /Ground Floor Slab** | 2025-02-20 → 2025-06-21 (+121d) | 2025-03-29 → 2025-07-15 (+108d) | 38d → 28.12d | 100% → 0% |  | constraint start no earlier than 2025-02-20 → start no earlier than 2025-06-21 |
| 944 | Reinforcement | 2025-03-11 → 2025-06-21 (+102d) | 2025-04-05 → 2025-07-10 (+96d) | 15d → 22.5d | 66% → 0% | 946FS+0.06d → 942 | constraint start no earlier than 2025-03-11 → none |
| 945 | Formwork | 2025-03-17 → 2025-06-22 (+97d) | 2025-04-07 → 2025-07-11 (+95d) | 15d → 22.5d | 53% → 0% | 944SS+1d → 944SS+1.12d | constraint start no earlier than 2025-03-17 → none |
| 946 | Concreting | 2025-03-09 → 2025-07-12 (+125d) | 2025-03-10 → 2025-07-15 (+127d) | 1.94d → 4.5d | 100% → 0% | 937FS-1d → 945 | constraint start no earlier than 2025-03-09 → none |
| 947 | **Substructure Finishing** | 2025-05-05 → 2025-08-15 (+102d) | 2025-09-12 → 2026-02-05 (+146d) | 129.81d → 146.25d |  |  | constraint start no earlier than 2025-05-05 → start no earlier than 2025-08-15 |
| 948 | Masonary work | 2025-05-05 → 2025-08-15 (+102d) | 2025-06-19 → 2025-09-28 (+101d) | 44.94d → 50.62d |  | 958FS+26.75d → 946FS+33.75d |  |
| 949 | Plaster | 2025-06-19 → 2025-09-29 (+102d) | 2025-07-29 → 2025-12-22 (+146d) | 39.94d → 45d |  |  |  |
| 950 | Structural steel | 2025-06-01 → 2025-09-14 (+105d) | 2025-07-31 → 2025-12-27 (+149d) | 59.94d → 67.5d |  | 958FS+53.38d → 946FS+67.5d |  |
| 951 | White Wash | 2025-07-29 → 2025-12-23 (+147d) | 2025-09-12 → 2026-02-05 (+146d) | 44.94d → 50.62d |  |  |  |
| 952 | **Superstructure** | 2025-04-11 → 2025-07-16 (+96d) | 2027-07-18 → 2027-10-29 (+103d) | 737.44d → 839.25d |  |  | constraint start no earlier than 2025-04-11 → start no earlier than 2025-07-16 |
| 953 | **RCC structure** | 2025-04-11 → 2025-07-16 (+96d) | 2026-08-15 → 2026-12-28 (+135d) | 445.88d → 496.12d |  |  | constraint start no earlier than 2025-04-11 → start no earlier than 2025-07-16 |
| 954 | **1st floor slab** | 2025-04-11 → 2025-07-16 (+96d) | 2025-05-05 → 2025-08-09 (+96d) | 24d → 28.12d |  |  | constraint start no earlier than 2025-04-11 → start no earlier than 2025-07-16 |
| 955 | Reinforcement | 2025-04-11 → 2025-07-16 (+96d) | 2025-05-01 → 2025-08-06 (+97d) | 20d → 24.75d |  | 958FS+2.75d → 946 |  |
| 956 | Wall conduiting | 2025-04-14 → 2025-07-19 (+96d) | 2025-04-18 → 2025-07-21 (+94d) | 4d → 3.38d |  | 955SS+2.75d → 955SS+3.38d |  |
| 957 | Formwork | 2025-04-14 → 2025-07-19 (+96d) | 2025-05-04 → 2025-08-08 (+96d) | 20d → 23.62d |  | 955SS+3d → 955SS+3.38d |  |
| 958 | Concreting | 2025-04-08 → 2025-08-09 (+123d) | 2025-04-08 → 2025-08-09 (+123d) | 1d → 1.12d |  | 945 → 957 |  |
| 959 | **2nd floor slab** | 2025-05-06 → 2025-08-10 (+96d) | 2025-05-27 → 2025-08-30 (+95d) | 21d → 23.62d |  |  | constraint start no earlier than 2025-05-06 → start no earlier than 2025-08-10 |
| 960 | Reinforcement | 2025-05-06 → 2025-08-10 (+96d) | 2025-05-26 → 2025-08-27 (+93d) | 20d → 20.25d |  | 963FS+1d → 958 |  |
| 961 | Wall conduiting | 2025-05-09 → 2025-08-12 (+95d) | 2025-05-13 → 2025-08-14 (+93d) | 4d → 3.38d |  | 956, 960SS+2.75d → 956FS+0.25d, 960SS+2.25d |  |
| 962 | Formwork | 2025-05-09 → 2025-08-13 (+96d) | 2025-05-26 → 2025-08-29 (+95d) | 17d → 19.12d |  | 960SS+3d → 960SS+3.38d |  |
| 963 | Concreting | 2025-05-04 → 2025-08-30 (+118d) | 2025-05-05 → 2025-08-30 (+117d) | 1d → 1.12d |  | 957 → 962 |  |
| 964 | **3rd floor slab** | 2025-05-28 → 2025-08-31 (+95d) | 2025-06-12 → 2025-09-14 (+94d) | 15d → 16.88d |  |  | constraint start no earlier than 2025-05-28 → start no earlier than 2025-08-31 |
| 965 | Reinforcement | 2025-05-28 → 2025-08-31 (+95d) | 2025-06-08 → 2025-09-10 (+94d) | 11d → 12.38d |  | 968FS+1d → 963 |  |
| 966 | Wall conduiting | 2025-05-31 → 2025-09-03 (+95d) | 2025-06-03 → 2025-09-05 (+94d) | 3d → 3.38d |  | 961, 965SS+2.75d → 961, 965SS+3.38d |  |
| 967 | Formwork | 2025-05-31 → 2025-09-04 (+96d) | 2025-06-11 → 2025-09-13 (+94d) | 11d → 11.25d |  | 965SS+3d → 965SS+4.5d |  |
| 968 | Concreting | 2025-05-26 → 2025-09-14 (+111d) | 2025-05-27 → 2025-09-14 (+110d) | 1d → 1.12d |  | 962 → 967 |  |
| 969 | **4th floor slab** | 2025-06-13 → 2025-09-15 (+94d) | 2025-06-22 → 2025-09-23 (+93d) | 9d → 10.12d |  |  | constraint start no earlier than 2025-06-13 → start no earlier than 2025-09-15 |
| 970 | Reinforcement | 2025-06-13 → 2025-09-15 (+94d) | 2025-06-21 → 2025-09-21 (+92d) | 8d → 7.88d |  | 973FS+1d → 968 |  |
| 971 | Wall conduiting | 2025-06-14 → 2025-09-16 (+94d) | 2025-06-17 → 2025-09-17 (+92d) | 3d → 2.25d |  | 966, 970SS+1d → 966, 970SS+1.12d |  |
| 972 | Formwork | 2025-06-14 → 2025-09-17 (+95d) | 2025-06-21 → 2025-09-22 (+93d) | 7d → 6.75d |  | 970SS+1d → 970SS+2.25d |  |
| 973 | Concreting | 2025-06-11 → 2025-09-23 (+104d) | 2025-06-12 → 2025-09-23 (+103d) | 1d → 1.12d |  | 967 → 972 |  |
| 974 | **5th floor slab** | 2025-06-23 → 2025-09-24 (+93d) | 2025-07-02 → 2025-10-02 (+92d) | 9d → 10.12d |  |  | constraint start no earlier than 2025-06-23 → start no earlier than 2025-09-24 |
| 975 | Reinforcement | 2025-06-23 → 2025-09-24 (+93d) | 2025-07-01 → 2025-09-30 (+91d) | 8d → 7.88d |  | 978FS+1d → 973 |  |
| 976 | Wall conduiting | 2025-06-24 → 2025-09-25 (+93d) | 2025-06-27 → 2025-09-26 (+91d) | 3d → 2.25d |  | 971, 975SS+1d → 971, 975SS+1.12d |  |
| 977 | Formwork | 2025-06-24 → 2025-09-26 (+94d) | 2025-07-01 → 2025-10-01 (+92d) | 7d → 6.75d |  | 975SS+1d → 975SS+2.25d |  |
| 978 | Concreting | 2025-06-21 → 2025-10-02 (+103d) | 2025-06-22 → 2025-10-02 (+102d) | 1d → 1.12d |  | 972 → 977 |  |
| 979 | **6th floor slab** | 2025-07-03 → 2025-10-03 (+92d) | 2025-07-12 → 2025-10-11 (+91d) | 9d → 10.12d |  |  | constraint start no earlier than 2025-07-03 → start no earlier than 2025-10-03 |
| 980 | Reinforcement | 2025-07-03 → 2025-10-03 (+92d) | 2025-07-11 → 2025-10-09 (+90d) | 8d → 7.88d |  | 983FS+1d → 978 |  |
| 981 | Wall conduiting | 2025-07-04 → 2025-10-04 (+92d) | 2025-07-07 → 2025-10-05 (+90d) | 3d → 2.25d |  | 976, 980SS+1d → 976, 980SS+1.12d |  |

| ID | Task | Start | Finish | Duration | Predecessors | Other |
| --- | --- | --- | --- | --- | --- | --- |
| 982 | Formwork | 2025-07-04 → 2025-10-05 (+93d) | 2025-07-11 → 2025-10-10 (+91d) | 7d → 6.75d | 980SS+1d → 980SS+2.25d |  |
| 983 | Concreting | 2025-07-01 → 2025-10-11 (+102d) | 2025-07-02 → 2025-10-11 (+101d) | 1d → 1.12d | 977 → 982 |  |
| 984 | **7th floor slab** | 2025-07-13 → 2025-10-12 (+91d) | 2025-07-22 → 2025-10-20 (+90d) | 9d → 10.12d |  | constraint start no earlier than 2025-07-13 → start no earlier than 2025-10-12 |
| 985 | Reinforcement | 2025-07-13 → 2025-10-12 (+91d) | 2025-07-21 → 2025-10-18 (+89d) | 8d → 7.88d | 988FS+1d → 983 |  |
| 986 | Wall conduiting | 2025-07-14 → 2025-10-13 (+91d) | 2025-07-17 → 2025-10-14 (+89d) | 3d → 2.25d | 981, 985SS+1d → 981, 985SS+1.12d |  |
| 987 | Formwork | 2025-07-14 → 2025-10-14 (+92d) | 2025-07-21 → 2025-10-19 (+90d) | 7d → 6.75d | 985SS+1d → 985SS+2.25d |  |
| 988 | Concreting | 2025-07-11 → 2025-10-20 (+101d) | 2025-07-12 → 2025-10-20 (+100d) | 1d → 1.12d | 982 → 987 |  |
| 989 | **8th floor slab** | 2025-07-23 → 2025-10-21 (+90d) | 2025-08-04 → 2025-12-16 (+134d) | 12d → 13.5d |  | constraint start no earlier than 2025-07-23 → start no earlier than 2025-10-21 |
| 990 | Reinforcement | 2025-07-23 → 2025-10-21 (+90d) | 2025-08-02 → 2025-10-30 (+89d) | 10d → 11.25d | 993FS+1d → 988 |  |
| 991 | Wall conduiting | 2025-07-24 → 2025-10-22 (+90d) | 2025-07-27 → 2025-10-23 (+88d) | 3d → 2.25d | 986, 990SS+1d → 986, 990SS+1.12d |  |
| 992 | Formwork | 2025-07-24 → 2025-10-23 (+91d) | 2025-08-03 → 2025-10-31 (+89d) | 10d → 10.12d | 990SS+1d → 990SS+2.25d |  |
| 993 | Concreting | 2025-07-21 → 2025-12-16 (+148d) | 2025-07-22 → 2025-12-16 (+147d) | 1d → 1.12d | 987 → 992 |  |
| 994 | **9th floor slab** | 2025-08-05 → 2025-12-17 (+134d) | 2025-08-14 → 2025-12-25 (+133d) | 9d → 10.12d |  | constraint start no earlier than 2025-08-05 → start no earlier than 2025-12-17 |
| 995 | Reinforcement | 2025-08-05 → 2025-12-17 (+134d) | 2025-08-13 → 2025-12-23 (+132d) | 8d → 7.88d | 998FS+1d → 993 |  |
| 996 | Wall conduiting | 2025-08-06 → 2025-12-18 (+134d) | 2025-08-09 → 2025-12-19 (+132d) | 3d → 2.25d | 991, 995SS+1d → 991, 995SS+1.12d |  |
| 997 | Formwork | 2025-08-06 → 2025-12-19 (+135d) | 2025-08-13 → 2025-12-24 (+133d) | 7d → 6.75d | 995SS+1d → 995SS+2.25d |  |
| 998 | Concreting | 2025-08-03 → 2025-12-25 (+144d) | 2025-08-04 → 2025-12-25 (+143d) | 1d → 1.12d | 992 → 997 |  |
| 999 | **10th floor slab** | 2025-08-11 → 2025-12-26 (+137d) | 2025-08-20 → 2026-01-03 (+136d) | 9d → 10.12d |  | constraint start no earlier than 2025-08-11 → start no earlier than 2025-12-26 |
| 1000 | Reinforcement | 2025-08-11 → 2025-12-26 (+137d) | 2025-08-19 → 2026-01-01 (+135d) | 8d → 7.88d | 995SS+6d → 998 |  |
| 1001 | Wall conduiting | 2025-08-12 → 2025-12-27 (+137d) | 2025-08-15 → 2025-12-28 (+135d) | 3d → 2.25d | 996, 1000SS+1d → 996, 1000SS+1.12d |  |
| 1002 | Formwork | 2025-08-12 → 2025-12-28 (+138d) | 2025-08-19 → 2026-01-02 (+136d) | 7d → 6.75d | 1000SS+1d → 1000SS+2.25d |  |
| 1003 | Concreting | 2025-08-13 → 2026-01-03 (+143d) | 2025-08-14 → 2026-01-03 (+142d) | 1d → 1.12d | 997 → 1002 |  |
| 1004 | **11th floor slab** | 2025-08-21 → 2026-01-04 (+136d) | 2025-08-30 → 2026-01-12 (+135d) | 9d → 10.12d |  | constraint start no earlier than 2025-08-21 → start no earlier than 2026-01-04 |
| 1005 | Reinforcement | 2025-08-21 → 2026-01-04 (+136d) | 2025-08-29 → 2026-01-10 (+134d) | 8d → 7.88d | 1008FS+1d → 1003 |  |
| 1006 | Wall conduiting | 2025-08-22 → 2026-01-05 (+136d) | 2025-08-25 → 2026-01-06 (+134d) | 3d → 2.25d | 1001, 1005SS+1d → 1001, 1005SS+1.12d |  |
| 1007 | Formwork | 2025-08-22 → 2026-01-06 (+137d) | 2025-08-29 → 2026-01-11 (+135d) | 7d → 6.75d | 1005SS+1d → 1005SS+2.25d |  |
| 1008 | Concreting | 2025-08-19 → 2026-01-12 (+146d) | 2025-08-20 → 2026-01-12 (+145d) | 1d → 1.12d | 1002 → 1007 |  |
| 1009 | **12th floor slab** | 2025-08-31 → 2026-01-13 (+135d) | 2025-09-09 → 2026-01-21 (+134d) | 9d → 10.12d |  | constraint start no earlier than 2025-08-31 → start no earlier than 2026-01-13 |
| 1010 | Reinforcement | 2025-08-31 → 2026-01-13 (+135d) | 2025-09-08 → 2026-01-19 (+133d) | 8d → 7.88d | 1013FS+1d → 1008 |  |
| 1011 | Wall conduiting | 2025-09-01 → 2026-01-14 (+135d) | 2025-09-04 → 2026-01-15 (+133d) | 3d → 2.25d | 1006, 1010SS+1d → 1006, 1010SS+1.12d |  |
| 1012 | Formwork | 2025-09-01 → 2026-01-15 (+136d) | 2025-09-08 → 2026-01-20 (+134d) | 7d → 6.75d | 1010SS+1d → 1010SS+2.25d |  |
| 1013 | Concreting | 2025-08-29 → 2026-01-21 (+145d) | 2025-08-30 → 2026-01-21 (+144d) | 1d → 1.12d | 1007 → 1012 |  |
| 1014 | **13th floor slab** | 2025-09-10 → 2026-01-22 (+134d) | 2025-09-19 → 2026-01-30 (+133d) | 9d → 10.12d |  | constraint start no earlier than 2025-09-10 → start no earlier than 2026-01-22 |
| 1015 | Reinforcement | 2025-09-10 → 2026-01-22 (+134d) | 2025-09-18 → 2026-01-28 (+132d) | 8d → 7.88d | 1018FS+1d → 1013 |  |
| 1016 | Wall conduiting | 2025-09-11 → 2026-01-23 (+134d) | 2025-09-14 → 2026-01-24 (+132d) | 3d → 2.25d | 1011, 1015SS+1d → 1011, 1015SS+1.12d |  |
| 1017 | Formwork | 2025-09-11 → 2026-01-24 (+135d) | 2025-09-18 → 2026-01-29 (+133d) | 7d → 6.75d | 1015SS+1d → 1015SS+2.25d |  |
| 1018 | Concreting | 2025-09-08 → 2026-01-30 (+144d) | 2025-09-09 → 2026-01-30 (+143d) | 1d → 1.12d | 1012 → 1017 |  |
| 1019 | **14th floor slab** | 2025-09-20 → 2026-01-31 (+133d) | 2025-09-29 → 2026-02-08 (+132d) | 9d → 10.12d |  | constraint start no earlier than 2025-09-20 → start no earlier than 2026-01-31 |
| 1020 | Reinforcement | 2025-09-20 → 2026-01-31 (+133d) | 2025-09-28 → 2026-02-06 (+131d) | 8d → 7.88d | 1023FS+1d → 1018 |  |
| 1021 | Wall conduiting | 2025-09-21 → 2026-02-01 (+133d) | 2025-09-24 → 2026-02-02 (+131d) | 3d → 2.25d | 1016, 1020SS+1d → 1016, 1020SS+1.12d |  |
| 1022 | Formwork | 2025-09-21 → 2026-02-02 (+134d) | 2025-09-28 → 2026-02-07 (+132d) | 7d → 6.75d | 1020SS+1d → 1020SS+2.25d |  |
| 1023 | Concreting | 2025-09-18 → 2026-02-08 (+143d) | 2025-09-19 → 2026-02-08 (+142d) | 1d → 1.12d | 1017 → 1022 |  |
| 1024 | **15th floor slab** | 2025-09-30 → 2026-02-09 (+132d) | 2025-10-09 → 2026-02-17 (+131d) | 9d → 10.12d |  | constraint start no earlier than 2025-09-30 → start no earlier than 2026-02-09 |
| 1025 | Reinforcement | 2025-09-30 → 2026-02-09 (+132d) | 2025-10-08 → 2026-02-15 (+130d) | 8d → 7.88d | 1028FS+1d → 1023 |  |
| 1026 | Wall conduiting | 2025-10-01 → 2026-02-10 (+132d) | 2025-10-04 → 2026-02-11 (+130d) | 3d → 2.25d | 1021, 1025SS+1d → 1021, 1025SS+1.12d |  |
| 1027 | Formwork | 2025-10-01 → 2026-02-11 (+133d) | 2025-10-08 → 2026-02-16 (+131d) | 7d → 6.75d | 1025SS+1d → 1025SS+2.25d |  |
| 1028 | Concreting | 2025-09-28 → 2026-02-17 (+142d) | 2025-09-29 → 2026-02-17 (+141d) | 1d → 1.12d | 1022 → 1027 |  |
| 1029 | **16th floor slab** | 2025-10-10 → 2026-02-18 (+131d) | 2025-10-22 → 2026-03-01 (+130d) | 12d → 13.5d |  | constraint start no earlier than 2025-10-10 → start no earlier than 2026-02-18 |
| 1030 | Reinforcement | 2025-10-10 → 2026-02-18 (+131d) | 2025-10-20 → 2026-02-26 (+129d) | 10d → 10.12d | 1033FS+1d → 1028 |  |
| 1031 | Wall conduiting | 2025-10-11 → 2026-02-19 (+131d) | 2025-10-14 → 2026-02-20 (+129d) | 3d → 2.25d | 1026, 1030SS+1d → 1026, 1030SS+1.12d |  |
| 1032 | Formwork | 2025-10-11 → 2026-02-20 (+132d) | 2025-10-21 → 2026-02-28 (+130d) | 10d → 10.12d | 1030SS+1d → 1030SS+2.25d |  |
| 1033 | Concreting | 2025-10-08 → 2026-03-01 (+144d) | 2025-10-09 → 2026-03-01 (+143d) | 1d → 1.12d | 1027 → 1032 |  |
| 1034 | **17th floor slab** | 2025-10-23 → 2026-03-02 (+130d) | 2025-12-16 → 2026-03-10 (+84d) | 9d → 10.12d |  | constraint start no earlier than 2025-10-23 → start no earlier than 2026-03-02 |
| 1035 | Reinforcement | 2025-10-23 → 2026-03-02 (+130d) | 2025-10-31 → 2026-03-08 (+128d) | 8d → 7.88d | 1038FS+1d → 1033 |  |
| 1036 | Wall conduiting | 2025-10-24 → 2026-03-03 (+130d) | 2025-10-27 → 2026-03-04 (+128d) | 3d → 2.25d | 1031, 1035SS+1d → 1031, 1035SS+1.12d |  |
| 1037 | Formwork | 2025-10-24 → 2026-03-04 (+131d) | 2025-10-31 → 2026-03-09 (+129d) | 7d → 6.75d | 1035SS+1d → 1035SS+2.25d |  |
| 1038 | Concreting | 2025-10-21 → 2026-03-10 (+140d) | 2025-10-22 → 2026-03-10 (+139d) | 1d → 1.12d | 1032 → 1037 |  |
| 1039 | **18th floor slab** | 2025-12-17 → 2026-03-11 (+84d) | 2025-12-26 → 2026-03-19 (+83d) | 9d → 10.12d |  | constraint start no earlier than 2025-12-17 → start no earlier than 2026-03-11 |
| 1040 | Reinforcement | 2025-12-17 → 2026-03-11 (+84d) | 2025-12-25 → 2026-03-17 (+82d) | 8d → 7.88d | 1043FS+1d → 1038 |  |
| 1041 | Wall conduiting | 2025-12-18 → 2026-03-12 (+84d) | 2025-12-21 → 2026-03-13 (+82d) | 3d → 2.25d | 1036, 1040SS+1d → 1036, 1040SS+1.12d |  |
| 1042 | Formwork | 2025-12-18 → 2026-03-13 (+85d) | 2025-12-25 → 2026-03-18 (+83d) | 7d → 6.75d | 1040SS+1d → 1040SS+2.25d |  |
| 1043 | Concreting | 2025-10-31 → 2026-03-19 (+139d) | 2025-12-16 → 2026-03-19 (+93d) | 1d → 1.12d | 1037 → 1042 |  |
| 1044 | **19th floor slab** | 2025-12-29 → 2026-03-20 (+81d) | 2026-01-06 → 2026-03-27 (+80d) | 8d → 9d |  | constraint start no earlier than 2025-12-29 → start no earlier than 2026-03-20 |
| 1045 | Reinforcement | 2025-12-29 → 2026-03-20 (+81d) | 2026-01-05 → 2026-03-26 (+80d) | 7d → 7.88d | 1048FS+3d → 1043 |  |
| 1046 | Wall conduiting | 2025-12-30 → 2026-03-21 (+81d) | 2026-01-02 → 2026-03-22 (+79d) | 3d → 2.25d | 1041, 1045SS+1d → 1041, 1045SS+1.12d |  |
| 1047 | Formwork | 2025-12-30 → 2026-03-21 (+81d) | 2026-01-05 → 2026-03-26 (+80d) | 6d → 6.75d | 1045SS+1d → 1045SS+1.12d |  |
| 1048 | Concreting | 2025-12-25 → 2026-03-27 (+92d) | 2025-12-26 → 2026-03-27 (+91d) | 1d → 1.12d | 1042 → 1047 |  |
| 1049 | **20th floor slab** | 2026-01-07 → 2026-03-28 (+80d) | 2026-01-15 → 2026-04-04 (+79d) | 8d → 9d |  | constraint start no earlier than 2026-01-07 → start no earlier than 2026-03-28 |
| 1050 | Reinforcement | 2026-01-07 → 2026-03-28 (+80d) | 2026-01-14 → 2026-04-03 (+79d) | 7d → 7.88d | 1053FS+1d → 1048 |  |
| 1051 | Wall conduiting | 2026-01-08 → 2026-03-29 (+80d) | 2026-01-11 → 2026-03-30 (+78d) | 3d → 2.25d | 1046, 1050SS+1d → 1046, 1050SS+1.12d |  |

| ID | Task | Start | Finish | Duration | Predecessors | Other |
| --- | --- | --- | --- | --- | --- | --- |
| 1052 | Formwork | 2026-01-08 → 2026-03-29 (+80d) | 2026-01-14 → 2026-04-03 (+79d) | 6d → 6.75d | 1050SS+1d → 1050SS+1.12d |  |
| 1053 | Concreting | 2026-01-05 → 2026-04-04 (+89d) | 2026-01-06 → 2026-04-04 (+88d) | 1d → 1.12d | 1047 → 1052 |  |
| 1054 | **21st floor slab** | 2026-01-16 → 2026-04-05 (+79d) | 2026-01-24 → 2026-04-14 (+80d) | 8d → 11.25d |  | constraint start no earlier than 2026-01-16 → start no earlier than 2026-04-05 |
| 1055 | Reinforcement | 2026-01-16 → 2026-04-05 (+79d) | 2026-01-23 → 2026-04-12 (+79d) | 7d → 9d | 1058FS+1d → 1053 |  |
| 1056 | Wall conduiting | 2026-01-17 → 2026-04-06 (+79d) | 2026-01-20 → 2026-04-07 (+77d) | 3d → 2.25d | 1051, 1055SS+1d → 1051, 1055SS+1.12d |  |
| 1057 | Formwork | 2026-01-17 → 2026-04-07 (+80d) | 2026-01-23 → 2026-04-13 (+80d) | 6d → 7.88d | 1055SS+1d → 1055SS+2.25d |  |
| 1058 | Concreting | 2026-01-14 → 2026-04-14 (+90d) | 2026-01-15 → 2026-04-14 (+89d) | 1d → 1.12d | 1052 → 1057 |  |
| 1059 | **22nd floor slab** | 2026-01-25 → 2026-04-15 (+80d) | 2026-02-02 → 2026-04-24 (+81d) | 8d → 11.25d |  | constraint start no earlier than 2026-01-25 → start no earlier than 2026-04-15 |
| 1060 | Reinforcement | 2026-01-25 → 2026-04-15 (+80d) | 2026-02-01 → 2026-04-22 (+80d) | 7d → 9d | 1063FS+1d → 1058 |  |
| 1061 | Wall conduiting | 2026-01-26 → 2026-04-16 (+80d) | 2026-01-29 → 2026-04-17 (+78d) | 3d → 2.25d | 1056, 1060SS+1d → 1056, 1060SS+1.12d |  |
| 1062 | Formwork | 2026-01-26 → 2026-04-17 (+81d) | 2026-02-01 → 2026-04-23 (+81d) | 6d → 7.88d | 1060SS+1d → 1060SS+2.25d |  |
| 1063 | Concreting | 2026-01-23 → 2026-04-24 (+91d) | 2026-01-24 → 2026-04-24 (+90d) | 1d → 1.12d | 1057 → 1062 |  |
| 1064 | **23rd floor slab** | 2026-02-04 → 2026-04-25 (+80d) | 2026-02-12 → 2026-05-04 (+81d) | 8d → 11.25d |  | constraint start no earlier than 2026-02-04 → start no earlier than 2026-04-25 |
| 1065 | Reinforcement | 2026-02-04 → 2026-04-25 (+80d) | 2026-02-11 → 2026-05-02 (+80d) | 7d → 9d | 1068FS+1.88d → 1063 |  |
| 1066 | Wall conduiting | 2026-02-05 → 2026-04-26 (+80d) | 2026-02-08 → 2026-04-27 (+78d) | 3d → 2.25d | 1061, 1065SS+1d → 1061, 1065SS+1.12d |  |
| 1067 | Formwork | 2026-02-05 → 2026-04-27 (+81d) | 2026-02-11 → 2026-05-03 (+81d) | 6d → 7.88d | 1065SS+1d → 1065SS+2.25d |  |
| 1068 | Concreting | 2026-02-01 → 2026-05-04 (+92d) | 2026-02-02 → 2026-05-04 (+91d) | 1d → 1.12d | 1062 → 1067 |  |
| 1069 | **24th floor slab** | 2026-02-13 → 2026-05-05 (+81d) | 2026-02-25 → 2026-05-17 (+81d) | 12d → 14.62d |  | constraint start no earlier than 2026-02-13 → start no earlier than 2026-05-05 |
| 1070 | Reinforcement | 2026-02-13 → 2026-05-05 (+81d) | 2026-02-23 → 2026-05-14 (+80d) | 10d → 11.25d | 1073FS+1d → 1068 |  |
| 1071 | Wall conduiting | 2026-02-14 → 2026-05-06 (+81d) | 2026-02-17 → 2026-05-07 (+79d) | 3d → 2.25d | 1066, 1070SS+1d → 1066, 1070SS+1.12d |  |
| 1072 | Formwork | 2026-02-14 → 2026-05-07 (+82d) | 2026-02-24 → 2026-05-16 (+81d) | 10d → 11.25d | 1070SS+1d → 1070SS+2.25d |  |
| 1073 | Concreting | 2026-02-11 → 2026-05-17 (+95d) | 2026-02-12 → 2026-05-17 (+94d) | 1d → 1.12d | 1067 → 1072 |  |
| 1074 | **25th floor slab** | 2026-02-26 → 2026-05-18 (+81d) | 2026-03-10 → 2026-05-30 (+81d) | 12d → 14.62d |  | constraint start no earlier than 2026-02-26 → start no earlier than 2026-05-18 |
| 1075 | Reinforcement | 2026-02-26 → 2026-05-18 (+81d) | 2026-03-08 → 2026-05-27 (+80d) | 10d → 11.25d | 1078FS+1d → 1073 |  |
| 1076 | Wall conduiting | 2026-02-27 → 2026-05-19 (+81d) | 2026-03-02 → 2026-05-20 (+79d) | 3d → 2.25d | 1071, 1075SS+1d → 1071, 1075SS+1.12d |  |
| 1077 | Formwork | 2026-02-27 → 2026-05-20 (+82d) | 2026-03-09 → 2026-05-29 (+81d) | 10d → 11.25d | 1075SS+1d → 1075SS+2.25d |  |
| 1078 | Concreting | 2026-02-24 → 2026-05-30 (+95d) | 2026-02-25 → 2026-05-30 (+94d) | 1d → 1.12d | 1072 → 1077 |  |
| 1079 | **26th floor slab** | 2026-03-11 → 2026-05-31 (+81d) | 2026-03-19 → 2026-06-09 (+82d) | 8d → 11.25d |  | constraint start no earlier than 2026-03-11 → start no earlier than 2026-05-31 |
| 1080 | Reinforcement | 2026-03-11 → 2026-05-31 (+81d) | 2026-03-18 → 2026-06-07 (+81d) | 7d → 9d | 1083FS+1d → 1078 |  |
| 1081 | Wall conduiting | 2026-03-12 → 2026-06-01 (+81d) | 2026-03-15 → 2026-06-02 (+79d) | 3d → 2.25d | 1076, 1080SS+1d → 1076, 1080SS+1.12d |  |
| 1082 | Formwork | 2026-03-12 → 2026-06-02 (+82d) | 2026-03-18 → 2026-06-08 (+82d) | 6d → 7.88d | 1080SS+1d → 1080SS+2.25d |  |
| 1083 | Concreting | 2026-03-09 → 2026-06-09 (+92d) | 2026-03-10 → 2026-06-09 (+91d) | 1d → 1.12d | 1077 → 1082 |  |
| 1084 | **27th floor slab** | 2026-03-20 → 2026-06-10 (+82d) | 2026-03-28 → 2026-06-19 (+83d) | 8d → 11.25d |  | constraint start no earlier than 2026-03-20 → start no earlier than 2026-06-10 |
| 1085 | Reinforcement | 2026-03-20 → 2026-06-10 (+82d) | 2026-03-27 → 2026-06-17 (+82d) | 7d → 9d | 1088FS+1d → 1083 |  |
| 1086 | Wall conduiting | 2026-03-21 → 2026-06-11 (+82d) | 2026-03-24 → 2026-06-12 (+80d) | 3d → 2.25d | 1081, 1085SS+1d → 1081, 1085SS+1.12d |  |
| 1087 | Formwork | 2026-03-21 → 2026-06-12 (+83d) | 2026-03-27 → 2026-06-18 (+83d) | 6d → 7.88d | 1085SS+1d → 1085SS+2.25d |  |
| 1088 | Concreting | 2026-03-18 → 2026-06-19 (+93d) | 2026-03-19 → 2026-06-19 (+92d) | 1d → 1.12d | 1082 → 1087 |  |
| 1089 | **28th floor slab** | 2026-03-29 → 2026-06-20 (+83d) | 2026-04-06 → 2026-06-29 (+84d) | 8d → 11.25d |  | constraint start no earlier than 2026-03-29 → start no earlier than 2026-06-20 |
| 1090 | Reinforcement | 2026-03-29 → 2026-06-20 (+83d) | 2026-04-05 → 2026-06-27 (+83d) | 7d → 9d | 1093FS+1d → 1088 |  |
| 1091 | Wall conduiting | 2026-03-30 → 2026-06-21 (+83d) | 2026-04-02 → 2026-06-22 (+81d) | 3d → 2.25d | 1086, 1090SS+1d → 1086, 1090SS+1.12d |  |
| 1092 | Formwork | 2026-03-30 → 2026-06-22 (+84d) | 2026-04-05 → 2026-06-28 (+84d) | 6d → 7.88d | 1090SS+1d → 1090SS+2.25d |  |
| 1093 | Concreting | 2026-03-27 → 2026-06-29 (+94d) | 2026-03-28 → 2026-06-29 (+93d) | 1d → 1.12d | 1087 → 1092 |  |
| 1094 | **29th floor slab** | 2026-04-06 → 2026-06-30 (+85d) | 2026-04-14 → 2026-07-09 (+86d) | 8d → 11.25d |  | constraint start no earlier than 2026-04-06 → start no earlier than 2026-06-30 |
| 1095 | Reinforcement | 2026-04-06 → 2026-06-30 (+85d) | 2026-04-13 → 2026-07-07 (+85d) | 7d → 9d | 1098 → 1093 |  |
| 1096 | Wall conduiting | 2026-04-07 → 2026-07-01 (+85d) | 2026-04-10 → 2026-07-02 (+83d) | 3d → 2.25d | 1091, 1095SS+1d → 1091, 1095SS+1.12d |  |
| 1097 | Formwork | 2026-04-07 → 2026-07-02 (+86d) | 2026-04-13 → 2026-07-08 (+86d) | 6d → 7.88d | 1095SS+1d → 1095SS+2.25d |  |
| 1098 | Concreting | 2026-04-05 → 2026-07-09 (+95d) | 2026-04-06 → 2026-07-09 (+94d) | 1d → 1.12d | 1092 → 1097 |  |
| 1099 | **30th floor slab** | 2026-04-14 → 2026-07-10 (+87d) | 2026-04-22 → 2026-07-19 (+88d) | 8d → 11.25d |  | constraint start no earlier than 2026-04-14 → start no earlier than 2026-07-10 |
| 1100 | Reinforcement | 2026-04-14 → 2026-07-10 (+87d) | 2026-04-21 → 2026-07-17 (+87d) | 7d → 9d | 1103 → 1098 |  |
| 1101 | Wall conduiting | 2026-04-15 → 2026-07-11 (+87d) | 2026-04-18 → 2026-07-12 (+85d) | 3d → 2.25d | 1096, 1100SS+1d → 1096, 1100SS+1.12d |  |
| 1102 | Formwork | 2026-04-15 → 2026-07-12 (+88d) | 2026-04-21 → 2026-07-18 (+88d) | 6d → 7.88d | 1100SS+1d → 1100SS+2.25d |  |
| 1103 | Concreting | 2026-04-13 → 2026-07-19 (+97d) | 2026-04-14 → 2026-07-19 (+96d) | 1d → 1.12d | 1097 → 1102 |  |
| 1104 | **31st floor slab** | 2026-04-22 → 2026-07-20 (+89d) | 2026-05-04 → 2026-07-31 (+88d) | 11.75d → 13.5d |  | constraint start no earlier than 2026-04-22 → start no earlier than 2026-07-20 |
| 1105 | Reinforcement | 2026-04-22 → 2026-07-20 (+89d) | 2026-05-01 → 2026-07-28 (+88d) | 8.94d → 10.12d | 1108 → 1103 |  |
| 1106 | Wall conduiting | 2026-04-23 → 2026-07-21 (+89d) | 2026-04-25 → 2026-07-22 (+88d) | 1.94d → 2.25d | 1101, 1105SS+1d → 1101, 1105SS+1.12d |  |
| 1107 | Formwork | 2026-04-24 → 2026-07-22 (+89d) | 2026-05-03 → 2026-07-30 (+88d) | 8.94d → 10.12d | 1105SS+1.88d → 1105SS+2.25d |  |
| 1108 | Concreting | 2026-04-21 → 2026-07-31 (+101d) | 2026-04-22 → 2026-07-31 (+100d) | 1d → 1.12d | 1102 → 1107 |  |
| 1109 | **32nd floor slab** | 2026-05-04 → 2026-08-01 (+89d) | 2026-05-17 → 2026-08-13 (+88d) | 12.75d → 14.62d |  | constraint start no earlier than 2026-05-04 → start no earlier than 2026-08-01 |
| 1110 | Reinforcement | 2026-05-04 → 2026-08-01 (+89d) | 2026-05-14 → 2026-08-10 (+88d) | 9.94d → 11.25d | 1113 → 1108 |  |
| 1111 | Wall conduiting | 2026-05-05 → 2026-08-02 (+89d) | 2026-05-07 → 2026-08-03 (+88d) | 1.94d → 2.25d | 1106, 1110SS+1d → 1106, 1110SS+1.12d |  |
| 1112 | Formwork | 2026-05-06 → 2026-08-03 (+89d) | 2026-05-16 → 2026-08-12 (+88d) | 9.94d → 11.25d | 1110SS+1.88d → 1110SS+2.25d |  |
| 1113 | Concreting | 2026-05-03 → 2026-08-13 (+102d) | 2026-05-04 → 2026-08-13 (+101d) | 0.94d → 1.12d | 1107 → 1112 |  |
| 1114 | **33rd floor slab** | 2026-05-17 → 2026-08-14 (+89d) | 2026-05-28 → 2026-08-25 (+89d) | 11.75d → 13.5d |  | constraint start no earlier than 2026-05-17 → start no earlier than 2026-08-14 |
| 1115 | Reinforcement | 2026-05-17 → 2026-08-14 (+89d) | 2026-05-26 → 2026-08-22 (+88d) | 8.94d → 10.12d | 1118 → 1113 |  |
| 1116 | Wall conduiting | 2026-05-18 → 2026-08-15 (+89d) | 2026-05-20 → 2026-08-16 (+88d) | 1.94d → 2.25d | 1111, 1115SS+1d → 1111, 1115SS+1.12d |  |
| 1117 | Formwork | 2026-05-19 → 2026-08-16 (+89d) | 2026-05-27 → 2026-08-24 (+89d) | 8.94d → 10.12d | 1115SS+1.88d → 1115SS+2.25d |  |
| 1118 | Concreting | 2026-05-16 → 2026-08-25 (+101d) | 2026-05-17 → 2026-08-25 (+100d) | 0.94d → 1.12d | 1112 → 1117 |  |
| 1119 | **34th floor slab** | 2026-05-28 → 2026-08-26 (+90d) | 2026-06-10 → 2026-09-07 (+89d) | 12.75d → 14.62d |  | constraint start no earlier than 2026-05-28 → start no earlier than 2026-08-26 |
| 1120 | Reinforcement | 2026-05-28 → 2026-08-26 (+90d) | 2026-06-07 → 2026-09-04 (+89d) | 9.94d → 11.25d | 1123 → 1118 |  |
| 1121 | Wall conduiting | 2026-05-29 → 2026-08-27 (+90d) | 2026-05-31 → 2026-08-28 (+89d) | 1.94d → 2.25d | 1116, 1120SS+1d → 1116, 1120SS+1.12d |  |

| ID | Task | Start | Finish | Duration | Predecessors | Other |
| --- | --- | --- | --- | --- | --- | --- |
| 1122 | Formwork | 2026-05-30 → 2026-08-28 (+90d) | 2026-06-09 → 2026-09-06 (+89d) | 9.94d → 11.25d | 1120SS+1.88d → 1120SS+2.25d |  |
| 1123 | Concreting | 2026-05-27 → 2026-09-07 (+103d) | 2026-05-28 → 2026-09-07 (+102d) | 0.94d → 1.12d | 1117 → 1122 |  |
| 1124 | **35th floor slab** | 2026-06-10 → 2026-09-08 (+90d) | 2026-06-22 → 2026-09-19 (+89d) | 11.75d → 13.5d |  | constraint start no earlier than 2026-06-10 → start no earlier than 2026-09-08 |
| 1125 | Reinforcement | 2026-06-10 → 2026-09-08 (+90d) | 2026-06-19 → 2026-09-16 (+89d) | 8.94d → 10.12d | 1128 → 1123 |  |
| 1126 | Wall conduiting | 2026-06-11 → 2026-09-09 (+90d) | 2026-06-13 → 2026-09-10 (+89d) | 1.94d → 2.25d | 1121, 1125SS+1d → 1121, 1125SS+1.12d |  |
| 1127 | Formwork | 2026-06-13 → 2026-09-11 (+90d) | 2026-06-21 → 2026-09-18 (+89d) | 7.94d → 9d | 1126SS+1.88d → 1126SS+2.25d |  |
| 1128 | Concreting | 2026-06-09 → 2026-09-19 (+102d) | 2026-06-10 → 2026-09-19 (+101d) | 0.94d → 1.12d | 1122 → 1127 |  |
| 1129 | **Terrace floor slab** | 2026-06-22 → 2026-09-20 (+90d) | 2026-07-07 → 2026-10-04 (+89d) | 14.75d → 16.88d |  | constraint start no earlier than 2026-06-22 → start no earlier than 2026-09-20 |
| 1130 | Reinforcement | 2026-06-22 → 2026-09-20 (+90d) | 2026-07-03 → 2026-09-30 (+89d) | 10.94d → 12.38d | 1133 → 1128 |  |
| 1131 | Wall conduiting | 2026-06-23 → 2026-09-21 (+90d) | 2026-06-25 → 2026-09-22 (+89d) | 1.94d → 2.25d | 1126, 1130SS+1d → 1126, 1130SS+1.12d |  |
| 1132 | Formwork | 2026-06-24 → 2026-09-22 (+90d) | 2026-07-06 → 2026-10-03 (+89d) | 11.94d → 13.5d | 1130SS+1.88d → 1130SS+2.25d |  |
| 1133 | Concreting | 2026-06-21 → 2026-10-04 (+105d) | 2026-06-22 → 2026-10-04 (+104d) | 0.94d → 1.12d | 1127 → 1132 |  |
| 1134 | **OHT & Mumty** | 2026-07-07 → 2026-10-05 (+90d) | 2026-08-15 → 2026-12-28 (+135d) | 39.5d → 45d |  | constraint start no earlier than 2026-07-07 → start no earlier than 2026-10-05 |
| 1135 | Reinforcement | 2026-07-07 → 2026-10-05 (+90d) | 2026-08-06 → 2026-12-18 (+134d) | 29.94d → 33.75d | 1138 → 1133 |  |
| 1136 | Wall conduiting | 2026-07-08 → 2026-10-06 (+90d) | 2026-07-13 → 2026-10-10 (+89d) | 4.94d → 5.62d | 1131, 1135SS+1d → 1131, 1135SS+1.12d |  |
| 1137 | Formwork | 2026-07-10 → 2026-10-09 (+91d) | 2026-08-12 → 2026-12-25 (+135d) | 32.94d → 37.12d | 1135SS+3.62d → 1135SS+4.5d |  |
| 1138 | Concreting | 2026-07-06 → 2026-12-26 (+173d) | 2026-07-07 → 2026-12-28 (+174d) | 0.94d → 3.38d | 1132 → 1137 |  |
| 1139 | **Post Pour Activities** | 2025-06-13 → 2025-09-24 (+103d) | 2026-09-26 → 2027-01-24 (+120d) | 425.62d → 447.75d |  | constraint start no earlier than 2025-06-13 → start no earlier than 2025-09-24 |
| 1140 | 1st Floor | 2025-06-13 → 2025-09-24 (+103d) | 2025-06-19 → 2025-10-04 (+107d) | 7d → 12.38d | 973FS+0.25d → 973 |  |
| 1141 | 2nd Floor | 2025-06-23 → 2025-10-05 (+104d) | 2025-06-29 → 2025-10-15 (+108d) | 7d → 12.38d | 1140FS+0.25d, 978FS+0.25d → 1140, 978 |  |
| 1142 | 3rd Floor | 2025-07-23 → 2025-10-16 (+85d) | 2025-07-29 → 2025-10-26 (+89d) | 7d → 12.38d | 1141FS+0.25d, 993FS+0.25d → 1141, 983 |  |
| 1143 | 4th Floor | 2025-08-05 → 2025-10-27 (+83d) | 2025-08-11 → 2025-12-21 (+132d) | 7d → 12.38d | 1142FS+0.25d, 998FS+0.25d → 1142, 988 |  |
| 1144 | 5th Floor | 2025-08-15 → 2025-12-22 (+129d) | 2025-08-21 → 2026-01-01 (+133d) | 7d → 12.38d | 1143FS+0.25d, 1003FS+0.25d → 1143, 993 |  |
| 1145 | 6th Floor | 2025-08-22 → 2026-01-02 (+133d) | 2025-08-29 → 2026-01-12 (+136d) | 7d → 12.38d | 1144FS+0.25d, 1008FS+0.25d → 1144, 998 |  |
| 1146 | 7th Floor | 2025-08-31 → 2026-01-13 (+135d) | 2025-09-06 → 2026-01-23 (+139d) | 7d → 12.38d | 1145FS+0.25d, 1013FS+0.25d → 1145, 1003 |  |
| 1147 | 8th Floor | 2025-09-10 → 2026-01-24 (+136d) | 2025-09-16 → 2026-02-03 (+140d) | 7d → 12.38d | 1146FS+0.25d, 1018FS+0.25d → 1146, 1008 |  |
| 1148 | 9th Floor | 2025-09-20 → 2026-02-04 (+137d) | 2025-09-26 → 2026-02-14 (+141d) | 7d → 12.38d | 1147FS+0.25d, 1023FS+0.25d → 1147, 1013 |  |
| 1149 | 10th Floor | 2025-09-30 → 2026-02-15 (+138d) | 2025-10-06 → 2026-02-25 (+142d) | 7d → 12.38d | 1148FS+0.25d, 1028FS+0.25d → 1148, 1018 |  |
| 1150 | 11th Floor | 2025-10-22 → 2026-02-26 (+127d) | 2025-10-29 → 2026-03-08 (+130d) | 7d → 12.38d | 1149, 1038 → 1149, 1023 |  |
| 1151 | 12th Floor | 2025-12-16 → 2026-03-09 (+83d) | 2025-12-23 → 2026-03-19 (+86d) | 7d → 12.38d | 1150, 1043 → 1150, 1028 |  |
| 1152 | 13th Floor | 2025-12-26 → 2026-03-20 (+84d) | 2026-01-02 → 2026-03-30 (+87d) | 7d → 12.38d | 1151, 1048 → 1151, 1033 |  |
| 1153 | 14th Floor | 2026-01-06 → 2026-03-31 (+84d) | 2026-01-13 → 2026-04-10 (+87d) | 7d → 12.38d | 1152, 1053 → 1152, 1038 |  |
| 1154 | 15th Floor | 2026-01-15 → 2026-04-11 (+86d) | 2026-01-22 → 2026-04-21 (+89d) | 7d → 12.38d | 1153, 1058 → 1153, 1043 |  |
| 1155 | 16th Floor | 2026-01-24 → 2026-04-22 (+88d) | 2026-01-31 → 2026-05-02 (+91d) | 7d → 12.38d | 1154, 1063 → 1154, 1048 |  |
| 1156 | 17th Floor | 2026-02-02 → 2026-05-03 (+90d) | 2026-02-09 → 2026-05-13 (+93d) | 7d → 12.38d | 1155, 1068 → 1155, 1053 |  |
| 1157 | 18th Floor | 2026-02-12 → 2026-05-14 (+91d) | 2026-02-19 → 2026-05-24 (+94d) | 7d → 12.38d | 1156, 1073 → 1156, 1058 |  |
| 1158 | 19th Floor | 2026-02-25 → 2026-05-25 (+89d) | 2026-03-04 → 2026-06-04 (+92d) | 7d → 12.38d | 1157, 1078 → 1157, 1063 |  |
| 1159 | 20th Floor | 2026-03-10 → 2026-06-05 (+87d) | 2026-03-17 → 2026-06-15 (+90d) | 7d → 12.38d | 1158, 1083 → 1158, 1068 |  |
| 1160 | 21st Floor | 2026-03-19 → 2026-06-16 (+89d) | 2026-03-26 → 2026-06-26 (+92d) | 7d → 12.38d | 1159, 1088 → 1159, 1073 |  |
| 1161 | 22nd Floor | 2026-03-28 → 2026-06-27 (+91d) | 2026-04-04 → 2026-07-07 (+94d) | 7d → 12.38d | 1160, 1093 → 1160, 1078 |  |
| 1162 | 23rd Floor | 2026-04-06 → 2026-07-08 (+93d) | 2026-04-13 → 2026-07-18 (+96d) | 7d → 12.38d | 1161, 1098 → 1161, 1083 |  |
| 1163 | 24th Floor | 2026-04-14 → 2026-07-19 (+96d) | 2026-04-21 → 2026-07-29 (+99d) | 7d → 12.38d | 1162, 1103 → 1162, 1088 |  |
| 1164 | 25th Floor | 2026-04-22 → 2026-07-30 (+99d) | 2026-04-29 → 2026-08-09 (+102d) | 7d → 12.38d | 1163, 1108 → 1163, 1093 |  |
| 1165 | 26th Floor | 2026-05-04 → 2026-08-10 (+98d) | 2026-05-11 → 2026-08-20 (+101d) | 7d → 12.38d | 1164, 1113 → 1164, 1098 |  |
| 1166 | 27th Floor | 2026-05-17 → 2026-08-21 (+96d) | 2026-05-24 → 2026-08-31 (+99d) | 7d → 12.38d | 1165, 1118 → 1165, 1103 |  |
| 1167 | 28th Floor | 2026-05-28 → 2026-09-01 (+96d) | 2026-06-04 → 2026-09-11 (+99d) | 7d → 12.38d | 1166, 1123 → 1166, 1108 |  |
| 1168 | 29th Floor | 2026-06-10 → 2026-09-12 (+94d) | 2026-06-17 → 2026-09-22 (+97d) | 7d → 12.38d | 1167, 1128 → 1167, 1113 |  |
| 1169 | 30th Floor | 2026-06-22 → 2026-09-23 (+93d) | 2026-06-29 → 2026-10-03 (+96d) | 7d → 12.38d | 1168, 1133 → 1168, 1118 |  |
| 1170 | 31st Floor | 2026-07-07 → 2026-10-04 (+89d) | 2026-07-14 → 2026-10-14 (+92d) | 7d → 12.38d | 1169, 1138 → 1169, 1123 |  |
| 1171 | 32nd Flood | 2026-08-15 → 2026-10-15 (+61d) | 2026-08-22 → 2026-10-25 (+64d) | 7d → 12.38d | 1170, 1851 → 1170, 1128 |  |
| 1172 | 33rd Floor | 2026-08-22 → 2026-10-26 (+65d) | 2026-08-29 → 2026-12-20 (+113d) | 7d → 12.38d |  |  |
| 1173 | 34th Floor | 2026-08-29 → 2026-12-21 (+114d) | 2026-09-05 → 2026-12-28 (+114d) | 7d → 9d |  |  |
| 1174 | 35th Floor | 2026-09-05 → 2026-12-29 (+115d) | 2026-09-12 → 2027-01-05 (+115d) | 7d → 9d |  |  |
| 1175 | Terrace | 2026-09-12 → 2027-01-06 (+116d) | 2026-09-19 → 2027-01-13 (+116d) | 7d → 9d |  |  |
| 1176 | Mumty & Machine Room | 2026-09-19 → 2027-01-14 (+117d) | 2026-09-26 → 2027-01-24 (+120d) | 7d → 12.38d |  |  |
| 1177 | **Finishing work** | 2025-06-20 → 2025-10-05 (+107d) | 2027-07-18 → 2027-10-29 (+103d) | 667.94d → 747.88d |  | constraint start no earlier than 2025-06-20 → start no earlier than 2025-10-05 |
| 1178 | **Flat finishing** | 2025-06-20 → 2025-10-05 (+107d) | 2027-04-12 → 2027-07-18 (+97d) | 571.25d → 632d |  | constraint start no earlier than 2025-06-20 → start no earlier than 2025-10-05 |
| 1179 | **1st Floor** | 2025-06-20 → 2025-10-05 (+107d) | 2025-08-27 → 2026-02-20 (+177d) | 68d → 104.62d |  | constraint start no earlier than 2025-06-20 → start no earlier than 2025-10-05 |
| 1180 | Block Work | 2025-06-20 → 2025-10-05 (+107d) | 2025-06-25 → 2025-10-15 (+112d) | 5d → 11.25d |  |  |
| 1181 | Door Frame Fixing | 2025-06-25 → 2025-10-15 (+112d) | 2025-06-30 → 2025-10-23 (+115d) | 5d → 9d |  |  |
| 1182 | Internal Plumbing Works | 2025-06-21 → 2025-10-15 (+116d) | 2025-06-26 → 2025-10-25 (+121d) | 5d → 11.25d | 1180SS+1d → 1180 |  |
| 1183 | Waterproofing | 2025-06-26 → 2025-10-25 (+121d) | 2025-07-04 → 2025-12-17 (+166d) | 8d → 9d |  |  |
| 1184 | Internal Plaster | 2025-08-29 → 2025-10-23 (+55d) | 2026-02-10 → 2025-10-29 (-104d) | 119.94d → 6.75d | 832SS+17.88d → 1181FS+0.25d |  |
| 1185 | IPS flooring work | 2025-07-04 → 2025-12-17 (+166d) | 2025-07-11 → 2025-12-26 (+168d) | 7d → 10.12d |  |  |
| 1186 | Toilet dado work | 2025-07-04 → 2025-12-17 (+166d) | 2025-07-11 → 2025-12-25 (+167d) | 7d → 9d | 1183, 1200 → 1183, 1184 |  |
| 1187 | Toilet flooring work | 2025-07-11 → 2025-12-25 (+167d) | 2025-07-18 → 2026-01-01 (+167d) | 7d → 7.88d |  |  |
| 1188 | Living dinning flooring | 2025-07-18 → 2026-01-01 (+167d) | 2025-07-26 → 2026-01-09 (+167d) | 8d → 9d |  |  |
| 1189 | Aluminium door-window fixing | 2025-07-26 → 2026-01-09 (+167d) | 2025-08-02 → 2026-01-21 (+172d) | 7d → 13.5d |  |  |
| 1190 | Putty primer coat | 2025-07-26 → 2026-01-09 (+167d) | 2025-08-01 → 2026-01-15 (+167d) | 6d → 6.75d |  |  |
| 1191 | Door shutter fixing | 2025-07-26 → 2026-01-09 (+167d) | 2025-08-03 → 2026-01-17 (+167d) | 8d → 9d |  |  |

| ID | Task | Start | Finish | Duration | Predecessors | Other |
| --- | --- | --- | --- | --- | --- | --- |
| 1192 | Electrical wiring work | 2025-08-03 → 2026-01-17 (+167d) | 2025-08-11 → 2026-01-29 (+171d) | 8d → 13.5d |  |  |
| 1193 | Painting 1st coat | 2025-08-11 → 2026-01-29 (+171d) | 2025-08-19 → 2026-02-10 (+175d) | 8d → 13.5d |  |  |
| 1194 | False ceiling | 2025-08-19 → 2026-02-10 (+175d) | 2025-08-27 → 2026-02-20 (+177d) | 8d → 11.25d |  |  |
| 1195 | **2nd Floor** | 2025-06-25 → 2025-10-15 (+112d) | 2025-09-08 → 2026-03-04 (+177d) | 75d → 106.62d |  | constraint start no earlier than 2025-06-25 → start no earlier than 2025-10-15 |
| 1196 | Block Work | 2025-06-25 → 2025-10-15 (+112d) | 2025-07-03 → 2025-10-25 (+114d) | 8d → 11.25d |  |  |
| 1197 | Door Frame Fixing | 2025-07-03 → 2025-10-25 (+114d) | 2025-07-12 → 2025-12-17 (+158d) |  |  |  |
| 1198 | Internal Plumbing Works | 2025-07-03 → 2025-10-25 (+114d) | 2025-07-11 → 2025-12-19 (+161d) | 8d → 11.25d |  |  |
| 1199 | Waterproofing | 2025-07-11 → 2025-12-19 (+161d) | 2025-07-21 → 2025-12-27 (+159d) | 10d → 9d |  |  |
| 1200 | Internal Plaster | 2025-06-26 → 2025-12-17 (+174d) | 2025-07-03 → 2025-12-23 (+173d) | 7d → 6.75d | 1180FS+1d → 1184FS+0.25d, 1197FS+0.25d |  |
| 1201 | IPS flooring work | 2025-07-21 → 2025-12-27 (+159d) | 2025-07-31 → 2026-01-05 (+158d) | 10d → 10.12d |  |  |
| 1202 | Toilet dado work | 2025-07-21 → 2025-12-27 (+159d) | 2025-07-29 → 2026-01-04 (+159d) | 8d → 9d | 1186, 1199, 1216 → 1186, 1199, 1200 |  |
| 1203 | Toilet flooring work | 2025-07-29 → 2026-01-04 (+159d) | 2025-08-06 → 2026-01-11 (+158d) | 8d → 7.88d |  |  |
| 1204 | Living dinning flooring | 2025-07-26 → 2026-01-09 (+167d) | 2025-08-07 → 2026-01-17 (+163d) | 12d → 9d | 1188FS+0.25d → 1188FS+0.25d, 1197FS+0.25d |  |
| 1205 | Aluminium door-window fixing | 2025-08-02 → 2026-01-21 (+172d) | 2025-08-14 → 2026-02-02 (+172d) | 12d → 13.5d | 1189FS+0.25d → 1189FS+0.25d, 1204FS+0.25d |  |
| 1206 | Putty primer coat | 2025-08-07 → 2026-01-17 (+163d) | 2025-08-13 → 2026-01-23 (+163d) | 6d → 6.75d |  |  |
| 1207 | Door shutter fixing | 2025-08-07 → 2026-01-17 (+163d) | 2025-08-15 → 2026-01-25 (+163d) | 8d → 9d |  |  |
| 1208 | Electrical wiring work | 2025-08-15 → 2026-01-29 (+167d) | 2025-08-23 → 2026-02-10 (+171d) | 8d → 13.5d |  |  |
| 1209 | Painting 1st coat | 2025-08-23 → 2026-02-10 (+171d) | 2025-08-31 → 2026-02-22 (+175d) | 8d → 13.5d |  |  |
| 1210 | False ceiling | 2025-08-31 → 2026-02-22 (+175d) | 2025-09-08 → 2026-03-04 (+177d) | 8d → 11.25d |  |  |
| 1211 | **3rd Floor** | 2025-07-03 → 2025-10-25 (+114d) | 2025-09-20 → 2026-03-16 (+177d) | 79d → 108.62d |  | constraint start no earlier than 2025-07-03 → start no earlier than 2025-10-25 |
| 1212 | Block Work | 2025-07-03 → 2025-10-25 (+114d) | 2025-07-11 → 2025-12-19 (+161d) | 8d → 11.25d |  |  |
| 1213 | Door Frame Fixing | 2025-07-12 → 2025-12-19 (+160d) | 2025-07-21 → 2025-12-27 (+159d) |  |  |  |
| 1214 | Internal Plumbing Works | 2025-07-11 → 2025-12-19 (+161d) | 2025-07-19 → 2025-12-29 (+163d) | 8d → 11.25d |  |  |
| 1215 | Waterproofing | 2025-07-21 → 2025-12-29 (+161d) | 2025-07-31 → 2026-01-06 (+159d) | 10d → 9d |  |  |
| 1216 | Internal Plaster | 2025-07-03 → 2025-12-27 (+177d) | 2025-07-11 → 2026-01-02 (+175d) | 8d → 6.75d | 1200FS+0.25d → 1200FS+0.25d, 1213FS+0.25d |  |
| 1217 | IPS flooring work | 2025-07-31 → 2026-01-06 (+159d) | 2025-08-10 → 2026-01-15 (+158d) | 10d → 10.12d | 1201, 1213, 1215, 1232 → 1201, 1213, 1215, 1216 |  |
| 1218 | Toilet dado work | 2025-07-31 → 2026-01-06 (+159d) | 2025-08-08 → 2026-01-14 (+159d) | 8d → 9d | 1202, 1215, 1232 → 1202, 1215, 1216 |  |
| 1219 | Toilet flooring work | 2025-08-06 → 2026-01-14 (+161d) | 2025-08-14 → 2026-01-21 (+160d) | 8d → 7.88d | 1203FS+0.25d → 1203, 1218 |  |
| 1220 | Living dinning flooring | 2025-08-07 → 2026-01-17 (+163d) | 2025-08-19 → 2026-01-25 (+159d) | 12d → 9d | 1204FS+0.25d → 1204FS+0.25d, 1213FS+0.25d |  |
| 1221 | Aluminium door-window fixing | 2025-08-14 → 2026-02-02 (+172d) | 2025-08-26 → 2026-02-14 (+172d) | 12d → 13.5d | 1205FS+0.25d → 1205FS+0.25d, 1220FS+0.25d |  |
| 1222 | Putty primer coat | 2025-08-19 → 2026-01-25 (+159d) | 2025-08-25 → 2026-01-31 (+159d) | 6d → 6.75d |  |  |
| 1223 | Door shutter fixing | 2025-08-19 → 2026-01-25 (+159d) | 2025-08-27 → 2026-02-02 (+159d) | 8d → 9d |  |  |
| 1224 | Electrical wiring work | 2025-08-27 → 2026-02-10 (+167d) | 2025-09-04 → 2026-02-22 (+171d) | 8d → 13.5d |  |  |
| 1225 | Painting 1st coat | 2025-09-04 → 2026-02-22 (+171d) | 2025-09-12 → 2026-03-06 (+175d) | 8d → 13.5d |  |  |
| 1226 | False ceiling | 2025-09-12 → 2026-03-06 (+175d) | 2025-09-20 → 2026-03-16 (+177d) | 8d → 11.25d |  |  |
| 1227 | **4th Floor** | 2025-08-20 → 2025-12-19 (+121d) | 2025-10-18 → 2026-03-28 (+161d) | 59.25d → 110.62d |  | constraint start no earlier than 2025-08-20 → start no earlier than 2025-12-19 |
| 1228 | Block Work | 2025-08-29 → 2025-12-19 (+112d) | 2025-09-06 → 2025-12-27 (+112d) | 8d → 9d | 1145, 1212 → 1212FS+0.25d |  |
| 1229 | Door Frame Fixing | 2025-09-06 → 2025-12-27 (+112d) | 2025-09-15 → 2026-01-04 (+111d) |  |  |  |
| 1230 | Internal Plumbing Works | 2025-09-06 → 2025-12-29 (+114d) | 2025-09-14 → 2026-01-08 (+116d) | 8d → 11.25d |  |  |
| 1231 | Waterproofing | 2025-09-14 → 2026-01-08 (+116d) | 2025-09-24 → 2026-01-16 (+114d) | 10d → 9d |  |  |
| 1232 | Internal Plaster | 2025-07-11 → 2026-01-05 (+178d) | 2025-07-19 → 2026-01-11 (+176d) | 8d → 6.75d | 1216FS+0.25d → 1216FS+0.25d, 1229FS+0.25d |  |
| 1233 | IPS flooring work | 2025-10-02 → 2026-01-16 (+106d) | 2025-10-12 → 2026-01-25 (+105d) | 10d → 10.12d | 1217, 1229, 1231, 1248 → 1217, 1229, 1231, 1232 |  |
| 1234 | Toilet dado work | 2025-10-02 → 2026-01-16 (+106d) | 2025-10-10 → 2026-01-24 (+106d) | 8d → 9d | 1218, 1231, 1248 → 1218, 1231, 1232 |  |
| 1235 | Toilet flooring work | 2025-10-10 → 2026-01-24 (+106d) | 2025-10-18 → 2026-01-31 (+105d) | 8d → 7.88d |  |  |
| 1236 | Living dinning flooring | 2025-08-20 → 2026-01-25 (+158d) | 2025-08-31 → 2026-02-02 (+155d) | 12d → 9d | 1220FS+0.25d → 1220FS+0.25d, 1229FS+0.25d |  |
| 1237 | Aluminium door-window fixing | 2025-08-27 → 2026-02-14 (+171d) | 2025-09-07 → 2026-02-26 (+172d) | 12d → 13.5d | 1221FS+0.25d → 1221FS+0.25d, 1236FS+0.25d |  |
| 1238 | Putty primer coat | 2025-09-01 → 2026-02-02 (+154d) | 2025-09-06 → 2026-02-08 (+155d) | 6d → 6.75d |  |  |
| 1239 | Door shutter fixing | 2025-09-01 → 2026-02-02 (+154d) | 2025-09-08 → 2026-02-10 (+155d) | 8d → 9d |  |  |
| 1240 | Electrical wiring work | 2025-09-09 → 2026-02-22 (+166d) | 2025-09-16 → 2026-03-06 (+171d) | 8d → 13.5d |  |  |
| 1241 | Painting 1st coat | 2025-09-17 → 2026-03-06 (+170d) | 2025-09-24 → 2026-03-18 (+175d) | 8d → 13.5d |  |  |
| 1242 | False ceiling | 2025-09-25 → 2026-03-18 (+174d) | 2025-10-02 → 2026-03-28 (+177d) | 8d → 11.25d |  |  |
| 1243 | **5th Floor** | 2025-09-01 → 2025-12-28 (+118d) | 2025-10-28 → 2026-04-12 (+166d) | 57.75d → 118.25d |  | constraint start no earlier than 2025-09-01 → start no earlier than 2025-12-28 |
| 1244 | Block Work | 2025-09-06 → 2025-12-28 (+113d) | 2025-09-14 → 2026-01-05 (+113d) | 8d → 9d |  |  |
| 1245 | Door Frame Fixing | 2025-09-15 → 2026-01-05 (+112d) | 2025-09-24 → 2026-01-13 (+111d) |  |  |  |
| 1246 | Internal Plumbing Works | 2025-09-14 → 2026-01-08 (+116d) | 2025-09-22 → 2026-01-18 (+118d) | 8d → 11.25d |  |  |
| 1247 | Waterproofing | 2025-09-24 → 2026-01-18 (+116d) | 2025-10-04 → 2026-01-26 (+114d) | 10d → 9d |  |  |
| 1248 | Internal Plaster | 2025-09-24 → 2026-01-13 (+111d) | 2025-10-02 → 2026-01-19 (+109d) | 8d → 6.75d | 1232, 1229, 1230, 1231 → 1232FS+0.25d, 1245FS+0.25d |  |
| 1249 | IPS flooring work | 2025-10-13 → 2026-01-26 (+105d) | 2025-10-22 → 2026-02-04 (+105d) | 10d → 10.12d | 1233, 1245, 1247, 1264 → 1233, 1245, 1247, 1248 |  |
| 1250 | Toilet dado work | 2025-10-13 → 2026-01-26 (+105d) | 2025-10-20 → 2026-02-03 (+106d) | 8d → 9d | 1234, 1247, 1264 → 1234, 1247, 1248 |  |
| 1251 | Toilet flooring work | 2025-10-21 → 2026-02-03 (+105d) | 2025-10-28 → 2026-02-10 (+105d) | 8d → 7.88d |  |  |
| 1252 | Living dinning flooring | 2025-09-01 → 2026-02-03 (+155d) | 2025-09-13 → 2026-02-11 (+151d) | 12d → 9d | 1236FS+0.25d → 1236FS+0.25d, 1245FS+0.25d |  |
| 1253 | Aluminium door-window fixing | 2025-09-08 → 2026-02-27 (+172d) | 2025-09-20 → 2026-03-11 (+172d) | 12d → 13.5d | 1237FS+0.25d → 1237FS+0.25d, 1252FS+0.25d |  |
| 1254 | Putty primer coat | 2025-09-13 → 2026-02-11 (+151d) | 2025-09-19 → 2026-02-17 (+151d) | 6d → 6.75d |  |  |
| 1255 | Door shutter fixing | 2025-09-13 → 2026-02-11 (+151d) | 2025-09-21 → 2026-02-19 (+151d) | 8d → 9d |  |  |
| 1256 | Electrical wiring work | 2025-09-21 → 2026-03-06 (+166d) | 2025-09-29 → 2026-03-18 (+170d) | 8d → 13.5d |  |  |
| 1257 | Painting 1st coat | 2025-09-29 → 2026-03-18 (+170d) | 2025-10-07 → 2026-04-02 (+177d) | 8d → 16.88d |  |  |
| 1258 | False ceiling | 2025-10-07 → 2026-04-02 (+177d) | 2025-10-15 → 2026-04-12 (+179d) | 8d → 11.25d |  |  |
| 1259 | **6th Floor** | 2025-09-13 → 2026-01-05 (+114d) | 2025-12-19 → 2026-04-24 (+126d) | 52.5d → 122.5d |  | constraint start no earlier than 2025-09-13 → start no earlier than 2026-01-05 |
| 1260 | Block Work | 2025-09-14 → 2026-01-05 (+113d) | 2025-09-19 → 2026-01-13 (+116d) | 5d → 9d |  |  |
| 1261 | Door Frame Fixing | 2025-09-24 → 2026-01-13 (+111d) | 2025-09-29 → 2026-01-21 (+114d) | 5d → 9d | 998, 1245 → 993, 1245 |  |

| ID | Task | Start | Finish | Duration | Predecessors | Other |
| --- | --- | --- | --- | --- | --- | --- |
| 1262 | Internal Plumbing Works | 2025-09-22 → 2026-01-18 (+118d) | 2025-09-27 → 2026-01-28 (+123d) | 5d → 11.25d |  |  |
| 1263 | Waterproofing | 2025-10-04 → 2026-01-28 (+116d) | 2025-10-12 → 2026-02-05 (+116d) | 8d → 9d |  |  |
| 1264 | Internal Plaster | 2025-10-05 → 2026-02-05 (+123d) | 2025-10-12 → 2026-02-11 (+122d) | 8d → 6.75d | 1248FS+2.75d → 1248FS+0.25d, 1261FS+0.25d, 1262FS+0.25d, 1263FS+0.25d |  |
| 1265 | IPS flooring work | 2025-10-23 → 2026-02-11 (+111d) | 2025-10-29 → 2026-02-20 (+114d) | 7d → 10.12d | 1249, 1261, 1263, 1280 → 1249, 1261, 1263, 1264 |  |
| 1266 | Toilet dado work | 2025-10-21 → 2026-02-11 (+113d) | 2025-10-27 → 2026-02-19 (+115d) | 7d → 9d | 1250, 1263, 1280 → 1250, 1263, 1264 |  |
| 1267 | Toilet flooring work | 2025-10-29 → 2026-02-19 (+113d) | 2025-12-19 → 2026-02-26 (+69d) | 7d → 7.88d |  |  |
| 1268 | Living dinning flooring | 2025-09-13 → 2026-02-11 (+151d) | 2025-09-21 → 2026-02-19 (+151d) | 8d → 9d | 1252FS+0.25d → 1252FS+0.25d, 1261FS+0.25d |  |
| 1269 | Aluminium door-window fixing | 2025-09-20 → 2026-03-11 (+172d) | 2025-09-27 → 2026-03-23 (+177d) | 7d → 13.5d | 1253FS+0.25d → 1253FS+0.25d, 1268FS+0.25d |  |
| 1270 | Putty primer coat | 2025-09-21 → 2026-02-19 (+151d) | 2025-09-27 → 2026-02-25 (+151d) | 6d → 6.75d |  |  |
| 1271 | Door shutter fixing | 2025-09-21 → 2026-02-19 (+151d) | 2025-09-29 → 2026-02-27 (+151d) | 8d → 9d |  |  |
| 1272 | Electrical wiring work | 2025-09-29 → 2026-03-18 (+170d) | 2025-10-07 → 2026-03-30 (+174d) | 8d → 13.5d |  |  |
| 1273 | Painting 1st coat | 2025-10-07 → 2026-04-02 (+177d) | 2025-10-15 → 2026-04-14 (+181d) | 8d → 13.5d |  |  |
| 1274 | False ceiling | 2025-10-15 → 2026-04-14 (+181d) | 2025-10-23 → 2026-04-24 (+183d) | 8d → 11.25d |  |  |
| 1275 | **7th Floor** | 2025-09-20 → 2026-01-13 (+115d) | 2025-12-26 → 2026-05-06 (+131d) | 53d → 126.75d |  | constraint start no earlier than 2025-09-20 → start no earlier than 2026-01-13 |
| 1276 | Block Work | 2025-09-20 → 2026-01-13 (+115d) | 2025-09-24 → 2026-01-21 (+119d) | 5d → 9d |  |  |
| 1277 | Door Frame Fixing | 2025-09-29 → 2026-01-21 (+114d) | 2025-10-04 → 2026-01-29 (+117d) | 5d → 9d |  |  |
| 1278 | Internal Plumbing Works | 2025-09-27 → 2026-01-28 (+123d) | 2025-10-02 → 2026-02-07 (+128d) | 5d → 11.25d |  |  |
| 1279 | Waterproofing | 2025-10-12 → 2026-02-07 (+118d) | 2025-10-20 → 2026-02-15 (+118d) | 8d → 9d |  |  |
| 1280 | Internal Plaster | 2025-10-13 → 2026-02-15 (+125d) | 2025-10-20 → 2026-02-21 (+124d) | 7d → 6.75d | 1264FS+0.25d → 1264FS+0.25d, 1277FS+0.25d, 1278FS+0.25d, 1279FS+0.25d |  |
| 1281 | IPS flooring work | 2025-10-30 → 2026-02-21 (+114d) | 2025-12-20 → 2026-03-02 (+72d) | 7d → 10.12d | 1265, 1277, 1279, 1296 → 1265, 1277, 1279, 1280 |  |
| 1282 | Toilet dado work | 2025-10-28 → 2026-02-21 (+116d) | 2025-12-18 → 2026-03-01 (+73d) | 7d → 9d | 1266, 1279, 1296 → 1266, 1279, 1280 |  |
| 1283 | Toilet flooring work | 2025-12-20 → 2026-03-01 (+71d) | 2025-12-26 → 2026-03-08 (+72d) | 7d → 7.88d |  |  |
| 1284 | Living dinning flooring | 2025-09-21 → 2026-02-19 (+151d) | 2025-09-29 → 2026-02-27 (+151d) | 8d → 9d | 1268FS+0.25d → 1268FS+0.25d, 1277FS+0.25d |  |
| 1285 | Aluminium door-window fixing | 2025-09-27 → 2026-03-23 (+177d) | 2025-10-04 → 2026-03-31 (+178d) | 7d → 9d | 1269FS+0.25d → 1269FS+0.25d, 1284FS+0.25d |  |
| 1286 | Putty primer coat | 2025-09-29 → 2026-02-27 (+151d) | 2025-10-05 → 2026-03-05 (+151d) | 6d → 6.75d |  |  |
| 1287 | Door shutter fixing | 2025-09-29 → 2026-02-27 (+151d) | 2025-10-07 → 2026-03-07 (+151d) | 8d → 9d |  |  |
| 1288 | Electrical wiring work | 2025-10-07 → 2026-03-30 (+174d) | 2025-10-15 → 2026-04-11 (+178d) | 8d → 13.5d |  |  |
| 1289 | Painting 1st coat | 2025-10-15 → 2026-04-14 (+181d) | 2025-10-23 → 2026-04-26 (+185d) | 8d → 13.5d |  |  |
| 1290 | False ceiling | 2025-10-23 → 2026-04-26 (+185d) | 2025-10-31 → 2026-05-06 (+187d) | 8d → 11.25d |  |  |
| 1291 | **8th Floor** | 2025-09-25 → 2026-01-21 (+118d) | 2026-01-02 → 2026-05-18 (+136d) | 54.75d → 131d |  | constraint start no earlier than 2025-09-25 → start no earlier than 2026-01-21 |
| 1292 | Block Work | 2025-09-25 → 2026-01-21 (+118d) | 2025-09-30 → 2026-01-29 (+121d) | 5d → 9d |  |  |
| 1293 | Door Frame Fixing | 2025-10-04 → 2026-01-29 (+117d) | 2025-10-09 → 2026-02-06 (+120d) | 5d → 9d |  |  |
| 1294 | Internal Plumbing Works | 2025-10-02 → 2026-02-07 (+128d) | 2025-10-07 → 2026-02-17 (+133d) | 5d → 11.25d |  |  |
| 1295 | Waterproofing | 2025-10-20 → 2026-02-17 (+120d) | 2025-10-28 → 2026-02-25 (+120d) | 8d → 9d |  |  |
| 1296 | Internal Plaster | 2025-10-20 → 2026-02-22 (+125d) | 2025-10-27 → 2026-02-28 (+124d) | 7d → 6.75d | 1280FS+0.25d → 1280FS+0.25d, 1293FS+0.25d |  |
| 1297 | IPS flooring work | 2025-12-21 → 2026-03-02 (+71d) | 2025-12-27 → 2026-03-11 (+74d) | 7d → 10.12d | 1281, 1293, 1295, 1312 → 1281, 1293, 1295, 1296 |  |
| 1298 | Toilet dado work | 2025-12-19 → 2026-03-01 (+72d) | 2025-12-25 → 2026-03-09 (+74d) | 7d → 9d | 1282, 1295, 1312 → 1282, 1295, 1296 |  |
| 1299 | Toilet flooring work | 2025-12-27 → 2026-03-09 (+72d) | 2026-01-02 → 2026-03-16 (+73d) | 7d → 7.88d |  |  |
| 1300 | Living dinning flooring | 2025-09-30 → 2026-02-27 (+150d) | 2025-10-07 → 2026-03-07 (+151d) | 8d → 9d | 1284FS+0.25d → 1284FS+0.25d, 1293FS+0.25d |  |
| 1301 | Aluminium door-window fixing | 2025-10-05 → 2026-03-31 (+177d) | 2025-10-11 → 2026-04-12 (+183d) | 7d → 13.5d | 1285FS+0.25d → 1285FS+0.25d, 1300FS+0.25d |  |
| 1302 | Putty primer coat | 2025-10-08 → 2026-03-07 (+150d) | 2025-10-13 → 2026-03-13 (+151d) | 6d → 6.75d |  |  |
| 1303 | Door shutter fixing | 2025-10-08 → 2026-03-07 (+150d) | 2025-10-15 → 2026-03-15 (+151d) | 8d → 9d |  |  |
| 1304 | Electrical wiring work | 2025-10-16 → 2026-04-11 (+177d) | 2025-10-23 → 2026-04-23 (+182d) | 8d → 13.5d |  |  |
| 1305 | Painting 1st coat | 2025-10-24 → 2026-04-26 (+184d) | 2025-10-31 → 2026-05-08 (+189d) | 8d → 13.5d |  |  |
| 1306 | False ceiling | 2025-12-16 → 2026-05-08 (+143d) | 2025-12-23 → 2026-05-18 (+146d) | 8d → 11.25d |  |  |
| 1307 | **9th Floor** | 2025-10-08 → 2026-01-30 (+114d) | 2026-01-14 → 2026-05-30 (+136d) | 53.5d → 135.25d |  | constraint start no earlier than 2025-10-08 → start no earlier than 2026-01-30 |
| 1308 | Block Work | 2025-10-29 → 2026-01-30 (+93d) | 2025-12-18 → 2026-02-06 (+50d) | 5d → 9d | 1150, 1292 → 1292FS+0.25d |  |
| 1309 | Door Frame Fixing | 2025-12-18 → 2026-02-07 (+51d) | 2025-12-23 → 2026-02-14 (+53d) | 5d → 9d |  |  |
| 1310 | Internal Plumbing Works | 2025-12-18 → 2026-02-17 (+61d) | 2025-12-23 → 2026-02-27 (+66d) | 5d → 11.25d |  |  |
| 1311 | Waterproofing | 2025-12-23 → 2026-02-27 (+66d) | 2025-12-31 → 2026-03-07 (+66d) | 8d → 9d |  |  |
| 1312 | Internal Plaster | 2025-10-27 → 2026-02-28 (+124d) | 2025-12-18 → 2026-03-06 (+78d) | 7d → 6.75d | 1296FS+0.25d → 1296FS+0.25d, 1309FS+0.25d |  |
| 1313 | IPS flooring work | 2025-12-31 → 2026-03-11 (+70d) | 2026-01-07 → 2026-03-20 (+72d) | 7d → 10.12d | 1297, 1309, 1311, 1328 → 1297, 1309, 1311, 1312 |  |
| 1314 | Toilet dado work | 2025-12-31 → 2026-03-09 (+68d) | 2026-01-07 → 2026-03-17 (+69d) | 7d → 9d | 1298, 1311, 1328 → 1298, 1311, 1312 |  |
| 1315 | Toilet flooring work | 2026-01-07 → 2026-03-17 (+69d) | 2026-01-14 → 2026-03-24 (+69d) | 7d → 7.88d |  |  |
| 1316 | Living dinning flooring | 2025-10-08 → 2026-03-08 (+151d) | 2025-10-16 → 2026-03-15 (+150d) | 8d → 9d | 1300FS+0.25d → 1300FS+0.25d, 1309FS+0.25d |  |
| 1317 | Aluminium door-window fixing | 2025-10-12 → 2026-04-13 (+183d) | 2025-10-19 → 2026-04-24 (+187d) | 7d → 13.5d | 1301FS+0.25d → 1301FS+0.25d, 1316FS+0.25d |  |
| 1318 | Putty primer coat | 2025-10-16 → 2026-03-16 (+151d) | 2025-10-22 → 2026-03-21 (+150d) | 6d → 6.75d |  |  |
| 1319 | Door shutter fixing | 2025-10-16 → 2026-03-16 (+151d) | 2025-10-24 → 2026-03-23 (+150d) | 8d → 9d |  |  |
| 1320 | Electrical wiring work | 2025-10-24 → 2026-04-23 (+181d) | 2025-12-20 → 2026-05-05 (+136d) | 12d → 13.5d |  |  |
| 1321 | Painting 1st coat | 2025-12-20 → 2026-05-08 (+139d) | 2026-01-01 → 2026-05-20 (+139d) | 12d → 13.5d |  |  |
| 1322 | False ceiling | 2026-01-01 → 2026-05-20 (+139d) | 2026-01-11 → 2026-05-30 (+139d) | 10d → 11.25d |  |  |
| 1323 | **10th Floor** | 2025-10-16 → 2026-02-07 (+114d) | 2026-01-23 → 2026-06-11 (+139d) | 53.75d → 139.5d |  | constraint start no earlier than 2025-10-16 → start no earlier than 2026-02-07 |
| 1324 | Block Work | 2025-12-19 → 2026-02-07 (+50d) | 2025-12-23 → 2026-02-15 (+54d) | 5d → 9d |  |  |
| 1325 | Door Frame Fixing | 2025-12-24 → 2026-02-15 (+53d) | 2025-12-28 → 2026-02-23 (+57d) | 5d → 9d |  |  |
| 1326 | Internal Plumbing Works | 2025-12-24 → 2026-02-27 (+65d) | 2025-12-28 → 2026-03-09 (+71d) | 5d → 11.25d |  |  |
| 1327 | Waterproofing | 2025-12-31 → 2026-03-09 (+68d) | 2026-01-08 → 2026-03-17 (+68d) | 8d → 9d |  |  |
| 1328 | Internal Plaster | 2025-12-19 → 2026-03-06 (+77d) | 2025-12-25 → 2026-03-12 (+77d) | 7d → 6.75d | 1312FS+0.25d → 1312FS+0.25d, 1325FS+0.25d |  |
| 1329 | IPS flooring work | 2026-01-08 → 2026-03-20 (+71d) | 2026-01-15 → 2026-03-29 (+73d) | 7d → 10.12d | 1313, 1325, 1327, 1344 → 1313, 1325, 1327, 1328 |  |
| 1330 | Toilet dado work | 2026-01-08 → 2026-03-17 (+68d) | 2026-01-15 → 2026-03-25 (+69d) | 7d → 9d | 1314, 1327, 1344 → 1314, 1327, 1328 |  |
| 1331 | Toilet flooring work | 2026-01-15 → 2026-03-25 (+69d) | 2026-01-22 → 2026-04-01 (+69d) | 7d → 7.88d |  |  |

| ID | Task | Start | Finish | Duration | Predecessors | Other |
| --- | --- | --- | --- | --- | --- | --- |
| 1332 | Living dinning flooring | 2025-10-16 → 2026-03-16 (+151d) | 2025-10-24 → 2026-03-24 (+151d) | 8d → 9d | 1316FS+0.25d → 1316FS+0.25d, 1325FS+0.25d |  |
| 1333 | Aluminium door-window fixing | 2025-10-19 → 2026-04-25 (+188d) | 2025-10-26 → 2026-05-07 (+193d) | 7d → 13.5d | 1317FS+0.25d → 1317FS+0.25d, 1332FS+0.25d |  |
| 1334 | Putty primer coat | 2025-10-24 → 2026-03-24 (+151d) | 2025-10-30 → 2026-03-30 (+151d) | 6d → 6.75d |  |  |
| 1335 | Door shutter fixing | 2025-10-24 → 2026-03-24 (+151d) | 2025-12-16 → 2026-04-01 (+106d) | 8d → 9d |  |  |
| 1336 | Electrical wiring work | 2025-12-20 → 2026-05-05 (+136d) | 2026-01-01 → 2026-05-17 (+136d) | 12d → 13.5d |  |  |
| 1337 | Painting 1st coat | 2026-01-01 → 2026-05-20 (+139d) | 2026-01-13 → 2026-06-01 (+139d) | 12d → 13.5d |  |  |
| 1338 | False ceiling | 2026-01-13 → 2026-06-01 (+139d) | 2026-01-23 → 2026-06-11 (+139d) | 10d → 11.25d |  |  |
| 1339 | **11th Floor** | 2025-10-24 → 2026-02-15 (+114d) | 2026-02-04 → 2026-06-23 (+139d) | 57.5d → 143.75d |  | constraint start no earlier than 2025-10-24 → start no earlier than 2026-02-15 |
| 1340 | Block Work | 2025-12-24 → 2026-02-15 (+53d) | 2025-12-29 → 2026-02-23 (+56d) | 5d → 9d |  |  |
| 1341 | Door Frame Fixing | 2025-12-29 → 2026-02-23 (+56d) | 2026-01-03 → 2026-03-03 (+59d) | 5d → 9d |  |  |
| 1342 | Internal Plumbing Works | 2025-12-29 → 2026-03-09 (+70d) | 2026-01-03 → 2026-03-19 (+75d) | 5d → 11.25d |  |  |
| 1343 | Waterproofing | 2026-01-08 → 2026-03-19 (+70d) | 2026-01-16 → 2026-03-27 (+70d) | 8d → 9d |  |  |
| 1344 | Internal Plaster | 2025-12-26 → 2026-03-12 (+76d) | 2026-01-02 → 2026-03-18 (+75d) | 7d → 6.75d | 1328FS+0.25d → 1328FS+0.25d, 1341FS+0.25d |  |
| 1345 | IPS flooring work | 2026-01-16 → 2026-03-29 (+72d) | 2026-01-23 → 2026-04-07 (+74d) | 7d → 10.12d |  |  |
| 1346 | Toilet dado work | 2026-01-16 → 2026-03-27 (+70d) | 2026-01-23 → 2026-04-04 (+71d) | 7d → 9d | 1330, 1343, 1360 → 1330, 1343, 1344 |  |
| 1347 | Toilet flooring work | 2026-01-23 → 2026-04-04 (+71d) | 2026-01-30 → 2026-04-11 (+71d) | 7d → 7.88d |  |  |
| 1348 | Living dinning flooring | 2025-10-24 → 2026-03-24 (+151d) | 2025-12-16 → 2026-04-01 (+106d) | 8d → 9d | 1332FS+0.25d → 1332FS+0.25d, 1341FS+0.25d |  |
| 1349 | Aluminium door-window fixing | 2025-10-26 → 2026-05-07 (+193d) | 2025-12-17 → 2026-05-19 (+153d) | 7d → 13.5d | 1333FS+0.25d → 1333FS+0.25d, 1348FS+0.25d |  |
| 1350 | Putty primer coat | 2025-12-16 → 2026-04-01 (+106d) | 2025-12-22 → 2026-04-07 (+106d) | 6d → 6.75d |  |  |
| 1351 | Door shutter fixing | 2025-12-16 → 2026-04-01 (+106d) | 2025-12-24 → 2026-04-09 (+106d) | 8d → 9d |  |  |
| 1352 | Electrical wiring work | 2026-01-01 → 2026-05-17 (+136d) | 2026-01-13 → 2026-05-29 (+136d) | 12d → 13.5d |  |  |
| 1353 | Painting 1st coat | 2026-01-13 → 2026-06-01 (+139d) | 2026-01-25 → 2026-06-13 (+139d) | 12d → 13.5d |  |  |
| 1354 | False ceiling | 2026-01-25 → 2026-06-13 (+139d) | 2026-02-04 → 2026-06-23 (+139d) | 10d → 11.25d |  |  |
| 1355 | **12th Floor** | 2025-12-17 → 2026-02-23 (+68d) | 2026-02-26 → 2026-07-05 (+129d) | 71.5d → 148d |  | constraint start no earlier than 2025-12-17 → start no earlier than 2026-02-23 |
| 1356 | Block Work | 2025-12-29 → 2026-02-23 (+56d) | 2026-01-03 → 2026-03-03 (+59d) | 5d → 9d |  |  |
| 1357 | Door Frame Fixing | 2026-01-03 → 2026-03-03 (+59d) | 2026-01-12 → 2026-03-11 (+58d) |  |  |  |
| 1358 | Internal Plumbing Works | 2026-01-03 → 2026-03-19 (+75d) | 2026-01-18 → 2026-03-29 (+70d) | 15d → 11.25d |  |  |
| 1359 | Waterproofing | 2026-01-18 → 2026-03-29 (+70d) | 2026-02-02 → 2026-04-06 (+63d) | 15d → 9d |  |  |
| 1360 | Internal Plaster | 2026-01-02 → 2026-03-19 (+76d) | 2026-01-09 → 2026-03-22 (+72d) | 7d → 4.5d | 1344FS+0.25d → 1344FS+0.25d, 1357FS+0.25d |  |
| 1361 | IPS flooring work | 2026-02-02 → 2026-04-07 (+64d) | 2026-02-14 → 2026-04-16 (+61d) | 12d → 10.12d |  |  |
| 1362 | Toilet dado work | 2026-02-02 → 2026-04-06 (+63d) | 2026-02-14 → 2026-04-14 (+59d) | 12d → 9d | 1346, 1359, 1376 → 1346, 1359, 1360 |  |
| 1363 | Toilet flooring work | 2026-02-14 → 2026-04-14 (+59d) | 2026-02-26 → 2026-04-21 (+54d) | 12d → 7.88d |  |  |
| 1364 | Living dinning flooring | 2025-12-17 → 2026-04-01 (+105d) | 2025-12-23 → 2026-04-09 (+107d) | 7d → 9d | 1348FS+0.25d → 1348FS+0.25d, 1357FS+0.25d |  |
| 1365 | Aluminium door-window fixing | 2025-12-18 → 2026-05-19 (+152d) | 2025-12-25 → 2026-05-31 (+157d) | 8d → 13.5d | 1349FS+0.25d → 1349, 1361, 1364 |  |
| 1366 | Putty primer coat | 2025-12-24 → 2026-04-09 (+106d) | 2025-12-29 → 2026-04-15 (+107d) | 6d → 6.75d |  |  |
| 1367 | Door shutter fixing | 2025-12-24 → 2026-04-09 (+106d) | 2026-01-01 → 2026-04-17 (+106d) | 8d → 9d |  |  |
| 1368 | Electrical wiring work | 2026-01-13 → 2026-05-29 (+136d) | 2026-01-25 → 2026-06-10 (+136d) | 12d → 13.5d |  |  |
| 1369 | Painting 1st coat | 2026-01-25 → 2026-06-13 (+139d) | 2026-02-06 → 2026-06-25 (+139d) | 12d → 13.5d |  |  |
| 1370 | False ceiling | 2026-02-06 → 2026-06-25 (+139d) | 2026-02-16 → 2026-07-05 (+139d) | 10d → 11.25d |  |  |
| 1371 | **13th Floor** | 2025-12-24 → 2026-03-03 (+69d) | 2026-03-05 → 2026-07-17 (+134d) | 71.25d → 152.25d |  | constraint start no earlier than 2025-12-24 → start no earlier than 2026-03-03 |
| 1372 | Block Work | 2026-01-03 → 2026-03-03 (+59d) | 2026-01-08 → 2026-03-11 (+62d) | 5d → 9d |  |  |
| 1373 | Door Frame Fixing | 2026-01-12 → 2026-03-11 (+58d) | 2026-01-17 → 2026-03-19 (+61d) | 5d → 9d |  |  |
| 1374 | Internal Plumbing Works | 2026-01-18 → 2026-03-29 (+70d) | 2026-01-23 → 2026-04-08 (+75d) | 5d → 11.25d |  |  |
| 1375 | Waterproofing | 2026-02-02 → 2026-04-08 (+65d) | 2026-02-10 → 2026-04-16 (+65d) | 8d → 9d |  |  |
| 1376 | Internal Plaster | 2026-01-09 → 2026-03-23 (+73d) | 2026-01-17 → 2026-03-27 (+69d) | 8d → 4.5d | 1360FS+0.25d → 1360FS+0.25d, 1373FS+0.25d |  |
| 1377 | IPS flooring work | 2026-02-14 → 2026-04-16 (+61d) | 2026-02-21 → 2026-04-25 (+63d) | 7d → 10.12d | 1361, 1373, 1375, 1392 → 1361, 1373, 1375, 1376 |  |
| 1378 | Toilet dado work | 2026-02-14 → 2026-04-16 (+61d) | 2026-02-21 → 2026-04-24 (+62d) | 7d → 9d | 1362, 1375, 1392 → 1362, 1375, 1376 |  |
| 1379 | Toilet flooring work | 2026-02-26 → 2026-04-24 (+57d) | 2026-03-05 → 2026-05-01 (+57d) | 7d → 7.88d |  |  |
| 1380 | Living dinning flooring | 2025-12-24 → 2026-05-01 (+128d) | 2026-01-01 → 2026-05-09 (+128d) | 8d → 9d | 1364FS+0.25d → 1364, 1373, 1379 |  |
| 1381 | Aluminium door-window fixing | 2025-12-26 → 2026-05-31 (+156d) | 2026-01-02 → 2026-06-12 (+161d) | 7d → 13.5d | 1365FS+0.25d → 1365, 1377, 1380 |  |
| 1382 | Putty primer coat | 2026-01-01 → 2026-05-09 (+128d) | 2026-01-07 → 2026-05-15 (+128d) | 6d → 6.75d |  |  |
| 1383 | Door shutter fixing | 2026-01-01 → 2026-05-09 (+128d) | 2026-01-09 → 2026-05-17 (+128d) | 8d → 9d |  |  |
| 1384 | Electrical wiring work | 2026-01-25 → 2026-06-10 (+136d) | 2026-02-06 → 2026-06-22 (+136d) | 12d → 13.5d |  |  |
| 1385 | Painting 1st coat | 2026-02-06 → 2026-06-25 (+139d) | 2026-02-18 → 2026-07-07 (+139d) | 12d → 13.5d |  |  |
| 1386 | False ceiling | 2026-02-18 → 2026-07-07 (+139d) | 2026-02-28 → 2026-07-17 (+139d) | 10d → 11.25d |  |  |
| 1387 | **14th Floor** | 2026-01-01 → 2026-03-12 (+70d) | 2026-03-21 → 2026-07-29 (+130d) | 79d → 156.5d |  | constraint start no earlier than 2026-01-01 → start no earlier than 2026-03-12 |
| 1388 | Block Work | 2026-01-09 → 2026-03-12 (+62d) | 2026-01-13 → 2026-03-20 (+66d) | 5d → 9d |  |  |
| 1389 | Door Frame Fixing | 2026-01-17 → 2026-03-20 (+62d) | 2026-01-26 → 2026-03-28 (+61d) |  |  |  |
| 1390 | Internal Plumbing Works | 2026-01-23 → 2026-04-08 (+75d) | 2026-02-07 → 2026-04-18 (+70d) | 15d → 11.25d |  |  |
| 1391 | Waterproofing | 2026-02-10 → 2026-04-18 (+67d) | 2026-02-25 → 2026-04-26 (+60d) | 15d → 9d |  |  |
| 1392 | Internal Plaster | 2026-01-20 → 2026-03-28 (+67d) | 2026-01-27 → 2026-04-01 (+64d) | 7d → 4.5d | 1376FS+2.75d → 1376FS+0.25d, 1389FS+0.25d |  |
| 1393 | IPS flooring work | 2026-02-25 → 2026-04-26 (+60d) | 2026-03-09 → 2026-05-05 (+57d) | 12d → 10.12d |  |  |
| 1394 | Toilet dado work | 2026-02-25 → 2026-04-26 (+60d) | 2026-03-09 → 2026-05-04 (+56d) | 12d → 9d | 1378, 1391, 1424 → 1378, 1391, 1392 |  |
| 1395 | Toilet flooring work | 2026-03-09 → 2026-05-04 (+56d) | 2026-03-21 → 2026-05-11 (+51d) | 12d → 7.88d |  |  |
| 1396 | Living dinning flooring | 2026-01-01 → 2026-05-11 (+130d) | 2026-01-08 → 2026-05-19 (+131d) | 7d → 9d | 1380FS+0.25d → 1380, 1389, 1395 |  |
| 1397 | Aluminium door-window fixing | 2026-01-02 → 2026-06-12 (+161d) | 2026-01-10 → 2026-06-24 (+165d) | 8d → 13.5d | 1381FS+0.25d → 1381, 1393, 1396 |  |
| 1398 | Putty primer coat | 2026-01-20 → 2026-05-19 (+119d) | 2026-01-26 → 2026-05-25 (+119d) | 6d → 6.75d | 1414, 1412 → 1382, 1396 |  |
| 1399 | Door shutter fixing | 2026-01-20 → 2026-05-19 (+119d) | 2026-01-28 → 2026-05-27 (+119d) | 8d → 9d | 1415, 1412 → 1383, 1396 |  |
| 1400 | Electrical wiring work | 2026-02-18 → 2026-06-22 (+124d) | 2026-03-02 → 2026-07-04 (+124d) | 12d → 13.5d | 1416, 1399 → 1384, 1399 |  |
| 1401 | Painting 1st coat | 2026-03-02 → 2026-07-07 (+127d) | 2026-03-14 → 2026-07-19 (+127d) | 12d → 13.5d | 1417, 1398, 1399, 1400 → 1385, 1398, 1399, 1400 |  |

| ID | Task | Start | Finish | Duration | Predecessors | Other |
| --- | --- | --- | --- | --- | --- | --- |
| 1402 | False ceiling | 2026-03-14 → 2026-07-19 (+127d) | 2026-03-24 → 2026-07-29 (+127d) | 10d → 11.25d | 1418, 1401 → 1386, 1401 |  |
| 1403 | **15th Floor** | 2026-01-08 → 2026-03-20 (+71d) | 2026-03-28 → 2026-08-10 (+135d) | 78.75d → 160.75d |  | constraint start no earlier than 2026-01-08 → start no earlier than 2026-03-20 |
| 1404 | Block Work | 2026-01-22 → 2026-03-20 (+57d) | 2026-01-30 → 2026-03-28 (+57d) | 8d → 9d | 1420FS+0.25d → 1388FS+0.25d |  |
| 1405 | Door Frame Fixing | 2026-02-04 → 2026-03-28 (+52d) | 2026-02-13 → 2026-04-02 (+48d) | 9d → 5.62d | 1421, 1404 → 1389, 1404 |  |
| 1406 | Internal Plumbing Works | 2026-02-17 → 2026-04-18 (+60d) | 2026-02-27 → 2026-04-28 (+60d) | 10d → 11.25d | 1422, 1404 → 1390, 1404 |  |
| 1407 | Waterproofing | 2026-03-09 → 2026-04-28 (+50d) | 2026-03-21 → 2026-05-06 (+46d) | 12d → 9d | 1423, 1406 → 1391, 1406 |  |
| 1408 | Internal Plaster | 2026-02-10 → 2026-04-02 (+51d) | 2026-02-15 → 2026-04-08 (+52d) | 5d → 6.75d | 1440FS+0.25d → 1392FS+0.25d, 1405FS+0.25d |  |
| 1409 | IPS flooring work | 2026-03-09 → 2026-05-06 (+58d) | 2026-03-18 → 2026-05-15 (+58d) | 9d → 10.12d | 1393, 1421, 1422, 1423 → 1393, 1405, 1406, 1407 |  |
| 1410 | Toilet dado work | 2026-03-09 → 2026-05-06 (+58d) | 2026-03-17 → 2026-05-14 (+58d) | 8d → 9d | 1394, 1423, 1440 → 1394, 1407, 1408 |  |
| 1411 | Toilet flooring work | 2026-03-21 → 2026-05-14 (+54d) | 2026-03-28 → 2026-05-21 (+54d) | 7d → 7.88d |  |  |
| 1412 | Living dinning flooring | 2026-01-08 → 2026-05-21 (+133d) | 2026-01-20 → 2026-05-29 (+129d) | 12d → 9d | 1396FS+0.25d → 1396, 1405, 1411 |  |
| 1413 | Aluminium door-window fixing | 2026-01-10 → 2026-06-24 (+165d) | 2026-01-22 → 2026-07-06 (+165d) | 12d → 13.5d | 1397FS+0.25d → 1397, 1409, 1412 |  |
| 1414 | Putty primer coat | 2026-01-08 → 2026-05-29 (+141d) | 2026-01-14 → 2026-06-04 (+141d) | 6d → 6.75d | 1382, 1396 → 1398, 1412 |  |
| 1415 | Door shutter fixing | 2026-01-09 → 2026-05-29 (+140d) | 2026-01-17 → 2026-06-06 (+140d) | 8d → 9d | 1383, 1396 → 1399, 1412 |  |
| 1416 | Electrical wiring work | 2026-02-06 → 2026-07-04 (+148d) | 2026-02-18 → 2026-07-16 (+148d) | 12d → 13.5d | 1384, 1415 → 1400, 1415 |  |
| 1417 | Painting 1st coat | 2026-02-18 → 2026-07-19 (+151d) | 2026-03-02 → 2026-07-31 (+151d) | 12d → 13.5d | 1385, 1414, 1415, 1416 → 1401, 1414, 1415, 1416 |  |
| 1418 | False ceiling | 2026-03-02 → 2026-07-31 (+151d) | 2026-03-12 → 2026-08-10 (+151d) | 10d → 11.25d | 1386, 1417 → 1402, 1417 |  |
| 1419 | **16th Floor** | 2026-01-21 → 2026-05-25 (+124d) | 2026-04-05 → 2026-09-09 (+157d) | 74.5d → 121.5d |  | constraint start no earlier than 2026-01-21 → start no earlier than 2026-05-25 |
| 1420 | Block Work | 2026-01-14 → 2026-05-25 (+131d) | 2026-01-22 → 2026-06-01 (+130d) | 8d → 9d | 1388FS+0.25d → 1157, 1404 |  |
| 1421 | Door Frame Fixing | 2026-01-26 → 2026-06-02 (+127d) | 2026-02-04 → 2026-06-10 (+126d) | 9d → 10.12d | 1389, 1420 → 1405, 1420 |  |
| 1422 | Internal Plumbing Works | 2026-02-07 → 2026-06-02 (+115d) | 2026-02-17 → 2026-06-11 (+114d) | 10d → 11.25d | 1390, 1420 → 1406, 1420 |  |
| 1423 | Waterproofing | 2026-02-25 → 2026-06-12 (+107d) | 2026-03-09 → 2026-06-23 (+106d) | 12d → 13.5d | 1391, 1422 → 1407, 1422 |  |
| 1424 | Internal Plaster | 2026-01-27 → 2026-06-24 (+148d) | 2026-02-04 → 2026-07-02 (+148d) | 8d → 10.12d | 1392FS+0.25d → 1408, 1421, 1422, 1423 |  |
| 1425 | IPS flooring work | 2026-03-21 → 2026-06-24 (+95d) | 2026-03-30 → 2026-07-02 (+94d) | 9d → 10.12d | 1409, 1405, 1406, 1407 → 1409, 1421, 1422, 1423 |  |
| 1426 | Toilet dado work | 2026-03-21 → 2026-07-03 (+104d) | 2026-03-29 → 2026-07-10 (+103d) | 8d → 9d | 1410, 1407, 1408 → 1410, 1423, 1424 |  |
| 1427 | Toilet flooring work | 2026-03-29 → 2026-07-11 (+104d) | 2026-04-05 → 2026-07-17 (+103d) | 7d → 7.88d |  |  |
| 1428 | Living dinning flooring | 2026-01-21 → 2026-07-18 (+178d) | 2026-02-01 → 2026-07-29 (+178d) | 12d → 13.5d | 1412FS+0.25d → 1412, 1421, 1427 |  |
| 1429 | Aluminium door-window fixing | 2026-01-23 → 2026-07-30 (+188d) | 2026-02-03 → 2026-08-10 (+188d) | 12d → 13.5d | 1413FS+0.25d → 1413, 1425, 1428 |  |
| 1430 | Putty primer coat | 2026-02-02 → 2026-07-30 (+178d) | 2026-02-07 → 2026-08-04 (+178d) | 6d → 6.75d | 1398, 1428 → 1414, 1428 |  |
| 1431 | Door shutter fixing | 2026-02-02 → 2026-07-30 (+178d) | 2026-02-09 → 2026-08-06 (+178d) | 8d → 9d | 1399, 1428 → 1415, 1428 |  |
| 1432 | Electrical wiring work | 2026-03-02 → 2026-08-07 (+158d) | 2026-03-14 → 2026-08-18 (+157d) | 12d → 13.5d | 1400, 1431 → 1416, 1431 |  |
| 1433 | Painting 1st coat | 2026-03-14 → 2026-08-19 (+158d) | 2026-03-26 → 2026-08-30 (+157d) | 12d → 13.5d | 1401, 1430, 1431, 1432 → 1417, 1430, 1431, 1432 |  |
| 1434 | False ceiling | 2026-03-26 → 2026-08-31 (+158d) | 2026-04-05 → 2026-09-09 (+157d) | 10d → 11.25d | 1402, 1433 → 1418, 1433 |  |
| 1435 | **17th Floor** | 2026-01-30 → 2026-06-05 (+126d) | 2026-04-23 → 2026-09-21 (+151d) | 82.75d → 122.62d |  | constraint start no earlier than 2026-01-30 → start no earlier than 2026-06-05 |
| 1436 | Block Work | 2026-01-30 → 2026-06-05 (+126d) | 2026-02-07 → 2026-06-12 (+125d) | 8d → 9d | 1404FS+0.25d → 1158, 1420 |  |
| 1437 | Door Frame Fixing | 2026-02-13 → 2026-06-13 (+120d) | 2026-02-22 → 2026-06-21 (+119d) | 9d → 10.12d | 1405, 1436 → 1421, 1436 |  |
| 1438 | Internal Plumbing Works | 2026-02-27 → 2026-06-13 (+106d) | 2026-03-09 → 2026-06-22 (+105d) | 10d → 11.25d | 1406, 1436 → 1422, 1436 |  |
| 1439 | Waterproofing | 2026-03-21 → 2026-06-24 (+95d) | 2026-04-02 → 2026-07-05 (+94d) | 12d → 13.5d | 1407, 1438 → 1423, 1438 |  |
| 1440 | Internal Plaster | 2026-02-05 → 2026-07-06 (+151d) | 2026-02-09 → 2026-07-14 (+155d) | 5d → 10.12d | 1424FS+0.25d → 1424, 1437, 1438, 1439 |  |
| 1441 | IPS flooring work | 2026-04-02 → 2026-07-06 (+95d) | 2026-04-11 → 2026-07-14 (+94d) | 9d → 10.12d |  |  |
| 1442 | Toilet dado work | 2026-04-02 → 2026-07-15 (+104d) | 2026-04-10 → 2026-07-22 (+103d) | 8d → 9d | 1426, 1439, 1456 → 1426, 1439, 1440 |  |
| 1443 | Toilet flooring work | 2026-04-10 → 2026-07-23 (+104d) | 2026-04-17 → 2026-07-29 (+103d) | 7d → 7.88d |  |  |
| 1444 | Living dinning flooring | 2026-02-02 → 2026-07-30 (+178d) | 2026-02-14 → 2026-08-10 (+177d) | 12d → 13.5d | 1428FS+0.25d → 1428, 1437, 1443 |  |
| 1445 | Aluminium door-window fixing | 2026-04-11 → 2026-08-11 (+122d) | 2026-04-23 → 2026-08-22 (+121d) | 12d → 13.5d |  |  |
| 1446 | Putty primer coat | 2026-02-14 → 2026-08-11 (+178d) | 2026-02-20 → 2026-08-16 (+177d) | 6d → 6.75d |  |  |
| 1447 | Door shutter fixing | 2026-02-14 → 2026-08-11 (+178d) | 2026-02-22 → 2026-08-18 (+177d) | 8d → 9d |  |  |
| 1448 | Electrical wiring work | 2026-03-14 → 2026-08-19 (+158d) | 2026-03-26 → 2026-08-30 (+157d) | 12d → 13.5d |  |  |
| 1449 | Painting 1st coat | 2026-03-26 → 2026-08-31 (+158d) | 2026-04-07 → 2026-09-11 (+157d) | 12d → 13.5d |  |  |
| 1450 | False ceiling | 2026-04-07 → 2026-09-12 (+158d) | 2026-04-17 → 2026-09-21 (+157d) | 10d → 11.25d |  |  |
| 1451 | **18th Floor** | 2026-02-08 → 2026-06-16 (+128d) | 2026-05-05 → 2026-10-03 (+151d) | 86.75d → 123.75d |  | constraint start no earlier than 2026-02-08 → start no earlier than 2026-06-16 |
| 1452 | Block Work | 2026-02-08 → 2026-06-16 (+128d) | 2026-02-15 → 2026-06-23 (+128d) | 8d → 9d | 1436FS+0.25d → 1159, 1436 |  |
| 1453 | Door Frame Fixing | 2026-02-22 → 2026-06-24 (+122d) | 2026-03-03 → 2026-07-02 (+121d) | 9d → 10.12d |  |  |
| 1454 | Internal Plumbing Works | 2026-03-09 → 2026-06-24 (+107d) | 2026-03-19 → 2026-07-03 (+106d) | 10d → 11.25d |  |  |
| 1455 | Waterproofing | 2026-04-02 → 2026-07-06 (+95d) | 2026-04-14 → 2026-07-17 (+94d) | 12d → 13.5d |  |  |
| 1456 | Internal Plaster | 2026-02-15 → 2026-07-18 (+153d) | 2026-02-20 → 2026-07-26 (+156d) | 5d → 10.12d | 1408FS+0.25d → 1440, 1453, 1454, 1455 |  |
| 1457 | IPS flooring work | 2026-04-14 → 2026-07-18 (+95d) | 2026-04-23 → 2026-07-26 (+94d) | 9d → 10.12d |  |  |
| 1458 | Toilet dado work | 2026-04-14 → 2026-07-27 (+104d) | 2026-04-22 → 2026-08-03 (+103d) | 8d → 9d | 1442, 1455, 1472 → 1442, 1455, 1456 |  |
| 1459 | Toilet flooring work | 2026-04-22 → 2026-08-04 (+104d) | 2026-04-29 → 2026-08-10 (+103d) | 7d → 7.88d |  |  |
| 1460 | Living dinning flooring | 2026-02-14 → 2026-08-11 (+178d) | 2026-02-26 → 2026-08-22 (+177d) | 12d → 13.5d | 1444FS+0.25d → 1444, 1453, 1459 |  |
| 1461 | Aluminium door-window fixing | 2026-04-23 → 2026-08-23 (+122d) | 2026-05-05 → 2026-09-03 (+121d) | 12d → 13.5d | 1445FS+0.25d → 1445, 1457, 1460 |  |
| 1462 | Putty primer coat | 2026-02-26 → 2026-08-23 (+178d) | 2026-03-04 → 2026-08-28 (+177d) | 6d → 6.75d |  |  |
| 1463 | Door shutter fixing | 2026-02-26 → 2026-08-23 (+178d) | 2026-03-06 → 2026-08-30 (+177d) | 8d → 9d |  |  |
| 1464 | Electrical wiring work | 2026-03-26 → 2026-08-31 (+158d) | 2026-04-07 → 2026-09-11 (+157d) | 12d → 13.5d |  |  |
| 1465 | Painting 1st coat | 2026-04-07 → 2026-09-12 (+158d) | 2026-04-19 → 2026-09-23 (+157d) | 12d → 13.5d |  |  |
| 1466 | False ceiling | 2026-04-19 → 2026-09-24 (+158d) | 2026-04-29 → 2026-10-03 (+157d) | 10d → 11.25d |  |  |
| 1467 | **19th Floor** | 2026-02-16 → 2026-06-27 (+131d) | 2026-05-17 → 2026-10-15 (+151d) | 90.75d → 124.88d |  | constraint start no earlier than 2026-02-16 → start no earlier than 2026-06-27 |
| 1468 | Block Work | 2026-02-16 → 2026-06-27 (+131d) | 2026-02-24 → 2026-07-04 (+130d) | 8d → 9d | 1452FS+0.25d → 1160, 1452 |  |
| 1469 | Door Frame Fixing | 2026-03-03 → 2026-07-05 (+124d) | 2026-03-12 → 2026-07-13 (+123d) | 9d → 10.12d |  |  |
| 1470 | Internal Plumbing Works | 2026-03-19 → 2026-07-05 (+108d) | 2026-03-29 → 2026-07-14 (+107d) | 10d → 11.25d |  |  |
| 1471 | Waterproofing | 2026-04-14 → 2026-07-18 (+95d) | 2026-04-26 → 2026-07-29 (+94d) | 12d → 13.5d |  |  |

| ID | Task | Start | Finish | Duration | Predecessors | Other |
| --- | --- | --- | --- | --- | --- | --- |
| 1472 | Internal Plaster | 2026-02-20 → 2026-07-30 (+160d) | 2026-03-01 → 2026-08-07 (+159d) | 9d → 10.12d | 1456 → 1456, 1469, 1470, 1471 |  |
| 1473 | IPS flooring work | 2026-04-26 → 2026-08-08 (+104d) | 2026-05-05 → 2026-08-16 (+103d) | 9d → 10.12d | 1457, 1469, 1471, 1488 → 1457, 1469, 1471, 1472 |  |
| 1474 | Toilet dado work | 2026-04-26 → 2026-08-08 (+104d) | 2026-05-04 → 2026-08-15 (+103d) | 8d → 9d | 1458, 1471, 1488 → 1458, 1471, 1472 |  |
| 1475 | Toilet flooring work | 2026-05-04 → 2026-08-16 (+104d) | 2026-05-11 → 2026-08-22 (+103d) | 7d → 7.88d |  |  |
| 1476 | Living dinning flooring | 2026-02-26 → 2026-08-23 (+178d) | 2026-03-10 → 2026-09-03 (+177d) | 12d → 13.5d | 1460FS+0.25d → 1460, 1469, 1475 |  |
| 1477 | Aluminium door-window fixing | 2026-05-06 → 2026-09-04 (+121d) | 2026-05-17 → 2026-09-15 (+121d) | 12d → 13.5d | 1461FS+0.25d → 1461, 1473, 1476 |  |
| 1478 | Putty primer coat | 2026-03-10 → 2026-09-04 (+178d) | 2026-03-16 → 2026-09-09 (+177d) | 6d → 6.75d |  |  |
| 1479 | Door shutter fixing | 2026-03-10 → 2026-09-04 (+178d) | 2026-03-18 → 2026-09-11 (+177d) | 8d → 9d |  |  |
| 1480 | Electrical wiring work | 2026-04-07 → 2026-09-12 (+158d) | 2026-04-19 → 2026-09-23 (+157d) | 12d → 13.5d |  |  |
| 1481 | Painting 1st coat | 2026-04-19 → 2026-09-24 (+158d) | 2026-05-01 → 2026-10-05 (+157d) | 12d → 13.5d |  |  |
| 1482 | False ceiling | 2026-05-01 → 2026-10-06 (+158d) | 2026-05-11 → 2026-10-15 (+157d) | 10d → 11.25d |  |  |
| 1483 | **20th Floor** | 2026-02-24 → 2026-07-08 (+134d) | 2026-05-29 → 2026-10-27 (+151d) | 94.5d → 126d |  | constraint start no earlier than 2026-02-24 → start no earlier than 2026-07-08 |
| 1484 | Block Work | 2026-02-24 → 2026-07-08 (+134d) | 2026-03-04 → 2026-07-15 (+133d) | 8d → 9d | 1468FS+0.25d → 1161, 1468 |  |
| 1485 | Door Frame Fixing | 2026-03-12 → 2026-07-16 (+126d) | 2026-03-21 → 2026-07-24 (+125d) | 9d → 10.12d |  |  |
| 1486 | Internal Plumbing Works | 2026-03-29 → 2026-07-16 (+109d) | 2026-04-08 → 2026-07-25 (+108d) | 10d → 11.25d |  |  |
| 1487 | Waterproofing | 2026-04-26 → 2026-07-30 (+95d) | 2026-05-08 → 2026-08-10 (+94d) | 12d → 13.5d |  |  |
| 1488 | Internal Plaster | 2026-03-01 → 2026-08-11 (+163d) | 2026-03-06 → 2026-08-19 (+166d) | 5d → 10.12d | 1472FS+0.25d → 1472, 1485, 1486, 1487 |  |
| 1489 | IPS flooring work | 2026-05-08 → 2026-08-20 (+104d) | 2026-05-17 → 2026-08-28 (+103d) | 9d → 10.12d | 1473, 1485, 1487, 1504 → 1473, 1485, 1487, 1488 |  |
| 1490 | Toilet dado work | 2026-05-08 → 2026-08-20 (+104d) | 2026-05-16 → 2026-08-27 (+103d) | 8d → 9d | 1474, 1487, 1504 → 1474, 1487, 1488 |  |
| 1491 | Toilet flooring work | 2026-05-16 → 2026-08-28 (+104d) | 2026-05-23 → 2026-09-03 (+103d) | 7d → 7.88d |  |  |
| 1492 | Living dinning flooring | 2026-03-11 → 2026-09-04 (+177d) | 2026-03-22 → 2026-09-15 (+177d) | 12d → 13.5d | 1476FS+0.25d → 1476, 1485, 1491 |  |
| 1493 | Aluminium door-window fixing | 2026-05-18 → 2026-09-16 (+121d) | 2026-05-29 → 2026-09-27 (+121d) | 12d → 13.5d |  |  |
| 1494 | Putty primer coat | 2026-03-23 → 2026-09-16 (+177d) | 2026-03-28 → 2026-09-21 (+177d) | 6d → 6.75d |  |  |
| 1495 | Door shutter fixing | 2026-03-23 → 2026-09-16 (+177d) | 2026-03-30 → 2026-09-23 (+177d) | 8d → 9d |  |  |
| 1496 | Electrical wiring work | 2026-04-19 → 2026-09-24 (+158d) | 2026-05-01 → 2026-10-05 (+157d) | 12d → 13.5d |  |  |
| 1497 | Painting 1st coat | 2026-05-01 → 2026-10-06 (+158d) | 2026-05-13 → 2026-10-17 (+157d) | 12d → 13.5d |  |  |
| 1498 | False ceiling | 2026-05-13 → 2026-10-18 (+158d) | 2026-05-23 → 2026-10-27 (+157d) | 10d → 11.25d |  |  |
| 1499 | **21st Floor** | 2026-03-04 → 2026-07-19 (+137d) | 2026-07-28 → 2026-12-23 (+148d) | 145.75d → 127.12d |  | constraint start no earlier than 2026-03-04 → start no earlier than 2026-07-19 |
| 1500 | Block Work | 2026-03-04 → 2026-07-19 (+137d) | 2026-03-12 → 2026-07-26 (+136d) | 8d → 9d | 1484FS+0.25d → 1162, 1484 |  |
| 1501 | Door Frame Fixing | 2026-03-21 → 2026-07-27 (+128d) | 2026-03-30 → 2026-08-04 (+127d) | 9d → 10.12d |  |  |
| 1502 | Internal Plumbing Works | 2026-04-08 → 2026-07-27 (+110d) | 2026-04-18 → 2026-08-05 (+109d) | 10d → 11.25d |  |  |
| 1503 | Waterproofing | 2026-05-08 → 2026-08-11 (+95d) | 2026-05-20 → 2026-08-22 (+94d) | 12d → 13.5d |  |  |
| 1504 | Internal Plaster | 2026-03-07 → 2026-08-23 (+169d) | 2026-03-11 → 2026-08-31 (+173d) | 5d → 10.12d | 1488FS+0.25d → 1488, 1501, 1502, 1503 |  |
| 1505 | IPS flooring work | 2026-05-20 → 2026-09-01 (+104d) | 2026-05-29 → 2026-09-09 (+103d) | 9d → 10.12d | 1489, 1501, 1503, 1520 → 1489, 1501, 1503, 1504 |  |
| 1506 | Toilet dado work | 2026-05-20 → 2026-09-01 (+104d) | 2026-05-28 → 2026-09-08 (+103d) | 8d → 9d | 1490, 1503, 1520 → 1490, 1503, 1504 |  |
| 1507 | Toilet flooring work | 2026-05-28 → 2026-09-09 (+104d) | 2026-06-04 → 2026-09-15 (+103d) | 7d → 7.88d |  |  |
| 1508 | Living dinning flooring | 2026-06-04 → 2026-09-16 (+104d) | 2026-06-16 → 2026-09-27 (+103d) | 12d → 13.5d |  |  |
| 1509 | Aluminium door-window fixing | 2026-06-16 → 2026-09-28 (+104d) | 2026-06-28 → 2026-10-09 (+103d) | 12d → 13.5d |  |  |
| 1510 | Putty primer coat | 2026-06-16 → 2026-09-28 (+104d) | 2026-06-22 → 2026-10-03 (+103d) | 6d → 6.75d |  |  |
| 1511 | Door shutter fixing | 2026-06-16 → 2026-09-28 (+104d) | 2026-06-24 → 2026-10-05 (+103d) | 8d → 9d |  |  |
| 1512 | Electrical wiring work | 2026-06-24 → 2026-10-06 (+104d) | 2026-07-06 → 2026-10-17 (+103d) | 12d → 13.5d |  |  |
| 1513 | Painting 1st coat | 2026-07-06 → 2026-10-18 (+104d) | 2026-07-18 → 2026-10-29 (+103d) | 12d → 13.5d |  |  |
| 1514 | False ceiling | 2026-07-18 → 2026-10-30 (+104d) | 2026-07-28 → 2026-12-23 (+148d) | 10d → 11.25d |  |  |
| 1515 | **22nd Floor** | 2026-03-13 → 2026-07-30 (+139d) | 2026-08-09 → 2027-01-04 (+148d) | 149.5d → 128.25d |  | constraint start no earlier than 2026-03-13 → start no earlier than 2026-07-30 |
| 1516 | Block Work | 2026-03-13 → 2026-07-30 (+139d) | 2026-03-17 → 2026-08-06 (+142d) | 5d → 9d | 1500FS+0.25d → 1163, 1500 |  |
| 1517 | Door Frame Fixing | 2026-03-30 → 2026-08-07 (+130d) | 2026-04-08 → 2026-08-15 (+129d) | 9d → 10.12d |  |  |
| 1518 | Internal Plumbing Works | 2026-04-18 → 2026-08-07 (+111d) | 2026-04-28 → 2026-08-16 (+110d) | 10d → 11.25d |  |  |
| 1519 | Waterproofing | 2026-05-20 → 2026-08-23 (+95d) | 2026-06-01 → 2026-09-03 (+94d) | 12d → 13.5d |  |  |
| 1520 | Internal Plaster | 2026-03-12 → 2026-09-04 (+176d) | 2026-03-20 → 2026-09-12 (+176d) | 8d → 10.12d | 1504FS+0.25d → 1504, 1517, 1518, 1519 |  |
| 1521 | IPS flooring work | 2026-06-01 → 2026-09-13 (+104d) | 2026-06-10 → 2026-09-21 (+103d) | 9d → 10.12d | 1505, 1517, 1519, 1536 → 1505, 1517, 1519, 1520 |  |
| 1522 | Toilet dado work | 2026-06-01 → 2026-09-13 (+104d) | 2026-06-09 → 2026-09-20 (+103d) | 8d → 9d | 1506, 1519, 1536 → 1506, 1519, 1520 |  |
| 1523 | Toilet flooring work | 2026-06-09 → 2026-09-21 (+104d) | 2026-06-16 → 2026-09-27 (+103d) | 7d → 7.88d |  |  |
| 1524 | Living dinning flooring | 2026-06-16 → 2026-09-28 (+104d) | 2026-06-28 → 2026-10-09 (+103d) | 12d → 13.5d |  |  |
| 1525 | Aluminium door-window fixing | 2026-06-28 → 2026-10-10 (+104d) | 2026-07-10 → 2026-10-21 (+103d) | 12d → 13.5d |  |  |
| 1526 | Putty primer coat | 2026-06-28 → 2026-10-10 (+104d) | 2026-07-04 → 2026-10-15 (+103d) | 6d → 6.75d |  |  |
| 1527 | Door shutter fixing | 2026-06-28 → 2026-10-10 (+104d) | 2026-07-06 → 2026-10-17 (+103d) | 8d → 9d |  |  |
| 1528 | Electrical wiring work | 2026-07-06 → 2026-10-18 (+104d) | 2026-07-18 → 2026-10-29 (+103d) | 12d → 13.5d |  |  |
| 1529 | Painting 1st coat | 2026-07-18 → 2026-10-30 (+104d) | 2026-07-30 → 2026-12-25 (+148d) | 12d → 13.5d |  |  |
| 1530 | False ceiling | 2026-07-30 → 2026-12-26 (+149d) | 2026-08-09 → 2027-01-04 (+148d) | 10d → 11.25d |  |  |
| 1531 | **23rd Floor** | 2026-03-18 → 2026-08-10 (+145d) | 2026-08-24 → 2027-01-19 (+148d) | 159.25d → 132.75d |  | constraint start no earlier than 2026-03-18 → start no earlier than 2026-08-10 |
| 1532 | Block Work | 2026-03-18 → 2026-08-10 (+145d) | 2026-03-26 → 2026-08-17 (+144d) | 7.94d → 9d | 1516FS+0.25d → 1164, 1516 |  |
| 1533 | Door Frame Fixing | 2026-04-08 → 2026-08-18 (+132d) | 2026-04-17 → 2026-08-26 (+131d) | 9d → 10.12d |  |  |
| 1534 | Internal Plumbing Works | 2026-04-28 → 2026-08-18 (+112d) | 2026-05-08 → 2026-08-27 (+111d) | 10d → 11.25d |  |  |
| 1535 | Waterproofing | 2026-06-01 → 2026-09-04 (+95d) | 2026-06-13 → 2026-09-15 (+94d) | 12d → 13.5d |  |  |
| 1536 | Internal Plaster | 2026-03-20 → 2026-09-16 (+180d) | 2026-03-30 → 2026-09-24 (+178d) | 10d → 10.12d | 1520FS+0.25d → 1520, 1533, 1534, 1535 |  |
| 1537 | IPS flooring work | 2026-06-13 → 2026-09-25 (+104d) | 2026-06-22 → 2026-10-03 (+103d) | 9d → 10.12d | 1521, 1533, 1535, 1552 → 1521, 1533, 1535, 1536 |  |
| 1538 | Toilet dado work | 2026-06-13 → 2026-09-25 (+104d) | 2026-06-21 → 2026-10-02 (+103d) | 8d → 9d | 1522, 1535, 1552 → 1522, 1535, 1536 |  |
| 1539 | Toilet flooring work | 2026-06-21 → 2026-10-03 (+104d) | 2026-06-28 → 2026-10-09 (+103d) | 7d → 7.88d |  |  |
| 1540 | Living dinning flooring | 2026-06-28 → 2026-10-10 (+104d) | 2026-07-13 → 2026-10-24 (+103d) | 15d → 16.88d |  |  |
| 1541 | Aluminium door-window fixing | 2026-07-13 → 2026-10-25 (+104d) | 2026-07-28 → 2026-12-23 (+148d) | 15d → 16.88d |  |  |

| ID | Task | Start | Finish | Duration | Predecessors | Other |
| --- | --- | --- | --- | --- | --- | --- |
| 1542 | Putty primer coat | 2026-07-13 → 2026-10-25 (+104d) | 2026-07-19 → 2026-10-30 (+103d) | 6d → 6.75d |  |  |
| 1543 | Door shutter fixing | 2026-07-13 → 2026-10-25 (+104d) | 2026-07-21 → 2026-12-16 (+148d) | 8d → 9d |  |  |
| 1544 | Electrical wiring work | 2026-07-21 → 2026-12-17 (+149d) | 2026-08-02 → 2026-12-28 (+148d) | 12d → 13.5d |  |  |
| 1545 | Painting 1st coat | 2026-08-02 → 2026-12-29 (+149d) | 2026-08-14 → 2027-01-09 (+148d) | 12d → 13.5d |  |  |
| 1546 | False ceiling | 2026-08-14 → 2027-01-10 (+149d) | 2026-08-24 → 2027-01-19 (+148d) | 10d → 11.25d |  |  |
| 1547 | **24th Floor** | 2026-03-26 → 2026-08-21 (+148d) | 2026-09-14 → 2027-02-03 (+142d) | 172.06d → 137.25d |  | constraint start no earlier than 2026-03-26 → start no earlier than 2026-08-21 |
| 1548 | Block Work | 2026-03-26 → 2026-08-21 (+148d) | 2026-03-30 → 2026-08-28 (+151d) | 4d → 9d | 1532FS+0.25d → 1165, 1532 |  |
| 1549 | Door Frame Fixing | 2026-04-17 → 2026-08-29 (+134d) | 2026-04-26 → 2026-09-06 (+133d) | 9d → 10.12d |  |  |
| 1550 | Internal Plumbing Works | 2026-05-08 → 2026-08-29 (+113d) | 2026-05-18 → 2026-09-07 (+112d) | 10d → 11.25d |  |  |
| 1551 | Waterproofing | 2026-06-13 → 2026-09-16 (+95d) | 2026-06-25 → 2026-09-27 (+94d) | 12d → 13.5d |  |  |
| 1552 | Internal Plaster | 2026-03-30 → 2026-09-28 (+182d) | 2026-04-09 → 2026-10-06 (+180d) | 10d → 10.12d | 1536FS+0.25d → 1536, 1549, 1550, 1551 |  |
| 1553 | IPS flooring work | 2026-07-04 → 2026-10-07 (+95d) | 2026-07-13 → 2026-10-15 (+94d) | 9d → 10.12d | 1537, 1549, 1551, 1568 → 1537, 1549, 1551, 1552 |  |
| 1554 | Toilet dado work | 2026-07-04 → 2026-10-07 (+95d) | 2026-07-12 → 2026-10-14 (+94d) | 8d → 9d | 1538, 1551, 1568 → 1538, 1551, 1552 |  |
| 1555 | Toilet flooring work | 2026-07-12 → 2026-10-15 (+95d) | 2026-07-19 → 2026-10-21 (+94d) | 7d → 7.88d |  |  |
| 1556 | Living dinning flooring | 2026-07-19 → 2026-10-25 (+98d) | 2026-08-03 → 2026-12-23 (+142d) | 15d → 16.88d |  |  |
| 1557 | Aluminium door-window fixing | 2026-08-03 → 2026-12-24 (+143d) | 2026-08-18 → 2027-01-07 (+142d) | 15d → 16.88d |  |  |
| 1558 | Putty primer coat | 2026-08-03 → 2026-12-24 (+143d) | 2026-08-09 → 2026-12-29 (+142d) | 6d → 6.75d |  |  |
| 1559 | Door shutter fixing | 2026-08-03 → 2026-12-24 (+143d) | 2026-08-11 → 2026-12-31 (+142d) | 8d → 9d |  |  |
| 1560 | Electrical wiring work | 2026-08-11 → 2027-01-01 (+143d) | 2026-08-23 → 2027-01-12 (+142d) | 12d → 13.5d |  |  |
| 1561 | Painting 1st coat | 2026-08-23 → 2027-01-13 (+143d) | 2026-09-04 → 2027-01-24 (+142d) | 12d → 13.5d |  |  |
| 1562 | False ceiling | 2026-09-04 → 2027-01-25 (+143d) | 2026-09-14 → 2027-02-03 (+142d) | 10d → 11.25d |  |  |
| 1563 | **25th Floor** | 2026-05-24 → 2026-09-01 (+100d) | 2026-09-29 → 2027-02-18 (+142d) | 128.38d → 141.75d |  | constraint start no earlier than 2026-05-24 → start no earlier than 2026-09-01 |
| 1564 | Block Work | 2026-05-24 → 2026-09-01 (+100d) | 2026-06-01 → 2026-09-08 (+99d) | 7.94d → 9d |  |  |
| 1565 | Door Frame Fixing | 2026-06-01 → 2026-09-09 (+100d) | 2026-06-10 → 2026-09-17 (+99d) | 9d → 10.12d |  |  |
| 1566 | Internal Plumbing Works | 2026-06-01 → 2026-09-09 (+100d) | 2026-06-11 → 2026-09-18 (+99d) | 10d → 11.25d |  |  |
| 1567 | Waterproofing | 2026-06-25 → 2026-09-28 (+95d) | 2026-07-07 → 2026-10-09 (+94d) | 12d → 13.5d |  |  |
| 1568 | Internal Plaster | 2026-06-25 → 2026-10-10 (+107d) | 2026-07-04 → 2026-10-18 (+106d) | 9d → 10.12d | 1552, 1549, 1550, 1551 → 1552, 1565, 1566, 1567 |  |
| 1569 | IPS flooring work | 2026-07-16 → 2026-10-19 (+95d) | 2026-07-25 → 2026-10-27 (+94d) | 9d → 10.12d | 1553, 1565, 1567, 1584 → 1553, 1565, 1567, 1568 |  |
| 1570 | Toilet dado work | 2026-07-16 → 2026-10-19 (+95d) | 2026-07-24 → 2026-10-26 (+94d) | 8d → 9d | 1554, 1567, 1584 → 1554, 1567, 1568 |  |
| 1571 | Toilet flooring work | 2026-07-24 → 2026-10-27 (+95d) | 2026-07-31 → 2026-12-17 (+139d) | 7d → 7.88d |  |  |
| 1572 | Living dinning flooring | 2026-08-03 → 2026-12-24 (+143d) | 2026-08-18 → 2027-01-07 (+142d) | 15d → 16.88d |  |  |
| 1573 | Aluminium door-window fixing | 2026-08-18 → 2027-01-08 (+143d) | 2026-09-02 → 2027-01-22 (+142d) | 15d → 16.88d |  |  |
| 1574 | Putty primer coat | 2026-08-18 → 2027-01-08 (+143d) | 2026-08-24 → 2027-01-13 (+142d) | 6d → 6.75d |  |  |
| 1575 | Door shutter fixing | 2026-08-18 → 2027-01-08 (+143d) | 2026-08-26 → 2027-01-15 (+142d) | 8d → 9d |  |  |
| 1576 | Electrical wiring work | 2026-08-26 → 2027-01-16 (+143d) | 2026-09-07 → 2027-01-27 (+142d) | 12d → 13.5d |  |  |
| 1577 | Painting 1st coat | 2026-09-07 → 2027-01-28 (+143d) | 2026-09-19 → 2027-02-08 (+142d) | 12d → 13.5d |  |  |
| 1578 | False ceiling | 2026-09-19 → 2027-02-09 (+143d) | 2026-09-29 → 2027-02-18 (+142d) | 10d → 11.25d |  |  |
| 1579 | **26th Floor** | 2026-06-04 → 2026-09-12 (+100d) | 2026-10-14 → 2027-03-05 (+142d) | 131.62d → 146.25d |  | constraint start no earlier than 2026-06-04 → start no earlier than 2026-09-12 |
| 1580 | Block Work | 2026-06-04 → 2026-09-12 (+100d) | 2026-06-12 → 2026-09-19 (+99d) | 7.94d → 9d |  |  |
| 1581 | Door Frame Fixing | 2026-06-12 → 2026-09-20 (+100d) | 2026-06-21 → 2026-09-28 (+99d) | 9d → 10.12d |  |  |
| 1582 | Internal Plumbing Works | 2026-06-12 → 2026-09-20 (+100d) | 2026-06-22 → 2026-09-29 (+99d) | 10d → 11.25d |  |  |
| 1583 | Waterproofing | 2026-07-07 → 2026-10-10 (+95d) | 2026-07-19 → 2026-10-21 (+94d) | 12d → 13.5d |  |  |
| 1584 | Internal Plaster | 2026-07-07 → 2026-10-22 (+107d) | 2026-07-16 → 2026-10-30 (+106d) | 9d → 10.12d | 1568, 1565, 1566, 1567 → 1568, 1581, 1582, 1583 |  |
| 1585 | IPS flooring work | 2026-07-28 → 2026-10-31 (+95d) | 2026-08-06 → 2026-12-23 (+139d) | 9d → 10.12d | 1569, 1581, 1583, 1600 → 1569, 1581, 1583, 1584 |  |
| 1586 | Toilet dado work | 2026-07-28 → 2026-10-31 (+95d) | 2026-08-05 → 2026-12-22 (+139d) | 8d → 9d | 1570, 1583, 1600 → 1570, 1583, 1584 |  |
| 1587 | Toilet flooring work | 2026-08-05 → 2026-12-23 (+140d) | 2026-08-12 → 2026-12-29 (+139d) | 7d → 7.88d |  |  |
| 1588 | Living dinning flooring | 2026-08-18 → 2027-01-08 (+143d) | 2026-09-02 → 2027-01-22 (+142d) | 15d → 16.88d |  |  |
| 1589 | Aluminium door-window fixing | 2026-09-02 → 2027-01-23 (+143d) | 2026-09-17 → 2027-02-06 (+142d) | 15d → 16.88d |  |  |
| 1590 | Putty primer coat | 2026-09-02 → 2027-01-23 (+143d) | 2026-09-08 → 2027-01-28 (+142d) | 6d → 6.75d |  |  |
| 1591 | Door shutter fixing | 2026-09-02 → 2027-01-23 (+143d) | 2026-09-10 → 2027-01-30 (+142d) | 8d → 9d |  |  |
| 1592 | Electrical wiring work | 2026-09-10 → 2027-01-31 (+143d) | 2026-09-22 → 2027-02-11 (+142d) | 12d → 13.5d |  |  |
| 1593 | Painting 1st coat | 2026-09-22 → 2027-02-12 (+143d) | 2026-10-04 → 2027-02-23 (+142d) | 12d → 13.5d |  |  |
| 1594 | False ceiling | 2026-10-04 → 2027-02-24 (+143d) | 2026-10-14 → 2027-03-05 (+142d) | 10d → 11.25d |  |  |
| 1595 | **27th Floor** | 2026-06-17 → 2026-09-23 (+98d) | 2026-10-29 → 2027-03-20 (+142d) | 133.88d → 150.75d |  | constraint start no earlier than 2026-06-17 → start no earlier than 2026-09-23 |
| 1596 | Block Work | 2026-06-17 → 2026-09-23 (+98d) | 2026-06-25 → 2026-09-30 (+97d) | 7.94d → 9d |  |  |
| 1597 | Door Frame Fixing | 2026-06-25 → 2026-10-01 (+98d) | 2026-07-04 → 2026-10-09 (+97d) | 8.94d → 10.12d |  |  |
| 1598 | Internal Plumbing Works | 2026-06-25 → 2026-10-01 (+98d) | 2026-07-05 → 2026-10-10 (+97d) | 10d → 11.25d |  |  |
| 1599 | Waterproofing | 2026-07-19 → 2026-10-22 (+95d) | 2026-07-31 → 2026-12-17 (+139d) | 12d → 13.5d |  |  |
| 1600 | Internal Plaster | 2026-07-19 → 2026-12-18 (+152d) | 2026-07-28 → 2026-12-26 (+151d) | 9d → 10.12d | 1584, 1581, 1582, 1583 → 1584, 1597, 1598, 1599 |  |
| 1601 | IPS flooring work | 2026-08-09 → 2026-12-27 (+140d) | 2026-08-18 → 2027-01-04 (+139d) | 9d → 10.12d | 1585, 1597, 1599, 1616 → 1585, 1597, 1599, 1600 |  |
| 1602 | Toilet dado work | 2026-08-09 → 2026-12-27 (+140d) | 2026-08-17 → 2027-01-03 (+139d) | 8d → 9d | 1586, 1599, 1616 → 1586, 1599, 1600 |  |
| 1603 | Toilet flooring work | 2026-08-17 → 2027-01-04 (+140d) | 2026-08-24 → 2027-01-10 (+139d) | 7d → 7.88d |  |  |
| 1604 | Living dinning flooring | 2026-09-02 → 2027-01-23 (+143d) | 2026-09-17 → 2027-02-06 (+142d) | 15d → 16.88d |  |  |
| 1605 | Aluminium door-window fixing | 2026-09-17 → 2027-02-07 (+143d) | 2026-10-02 → 2027-02-21 (+142d) | 15d → 16.88d |  |  |
| 1606 | Putty primer coat | 2026-09-17 → 2027-02-07 (+143d) | 2026-09-23 → 2027-02-12 (+142d) | 6d → 6.75d |  |  |
| 1607 | Door shutter fixing | 2026-09-17 → 2027-02-07 (+143d) | 2026-09-25 → 2027-02-14 (+142d) | 8d → 9d |  |  |
| 1608 | Electrical wiring work | 2026-09-25 → 2027-02-15 (+143d) | 2026-10-07 → 2027-02-26 (+142d) | 12d → 13.5d |  |  |
| 1609 | Painting 1st coat | 2026-10-07 → 2027-02-27 (+143d) | 2026-10-19 → 2027-03-10 (+142d) | 12d → 13.5d |  |  |
| 1610 | False ceiling | 2026-10-19 → 2027-03-11 (+143d) | 2026-10-29 → 2027-03-20 (+142d) | 10d → 11.25d |  |  |
| 1611 | **28th Floor** | 2026-06-29 → 2026-10-04 (+97d) | 2026-12-28 → 2027-04-04 (+97d) | 137.12d → 155.25d |  | constraint start no earlier than 2026-06-29 → start no earlier than 2026-10-04 |

| ID | Task | Start | Finish | Duration | Predecessors | Other |
| --- | --- | --- | --- | --- | --- | --- |
| 1612 | Block Work | 2026-06-29 → 2026-10-04 (+97d) | 2026-07-07 → 2026-10-11 (+96d) | 7.94d → 9d |  |  |
| 1613 | Door Frame Fixing | 2026-07-07 → 2026-10-12 (+97d) | 2026-07-16 → 2026-10-20 (+96d) | 8.94d → 10.12d |  |  |
| 1614 | Internal Plumbing Works | 2026-07-07 → 2026-10-12 (+97d) | 2026-07-17 → 2026-10-21 (+96d) | 10d → 11.25d |  |  |
| 1615 | Waterproofing | 2026-07-31 → 2026-12-18 (+140d) | 2026-08-12 → 2026-12-29 (+139d) | 12d → 13.5d |  |  |
| 1616 | Internal Plaster | 2026-07-31 → 2026-12-30 (+152d) | 2026-08-09 → 2027-01-07 (+151d) | 9d → 10.12d | 1600, 1597, 1598, 1599 → 1600, 1613, 1614, 1615 |  |
| 1617 | IPS flooring work | 2026-08-21 → 2027-01-08 (+140d) | 2026-08-30 → 2027-01-16 (+139d) | 9d → 10.12d | 1601, 1613, 1615, 1632 → 1601, 1613, 1615, 1616 |  |
| 1618 | Toilet dado work | 2026-08-21 → 2027-01-08 (+140d) | 2026-08-29 → 2027-01-15 (+139d) | 8d → 9d | 1602, 1615, 1632 → 1602, 1615, 1616 |  |
| 1619 | Toilet flooring work | 2026-08-29 → 2027-01-16 (+140d) | 2026-09-05 → 2027-01-22 (+139d) | 7d → 7.88d |  |  |
| 1620 | Living dinning flooring | 2026-09-17 → 2027-02-07 (+143d) | 2026-10-02 → 2027-02-21 (+142d) | 15d → 16.88d |  |  |
| 1621 | Aluminium door-window fixing | 2026-10-02 → 2027-02-22 (+143d) | 2026-10-17 → 2027-03-08 (+142d) | 15d → 16.88d |  |  |
| 1622 | Putty primer coat | 2026-10-02 → 2027-02-22 (+143d) | 2026-10-08 → 2027-02-27 (+142d) | 6d → 6.75d |  |  |
| 1623 | Door shutter fixing | 2026-10-02 → 2027-02-22 (+143d) | 2026-10-10 → 2027-03-01 (+142d) | 8d → 9d |  |  |
| 1624 | Electrical wiring work | 2026-10-10 → 2027-03-02 (+143d) | 2026-10-22 → 2027-03-13 (+142d) | 12d → 13.5d |  |  |
| 1625 | Painting 1st coat | 2026-10-22 → 2027-03-14 (+143d) | 2026-12-18 → 2027-03-25 (+97d) | 12d → 13.5d |  |  |
| 1626 | False ceiling | 2026-12-18 → 2027-03-26 (+98d) | 2026-12-28 → 2027-04-04 (+97d) | 10d → 11.25d |  |  |
| 1627 | **29th Floor** | 2026-07-14 → 2026-10-15 (+93d) | 2027-01-12 → 2027-04-19 (+97d) | 137.38d → 159.75d |  | constraint start no earlier than 2026-07-14 → start no earlier than 2026-10-15 |
| 1628 | Block Work | 2026-07-14 → 2026-10-15 (+93d) | 2026-07-22 → 2026-10-22 (+92d) | 7.94d → 9d |  |  |
| 1629 | Door Frame Fixing | 2026-07-22 → 2026-10-23 (+93d) | 2026-07-30 → 2026-10-31 (+93d) | 8.94d → 10.12d |  |  |
| 1630 | Internal Plumbing Works | 2026-07-22 → 2026-10-23 (+93d) | 2026-08-01 → 2026-12-16 (+137d) | 10d → 11.25d |  |  |
| 1631 | Waterproofing | 2026-08-12 → 2026-12-30 (+140d) | 2026-08-24 → 2027-01-10 (+139d) | 12d → 13.5d |  |  |
| 1632 | Internal Plaster | 2026-08-12 → 2027-01-11 (+152d) | 2026-08-21 → 2027-01-19 (+151d) | 9d → 10.12d | 1616, 1613, 1614, 1615 → 1616, 1629, 1630, 1631 |  |
| 1633 | IPS flooring work | 2026-09-02 → 2027-01-20 (+140d) | 2026-09-11 → 2027-01-28 (+139d) | 9d → 10.12d | 1617, 1629, 1631, 1648 → 1617, 1629, 1631, 1632 |  |
| 1634 | Toilet dado work | 2026-09-02 → 2027-01-20 (+140d) | 2026-09-10 → 2027-01-27 (+139d) | 8d → 9d | 1618, 1631, 1648 → 1618, 1631, 1632 |  |
| 1635 | Toilet flooring work | 2026-09-10 → 2027-01-28 (+140d) | 2026-09-17 → 2027-02-03 (+139d) | 7d → 7.88d |  |  |
| 1636 | Living dinning flooring | 2026-10-02 → 2027-02-22 (+143d) | 2026-10-17 → 2027-03-08 (+142d) | 15d → 16.88d |  |  |
| 1637 | Aluminium door-window fixing | 2026-10-17 → 2027-03-09 (+143d) | 2026-12-16 → 2027-03-23 (+97d) | 15d → 16.88d |  |  |
| 1638 | Putty primer coat | 2026-10-17 → 2027-03-09 (+143d) | 2026-10-23 → 2027-03-14 (+142d) | 6d → 6.75d |  |  |
| 1639 | Door shutter fixing | 2026-10-17 → 2027-03-09 (+143d) | 2026-10-25 → 2027-03-16 (+142d) | 8d → 9d |  |  |
| 1640 | Electrical wiring work | 2026-10-25 → 2027-03-17 (+143d) | 2026-12-21 → 2027-03-28 (+97d) | 12d → 13.5d |  |  |
| 1641 | Painting 1st coat | 2026-12-21 → 2027-03-29 (+98d) | 2027-01-02 → 2027-04-09 (+97d) | 12d → 13.5d |  |  |
| 1642 | False ceiling | 2027-01-02 → 2027-04-10 (+98d) | 2027-01-12 → 2027-04-19 (+97d) | 10d → 11.25d |  |  |
| 1643 | **30th Floor** | 2026-08-22 → 2026-10-26 (+65d) | 2027-02-02 → 2027-05-10 (+97d) | 118.88d → 171d |  | constraint start no earlier than 2026-08-22 → start no earlier than 2026-10-26 |
| 1644 | Block Work | 2026-08-22 → 2026-10-26 (+65d) | 2026-08-30 → 2026-12-17 (+109d) | 7.94d → 9d |  |  |
| 1645 | Door Frame Fixing | 2026-08-30 → 2026-12-18 (+110d) | 2026-09-08 → 2026-12-26 (+109d) | 8.94d → 10.12d |  |  |
| 1646 | Internal Plumbing Works | 2026-08-30 → 2026-12-18 (+110d) | 2026-09-09 → 2026-12-27 (+109d) | 9.94d → 11.25d |  |  |
| 1647 | Waterproofing | 2026-09-09 → 2027-01-11 (+124d) | 2026-09-21 → 2027-01-22 (+123d) | 12d → 13.5d |  |  |
| 1648 | Internal Plaster | 2026-08-24 → 2027-01-23 (+152d) | 2026-09-02 → 2027-01-31 (+151d) | 9d → 10.12d | 1632, 1629, 1630, 1631 → 1632, 1645, 1646, 1647 |  |
| 1649 | IPS flooring work | 2026-09-30 → 2027-02-01 (+124d) | 2026-10-09 → 2027-02-09 (+123d) | 9d → 10.12d | 1633, 1645, 1647, 1664 → 1633, 1645, 1647, 1648 |  |
| 1650 | Toilet dado work | 2026-09-30 → 2027-02-01 (+124d) | 2026-10-08 → 2027-02-08 (+123d) | 8d → 9d | 1634, 1647, 1664 → 1634, 1647, 1648 |  |
| 1651 | Toilet flooring work | 2026-10-08 → 2027-02-09 (+124d) | 2026-10-15 → 2027-02-15 (+123d) | 7d → 7.88d |  |  |
| 1652 | Living dinning flooring | 2026-10-17 → 2027-03-09 (+143d) | 2026-12-16 → 2027-03-23 (+97d) | 15d → 16.88d |  |  |
| 1653 | Aluminium door-window fixing | 2026-12-16 → 2027-03-24 (+98d) | 2026-12-31 → 2027-04-07 (+97d) | 15d → 16.88d |  |  |
| 1654 | Putty primer coat | 2026-12-16 → 2027-03-24 (+98d) | 2026-12-22 → 2027-03-29 (+97d) | 6d → 6.75d |  |  |
| 1655 | Door shutter fixing | 2026-12-16 → 2027-03-24 (+98d) | 2026-12-24 → 2027-03-31 (+97d) | 8d → 9d |  |  |
| 1656 | Electrical wiring work | 2026-12-24 → 2027-04-01 (+98d) | 2027-01-08 → 2027-04-15 (+97d) | 15d → 16.88d |  |  |
| 1657 | Painting 1st coat | 2027-01-08 → 2027-04-16 (+98d) | 2027-01-23 → 2027-04-30 (+97d) | 15d → 16.88d |  |  |
| 1658 | False ceiling | 2027-01-23 → 2027-05-01 (+98d) | 2027-02-02 → 2027-05-10 (+97d) | 10d → 11.25d |  |  |
| 1659 | **31st Floor** | 2026-08-30 → 2026-12-21 (+113d) | 2027-02-17 → 2027-05-25 (+97d) | 125.94d → 175.5d |  | constraint start no earlier than 2026-08-30 → start no earlier than 2026-12-21 |
| 1660 | Block Work | 2026-08-30 → 2026-12-21 (+113d) | 2026-09-07 → 2026-12-28 (+112d) | 7.94d → 9d |  |  |
| 1661 | Door Frame Fixing | 2026-09-08 → 2026-12-29 (+112d) | 2026-09-17 → 2027-01-06 (+111d) | 8.94d → 10.12d |  |  |
| 1662 | Internal Plumbing Works | 2026-09-09 → 2026-12-29 (+111d) | 2026-09-19 → 2027-01-07 (+110d) | 9.94d → 11.25d |  |  |
| 1663 | Waterproofing | 2026-09-21 → 2027-01-23 (+124d) | 2026-10-03 → 2027-02-03 (+123d) | 12d → 13.5d |  |  |
| 1664 | Internal Plaster | 2026-09-21 → 2027-02-04 (+136d) | 2026-09-30 → 2027-02-12 (+135d) | 9d → 10.12d | 1648, 1645, 1646, 1647 → 1648, 1661, 1662, 1663 |  |
| 1665 | IPS flooring work | 2026-10-12 → 2027-02-13 (+124d) | 2026-10-21 → 2027-02-21 (+123d) | 9d → 10.12d | 1649, 1661, 1663, 1680 → 1649, 1661, 1663, 1664 |  |
| 1666 | Toilet dado work | 2026-10-12 → 2027-02-13 (+124d) | 2026-10-20 → 2027-02-20 (+123d) | 8d → 9d | 1650, 1663, 1680 → 1650, 1663, 1664 |  |
| 1667 | Toilet flooring work | 2026-10-20 → 2027-02-21 (+124d) | 2026-10-27 → 2027-02-27 (+123d) | 7d → 7.88d |  |  |
| 1668 | Living dinning flooring | 2026-12-16 → 2027-03-24 (+98d) | 2026-12-31 → 2027-04-07 (+97d) | 15d → 16.88d |  |  |
| 1669 | Aluminium door-window fixing | 2026-12-31 → 2027-04-08 (+98d) | 2027-01-12 → 2027-04-19 (+97d) | 12d → 13.5d |  |  |
| 1670 | Putty primer coat | 2026-12-31 → 2027-04-08 (+98d) | 2027-01-06 → 2027-04-13 (+97d) | 6d → 6.75d |  |  |
| 1671 | Door shutter fixing | 2026-12-31 → 2027-04-08 (+98d) | 2027-01-08 → 2027-04-15 (+97d) | 8d → 9d |  |  |
| 1672 | Electrical wiring work | 2027-01-08 → 2027-04-16 (+98d) | 2027-01-23 → 2027-04-30 (+97d) | 15d → 16.88d |  |  |
| 1673 | Painting 1st coat | 2027-01-23 → 2027-05-01 (+98d) | 2027-02-07 → 2027-05-15 (+97d) | 15d → 16.88d |  |  |
| 1674 | False ceiling | 2027-02-07 → 2027-05-16 (+98d) | 2027-02-17 → 2027-05-25 (+97d) | 10d → 11.25d |  |  |
| 1675 | **32nd Floor** | 2026-09-07 → 2026-12-29 (+113d) | 2027-03-04 → 2027-06-09 (+97d) | 133d → 183.38d |  | constraint start no earlier than 2026-09-07 → start no earlier than 2026-12-29 |
| 1676 | Block Work | 2026-09-07 → 2026-12-29 (+113d) | 2026-09-15 → 2027-01-05 (+112d) | 7.94d → 9d |  |  |
| 1677 | Door Frame Fixing | 2026-09-17 → 2027-01-07 (+112d) | 2026-09-26 → 2027-01-15 (+111d) | 8.94d → 10.12d |  |  |
| 1678 | Internal Plumbing Works | 2026-09-19 → 2027-01-08 (+111d) | 2026-09-29 → 2027-01-17 (+110d) | 9.94d → 11.25d |  |  |
| 1679 | Waterproofing | 2026-10-03 → 2027-02-04 (+124d) | 2026-10-15 → 2027-02-15 (+123d) | 12d → 13.5d |  |  |
| 1680 | Internal Plaster | 2026-10-03 → 2027-02-16 (+136d) | 2026-10-12 → 2027-02-24 (+135d) | 9d → 10.12d | 1664, 1661, 1662, 1663 → 1664, 1677, 1678, 1679 |  |
| 1681 | IPS flooring work | 2026-10-24 → 2027-02-25 (+124d) | 2026-12-17 → 2027-03-05 (+78d) | 9d → 10.12d | 1665, 1677, 1679, 1696 → 1665, 1677, 1679, 1680 |  |

| ID | Task | Start | Finish | Duration | Predecessors | Other |
| --- | --- | --- | --- | --- | --- | --- |
| 1682 | Toilet dado work | 2026-10-24 → 2027-02-25 (+124d) | 2026-12-16 → 2027-03-04 (+78d) | 8d → 9d | 1666, 1679, 1696 → 1666, 1679, 1680 |  |
| 1683 | Toilet flooring work | 2026-12-16 → 2027-03-05 (+79d) | 2026-12-23 → 2027-03-11 (+78d) | 7d → 7.88d |  |  |
| 1684 | Living dinning flooring | 2026-12-31 → 2027-04-08 (+98d) | 2027-01-15 → 2027-04-22 (+97d) | 15d → 16.88d |  |  |
| 1685 | Aluminium door-window fixing | 2027-01-15 → 2027-04-23 (+98d) | 2027-01-27 → 2027-05-04 (+97d) | 12d → 13.5d |  |  |
| 1686 | Putty primer coat | 2027-01-15 → 2027-04-23 (+98d) | 2027-01-21 → 2027-04-28 (+97d) | 6d → 6.75d |  |  |
| 1687 | Door shutter fixing | 2027-01-15 → 2027-04-23 (+98d) | 2027-01-23 → 2027-04-30 (+97d) | 8d → 9d |  |  |
| 1688 | Electrical wiring work | 2027-01-23 → 2027-05-01 (+98d) | 2027-02-07 → 2027-05-15 (+97d) | 15d → 16.88d |  |  |
| 1689 | Painting 1st coat | 2027-02-07 → 2027-05-16 (+98d) | 2027-02-22 → 2027-05-30 (+97d) | 15d → 16.88d |  |  |
| 1690 | False ceiling | 2027-02-22 → 2027-05-31 (+98d) | 2027-03-04 → 2027-06-09 (+97d) | 10d → 11.25d |  |  |
| 1691 | **33rd Floor** | 2026-09-15 → 2027-01-06 (+113d) | 2027-03-16 → 2027-06-21 (+97d) | 137.06d → 187.88d |  | constraint start no earlier than 2026-09-15 → start no earlier than 2027-01-06 |
| 1692 | Block Work | 2026-09-15 → 2027-01-06 (+113d) | 2026-09-23 → 2027-01-13 (+112d) | 7.94d → 9d |  |  |
| 1693 | Door Frame Fixing | 2026-09-26 → 2027-01-16 (+112d) | 2026-10-05 → 2027-01-24 (+111d) | 8.94d → 10.12d |  |  |
| 1694 | Internal Plumbing Works | 2026-09-29 → 2027-01-18 (+111d) | 2026-10-09 → 2027-01-27 (+110d) | 9.94d → 11.25d |  |  |
| 1695 | Waterproofing | 2026-10-15 → 2027-02-16 (+124d) | 2026-10-27 → 2027-02-27 (+123d) | 12d → 13.5d |  |  |
| 1696 | Internal Plaster | 2026-10-15 → 2027-02-28 (+136d) | 2026-10-24 → 2027-03-08 (+135d) | 9d → 10.12d | 1680, 1677, 1678, 1679 → 1680, 1693, 1694, 1695 |  |
| 1697 | IPS flooring work | 2026-12-20 → 2027-03-09 (+79d) | 2026-12-29 → 2027-03-17 (+78d) | 9d → 10.12d | 1681, 1693, 1695, 1712 → 1681, 1693, 1695, 1696 |  |
| 1698 | Toilet dado work | 2026-12-20 → 2027-03-09 (+79d) | 2026-12-28 → 2027-03-16 (+78d) | 8d → 9d | 1682, 1695, 1712 → 1682, 1695, 1696 |  |
| 1699 | Toilet flooring work | 2026-12-28 → 2027-03-17 (+79d) | 2027-01-04 → 2027-03-23 (+78d) | 7d → 7.88d |  |  |
| 1700 | Living dinning flooring | 2027-01-15 → 2027-04-23 (+98d) | 2027-01-30 → 2027-05-07 (+97d) | 15d → 16.88d |  |  |
| 1701 | Aluminium door-window fixing | 2027-01-30 → 2027-05-08 (+98d) | 2027-02-14 → 2027-05-22 (+97d) | 15d → 16.88d |  |  |
| 1702 | Putty primer coat | 2027-01-30 → 2027-05-08 (+98d) | 2027-02-05 → 2027-05-13 (+97d) | 6d → 6.75d |  |  |
| 1703 | Door shutter fixing | 2027-01-30 → 2027-05-08 (+98d) | 2027-02-07 → 2027-05-15 (+97d) | 8d → 9d |  |  |
| 1704 | Electrical wiring work | 2027-02-07 → 2027-05-16 (+98d) | 2027-02-19 → 2027-05-27 (+97d) | 12d → 13.5d |  |  |
| 1705 | Painting 1st coat | 2027-02-22 → 2027-05-31 (+98d) | 2027-03-06 → 2027-06-11 (+97d) | 12d → 13.5d |  |  |
| 1706 | False ceiling | 2027-03-06 → 2027-06-12 (+98d) | 2027-03-16 → 2027-06-21 (+97d) | 10d → 11.25d |  |  |
| 1707 | **34th Floor** | 2026-09-23 → 2027-01-14 (+113d) | 2027-03-28 → 2027-07-03 (+97d) | 141.12d → 192.38d |  | constraint start no earlier than 2026-09-23 → start no earlier than 2027-01-14 |
| 1708 | Block Work | 2026-09-23 → 2027-01-14 (+113d) | 2026-10-01 → 2027-01-21 (+112d) | 7.94d → 9d |  |  |
| 1709 | Door Frame Fixing | 2026-10-05 → 2027-01-25 (+112d) | 2026-10-14 → 2027-02-02 (+111d) | 8.94d → 10.12d |  |  |
| 1710 | Internal Plumbing Works | 2026-10-09 → 2027-01-28 (+111d) | 2026-10-19 → 2027-02-06 (+110d) | 9.94d → 11.25d |  |  |
| 1711 | Waterproofing | 2026-10-27 → 2027-02-28 (+124d) | 2026-12-23 → 2027-03-11 (+78d) | 12d → 13.5d |  |  |
| 1712 | Internal Plaster | 2026-10-27 → 2027-03-12 (+136d) | 2026-12-20 → 2027-03-20 (+90d) | 9d → 10.12d | 1696, 1693, 1694, 1695 → 1696, 1709, 1710, 1711 |  |
| 1713 | IPS flooring work | 2027-01-01 → 2027-03-21 (+79d) | 2027-01-10 → 2027-03-29 (+78d) | 9d → 10.12d | 1697, 1709, 1711, 1728 → 1697, 1709, 1711, 1712 |  |
| 1714 | Toilet dado work | 2027-01-01 → 2027-03-21 (+79d) | 2027-01-09 → 2027-03-28 (+78d) | 8d → 9d | 1698, 1711, 1728 → 1698, 1711, 1712 |  |
| 1715 | Toilet flooring work | 2027-01-09 → 2027-03-29 (+79d) | 2027-01-16 → 2027-04-04 (+78d) | 7d → 7.88d |  |  |
| 1716 | Living dinning flooring | 2027-01-30 → 2027-05-08 (+98d) | 2027-02-14 → 2027-05-22 (+97d) | 15d → 16.88d |  |  |
| 1717 | Aluminium door-window fixing | 2027-02-14 → 2027-05-23 (+98d) | 2027-03-01 → 2027-06-06 (+97d) | 15d → 16.88d |  |  |
| 1718 | Putty primer coat | 2027-02-14 → 2027-05-23 (+98d) | 2027-02-20 → 2027-05-28 (+97d) | 6d → 6.75d |  |  |
| 1719 | Door shutter fixing | 2027-02-14 → 2027-05-23 (+98d) | 2027-02-22 → 2027-05-30 (+97d) | 8d → 9d |  |  |
| 1720 | Electrical wiring work | 2027-02-22 → 2027-05-31 (+98d) | 2027-03-06 → 2027-06-11 (+97d) | 12d → 13.5d |  |  |
| 1721 | Painting 1st coat | 2027-03-06 → 2027-06-12 (+98d) | 2027-03-18 → 2027-06-23 (+97d) | 12d → 13.5d |  |  |
| 1722 | False ceiling | 2027-03-18 → 2027-06-24 (+98d) | 2027-03-28 → 2027-07-03 (+97d) | 10d → 11.25d |  |  |
| 1723 | **35th Floor** | 2026-10-01 → 2027-01-25 (+116d) | 2027-04-12 → 2027-07-18 (+97d) | 148.19d → 196.88d |  | constraint start no earlier than 2026-10-01 → start no earlier than 2027-01-25 |
| 1724 | Block Work | 2026-10-01 → 2027-01-25 (+116d) | 2026-10-09 → 2027-02-01 (+115d) | 7.94d → 9d |  |  |
| 1725 | Door Frame Fixing | 2026-10-14 → 2027-02-03 (+112d) | 2026-10-23 → 2027-02-11 (+111d) | 8.94d → 10.12d |  |  |
| 1726 | Internal Plumbing Works | 2026-10-19 → 2027-02-07 (+111d) | 2026-10-29 → 2027-02-16 (+110d) | 9.94d → 11.25d |  |  |
| 1727 | Waterproofing | 2026-12-23 → 2027-03-12 (+79d) | 2027-01-04 → 2027-03-23 (+78d) | 12d → 13.5d |  |  |
| 1728 | Internal Plaster | 2026-12-23 → 2027-03-24 (+91d) | 2027-01-01 → 2027-04-01 (+90d) | 9d → 10.12d | 1712, 1709, 1710, 1711 → 1712, 1725, 1726, 1727 |  |
| 1729 | IPS flooring work | 2027-01-13 → 2027-04-02 (+79d) | 2027-01-22 → 2027-04-10 (+78d) | 9d → 10.12d | 1713, 1725, 1727, 1744 → 1713, 1725, 1727, 1728 |  |
| 1730 | Toilet dado work | 2027-01-13 → 2027-04-02 (+79d) | 2027-01-21 → 2027-04-09 (+78d) | 8d → 9d | 1714, 1727, 1744 → 1714, 1727, 1728 |  |
| 1731 | Toilet flooring work | 2027-01-21 → 2027-04-10 (+79d) | 2027-01-28 → 2027-04-16 (+78d) | 7d → 7.88d |  |  |
| 1732 | Living dinning flooring | 2027-02-14 → 2027-05-23 (+98d) | 2027-03-01 → 2027-06-06 (+97d) | 15d → 16.88d |  |  |
| 1733 | Aluminium door-window fixing | 2027-03-01 → 2027-06-07 (+98d) | 2027-03-16 → 2027-06-21 (+97d) | 15d → 16.88d |  |  |
| 1734 | Putty primer coat | 2027-03-01 → 2027-06-07 (+98d) | 2027-03-07 → 2027-06-12 (+97d) | 6d → 6.75d |  |  |
| 1735 | Door shutter fixing | 2027-03-01 → 2027-06-07 (+98d) | 2027-03-09 → 2027-06-14 (+97d) | 8d → 9d |  |  |
| 1736 | Electrical wiring work | 2027-03-09 → 2027-06-15 (+98d) | 2027-03-21 → 2027-06-26 (+97d) | 12d → 13.5d |  |  |
| 1737 | Painting 1st coat | 2027-03-21 → 2027-06-27 (+98d) | 2027-04-02 → 2027-07-08 (+97d) | 12d → 13.5d |  |  |
| 1738 | False ceiling | 2027-04-02 → 2027-07-09 (+98d) | 2027-04-12 → 2027-07-18 (+97d) | 10d → 11.25d |  |  |
| 1739 | **Terrace Finishing** | 2026-08-15 → 2026-10-05 (+51d) | 2026-12-18 → 2027-02-06 (+50d) | 79.88d → 90d |  | constraint start no earlier than 2026-08-15 → start no earlier than 2026-10-05 |
| 1740 | Terrace waterproofing | 2026-08-15 → 2026-10-05 (+51d) | 2026-09-24 → 2026-12-28 (+95d) | 39.94d → 45d | 1851 → 1133 |  |
| 1741 | Terrace finishing | 2026-09-24 → 2026-12-29 (+96d) | 2026-12-18 → 2027-02-06 (+50d) | 39.94d → 45d |  |  |
| 1742 | **Common Area Finishing** | 2025-08-22 → 2026-12-29 (+494d) | 2026-07-12 → 2027-10-29 (+474d) | 279.31d → 343.12d |  | constraint start no earlier than 2025-08-22 → start no earlier than 2026-12-29 |
| 1743 | Block Work | 2025-08-22 → 2026-12-29 (+494d) | 2025-10-01 → 2027-02-26 (+513d) | 39.94d → 67.5d | 1144FS+0.25d → 1138 |  |
| 1744 | Internal Plaster | 2027-01-04 → 2027-02-17 (+44d) | 2027-01-13 → 2027-06-16 (+154d) | 9d → 135d | 1728, 1725, 1726, 1727 → 1749SS+33.75d |  |
| 1745 | Staircase railing fixing | 2026-02-12 → 2027-06-02 (+475d) | 2026-07-12 → 2027-10-29 (+474d) | 149.94d → 168.75d | 1747SS+26.75d, 1746SS+26.75d → 1747SS+33.75d, 1746SS+33.75d |  |
| 1746 | Main staircase flooring | 2026-01-16 → 2027-05-03 (+472d) | 2026-06-15 → 2027-09-29 (+471d) | 149.94d → 168.75d | 1747SS+13.38d → 1747SS+16.88d |  |
| 1747 | Fire staircase flooring | 2026-01-03 → 2027-04-18 (+470d) | 2026-06-02 → 2027-09-14 (+469d) | 149.94d → 168.75d | 2101SS+13.38d, 1751SS+26.75d → 1744SS+16.88d, 1751SS+33.75d |  |
| 1748 | Fire door work | 2026-02-12 → 2027-06-02 (+475d) | 2026-04-13 → 2027-07-31 (+474d) | 59.94d → 67.5d | 1746SS+26.75d, 1747SS+26.75d → 1746SS+33.75d, 1747SS+33.75d |  |
| 1749 | Electrical wiring work | 2025-09-09 → 2027-01-18 (+496d) | 2026-02-21 → 2027-05-17 (+450d) | 119.94d → 135d | 1743SS+17.88d → 1743SS+22.5d |  |
| 1750 | Lobby flooring | 2025-09-12 → 2027-01-21 (+496d) | 2026-03-26 → 2027-06-20 (+451d) | 150d → 168.75d | 1749SS+3.38d → 1749SS+4.12d |  |
| 1751 | Ceiling & wall putty-primer | 2025-10-23 → 2027-03-19 (+512d) | 2026-03-27 → 2027-07-06 (+466d) | 109.94d → 123.75d | 2101SS+26.75d → 1744SS+33.75d |  |

| ID | Task | Start | Finish | Duration | Predecessors | Other |
| --- | --- | --- | --- | --- | --- | --- |
| 1752 | Ceiling & wall painting | 2025-12-25 → 2027-04-08 (+469d) | 2026-04-04 → 2027-07-16 (+468d) | 99.94d → 112.5d | 1751SS+17.88d → 1751SS+22.5d |  |
| 1753 | Light fixture supply & installation | 2026-02-17 → 2027-06-07 (+475d) | 2026-04-02 → 2027-07-21 (+475d) | 44.94d → 50.62d | 1752SS+53.38d → 1752SS+67.5d |  |
| 1754 | **Balcony Glass Railing** | 2027-05-11 → 2027-07-26 (+76d) | 2027-07-18 → 2027-10-03 (+77d) | 67.81d → 78.75d |  | constraint start no earlier than 2027-05-11 → start no earlier than 2027-07-26 |
| 1755 | 1st Floor | 2027-05-11 → 2027-07-26 (+76d) | 2027-05-13 → 2027-07-27 (+75d) | 1.94d → 2.25d |  |  |
| 1756 | 2nd Floor | 2027-05-13 → 2027-07-28 (+76d) | 2027-05-15 → 2027-07-29 (+75d) | 1.94d → 2.25d |  |  |
| 1757 | 3rd Floor | 2027-05-15 → 2027-07-30 (+76d) | 2027-05-17 → 2027-07-31 (+75d) | 1.94d → 2.25d |  |  |
| 1758 | 4th Floor | 2027-05-17 → 2027-08-01 (+76d) | 2027-05-19 → 2027-08-02 (+75d) | 1.94d → 2.25d |  |  |
| 1759 | 5th Floor | 2027-05-19 → 2027-08-03 (+76d) | 2027-05-21 → 2027-08-04 (+75d) | 1.94d → 2.25d |  |  |
| 1760 | 6th Floor | 2027-05-21 → 2027-08-05 (+76d) | 2027-05-22 → 2027-08-06 (+76d) | 1.94d → 2.25d |  |  |
| 1761 | 7th Floor | 2027-05-23 → 2027-08-07 (+76d) | 2027-05-24 → 2027-08-08 (+76d) | 1.94d → 2.25d |  |  |
| 1762 | 8th Floor | 2027-05-24 → 2027-08-09 (+77d) | 2027-05-26 → 2027-08-10 (+76d) | 1.94d → 2.25d |  |  |
| 1763 | 9th Floor | 2027-05-26 → 2027-08-11 (+77d) | 2027-05-28 → 2027-08-12 (+76d) | 1.94d → 2.25d |  |  |
| 1764 | 10th Floor | 2027-05-28 → 2027-08-13 (+77d) | 2027-05-30 → 2027-08-14 (+76d) | 1.94d → 2.25d |  |  |
| 1765 | 11th Floor | 2027-05-30 → 2027-08-15 (+77d) | 2027-06-01 → 2027-08-16 (+76d) | 1.94d → 2.25d |  |  |
| 1766 | 12th Floor | 2027-06-01 → 2027-08-17 (+77d) | 2027-06-03 → 2027-08-18 (+76d) | 1.94d → 2.25d |  |  |
| 1767 | 13th Floor | 2027-06-03 → 2027-08-19 (+77d) | 2027-06-05 → 2027-08-20 (+76d) | 1.94d → 2.25d |  |  |
| 1768 | 14th Floor | 2027-06-05 → 2027-08-21 (+77d) | 2027-06-07 → 2027-08-22 (+76d) | 1.94d → 2.25d |  |  |
| 1769 | 15th Floor | 2027-06-07 → 2027-08-23 (+77d) | 2027-06-09 → 2027-08-24 (+76d) | 1.94d → 2.25d |  |  |
| 1770 | 16th Floor | 2027-06-09 → 2027-08-25 (+77d) | 2027-06-11 → 2027-08-26 (+76d) | 1.94d → 2.25d |  |  |
| 1771 | 17th Floor | 2027-06-11 → 2027-08-27 (+77d) | 2027-06-13 → 2027-08-28 (+76d) | 1.94d → 2.25d |  |  |
| 1772 | 18th Floor | 2027-06-13 → 2027-08-29 (+77d) | 2027-06-15 → 2027-08-30 (+76d) | 1.94d → 2.25d |  |  |
| 1773 | 19th Floor | 2027-06-15 → 2027-08-31 (+77d) | 2027-06-17 → 2027-09-01 (+76d) | 1.94d → 2.25d |  |  |
| 1774 | 20th Floor | 2027-06-17 → 2027-09-02 (+77d) | 2027-06-19 → 2027-09-03 (+76d) | 1.94d → 2.25d |  |  |
| 1775 | 21st Floor | 2027-06-19 → 2027-09-04 (+77d) | 2027-06-21 → 2027-09-05 (+76d) | 1.94d → 2.25d |  |  |
| 1776 | 22nd Floor | 2027-06-21 → 2027-09-06 (+77d) | 2027-06-22 → 2027-09-07 (+77d) | 1.94d → 2.25d |  |  |
| 1777 | 23rd Floor | 2027-06-23 → 2027-09-08 (+77d) | 2027-06-24 → 2027-09-09 (+77d) | 1.94d → 2.25d |  |  |
| 1778 | 24th Floor | 2027-06-24 → 2027-09-10 (+78d) | 2027-06-26 → 2027-09-11 (+77d) | 1.94d → 2.25d |  |  |
| 1779 | 25th Floor | 2027-06-26 → 2027-09-12 (+78d) | 2027-06-28 → 2027-09-13 (+77d) | 1.94d → 2.25d |  |  |
| 1780 | 26th Floor | 2027-06-28 → 2027-09-14 (+78d) | 2027-06-30 → 2027-09-15 (+77d) | 1.94d → 2.25d |  |  |
| 1781 | 27th Floor | 2027-06-30 → 2027-09-16 (+78d) | 2027-07-02 → 2027-09-17 (+77d) | 1.94d → 2.25d |  |  |
| 1782 | 28th Floor | 2027-07-02 → 2027-09-18 (+78d) | 2027-07-04 → 2027-09-19 (+77d) | 1.94d → 2.25d |  |  |
| 1783 | 29th Floor | 2027-07-04 → 2027-09-20 (+78d) | 2027-07-06 → 2027-09-21 (+77d) | 1.94d → 2.25d |  |  |
| 1784 | 30th Floor | 2027-07-06 → 2027-09-22 (+78d) | 2027-07-08 → 2027-09-23 (+77d) | 1.94d → 2.25d |  |  |
| 1785 | 31st Floor | 2027-07-08 → 2027-09-24 (+78d) | 2027-07-10 → 2027-09-25 (+77d) | 1.94d → 2.25d |  |  |
| 1786 | 32nd Floor | 2027-07-10 → 2027-09-26 (+78d) | 2027-07-12 → 2027-09-27 (+77d) | 1.94d → 2.25d |  |  |
| 1787 | 33rd Floor | 2027-07-12 → 2027-09-28 (+78d) | 2027-07-14 → 2027-09-29 (+77d) | 1.94d → 2.25d |  |  |
| 1788 | 34th Floor | 2027-07-14 → 2027-09-30 (+78d) | 2027-07-16 → 2027-10-01 (+77d) | 1.94d → 2.25d |  |  |
| 1789 | 35th Floor | 2027-07-16 → 2027-10-02 (+78d) | 2027-07-18 → 2027-10-03 (+77d) | 1.94d → 2.25d |  |  |
| 1790 | **MEP work** | 2026-01-03 → 2026-12-29 (+360d) | 2027-09-11 → 2028-05-28 (+260d) | 571.12d → 531d |  | constraint start no earlier than 2026-01-03 → start no earlier than 2026-12-29 |
| 1791 | **Electrical work** | 2026-08-15 → 2026-12-29 (+136d) | 2027-05-20 → 2027-08-25 (+97d) | 233.25d → 270d |  | constraint start no earlier than 2026-08-15 → start no earlier than 2026-12-29 |
| 1792 | Cable Tray | 2026-08-15 → 2026-12-29 (+136d) | 2026-12-28 → 2027-03-28 (+90d) | 89.94d → 101.25d | 1851 → 1138 |  |
| 1793 | Cable, main & sub main | 2026-09-24 → 2027-02-12 (+141d) | 2027-01-27 → 2027-05-02 (+95d) | 79.94d → 90d | 1792SS+40d → 1792SS+50.62d |  |
| 1794 | LT panel & DB | 2026-12-28 → 2027-03-29 (+91d) | 2027-04-27 → 2027-07-26 (+90d) | 119.94d → 135d |  |  |
| 1795 | Rising main | 2027-02-19 → 2027-05-28 (+98d) | 2027-05-20 → 2027-08-25 (+97d) | 89.94d → 101.25d | 1792FS+53.38d → 1792FS+67.5d |  |
| 1796 | EARTHING Works | 2027-01-10 → 2027-04-13 (+93d) | 2027-03-11 → 2027-06-11 (+92d) | 59.94d → 67.5d | 1792FS+13.38d → 1792FS+16.88d |  |
| 1797 | Advance lightening protection | 2026-12-18 → 2027-02-07 (+51d) | 2027-02-16 → 2027-04-07 (+50d) | 59.94d → 67.5d |  |  |
| 1798 | Inverter | 2027-03-11 → 2027-06-12 (+93d) | 2027-04-15 → 2027-07-16 (+92d) | 34.94d → 39.38d |  |  |
| 1799 | Energy meter | 2027-01-27 → 2027-05-03 (+96d) | 2027-03-28 → 2027-07-01 (+95d) | 59.94d → 67.5d |  |  |
| 1800 | Exhast fan | 2026-10-12 → 2027-04-28 (+198d) | 2027-01-25 → 2027-06-26 (+152d) | 60d → 67.5d | 816FF+4.5d → 1733FF+5.62d |  |
| 1801 | FTTH | 2027-03-02 → 2027-06-02 (+92d) | 2027-05-01 → 2027-07-31 (+91d) | 59.94d → 67.5d | 1796FS-9d → 1796FS-11.25d |  |
| 1802 | Security System - FA & PA | 2027-03-07 → 2027-06-07 (+92d) | 2027-05-01 → 2027-07-31 (+91d) | 54.94d → 61.88d |  |  |
| 1803 | Solar water heater | 2026-12-18 → 2027-02-07 (+51d) | 2027-02-16 → 2027-04-07 (+50d) | 59.94d → 67.5d |  |  |
| 1804 | **Plumbing wrok** | 2026-01-30 → 2026-12-29 (+333d) | 2027-06-05 → 2027-09-04 (+91d) | 446.88d → 281.25d |  | constraint start no earlier than 2026-01-30 → start no earlier than 2026-12-29 |
| 1805 | Terrace looping | 2026-09-24 → 2026-12-29 (+96d) | 2026-12-23 → 2027-02-11 (+50d) | 44.94d → 50.62d |  |  |
| 1806 | Shaft Plumbing | 2026-12-23 → 2027-02-12 (+51d) | 2027-04-22 → 2027-06-11 (+50d) | 119.94d → 135d |  |  |
| 1807 | CP sanitary fixture supply | 2027-03-22 → 2027-06-16 (+86d) | 2027-06-05 → 2027-08-29 (+85d) | 75d → 84.38d | 1744, 1731FS+53.38d → 1728, 1731FS+67.5d |  |
| 1808 | Cold & flushing water supply | 2026-01-30 → 2027-05-18 (+473d) | 2026-04-29 → 2027-08-15 (+473d) | 89.94d → 101.25d | 2101SS+80d → 1744SS+101.25d |  |
| 1809 | Misc work | 2026-04-20 → 2027-08-06 (+473d) | 2026-05-20 → 2027-09-04 (+472d) | 29.94d → 33.75d | 1808FS-9d → 1808FS-11.25d |  |
| 1810 | **Fire fighting work** | 2026-01-03 → 2026-12-29 (+360d) | 2027-03-08 → 2028-01-17 (+315d) | 384.06d → 382.5d |  | constraint start no earlier than 2026-01-03 → start no earlier than 2026-12-29 |
| 1811 | Fire hydrant work | 2026-01-03 → 2027-04-18 (+470d) | 2026-04-03 → 2027-08-05 (+489d) | 89.94d → 123.75d | 2101SS+53.38d → 1744SS+67.5d |  |
| 1812 | Sprinkler & piping work | 2026-04-30 → 2027-09-05 (+493d) | 2026-07-28 → 2028-01-17 (+538d) | 89.94d → 101.25d | 1811FS+26.75d → 1811FS+33.75d |  |
| 1813 | Shaft Downtake works | 2026-09-24 → 2026-12-29 (+96d) | 2027-02-06 → 2027-03-28 (+50d) | 89.94d → 101.25d |  |  |
| 1814 | Connection to pump room | 2027-02-06 → 2027-03-29 (+51d) | 2027-03-08 → 2027-04-27 (+50d) | 29.94d → 33.75d |  |  |
| 1815 | **Lift work** | 2026-08-15 → 2026-12-29 (+136d) | 2027-03-18 → 2027-06-16 (+90d) | 169.81d → 191.25d |  | constraint start no earlier than 2026-08-15 → start no earlier than 2026-12-29 |
| 1816 | Lift Shaft Handover | 2026-08-15 → 2026-12-29 (+136d) | 2026-09-24 → 2027-02-06 (+135d) | 39.94d → 45d | 1851 → 1138 |  |
| 1817 | Lift installation work | 2026-09-24 → 2027-02-07 (+136d) | 2026-12-23 → 2027-03-23 (+90d) | 44.94d → 50.62d |  |  |
| 1818 | Lift testing and commissioning | 2026-12-23 → 2027-03-24 (+91d) | 2027-03-18 → 2027-06-16 (+90d) | 84.94d → 95.62d |  |  |
| 1819 | **AC work** | 2027-06-25 → 2028-02-19 (+239d) | 2027-09-11 → 2028-05-28 (+260d) | 77.94d → 112.5d |  | constraint start no earlier than 2027-06-25 → start no earlier than 2028-02-19 |
| 1820 | Split AC | 2027-06-25 → 2028-02-19 (+239d) | 2027-09-11 → 2028-05-28 (+260d) | 77.94d → 112.5d | 1836FS-26.75d → 1836FS-33.75d |  |
| 1821 | **Tower Completion** | 2026-09-28 → 2027-01-27 (+121d) | 2027-07-21 → 2027-10-23 (+94d) | 250.88d → 303.75d |  | constraint start no earlier than 2026-09-28 → start no earlier than 2027-01-27 |

| ID | Task | Start | Finish | Duration | Complete | Predecessors | Other |
| --- | --- | --- | --- | --- | --- | --- | --- |
| 1822 | SURFACE PREPARATION | 2026-09-28 → 2027-01-27 (+121d) | 2027-01-31 → 2027-04-16 (+75d) | 79.94d → 90d |  | 1176FS+1.88d → 1176FS+2.25d |  |
| 1823 | External Painting | 2027-01-31 → 2027-04-17 (+76d) | 2027-05-11 → 2027-07-25 (+75d) | 99.94d → 112.5d |  |  |  |
| 1824 | Final coat of painting | 2027-05-11 → 2027-07-26 (+76d) | 2027-07-21 → 2027-10-23 (+94d) | 71d → 101.25d |  |  |  |
| 1825 | Misc. work | 2027-05-11 → 2027-07-26 (+76d) | 2027-07-10 → 2027-09-23 (+75d) | 59.94d → 67.5d |  |  |  |
| 1826 | **Basement lobby** | 2026-03-26 → 2027-06-20 (+451d) | 2026-05-25 → 2027-08-19 (+451d) | 60d → 67.5d |  |  | constraint start no earlier than 2026-03-26 → start no earlier than 2027-06-20 |
| 1827 | Basement lobby | 2026-03-26 → 2027-06-20 (+451d) | 2026-05-25 → 2027-08-19 (+451d) | 60d → 67.5d |  |  |  |
| 1828 | **Post OC activities** | 2027-03-21 → 2027-06-27 (+98d) | 2027-11-30 → 2028-08-16 (+260d) | 254d → 418.5d |  |  | constraint start no earlier than 2027-03-21 → start no earlier than 2027-06-27 |
| 1829 | Wardrobe installation | 2027-06-25 → 2028-02-19 (+239d) | 2027-11-30 → 2028-08-16 (+260d) | 157.94d → 202.5d |  | 1836FS-26.75d → 1836FS-33.75d |  |
| 1830 | CP & SANITARYWARE | 2027-06-25 → 2028-02-19 (+239d) | 2027-10-01 → 2028-06-17 (+260d) | 97.94d → 135d |  | 1836FS-26.75d, 1807 → 1836FS-33.75d, 1807 |  |
| 1831 | Wooden Flooring | 2027-06-25 → 2028-02-19 (+239d) | 2027-11-30 → 2028-08-16 (+260d) | 157.94d → 202.5d |  | 1836FS-26.75d → 1836FS-33.75d |  |
| 1832 | Electrical Fixtures And Fittings | 2027-03-21 → 2027-06-27 (+98d) | 2027-06-04 → 2027-10-24 (+142d) | 75d → 135d |  |  |  |
| 1833 | Modular Kitchen | 2027-06-25 → 2028-02-19 (+239d) | 2027-11-30 → 2028-08-16 (+260d) | 157.94d → 202.5d |  |  |  |
| 1834 | Final Coat Paint | 2027-07-08 → 2028-03-05 (+241d) | 2027-09-29 → 2028-06-02 (+247d) | 82.94d → 101.25d |  | 1836FS-13.38d, 1738 → 1836FS-16.88d, 1753, 1738 |  |
| 1835 | OC Application/Readiness | 2027-05-20 → 2028-01-18 (+243d) | 2027-05-21 → 2028-01-18 (+242d) | 0.94d → 1.12d |  | 1851, 1745FS+7.12d, 1753, 1136, 950, 951, 1748, 1818, 1814, 1812, 1809, 1806, 1794, 1795, 1797, 1798, 1799, 2717, 1802, 1803, 1827 → 1138, 1745FS+9d, 950, 951, 1136, 1748, 1789, 1794, 1795, 1797, 1798, 1799, 1800, 1802, 1803, 1806, 1809, 1812, 1814, 1818, 1824, 1825, 1827 |  |
| 1836 | OC Receipt | 2027-07-21 → 2028-03-19 (+242d) | 2027-07-22 → 2028-03-19 (+241d) | 0.94d → 1.12d |  | 1835FS+53.38d, 1789, 1824, 1825 → 1835FS+67.5d |  |
| 1837 | Offer To Possession | 2027-11-30 → 2028-08-17 (+261d) | 2027-12-30 → 2028-09-15 (+260d) | 29.94d → 33.75d |  | 1829, 1830, 1831, 1832, 1833, 1834 → 1829, 1830, 1831, 1832, 1833, 1834, 1820 |  |
| 1838 | **Tower 3** | 2023-09-30 → 2024-05-14 (+227d) | 2028-03-29 → 2028-08-11 (+135d) | 1476.62d → 1593d | 3% → 2% |  | constraint start no earlier than 2023-09-30 → start no earlier than 2024-05-14 |
| 1839 | **Substructure** | 2023-09-30 → 2024-05-14 (+227d) | 2025-09-30 → 2026-01-31 (+123d) | 656d → 655.88d | 59% → 40% |  | constraint start no earlier than 2023-09-30 → start no earlier than 2024-05-14 |
| 1840 | **Soil Bed Preparation** | 2023-09-30 → 2024-05-14 (+227d) | 2025-05-30 → 2025-08-14 (+76d) | 533.44d → 515.25d |  |  | constraint start no earlier than 2023-09-30 → start no earlier than 2024-05-14 |
| 1841 | Test Piling | 2023-09-30 → 2024-05-14 (+227d) | 2024-01-27 → 2024-08-16 (+202d) | 74.94d → 106.69d |  | none → 7SS | constraint start no earlier than 2023-09-30 → start no earlier than 2024-05-14 |
| 1842 | Excavation | 2024-01-10 → 2024-07-21 (+193d) | 2024-02-08 → 2024-08-19 (+193d) | 29.94d → 33.56d |  | 7SS+61.74d → 1841SS+68d | constraint start no earlier than 2024-01-10 → start no earlier than 2024-07-21 |
| 1843 | Main Piling Work | 2024-04-12 → 2024-08-22 (+132d) | 2024-10-13 → 2025-04-05 (+174d) | 184.12d → 174.81d | 100% → 96% | 7FS-5.45d → 1841FS+5d | constraint start no earlier than 2024-04-12 → start no earlier than 2024-08-22 |
| 1844 | Anti-termite | 2025-04-01 → 2025-04-02 (+1d) | 2025-04-05 → 2025-04-07 (+2d) | 4.94d → 5.62d |  | 1843FS-81d → 1843FF+2d |  |
| 1845 | PCC | 2025-04-01 → 2025-03-02 (-30d) | 2025-04-04 → 2025-03-23 (-12d) | 3.94d → 13.31d | 0% → 100% | 1842FS-14.7d → 1842FS+0.25d | constraint none → start no earlier than 2025-03-02 |
| 1846 | Backfilling | 2025-04-01 → 2025-06-16 (+76d) | 2025-05-30 → 2025-08-14 (+76d) | 59.94d → 67.5d |  | 1863FS+4d → 1859 |  |
| 1847 | **RCC Structure** | 2025-01-03 → 2025-04-01 (+88d) | 2025-04-26 → 2025-07-10 (+75d) | 113.94d → 113.62d | 80% → 0% |  | constraint start no earlier than 2025-01-03 → start no earlier than 2025-04-01 |
| 1848 | **Raft Foundation** | 2025-01-03 → 2025-04-01 (+88d) | 2025-02-06 → 2025-04-26 (+79d) | 35d → 29.25d | 100% → 0% |  | constraint start no earlier than 2025-01-03 → start no earlier than 2025-04-01 |
| 1849 | Reinforcement | 2025-01-03 → 2025-04-01 (+88d) | 2025-02-02 → 2025-04-17 (+74d) | 30d → 19.12d | 100% → 0% | 1845FS-30.94d → 1845FS+2.25d | constraint start no earlier than 2025-01-03 → none |
| 1850 | Formwork | 2025-01-17 → 2025-04-13 (+86d) | 2025-02-03 → 2025-04-24 (+80d) | 18d → 13.5d | 100% → 0% | 1849FF+1.06d → 1849FF+7.88d | constraint start no earlier than 2025-01-17 → none |
| 1851 | Concreting | 2026-08-12 → 2025-04-25 (-474d) | 2026-08-15 → 2025-04-26 (-476d) | 2.94d → 2.25d |  | 1137 → 1850 |  |
| 1852 | **Basement 1 Slab** | 2025-02-08 → 2025-04-27 (+78d) | 2025-03-06 → 2025-05-21 (+76d) | 27d → 28.12d | 100% → 0% |  | constraint start no earlier than 2025-02-08 → start no earlier than 2025-04-27 |
| 1853 | Reinforcement | 2025-02-08 → 2025-04-27 (+78d) | 2025-03-06 → 2025-05-16 (+71d) | 21d → 22.5d | 100% → 0% | 1855FS+1d → 1851 | constraint start no earlier than 2025-02-08 → none |
| 1854 | Formwork | 2025-02-11 → 2025-04-28 (+76d) | 2025-03-06 → 2025-05-17 (+72d) | 15d → 22.5d | 100% → 0% | 1853SS+3d → 1853SS+1.12d | constraint start no earlier than 2025-02-11 → none |
| 1855 | Concreting | 2025-02-03 → 2025-05-18 (+104d) | 2025-02-06 → 2025-05-21 (+104d) | 4d → 4.5d | 100% → 0% | 1850FS-1d → 1854 | constraint start no earlier than 2025-02-03 → none |
| 1856 | **Basement 2 Slab/GF** | 2025-03-04 → 2025-05-22 (+79d) | 2025-03-21 → 2025-06-15 (+86d) | 18d → 28.12d | 100% → 0% |  | constraint start no earlier than 2025-03-04 → start no earlier than 2025-05-22 |
| 1857 | Reinforcement | 2025-03-04 → 2025-05-22 (+79d) | 2025-03-21 → 2025-06-10 (+81d) | 15d → 22.5d | 100% → 0% | 1859FS-2d → 1855 | constraint start no earlier than 2025-03-04 → none |
| 1858 | Formwork | 2025-03-05 → 2025-05-23 (+79d) | 2025-03-21 → 2025-06-11 (+82d) | 15d → 22.5d | 100% → 0% | 1857SS+1d → 1857SS+1.12d | constraint start no earlier than 2025-03-05 → none |
| 1859 | Concreting | 2025-03-03 → 2025-06-12 (+101d) | 2025-03-06 → 2025-06-15 (+101d) | 2d → 4.5d | 100% → 0% | 1854FF+3.25d → 1858 | constraint start no earlier than 2025-03-03 → none |
| 1861 | Reinforcement | 2025-03-18 → 2025-06-16 (+90d) | 2025-04-10 → 2025-07-05 (+86d) | 22.94d → 22.5d | 56% → 0% | 1863FS+5d → 1859 | constraint start no earlier than 2025-03-18 → none |
| 1862 | Formwork | 2025-03-21 → 2025-06-17 (+88d) | 2025-04-21 → 2025-07-06 (+76d) | 30.94d → 22.5d | 32% → 0% | 1861SS+2.75d → 1861SS+1.12d | constraint start no earlier than 2025-03-21 → none |
| 1863 | Concreting | 2025-03-09 → 2025-07-07 (+120d) | 2025-03-11 → 2025-07-10 (+121d) | 3d → 4.5d | 100% → 0% | 1858FS-1d → 1862 | constraint start no earlier than 2025-03-09 → none |
| 1864 | **Substructure Finishing** | 2025-05-23 → 2025-08-10 (+79d) | 2025-09-30 → 2026-01-31 (+123d) | 129.81d → 146.25d |  |  | constraint start no earlier than 2025-05-23 → start no earlier than 2025-08-10 |
| 1865 | Masonary work | 2025-05-23 → 2025-08-10 (+79d) | 2025-07-07 → 2025-09-23 (+78d) | 44.94d → 50.62d |  | 1875FS+26.75d → 1863FS+33.75d |  |
| 1866 | Plaster | 2025-07-07 → 2025-09-24 (+79d) | 2025-08-16 → 2025-12-17 (+123d) | 39.94d → 45d |  |  |  |
| 1867 | Structural steel | 2025-06-19 → 2025-09-09 (+82d) | 2025-08-18 → 2025-12-22 (+126d) | 59.94d → 67.5d |  | 1875FS+53.38d → 1863FS+67.5d |  |
| 1868 | White Wash | 2025-08-16 → 2025-12-18 (+124d) | 2025-09-30 → 2026-01-31 (+123d) | 44.94d → 50.62d |  |  |  |
| 1869 | **Superstructure** | 2025-04-29 → 2025-07-11 (+73d) | 2027-08-07 → 2027-10-14 (+68d) | 740d → 828d |  |  | constraint start no earlier than 2025-04-29 → start no earlier than 2025-07-11 |
| 1870 | **RCC structure** | 2025-04-29 → 2025-07-11 (+73d) | 2026-09-14 → 2026-12-23 (+100d) | 458.12d → 496.12d |  |  | constraint start no earlier than 2025-04-29 → start no earlier than 2025-07-11 |
| 1871 | **1st floor slab** | 2025-04-29 → 2025-07-11 (+73d) | 2025-05-23 → 2025-08-04 (+73d) | 24d → 28.12d |  |  | constraint start no earlier than 2025-04-29 → start no earlier than 2025-07-11 |
| 1872 | Reinforcement | 2025-04-29 → 2025-07-11 (+73d) | 2025-05-19 → 2025-08-01 (+74d) | 20d → 24.75d |  | 1875FS+2.75d → 1863 |  |
| 1873 | Wall conduiting | 2025-05-02 → 2025-07-14 (+73d) | 2025-05-06 → 2025-07-16 (+71d) | 4d → 3.38d |  | 1872SS+2.75d → 1872SS+3.38d |  |
| 1874 | Formwork | 2025-05-02 → 2025-07-14 (+73d) | 2025-05-22 → 2025-08-03 (+73d) | 20d → 23.62d |  | 1872SS+3d → 1872SS+3.38d |  |
| 1875 | Concreting | 2025-04-21 → 2025-08-04 (+105d) | 2025-04-26 → 2025-08-04 (+100d) | 5d → 1.12d |  | 1862 → 1874 |  |
| 1876 | **2nd floor slab** | 2025-05-24 → 2025-08-05 (+73d) | 2025-06-14 → 2025-08-25 (+72d) | 21d → 23.62d |  |  | constraint start no earlier than 2025-05-24 → start no earlier than 2025-08-05 |
| 1877 | Reinforcement | 2025-05-24 → 2025-08-05 (+73d) | 2025-06-13 → 2025-08-22 (+70d) | 20d → 20.25d |  | 1880FS+1d → 1875 |  |
| 1878 | Wall conduiting | 2025-05-27 → 2025-08-08 (+73d) | 2025-05-31 → 2025-08-10 (+71d) | 4d → 3.38d |  | 1873, 1877SS+2.75d → 1873, 1877SS+3.38d |  |
| 1879 | Formwork | 2025-05-24 → 2025-08-08 (+76d) | 2025-06-13 → 2025-08-24 (+72d) | 20d → 19.12d |  | 1877SS → 1877SS+3.38d |  |
| 1880 | Concreting | 2025-05-22 → 2025-08-25 (+95d) | 2025-05-23 → 2025-08-25 (+94d) | 1d → 1.12d |  | 1874 → 1879 |  |
| 1881 | **3rd floor slab** | 2025-06-15 → 2025-08-26 (+72d) | 2025-06-30 → 2025-09-09 (+71d) | 15d → 16.88d |  |  | constraint start no earlier than 2025-06-15 → start no earlier than 2025-08-26 |
| 1882 | Reinforcement | 2025-06-15 → 2025-08-26 (+72d) | 2025-06-26 → 2025-09-05 (+71d) | 11d → 12.38d |  | 1885FS+1d → 1880 |  |
| 1883 | Wall conduiting | 2025-06-18 → 2025-08-29 (+72d) | 2025-06-21 → 2025-08-31 (+71d) | 3d → 3.38d |  | 1878, 1882SS+2.75d → 1878, 1882SS+3.38d |  |
| 1884 | Formwork | 2025-06-18 → 2025-08-30 (+73d) | 2025-06-29 → 2025-09-08 (+71d) | 11d → 11.25d |  | 1882SS+3d → 1882SS+4.5d |  |
| 1885 | Concreting | 2025-06-13 → 2025-09-09 (+88d) | 2025-06-14 → 2025-09-09 (+87d) | 1d → 1.12d |  | 1879 → 1884 |  |
| 1886 | **4th floor slab** | 2025-07-01 → 2025-09-10 (+71d) | 2025-07-10 → 2025-09-18 (+70d) | 9d → 10.12d |  |  | constraint start no earlier than 2025-07-01 → start no earlier than 2025-09-10 |
| 1887 | Reinforcement | 2025-07-01 → 2025-09-10 (+71d) | 2025-07-09 → 2025-09-16 (+69d) | 8d → 7.88d |  | 1890FS+1d → 1885 |  |
| 1888 | Wall conduiting | 2025-07-02 → 2025-09-11 (+71d) | 2025-07-05 → 2025-09-12 (+69d) | 3d → 2.25d |  | 1883, 1887SS+1d → 1883, 1887SS+1.12d |  |
| 1889 | Formwork | 2025-07-02 → 2025-09-12 (+72d) | 2025-07-09 → 2025-09-17 (+70d) | 7d → 6.75d |  | 1887SS+1d → 1887SS+2.25d |  |
| 1890 | Concreting | 2025-06-29 → 2025-09-18 (+81d) | 2025-06-30 → 2025-09-18 (+80d) | 1d → 1.12d |  | 1884 → 1889 |  |
| 1891 | **5th floor slab** | 2025-07-11 → 2025-09-19 (+70d) | 2025-07-20 → 2025-09-27 (+69d) | 9d → 10.12d |  |  | constraint start no earlier than 2025-07-11 → start no earlier than 2025-09-19 |
| 1892 | Reinforcement | 2025-07-11 → 2025-09-19 (+70d) | 2025-07-19 → 2025-09-25 (+68d) | 8d → 7.88d |  | 1895FS+1d → 1890 |  |

| ID | Task | Start | Finish | Duration | Predecessors | Other |
| --- | --- | --- | --- | --- | --- | --- |
| 1893 | Wall conduiting | 2025-07-12 → 2025-09-20 (+70d) | 2025-07-15 → 2025-09-21 (+68d) | 3d → 2.25d | 1888, 1892SS+1d → 1888, 1892SS+1.12d |  |
| 1894 | Formwork | 2025-07-12 → 2025-09-21 (+71d) | 2025-07-19 → 2025-09-26 (+69d) | 7d → 6.75d | 1892SS+1d → 1892SS+2.25d |  |
| 1895 | Concreting | 2025-07-09 → 2025-09-27 (+80d) | 2025-07-10 → 2025-09-27 (+79d) | 1d → 1.12d | 1889 → 1894 |  |
| 1896 | **6th floor slab** | 2025-07-21 → 2025-09-28 (+69d) | 2025-07-30 → 2025-10-06 (+68d) | 9d → 10.12d |  | constraint start no earlier than 2025-07-21 → start no earlier than 2025-09-28 |
| 1897 | Reinforcement | 2025-07-21 → 2025-09-28 (+69d) | 2025-07-29 → 2025-10-04 (+67d) | 8d → 7.88d | 1900FS+1d → 1895 |  |
| 1898 | Wall conduiting | 2025-07-22 → 2025-09-29 (+69d) | 2025-07-25 → 2025-09-30 (+67d) | 3d → 2.25d | 1893, 1897SS+1d → 1893, 1897SS+1.12d |  |
| 1899 | Formwork | 2025-07-22 → 2025-09-30 (+70d) | 2025-07-29 → 2025-10-05 (+68d) | 7d → 6.75d | 1897SS+1d → 1897SS+2.25d |  |
| 1900 | Concreting | 2025-07-19 → 2025-10-06 (+79d) | 2025-07-20 → 2025-10-06 (+78d) | 1d → 1.12d | 1894 → 1899 |  |
| 1901 | **7th floor slab** | 2025-07-31 → 2025-10-07 (+68d) | 2025-08-09 → 2025-10-15 (+67d) | 9d → 10.12d |  | constraint start no earlier than 2025-07-31 → start no earlier than 2025-10-07 |
| 1902 | Reinforcement | 2025-07-31 → 2025-10-07 (+68d) | 2025-08-08 → 2025-10-13 (+66d) | 8d → 7.88d | 1905FS+1d → 1900 |  |
| 1903 | Wall conduiting | 2025-08-01 → 2025-10-08 (+68d) | 2025-08-04 → 2025-10-09 (+66d) | 3d → 2.25d | 1898, 1902SS+1d → 1898, 1902SS+1.12d |  |
| 1904 | Formwork | 2025-08-01 → 2025-10-09 (+69d) | 2025-08-08 → 2025-10-14 (+67d) | 7d → 6.75d | 1902SS+1d → 1902SS+2.25d |  |
| 1905 | Concreting | 2025-07-29 → 2025-10-15 (+78d) | 2025-07-30 → 2025-10-15 (+77d) | 1d → 1.12d | 1899 → 1904 |  |
| 1906 | **8th floor slab** | 2025-08-10 → 2025-10-16 (+67d) | 2025-08-22 → 2025-10-27 (+66d) | 12d → 13.5d |  | constraint start no earlier than 2025-08-10 → start no earlier than 2025-10-16 |
| 1907 | Reinforcement | 2025-08-10 → 2025-10-16 (+67d) | 2025-08-20 → 2025-10-25 (+66d) | 10d → 11.25d | 1910FS+1d → 1905 |  |
| 1908 | Wall conduiting | 2025-08-11 → 2025-10-17 (+67d) | 2025-08-14 → 2025-10-18 (+65d) | 3d → 2.25d | 1903, 1907SS+1d → 1903, 1907SS+1.12d |  |
| 1909 | Formwork | 2025-08-11 → 2025-10-18 (+68d) | 2025-08-21 → 2025-10-26 (+66d) | 10d → 10.12d | 1907SS+1d → 1907SS+2.25d |  |
| 1910 | Concreting | 2025-08-08 → 2025-10-27 (+80d) | 2025-08-09 → 2025-10-27 (+79d) | 1d → 1.12d | 1904 → 1909 |  |
| 1911 | **9th floor slab** | 2025-08-23 → 2025-10-28 (+66d) | 2025-09-01 → 2025-12-20 (+110d) | 9d → 10.12d |  | constraint start no earlier than 2025-08-23 → start no earlier than 2025-10-28 |
| 1912 | Reinforcement | 2025-08-23 → 2025-10-28 (+66d) | 2025-08-31 → 2025-12-18 (+109d) | 8d → 7.88d | 1915FS+1d → 1910 |  |
| 1913 | Wall conduiting | 2025-08-24 → 2025-10-29 (+66d) | 2025-08-27 → 2025-10-30 (+64d) | 3d → 2.25d | 1908, 1912SS+1d → 1908, 1912SS+1.12d |  |
| 1914 | Formwork | 2025-08-24 → 2025-10-30 (+67d) | 2025-08-31 → 2025-12-19 (+110d) | 7d → 6.75d | 1912SS+1d → 1912SS+2.25d |  |
| 1915 | Concreting | 2025-08-21 → 2025-12-20 (+121d) | 2025-08-22 → 2025-12-20 (+120d) | 1d → 1.12d | 1909 → 1914 |  |
| 1916 | **10th floor slab** | 2025-09-02 → 2025-12-21 (+110d) | 2025-09-11 → 2025-12-29 (+109d) | 9d → 10.12d |  | constraint start no earlier than 2025-09-02 → start no earlier than 2025-12-21 |
| 1917 | Reinforcement | 2025-09-02 → 2025-12-21 (+110d) | 2025-09-10 → 2025-12-27 (+108d) | 8d → 7.88d | 1920FS+1d → 1915 |  |
| 1918 | Wall conduiting | 2025-09-03 → 2025-12-22 (+110d) | 2025-09-06 → 2025-12-23 (+108d) | 3d → 2.25d | 1913, 1917SS+1d → 1913, 1917SS+1.12d |  |
| 1919 | Formwork | 2025-09-03 → 2025-12-23 (+111d) | 2025-09-10 → 2025-12-28 (+109d) | 7d → 6.75d | 1917SS+1d → 1917SS+2.25d |  |
| 1920 | Concreting | 2025-08-31 → 2025-12-29 (+120d) | 2025-09-01 → 2025-12-29 (+119d) | 1d → 1.12d | 1914 → 1919 |  |
| 1921 | **11th floor slab** | 2025-09-12 → 2025-12-30 (+109d) | 2025-09-21 → 2026-01-07 (+108d) | 9d → 10.12d |  | constraint start no earlier than 2025-09-12 → start no earlier than 2025-12-30 |
| 1922 | Reinforcement | 2025-09-12 → 2025-12-30 (+109d) | 2025-09-20 → 2026-01-05 (+107d) | 8d → 7.88d | 1925FS+1d → 1920 |  |
| 1923 | Wall conduiting | 2025-09-13 → 2025-12-31 (+109d) | 2025-09-16 → 2026-01-01 (+107d) | 3d → 2.25d | 1918, 1922SS+1d → 1918, 1922SS+1.12d |  |
| 1924 | Formwork | 2025-09-13 → 2026-01-01 (+110d) | 2025-09-20 → 2026-01-06 (+108d) | 7d → 6.75d | 1922SS+1d → 1922SS+2.25d |  |
| 1925 | Concreting | 2025-09-10 → 2026-01-07 (+119d) | 2025-09-11 → 2026-01-07 (+118d) | 1d → 1.12d | 1919 → 1924 |  |
| 1926 | **12th floor slab** | 2025-09-22 → 2026-01-08 (+108d) | 2025-10-01 → 2026-01-16 (+107d) | 9d → 10.12d |  | constraint start no earlier than 2025-09-22 → start no earlier than 2026-01-08 |
| 1927 | Reinforcement | 2025-09-22 → 2026-01-08 (+108d) | 2025-09-30 → 2026-01-14 (+106d) | 8d → 7.88d | 1930FS+1d → 1925 |  |
| 1928 | Wall conduiting | 2025-09-23 → 2026-01-09 (+108d) | 2025-09-26 → 2026-01-10 (+106d) | 3d → 2.25d | 1923, 1927SS+1d → 1923, 1927SS+1.12d |  |
| 1929 | Formwork | 2025-09-23 → 2026-01-10 (+109d) | 2025-09-30 → 2026-01-15 (+107d) | 7d → 6.75d | 1927SS+1d → 1927SS+2.25d |  |
| 1930 | Concreting | 2025-09-20 → 2026-01-16 (+118d) | 2025-09-21 → 2026-01-16 (+117d) | 1d → 1.12d | 1924 → 1929 |  |
| 1931 | **13th floor slab** | 2025-10-03 → 2026-01-17 (+106d) | 2025-10-12 → 2026-01-25 (+105d) | 9d → 10.12d |  | constraint start no earlier than 2025-10-03 → start no earlier than 2026-01-17 |
| 1932 | Reinforcement | 2025-10-03 → 2026-01-17 (+106d) | 2025-10-11 → 2026-01-23 (+104d) | 8d → 7.88d | 1935FS+2d → 1930 |  |
| 1933 | Wall conduiting | 2025-10-04 → 2026-01-18 (+106d) | 2025-10-07 → 2026-01-19 (+104d) | 3d → 2.25d | 1928, 1932SS+1d → 1928, 1932SS+1.12d |  |
| 1934 | Formwork | 2025-10-04 → 2026-01-19 (+107d) | 2025-10-11 → 2026-01-24 (+105d) | 7d → 6.75d | 1932SS+1d → 1932SS+2.25d |  |
| 1935 | Concreting | 2025-09-30 → 2026-01-25 (+117d) | 2025-10-01 → 2026-01-25 (+116d) | 1d → 1.12d | 1929 → 1934 |  |
| 1936 | **14th floor slab** | 2025-10-13 → 2026-01-26 (+105d) | 2025-10-22 → 2026-02-03 (+104d) | 9d → 10.12d |  | constraint start no earlier than 2025-10-13 → start no earlier than 2026-01-26 |
| 1937 | Reinforcement | 2025-10-13 → 2026-01-26 (+105d) | 2025-10-21 → 2026-02-01 (+103d) | 8d → 7.88d | 1940FS+1d → 1935 |  |
| 1938 | Wall conduiting | 2025-10-14 → 2026-01-27 (+105d) | 2025-10-17 → 2026-01-28 (+103d) | 3d → 2.25d | 1933, 1937SS+1d → 1933, 1937SS+1.12d |  |
| 1939 | Formwork | 2025-10-14 → 2026-01-28 (+106d) | 2025-10-21 → 2026-02-02 (+104d) | 7d → 6.75d | 1937SS+1d → 1937SS+2.25d |  |
| 1940 | Concreting | 2025-10-11 → 2026-02-03 (+115d) | 2025-10-12 → 2026-02-03 (+114d) | 1d → 1.12d | 1934 → 1939 |  |
| 1941 | **15th floor slab** | 2025-10-24 → 2026-02-04 (+103d) | 2025-12-17 → 2026-02-12 (+57d) | 9d → 10.12d |  | constraint start no earlier than 2025-10-24 → start no earlier than 2026-02-04 |
| 1942 | Reinforcement | 2025-10-24 → 2026-02-04 (+103d) | 2025-12-16 → 2026-02-10 (+56d) | 8d → 7.88d | 1945FS+1.88d → 1940 |  |
| 1943 | Wall conduiting | 2025-10-25 → 2026-02-05 (+103d) | 2025-10-28 → 2026-02-06 (+101d) | 3d → 2.25d | 1938, 1942SS+1d → 1938, 1942SS+1.12d |  |
| 1944 | Formwork | 2025-10-25 → 2026-02-06 (+104d) | 2025-12-16 → 2026-02-11 (+57d) | 7d → 6.75d | 1942SS+1d → 1942SS+2.25d |  |
| 1945 | Concreting | 2025-10-21 → 2026-02-12 (+114d) | 2025-10-22 → 2026-02-12 (+113d) | 1d → 1.12d | 1939 → 1944 |  |
| 1946 | **16th floor slab** | 2025-12-18 → 2026-02-13 (+57d) | 2025-12-30 → 2026-02-24 (+56d) | 12d → 13.5d |  | constraint start no earlier than 2025-12-18 → start no earlier than 2026-02-13 |
| 1947 | Reinforcement | 2025-12-18 → 2026-02-13 (+57d) | 2025-12-28 → 2026-02-21 (+55d) | 10d → 10.12d | 1950FS+1d → 1945 |  |
| 1948 | Wall conduiting | 2025-12-19 → 2026-02-14 (+57d) | 2025-12-22 → 2026-02-15 (+55d) | 3d → 2.25d | 1943, 1947SS+1d → 1943, 1947SS+1.12d |  |
| 1949 | Formwork | 2025-12-19 → 2026-02-15 (+58d) | 2025-12-29 → 2026-02-23 (+56d) | 10d → 10.12d | 1947SS+1d → 1947SS+2.25d |  |
| 1950 | Concreting | 2025-12-16 → 2026-02-24 (+70d) | 2025-12-17 → 2026-02-24 (+69d) | 1d → 1.12d | 1944 → 1949 |  |
| 1951 | **17th floor slab** | 2025-12-31 → 2026-02-25 (+56d) | 2026-01-09 → 2026-03-05 (+55d) | 9d → 10.12d |  | constraint start no earlier than 2025-12-31 → start no earlier than 2026-02-25 |
| 1952 | Reinforcement | 2025-12-31 → 2026-02-25 (+56d) | 2026-01-08 → 2026-03-03 (+54d) | 8d → 7.88d | 1955FS+1d → 1950 |  |
| 1953 | Wall conduiting | 2026-01-01 → 2026-02-26 (+56d) | 2026-01-04 → 2026-02-27 (+54d) | 3d → 2.25d | 1948, 1952SS+1d → 1948, 1952SS+1.12d |  |
| 1954 | Formwork | 2026-01-01 → 2026-02-27 (+57d) | 2026-01-08 → 2026-03-04 (+55d) | 7d → 6.75d | 1952SS+1d → 1952SS+2.25d |  |
| 1955 | Concreting | 2025-12-29 → 2026-03-05 (+66d) | 2025-12-30 → 2026-03-05 (+65d) | 1d → 1.12d | 1949 → 1954 |  |
| 1956 | **18th floor slab** | 2026-01-10 → 2026-03-06 (+55d) | 2026-01-19 → 2026-03-14 (+54d) | 9d → 10.12d |  | constraint start no earlier than 2026-01-10 → start no earlier than 2026-03-06 |
| 1957 | Reinforcement | 2026-01-10 → 2026-03-06 (+55d) | 2026-01-18 → 2026-03-12 (+53d) | 8d → 7.88d | 1960FS+1d → 1955 |  |
| 1958 | Wall conduiting | 2026-01-11 → 2026-03-07 (+55d) | 2026-01-14 → 2026-03-08 (+53d) | 3d → 2.25d | 1953, 1957SS+1d → 1953, 1957SS+1.12d |  |
| 1959 | Formwork | 2026-01-11 → 2026-03-08 (+56d) | 2026-01-18 → 2026-03-13 (+54d) | 7d → 6.75d | 1957SS+1d → 1957SS+2.25d |  |
| 1960 | Concreting | 2026-01-08 → 2026-03-14 (+65d) | 2026-01-09 → 2026-03-14 (+64d) | 1d → 1.12d | 1954 → 1959 |  |
| 1961 | **19th floor slab** | 2026-01-20 → 2026-03-15 (+54d) | 2026-01-28 → 2026-03-22 (+53d) | 8d → 9d |  | constraint start no earlier than 2026-01-20 → start no earlier than 2026-03-15 |
| 1962 | Reinforcement | 2026-01-20 → 2026-03-15 (+54d) | 2026-01-27 → 2026-03-21 (+53d) | 7d → 7.88d | 1965FS+1d → 1960 |  |

| ID | Task | Start | Finish | Duration | Predecessors | Other |
| --- | --- | --- | --- | --- | --- | --- |
| 1963 | Wall conduiting | 2026-01-21 → 2026-03-16 (+54d) | 2026-01-24 → 2026-03-17 (+52d) | 3d → 2.25d | 1958, 1962SS+1d → 1958, 1962SS+1.12d |  |
| 1964 | Formwork | 2026-01-21 → 2026-03-16 (+54d) | 2026-01-27 → 2026-03-21 (+53d) | 6d → 6.75d | 1962SS+1d → 1962SS+1.12d |  |
| 1965 | Concreting | 2026-01-18 → 2026-03-22 (+63d) | 2026-01-19 → 2026-03-22 (+62d) | 1d → 1.12d | 1959 → 1964 |  |
| 1966 | **20th floor slab** | 2026-01-29 → 2026-03-23 (+53d) | 2026-02-06 → 2026-03-30 (+52d) | 8d → 9d |  | constraint start no earlier than 2026-01-29 → start no earlier than 2026-03-23 |
| 1967 | Reinforcement | 2026-01-29 → 2026-03-23 (+53d) | 2026-02-05 → 2026-03-29 (+52d) | 7d → 7.88d | 1970FS+1d → 1965 |  |
| 1968 | Wall conduiting | 2026-01-30 → 2026-03-24 (+53d) | 2026-02-02 → 2026-03-25 (+51d) | 3d → 2.25d | 1963, 1967SS+1d → 1963, 1967SS+1.12d |  |
| 1969 | Formwork | 2026-01-30 → 2026-03-24 (+53d) | 2026-02-05 → 2026-03-29 (+52d) | 6d → 6.75d | 1967SS+1d → 1967SS+1.12d |  |
| 1970 | Concreting | 2026-01-27 → 2026-03-30 (+62d) | 2026-01-28 → 2026-03-30 (+61d) | 1d → 1.12d | 1964 → 1969 |  |
| 1971 | **21st floor slab** | 2026-02-08 → 2026-03-31 (+51d) | 2026-02-16 → 2026-04-09 (+52d) | 8d → 11.25d |  | constraint start no earlier than 2026-02-08 → start no earlier than 2026-03-31 |
| 1972 | Reinforcement | 2026-02-08 → 2026-03-31 (+51d) | 2026-02-15 → 2026-04-07 (+51d) | 7d → 9d | 1975FS+1.88d → 1970 |  |
| 1973 | Wall conduiting | 2026-02-09 → 2026-04-01 (+51d) | 2026-02-12 → 2026-04-02 (+49d) | 3d → 2.25d | 1968, 1972SS+1d → 1968, 1972SS+1.12d |  |
| 1974 | Formwork | 2026-02-09 → 2026-04-02 (+52d) | 2026-02-15 → 2026-04-08 (+52d) | 6d → 7.88d | 1972SS+1d → 1972SS+2.25d |  |
| 1975 | Concreting | 2026-02-05 → 2026-04-09 (+63d) | 2026-02-06 → 2026-04-09 (+62d) | 1d → 1.12d | 1969 → 1974 |  |
| 1976 | **22nd floor slab** | 2026-02-17 → 2026-04-10 (+52d) | 2026-02-25 → 2026-04-19 (+53d) | 8d → 11.25d |  | constraint start no earlier than 2026-02-17 → start no earlier than 2026-04-10 |
| 1977 | Reinforcement | 2026-02-17 → 2026-04-10 (+52d) | 2026-02-24 → 2026-04-17 (+52d) | 7d → 9d | 1980FS+1d → 1975 |  |
| 1978 | Wall conduiting | 2026-02-18 → 2026-04-11 (+52d) | 2026-02-21 → 2026-04-12 (+50d) | 3d → 2.25d | 1973, 1977SS+1d → 1973, 1977SS+1.12d |  |
| 1979 | Formwork | 2026-02-18 → 2026-04-12 (+53d) | 2026-02-24 → 2026-04-18 (+53d) | 6d → 7.88d | 1977SS+1d → 1977SS+2.25d |  |
| 1980 | Concreting | 2026-02-15 → 2026-04-19 (+63d) | 2026-02-16 → 2026-04-19 (+62d) | 1d → 1.12d | 1974 → 1979 |  |
| 1981 | **23rd floor slab** | 2026-02-26 → 2026-04-20 (+53d) | 2026-03-06 → 2026-04-29 (+54d) | 8d → 11.25d |  | constraint start no earlier than 2026-02-26 → start no earlier than 2026-04-20 |
| 1982 | Reinforcement | 2026-02-26 → 2026-04-20 (+53d) | 2026-03-05 → 2026-04-27 (+53d) | 7d → 9d | 1985FS+1d → 1980 |  |
| 1983 | Wall conduiting | 2026-02-27 → 2026-04-21 (+53d) | 2026-03-02 → 2026-04-22 (+51d) | 3d → 2.25d | 1978, 1982SS+1d → 1978, 1982SS+1.12d |  |
| 1984 | Formwork | 2026-02-27 → 2026-04-22 (+54d) | 2026-03-05 → 2026-04-28 (+54d) | 6d → 7.88d | 1982SS+1d → 1982SS+2.25d |  |
| 1985 | Concreting | 2026-02-24 → 2026-04-29 (+64d) | 2026-02-25 → 2026-04-29 (+63d) | 1d → 1.12d | 1979 → 1984 |  |
| 1986 | **24th floor slab** | 2026-03-07 → 2026-04-30 (+54d) | 2026-03-19 → 2026-05-12 (+54d) | 12d → 14.62d |  | constraint start no earlier than 2026-03-07 → start no earlier than 2026-04-30 |
| 1987 | Reinforcement | 2026-03-07 → 2026-04-30 (+54d) | 2026-03-17 → 2026-05-09 (+53d) | 10d → 11.25d | 1990FS+1d → 1985 |  |
| 1988 | Wall conduiting | 2026-03-08 → 2026-05-01 (+54d) | 2026-03-11 → 2026-05-02 (+52d) | 3d → 2.25d | 1983, 1987SS+1d → 1983, 1987SS+1.12d |  |
| 1989 | Formwork | 2026-03-08 → 2026-05-02 (+55d) | 2026-03-18 → 2026-05-11 (+54d) | 10d → 11.25d | 1987SS+1d → 1987SS+2.25d |  |
| 1990 | Concreting | 2026-03-05 → 2026-05-12 (+68d) | 2026-03-06 → 2026-05-12 (+67d) | 1d → 1.12d | 1984 → 1989 |  |
| 1991 | **25th floor slab** | 2026-03-20 → 2026-05-13 (+54d) | 2026-04-01 → 2026-05-25 (+54d) | 12d → 14.62d |  | constraint start no earlier than 2026-03-20 → start no earlier than 2026-05-13 |
| 1992 | Reinforcement | 2026-03-20 → 2026-05-13 (+54d) | 2026-03-30 → 2026-05-22 (+53d) | 10d → 11.25d | 1995FS+1d → 1990 |  |
| 1993 | Wall conduiting | 2026-03-21 → 2026-05-14 (+54d) | 2026-03-24 → 2026-05-15 (+52d) | 3d → 2.25d | 1988, 1992SS+1d → 1988, 1992SS+1.12d |  |
| 1994 | Formwork | 2026-03-21 → 2026-05-15 (+55d) | 2026-03-31 → 2026-05-24 (+54d) | 10d → 11.25d | 1992SS+1d → 1992SS+2.25d |  |
| 1995 | Concreting | 2026-03-18 → 2026-05-25 (+68d) | 2026-03-19 → 2026-05-25 (+67d) | 1d → 1.12d | 1989 → 1994 |  |
| 1996 | **26th floor slab** | 2026-04-02 → 2026-05-26 (+54d) | 2026-04-10 → 2026-06-04 (+55d) | 8d → 11.25d |  | constraint start no earlier than 2026-04-02 → start no earlier than 2026-05-26 |
| 1997 | Reinforcement | 2026-04-02 → 2026-05-26 (+54d) | 2026-04-09 → 2026-06-02 (+54d) | 7d → 9d | 2000FS+1d → 1995 |  |
| 1998 | Wall conduiting | 2026-04-03 → 2026-05-27 (+54d) | 2026-04-06 → 2026-05-28 (+52d) | 3d → 2.25d | 1993, 1997SS+1d → 1993, 1997SS+1.12d |  |
| 1999 | Formwork | 2026-04-03 → 2026-05-28 (+55d) | 2026-04-09 → 2026-06-03 (+55d) | 6d → 7.88d | 1997SS+1d → 1997SS+2.25d |  |
| 2000 | Concreting | 2026-03-31 → 2026-06-04 (+65d) | 2026-04-01 → 2026-06-04 (+64d) | 1d → 1.12d | 1994 → 1999 |  |
| 2001 | **27th floor slab** | 2026-04-11 → 2026-06-05 (+55d) | 2026-04-19 → 2026-06-14 (+56d) | 8d → 11.25d |  | constraint start no earlier than 2026-04-11 → start no earlier than 2026-06-05 |
| 2002 | Reinforcement | 2026-04-11 → 2026-06-05 (+55d) | 2026-04-18 → 2026-06-12 (+55d) | 7d → 9d | 2005FS+1d → 2000 |  |
| 2003 | Wall conduiting | 2026-04-12 → 2026-06-06 (+55d) | 2026-04-15 → 2026-06-07 (+53d) | 3d → 2.25d | 1998, 2002SS+1d → 1998, 2002SS+1.12d |  |
| 2004 | Formwork | 2026-04-12 → 2026-06-07 (+56d) | 2026-04-18 → 2026-06-13 (+56d) | 6d → 7.88d | 2002SS+1d → 2002SS+2.25d |  |
| 2005 | Concreting | 2026-04-09 → 2026-06-14 (+66d) | 2026-04-10 → 2026-06-14 (+65d) | 1d → 1.12d | 1999 → 2004 |  |
| 2006 | **28th floor slab** | 2026-04-20 → 2026-06-15 (+56d) | 2026-04-28 → 2026-06-24 (+57d) | 8d → 11.25d |  | constraint start no earlier than 2026-04-20 → start no earlier than 2026-06-15 |
| 2007 | Reinforcement | 2026-04-20 → 2026-06-15 (+56d) | 2026-04-27 → 2026-06-22 (+56d) | 7d → 9d | 2010FS+1d → 2005 |  |
| 2008 | Wall conduiting | 2026-04-21 → 2026-06-16 (+56d) | 2026-04-24 → 2026-06-17 (+54d) | 3d → 2.25d | 2003, 2007SS+1d → 2003, 2007SS+1.12d |  |
| 2009 | Formwork | 2026-04-21 → 2026-06-17 (+57d) | 2026-04-27 → 2026-06-23 (+57d) | 6d → 7.88d | 2007SS+1d → 2007SS+2.25d |  |
| 2010 | Concreting | 2026-04-18 → 2026-06-24 (+67d) | 2026-04-19 → 2026-06-24 (+66d) | 1d → 1.12d | 2004 → 2009 |  |
| 2011 | **29th floor slab** | 2026-04-29 → 2026-06-25 (+57d) | 2026-05-07 → 2026-07-04 (+58d) | 8d → 11.25d |  | constraint start no earlier than 2026-04-29 → start no earlier than 2026-06-25 |
| 2012 | Reinforcement | 2026-04-29 → 2026-06-25 (+57d) | 2026-05-06 → 2026-07-02 (+57d) | 7d → 9d | 2015FS+1d → 2010 |  |
| 2013 | Wall conduiting | 2026-04-30 → 2026-06-26 (+57d) | 2026-05-03 → 2026-06-27 (+55d) | 3d → 2.25d | 2008, 2012SS+1d → 2008, 2012SS+1.12d |  |
| 2014 | Formwork | 2026-04-30 → 2026-06-27 (+58d) | 2026-05-06 → 2026-07-03 (+58d) | 6d → 7.88d | 2012SS+1d → 2012SS+2.25d |  |
| 2015 | Concreting | 2026-04-27 → 2026-07-04 (+68d) | 2026-04-28 → 2026-07-04 (+67d) | 1d → 1.12d | 2009 → 2014 |  |
| 2016 | **30th floor slab** | 2026-05-08 → 2026-07-05 (+58d) | 2026-05-16 → 2026-07-14 (+59d) | 8d → 11.25d |  | constraint start no earlier than 2026-05-08 → start no earlier than 2026-07-05 |
| 2017 | Reinforcement | 2026-05-08 → 2026-07-05 (+58d) | 2026-05-15 → 2026-07-12 (+58d) | 7d → 9d | 2020FS+1d → 2015 |  |
| 2018 | Wall conduiting | 2026-05-09 → 2026-07-06 (+58d) | 2026-05-12 → 2026-07-07 (+56d) | 3d → 2.25d | 2013, 2017SS+1d → 2013, 2017SS+1.12d |  |
| 2019 | Formwork | 2026-05-09 → 2026-07-07 (+59d) | 2026-05-15 → 2026-07-13 (+59d) | 6d → 7.88d | 2017SS+1d → 2017SS+2.25d |  |
| 2020 | Concreting | 2026-05-06 → 2026-07-14 (+69d) | 2026-05-07 → 2026-07-14 (+68d) | 1d → 1.12d | 2014 → 2019 |  |
| 2021 | **31st floor slab** | 2026-05-16 → 2026-07-15 (+60d) | 2026-05-27 → 2026-07-26 (+60d) | 10.88d → 13.5d |  | constraint start no earlier than 2026-05-16 → start no earlier than 2026-07-15 |
| 2022 | Reinforcement | 2026-05-16 → 2026-07-15 (+60d) | 2026-05-25 → 2026-07-23 (+59d) | 8.94d → 10.12d | 2025FS+0.25d → 2020 |  |
| 2023 | Wall conduiting | 2026-05-17 → 2026-07-16 (+60d) | 2026-05-19 → 2026-07-17 (+59d) | 1.94d → 2.25d | 2018, 2022SS+1d → 2018, 2022SS+1.12d |  |
| 2024 | Formwork | 2026-05-17 → 2026-07-17 (+61d) | 2026-05-26 → 2026-07-25 (+60d) | 8.94d → 10.12d | 2022SS+1d → 2022SS+2.25d |  |
| 2025 | Concreting | 2026-05-15 → 2026-07-26 (+72d) | 2026-05-16 → 2026-07-26 (+71d) | 1d → 1.12d | 2019 → 2024 |  |
| 2026 | **32nd floor slab** | 2026-05-28 → 2026-07-27 (+60d) | 2026-06-10 → 2026-08-08 (+59d) | 12.75d → 14.62d |  | constraint start no earlier than 2026-05-28 → start no earlier than 2026-07-27 |
| 2027 | Reinforcement | 2026-05-28 → 2026-07-27 (+60d) | 2026-06-07 → 2026-08-05 (+59d) | 9.94d → 11.25d | 2030FS+1d → 2025 |  |
| 2028 | Wall conduiting | 2026-05-29 → 2026-07-28 (+60d) | 2026-05-31 → 2026-07-29 (+59d) | 1.94d → 2.25d | 2023, 2027SS+1d → 2023, 2027SS+1.12d |  |
| 2029 | Formwork | 2026-05-30 → 2026-07-29 (+60d) | 2026-06-09 → 2026-08-07 (+59d) | 9.94d → 11.25d | 2027SS+1.88d → 2027SS+2.25d |  |
| 2030 | Concreting | 2026-05-26 → 2026-08-08 (+74d) | 2026-05-27 → 2026-08-08 (+73d) | 0.94d → 1.12d | 2024 → 2029 |  |
| 2031 | **33rd floor slab** | 2026-06-11 → 2026-08-09 (+59d) | 2026-06-23 → 2026-08-20 (+58d) | 11.75d → 13.5d |  | constraint start no earlier than 2026-06-11 → start no earlier than 2026-08-09 |
| 2032 | Reinforcement | 2026-06-11 → 2026-08-09 (+59d) | 2026-06-20 → 2026-08-17 (+58d) | 8.94d → 10.12d | 2035FS+1d → 2030 |  |

| ID | Task | Start | Finish | Duration | Predecessors | Other |
| --- | --- | --- | --- | --- | --- | --- |
| 2033 | Wall conduiting | 2026-06-12 → 2026-08-10 (+59d) | 2026-06-14 → 2026-08-11 (+58d) | 1.94d → 2.25d | 2028, 2032SS+1d → 2028, 2032SS+1.12d |  |
| 2034 | Formwork | 2026-06-13 → 2026-08-11 (+59d) | 2026-06-22 → 2026-08-19 (+58d) | 8.94d → 10.12d | 2032SS+1.88d → 2032SS+2.25d |  |
| 2035 | Concreting | 2026-06-09 → 2026-08-20 (+72d) | 2026-06-10 → 2026-08-20 (+71d) | 0.94d → 1.12d | 2029 → 2034 |  |
| 2036 | **34th floor slab** | 2026-06-24 → 2026-08-21 (+58d) | 2026-07-06 → 2026-09-02 (+58d) | 12.75d → 14.62d |  | constraint start no earlier than 2026-06-24 → start no earlier than 2026-08-21 |
| 2037 | Reinforcement | 2026-06-24 → 2026-08-21 (+58d) | 2026-07-03 → 2026-08-30 (+58d) | 9.94d → 11.25d | 2040FS+1d → 2035 |  |
| 2038 | Wall conduiting | 2026-06-25 → 2026-08-22 (+58d) | 2026-06-26 → 2026-08-23 (+58d) | 1.94d → 2.25d | 2033, 2037SS+1d → 2033, 2037SS+1.12d |  |
| 2039 | Formwork | 2026-06-25 → 2026-08-23 (+59d) | 2026-07-05 → 2026-09-01 (+58d) | 9.94d → 11.25d | 2037SS+1.88d → 2037SS+2.25d |  |
| 2040 | Concreting | 2026-06-22 → 2026-09-02 (+72d) | 2026-06-23 → 2026-09-02 (+71d) | 0.94d → 1.12d | 2034 → 2039 |  |
| 2041 | **35th floor slab** | 2026-07-07 → 2026-09-03 (+58d) | 2026-07-19 → 2026-09-14 (+57d) | 11.75d → 13.5d |  | constraint start no earlier than 2026-07-07 → start no earlier than 2026-09-03 |
| 2042 | Reinforcement | 2026-07-07 → 2026-09-03 (+58d) | 2026-07-16 → 2026-09-11 (+57d) | 8.94d → 10.12d | 2045FS+1d → 2040 |  |
| 2043 | Wall conduiting | 2026-07-08 → 2026-09-04 (+58d) | 2026-07-10 → 2026-09-05 (+57d) | 1.94d → 2.25d | 2038, 2042SS+1d → 2038, 2042SS+1.12d |  |
| 2044 | Formwork | 2026-07-10 → 2026-09-06 (+58d) | 2026-07-18 → 2026-09-13 (+57d) | 7.94d → 9d | 2043SS+1.88d → 2043SS+2.25d |  |
| 2045 | Concreting | 2026-07-05 → 2026-09-14 (+71d) | 2026-07-06 → 2026-09-14 (+70d) | 0.94d → 1.12d | 2039 → 2044 |  |
| 2046 | **Terrace floor slab** | 2026-07-20 → 2026-09-15 (+57d) | 2026-08-04 → 2026-09-29 (+56d) | 14.75d → 16.88d |  | constraint start no earlier than 2026-07-20 → start no earlier than 2026-09-15 |
| 2047 | Reinforcement | 2026-07-20 → 2026-09-15 (+57d) | 2026-07-31 → 2026-09-25 (+56d) | 10.94d → 12.38d | 2050FS+1d → 2045 |  |
| 2048 | Wall conduiting | 2026-07-21 → 2026-09-16 (+57d) | 2026-07-23 → 2026-09-17 (+56d) | 1.94d → 2.25d | 2043, 2047SS+1d → 2043, 2047SS+1.12d |  |
| 2049 | Formwork | 2026-07-22 → 2026-09-17 (+57d) | 2026-08-03 → 2026-09-28 (+56d) | 11.94d → 13.5d | 2047SS+1.88d → 2047SS+2.25d |  |
| 2050 | Concreting | 2026-07-18 → 2026-09-29 (+73d) | 2026-07-19 → 2026-09-29 (+72d) | 0.94d → 1.12d | 2044 → 2049 |  |
| 2051 | **OHT & Mumty** | 2026-08-06 → 2026-09-30 (+55d) | 2026-09-14 → 2026-12-23 (+100d) | 39.5d → 45d |  | constraint start no earlier than 2026-08-06 → start no earlier than 2026-09-30 |
| 2052 | Reinforcement | 2026-08-06 → 2026-09-30 (+55d) | 2026-09-05 → 2026-10-29 (+54d) | 29.94d → 33.75d | 2055FS+2d → 2050 |  |
| 2053 | Wall conduiting | 2026-08-07 → 2026-10-01 (+55d) | 2026-08-12 → 2026-10-05 (+54d) | 4.94d → 5.62d | 2048, 2052SS+1d → 2048, 2052SS+1.12d |  |
| 2054 | Formwork | 2026-08-09 → 2026-10-04 (+56d) | 2026-09-11 → 2026-12-20 (+100d) | 32.94d → 37.12d | 2052SS+3.62d → 2052SS+4.5d |  |
| 2055 | Concreting | 2026-08-03 → 2026-12-21 (+140d) | 2026-08-04 → 2026-12-23 (+141d) | 0.94d → 3.38d | 2049 → 2054 |  |
| 2056 | **Post Pour Activities** | 2025-07-20 → 2025-09-19 (+61d) | 2026-10-26 → 2027-01-16 (+82d) | 418.12d → 444.38d |  | constraint start no earlier than 2025-07-20 → start no earlier than 2025-09-19 |
| 2057 | 1st Floor | 2025-07-20 → 2025-09-19 (+61d) | 2025-07-27 → 2025-09-29 (+64d) | 7d → 12.38d | 1900 → 1890 |  |
| 2058 | 2nd Floor | 2025-08-09 → 2025-09-30 (+52d) | 2025-08-16 → 2025-10-10 (+55d) | 7d → 12.38d | 2057, 1910 → 2057, 1895 |  |
| 2059 | 3rd Floor | 2025-08-22 → 2025-10-11 (+50d) | 2025-08-29 → 2025-10-21 (+53d) | 7d → 12.38d | 2058, 1915 → 2058, 1900 |  |
| 2060 | 4th Floor | 2025-09-01 → 2025-10-22 (+51d) | 2025-09-08 → 2025-12-16 (+99d) | 7d → 12.38d | 2059, 1920 → 2059, 1905 |  |
| 2061 | 5th Floor | 2025-09-11 → 2025-12-17 (+97d) | 2025-09-18 → 2025-12-27 (+100d) | 7d → 12.38d | 2060, 1925 → 2060, 1910 |  |
| 2062 | 6th Floor | 2025-09-21 → 2025-12-28 (+98d) | 2025-09-28 → 2026-01-07 (+101d) | 7d → 12.38d | 2061, 1930 → 2061, 1915 |  |
| 2063 | 7th Floor | 2025-10-01 → 2026-01-08 (+99d) | 2025-10-08 → 2026-01-18 (+102d) | 7d → 12.38d | 2062, 1935 → 2062, 1920 |  |
| 2064 | 8th Floor | 2025-10-12 → 2026-01-19 (+99d) | 2025-10-19 → 2026-01-29 (+102d) | 7d → 12.38d | 2063, 1940 → 2063, 1925 |  |
| 2065 | 9th Floor | 2025-10-22 → 2026-01-30 (+100d) | 2025-10-29 → 2026-02-09 (+103d) | 7d → 12.38d | 2064, 1945 → 2064, 1930 |  |
| 2066 | 10th Floor | 2025-12-17 → 2026-02-10 (+55d) | 2025-12-24 → 2026-02-20 (+58d) | 7d → 12.38d | 2065, 1950 → 2065, 1935 |  |
| 2067 | 11th Floor | 2025-12-30 → 2026-02-21 (+53d) | 2026-01-06 → 2026-03-03 (+56d) | 7d → 12.38d | 2066, 1955 → 2066, 1940 |  |
| 2068 | 12th Floor | 2026-01-09 → 2026-03-04 (+54d) | 2026-01-16 → 2026-03-14 (+57d) | 7d → 12.38d | 2067, 1960 → 2067, 1945 |  |
| 2069 | 13th Floor | 2026-01-19 → 2026-03-15 (+55d) | 2026-01-26 → 2026-03-25 (+58d) | 7d → 12.38d | 2068, 1965 → 2068, 1950 |  |
| 2070 | 14th Floor | 2026-01-28 → 2026-03-26 (+57d) | 2026-02-04 → 2026-04-05 (+60d) | 7d → 12.38d | 2069, 1970 → 2069, 1955 |  |
| 2071 | 15th Floor | 2026-02-06 → 2026-04-06 (+59d) | 2026-02-13 → 2026-04-16 (+62d) | 7d → 12.38d | 2070, 1975 → 2070, 1960 |  |
| 2072 | 16th Floor | 2026-02-16 → 2026-04-17 (+60d) | 2026-02-23 → 2026-04-27 (+63d) | 7d → 12.38d | 2071, 1980 → 2071, 1965 |  |
| 2073 | 17th Floor | 2026-02-25 → 2026-04-28 (+62d) | 2026-03-04 → 2026-05-08 (+65d) | 7d → 12.38d | 2072, 1985 → 2072, 1970 |  |
| 2074 | 18th Floor | 2026-03-06 → 2026-05-09 (+64d) | 2026-03-13 → 2026-05-19 (+67d) | 7d → 12.38d | 2073, 1990 → 2073, 1975 |  |
| 2075 | 19th Floor | 2026-03-19 → 2026-05-20 (+62d) | 2026-03-26 → 2026-05-30 (+65d) | 7d → 12.38d | 2074, 1995 → 2074, 1980 |  |
| 2076 | 20th Floor | 2026-04-01 → 2026-05-31 (+60d) | 2026-04-08 → 2026-06-10 (+63d) | 7d → 12.38d | 2075, 2000 → 2075, 1985 |  |
| 2077 | 21st Floor | 2026-04-10 → 2026-06-11 (+62d) | 2026-04-17 → 2026-06-21 (+65d) | 7d → 12.38d | 2076, 2005 → 2076, 1990 |  |
| 2078 | 22nd Floor | 2026-04-19 → 2026-06-22 (+64d) | 2026-04-26 → 2026-07-02 (+67d) | 7d → 12.38d | 2077, 2010 → 2077, 1995 |  |
| 2079 | 23rd Floor | 2026-04-28 → 2026-07-03 (+66d) | 2026-05-05 → 2026-07-13 (+69d) | 7d → 12.38d | 2078, 2015 → 2078, 2000 |  |
| 2080 | 24th Floor | 2026-05-07 → 2026-07-14 (+68d) | 2026-05-14 → 2026-07-24 (+71d) | 7d → 12.38d | 2079, 2020 → 2079, 2005 |  |
| 2081 | 25th Floor | 2026-05-16 → 2026-07-25 (+70d) | 2026-05-23 → 2026-08-04 (+73d) | 7d → 12.38d | 2080, 2025 → 2080, 2010 |  |
| 2082 | 26th Floor | 2026-05-27 → 2026-08-05 (+70d) | 2026-06-03 → 2026-08-15 (+73d) | 7d → 12.38d | 2081, 2030 → 2081, 2015 |  |
| 2083 | 27th Floor | 2026-06-10 → 2026-08-16 (+67d) | 2026-06-17 → 2026-08-26 (+70d) | 7d → 12.38d | 2082, 2035 → 2082, 2020 |  |
| 2084 | 28th Floor | 2026-06-23 → 2026-08-27 (+65d) | 2026-06-30 → 2026-09-06 (+68d) | 7d → 12.38d | 2083, 2040 → 2083, 2025 |  |
| 2085 | 29th Floor | 2026-07-06 → 2026-09-07 (+63d) | 2026-07-13 → 2026-09-17 (+66d) | 7d → 12.38d | 2084, 2045 → 2084, 2030 |  |
| 2086 | 30th Floor | 2026-07-19 → 2026-09-18 (+61d) | 2026-07-26 → 2026-09-28 (+64d) | 7d → 12.38d | 2085, 2050 → 2085, 2035 |  |
| 2087 | 31st Floor | 2026-08-04 → 2026-09-29 (+56d) | 2026-08-11 → 2026-10-09 (+59d) | 7d → 12.38d | 2086, 2055 → 2086, 2040 |  |
| 2088 | 32nd Flood | 2026-09-14 → 2026-10-10 (+26d) | 2026-09-21 → 2026-10-20 (+29d) | 7d → 12.38d | 2087, 2768 → 2087, 2045 |  |
| 2089 | 33rd Floor | 2026-09-21 → 2026-10-21 (+30d) | 2026-09-28 → 2026-10-31 (+33d) | 7d → 12.38d |  |  |
| 2090 | 34th Floor | 2026-09-28 → 2026-12-16 (+79d) | 2026-10-05 → 2026-12-23 (+79d) | 7d → 9d |  |  |
| 2091 | 35th Floor | 2026-10-05 → 2026-12-24 (+80d) | 2026-10-12 → 2026-12-31 (+80d) | 7d → 9d |  |  |
| 2092 | Terrace | 2026-10-12 → 2027-01-01 (+81d) | 2026-10-19 → 2027-01-08 (+81d) | 7d → 9d |  |  |
| 2093 | Mumty & Machine Room | 2026-10-19 → 2027-01-09 (+82d) | 2026-10-26 → 2027-01-16 (+82d) | 7d → 9d |  |  |
| 2094 | **Finishing work** | 2025-07-11 → 2025-09-30 (+81d) | 2027-08-07 → 2027-10-14 (+68d) | 667d → 736.62d |  | constraint start no earlier than 2025-07-11 → start no earlier than 2025-09-30 |
| 2095 | **Flat finishing** | 2025-07-11 → 2025-09-30 (+81d) | 2027-05-09 → 2027-07-12 (+64d) | 577.12d → 630.88d |  | constraint start no earlier than 2025-07-11 → start no earlier than 2025-09-30 |
| 2096 | **1st Floor** | 2025-07-11 → 2025-09-30 (+81d) | 2025-09-16 → 2026-02-13 (+150d) | 67.25d → 102.38d |  | constraint start no earlier than 2025-07-11 → start no earlier than 2025-09-30 |
| 2097 | Block Work | 2025-07-21 → 2025-09-30 (+71d) | 2025-07-29 → 2025-10-08 (+71d) | 8d → 9d | 2057SS+1d → 2057FS+0.25d |  |
| 2098 | Door Frame Fixing | 2025-07-29 → 2025-10-08 (+71d) | 2025-08-07 → 2025-10-15 (+69d) | 9d → 7.88d |  |  |
| 2099 | Internal Plumbing Works | 2025-07-29 → 2025-10-08 (+71d) | 2025-08-06 → 2025-10-18 (+73d) | 8d → 11.25d |  |  |
| 2100 | Waterproofing | 2025-08-06 → 2025-10-18 (+73d) | 2025-08-16 → 2025-10-30 (+75d) | 10d → 13.5d |  |  |
| 2101 | Internal Plaster | 2025-09-27 → 2025-10-18 (+21d) | 2026-03-10 → 2025-10-22 (-139d) | 119.94d → 4.5d | 1749SS+17.88d → 2098FS+0.25d, 2099FS+0.25d |  |
| 2102 | IPS flooring work | 2025-08-16 → 2025-10-30 (+75d) | 2025-08-26 → 2025-12-23 (+119d) | 10d → 10.12d |  |  |

| ID | Task | Start | Finish | Duration | Predecessors | Other |
| --- | --- | --- | --- | --- | --- | --- |
| 2103 | Toilet dado work | 2025-08-16 → 2025-10-30 (+75d) | 2025-08-24 → 2025-12-22 (+120d) | 8d → 9d | 2100, 2117 → 2100, 2101 |  |
| 2104 | Toilet flooring work | 2025-08-24 → 2025-12-22 (+120d) | 2025-09-01 → 2025-12-29 (+119d) | 8d → 7.88d |  |  |
| 2105 | Living dinning flooring | 2025-08-07 → 2025-12-29 (+144d) | 2025-08-15 → 2026-01-02 (+140d) | 8d → 4.5d | 2098FS+0.25d → 2098, 2104 |  |
| 2106 | Aluminium door-window fixing | 2025-08-26 → 2026-01-02 (+129d) | 2025-09-03 → 2026-01-12 (+131d) | 8d → 11.25d | 2102FS+0.25d → 2102, 2105 |  |
| 2107 | Putty primer coat | 2025-08-15 → 2026-01-02 (+140d) | 2025-08-21 → 2026-01-08 (+140d) | 6d → 6.75d |  |  |
| 2108 | Door shutter fixing | 2025-08-15 → 2026-01-02 (+140d) | 2025-08-23 → 2026-01-10 (+140d) | 8d → 9d |  |  |
| 2109 | Electrical wiring work | 2025-08-23 → 2026-01-10 (+140d) | 2025-08-31 → 2026-01-22 (+144d) | 8d → 13.5d |  |  |
| 2110 | Painting 1st coat | 2025-08-31 → 2026-01-22 (+144d) | 2025-09-08 → 2026-02-03 (+148d) | 8d → 13.5d |  |  |
| 2111 | False ceiling | 2025-09-08 → 2026-02-03 (+148d) | 2025-09-16 → 2026-02-13 (+150d) | 8d → 11.25d |  |  |
| 2112 | **2nd Floor** | 2025-07-19 → 2025-10-08 (+81d) | 2025-09-25 → 2026-02-25 (+153d) | 67.25d → 106.62d |  | constraint start no earlier than 2025-07-19 → start no earlier than 2025-10-08 |
| 2113 | Block Work | 2025-07-29 → 2025-10-08 (+71d) | 2025-08-06 → 2025-10-16 (+71d) | 8d → 9d |  |  |
| 2114 | Door Frame Fixing | 2025-08-07 → 2025-10-16 (+70d) | 2025-08-16 → 2025-10-23 (+68d) | 9d → 7.88d | 2113FS+0.25d → 2098, 2113 |  |
| 2115 | Internal Plumbing Works | 2025-08-06 → 2025-10-18 (+73d) | 2025-08-14 → 2025-10-28 (+75d) | 8d → 11.25d |  |  |
| 2116 | Waterproofing | 2025-08-16 → 2025-10-30 (+75d) | 2025-08-26 → 2025-12-26 (+122d) | 10d → 13.5d |  |  |
| 2117 | Internal Plaster | 2025-07-11 → 2025-10-23 (+104d) | 2025-07-19 → 2025-10-27 (+100d) | 8d → 4.5d | 1895FS+1d → 2101FS+0.25d, 2114FS+0.25d |  |
| 2118 | IPS flooring work | 2025-08-26 → 2025-12-26 (+122d) | 2025-09-05 → 2026-01-04 (+121d) | 10d → 10.12d |  |  |
| 2119 | Toilet dado work | 2025-08-26 → 2025-12-26 (+122d) | 2025-09-03 → 2026-01-03 (+122d) | 8d → 9d | 2103, 2116, 2133 → 2103, 2116, 2117 |  |
| 2120 | Toilet flooring work | 2025-09-03 → 2026-01-03 (+122d) | 2025-09-11 → 2026-01-10 (+121d) | 8d → 7.88d |  |  |
| 2121 | Living dinning flooring | 2025-08-16 → 2026-01-02 (+139d) | 2025-08-24 → 2026-01-06 (+135d) | 8d → 4.5d | 2105FS+0.25d → 2105FS+0.25d, 2114FS+0.25d |  |
| 2122 | Aluminium door-window fixing | 2025-09-04 → 2026-01-12 (+130d) | 2025-09-12 → 2026-01-22 (+132d) | 8d → 11.25d | 2106FS+0.25d → 2106FS+0.25d, 2121FS+0.25d |  |
| 2123 | Putty primer coat | 2025-08-24 → 2026-01-08 (+137d) | 2025-08-30 → 2026-01-14 (+137d) | 6d → 6.75d |  |  |
| 2124 | Door shutter fixing | 2025-08-24 → 2026-01-10 (+139d) | 2025-09-01 → 2026-01-18 (+139d) | 8d → 9d |  |  |
| 2125 | Electrical wiring work | 2025-09-01 → 2026-01-22 (+143d) | 2025-09-09 → 2026-02-03 (+147d) | 8d → 13.5d |  |  |
| 2126 | Painting 1st coat | 2025-09-09 → 2026-02-03 (+147d) | 2025-09-17 → 2026-02-15 (+151d) | 8d → 13.5d |  |  |
| 2127 | False ceiling | 2025-09-17 → 2026-02-15 (+151d) | 2025-09-25 → 2026-02-25 (+153d) | 8d → 11.25d |  |  |
| 2128 | **3rd Floor** | 2025-07-28 → 2025-10-16 (+80d) | 2025-10-07 → 2026-03-09 (+153d) | 71.25d → 110.88d |  | constraint start no earlier than 2025-07-28 → start no earlier than 2025-10-16 |
| 2129 | Block Work | 2025-08-07 → 2025-10-16 (+70d) | 2025-08-15 → 2025-10-24 (+70d) | 8d → 9d |  |  |
| 2130 | Door Frame Fixing | 2025-08-16 → 2025-10-24 (+69d) | 2025-08-25 → 2025-10-31 (+67d) | 9d → 7.88d |  |  |
| 2131 | Internal Plumbing Works | 2025-08-15 → 2025-10-28 (+74d) | 2025-08-23 → 2025-12-22 (+121d) | 8d → 11.25d |  |  |
| 2132 | Waterproofing | 2025-08-26 → 2025-12-26 (+122d) | 2025-09-05 → 2026-01-07 (+124d) | 10d → 13.5d |  |  |
| 2133 | Internal Plaster | 2025-07-19 → 2025-10-31 (+104d) | 2025-07-27 → 2025-12-19 (+145d) | 8d → 4.5d | 2117FS+0.25d → 2117FS+0.25d, 2130FS+0.25d |  |
| 2134 | IPS flooring work | 2025-09-05 → 2026-01-07 (+124d) | 2025-09-15 → 2026-01-16 (+123d) | 10d → 10.12d | 2118, 2130, 2132, 2149 → 2118, 2130, 2132, 2133 |  |
| 2135 | Toilet dado work | 2025-09-05 → 2026-01-07 (+124d) | 2025-09-13 → 2026-01-15 (+124d) | 8d → 9d | 2119, 2132, 2149 → 2119, 2132, 2133 |  |
| 2136 | Toilet flooring work | 2025-09-13 → 2026-01-15 (+124d) | 2025-09-21 → 2026-01-22 (+123d) | 8d → 7.88d |  |  |
| 2137 | Living dinning flooring | 2025-08-24 → 2026-01-06 (+135d) | 2025-09-05 → 2026-01-10 (+127d) | 12d → 4.5d | 2121FS+0.25d → 2121FS+0.25d, 2130FS+0.25d |  |
| 2138 | Aluminium door-window fixing | 2025-09-12 → 2026-01-22 (+132d) | 2025-09-24 → 2026-02-01 (+130d) | 12d → 11.25d | 2122FS+0.25d → 2122FS+0.25d, 2137FS+0.25d |  |
| 2139 | Putty primer coat | 2025-09-05 → 2026-01-14 (+131d) | 2025-09-11 → 2026-01-20 (+131d) | 6d → 6.75d |  |  |
| 2140 | Door shutter fixing | 2025-09-05 → 2026-01-18 (+135d) | 2025-09-13 → 2026-01-26 (+135d) | 8d → 9d |  |  |
| 2141 | Electrical wiring work | 2025-09-13 → 2026-02-03 (+143d) | 2025-09-21 → 2026-02-15 (+147d) | 8d → 13.5d |  |  |
| 2142 | Painting 1st coat | 2025-09-21 → 2026-02-15 (+147d) | 2025-09-29 → 2026-02-27 (+151d) | 8d → 13.5d |  |  |
| 2143 | False ceiling | 2025-09-29 → 2026-02-27 (+151d) | 2025-10-07 → 2026-03-09 (+153d) | 8d → 11.25d |  |  |
| 2144 | **4th Floor** | 2025-08-05 → 2025-10-24 (+80d) | 2025-10-19 → 2026-03-21 (+153d) | 75.25d → 115.12d |  | constraint start no earlier than 2025-08-05 → start no earlier than 2025-10-24 |
| 2145 | Block Work | 2025-08-15 → 2025-10-24 (+70d) | 2025-08-23 → 2025-12-16 (+115d) | 8d → 9d |  |  |
| 2146 | Door Frame Fixing | 2025-08-25 → 2025-12-16 (+113d) | 2025-09-03 → 2025-12-23 (+111d) | 9d → 7.88d |  |  |
| 2147 | Internal Plumbing Works | 2025-08-23 → 2025-12-22 (+121d) | 2025-08-31 → 2026-01-01 (+123d) | 8d → 11.25d |  |  |
| 2148 | Waterproofing | 2025-09-05 → 2026-01-07 (+124d) | 2025-09-15 → 2026-01-19 (+126d) | 10d → 13.5d |  |  |
| 2149 | Internal Plaster | 2025-07-28 → 2025-12-24 (+149d) | 2025-08-05 → 2025-12-28 (+145d) | 8d → 4.5d | 2133FS+0.25d → 2133FS+0.25d, 2146FS+0.25d |  |
| 2150 | IPS flooring work | 2025-09-15 → 2026-01-19 (+126d) | 2025-09-25 → 2026-01-28 (+125d) | 10d → 10.12d | 2134, 2146, 2148, 2165 → 2134, 2146, 2148, 2149 |  |
| 2151 | Toilet dado work | 2025-09-15 → 2026-01-19 (+126d) | 2025-09-23 → 2026-01-27 (+126d) | 8d → 9d | 2135, 2148, 2165 → 2135, 2148, 2149 |  |
| 2152 | Toilet flooring work | 2025-09-23 → 2026-01-27 (+126d) | 2025-10-01 → 2026-02-03 (+125d) | 8d → 7.88d |  |  |
| 2153 | Living dinning flooring | 2025-09-05 → 2026-01-10 (+127d) | 2025-09-17 → 2026-01-14 (+119d) | 12d → 4.5d | 2137FS+0.25d → 2137FS+0.25d, 2146FS+0.25d |  |
| 2154 | Aluminium door-window fixing | 2025-09-24 → 2026-02-01 (+130d) | 2025-10-06 → 2026-02-11 (+128d) | 12d → 11.25d | 2138FS+0.25d → 2138FS+0.25d, 2153FS+0.25d |  |
| 2155 | Putty primer coat | 2025-09-17 → 2026-01-20 (+125d) | 2025-09-23 → 2026-01-26 (+125d) | 6d → 6.75d |  |  |
| 2156 | Door shutter fixing | 2025-09-17 → 2026-01-26 (+131d) | 2025-09-25 → 2026-02-03 (+131d) | 8d → 9d |  |  |
| 2157 | Electrical wiring work | 2025-09-25 → 2026-02-15 (+143d) | 2025-10-03 → 2026-02-27 (+147d) | 8d → 13.5d |  |  |
| 2158 | Painting 1st coat | 2025-10-03 → 2026-02-27 (+147d) | 2025-10-11 → 2026-03-11 (+151d) | 8d → 13.5d |  |  |
| 2159 | False ceiling | 2025-10-11 → 2026-03-11 (+151d) | 2025-10-19 → 2026-03-21 (+153d) | 8d → 11.25d |  |  |
| 2160 | **5th Floor** | 2025-08-13 → 2025-12-17 (+126d) | 2025-10-31 → 2026-04-05 (+156d) | 79.25d → 122.75d |  | constraint start no earlier than 2025-08-13 → start no earlier than 2025-12-17 |
| 2161 | Block Work | 2025-08-23 → 2025-12-17 (+116d) | 2025-08-31 → 2025-12-25 (+116d) | 8d → 9d |  |  |
| 2162 | Door Frame Fixing | 2025-09-03 → 2025-12-25 (+113d) | 2025-09-12 → 2026-01-01 (+111d) | 9d → 7.88d |  |  |
| 2163 | Internal Plumbing Works | 2025-08-31 → 2026-01-01 (+123d) | 2025-09-08 → 2026-01-11 (+125d) | 8d → 11.25d |  |  |
| 2164 | Waterproofing | 2025-09-15 → 2026-01-19 (+126d) | 2025-09-25 → 2026-01-31 (+128d) | 10d → 13.5d |  |  |
| 2165 | Internal Plaster | 2025-08-05 → 2026-01-01 (+149d) | 2025-08-13 → 2026-01-05 (+145d) | 8d → 4.5d | 2149FS+0.25d → 2149FS+0.25d, 2162FS+0.25d |  |
| 2166 | IPS flooring work | 2025-09-25 → 2026-01-31 (+128d) | 2025-10-05 → 2026-02-09 (+127d) | 10d → 10.12d | 2150, 2162, 2164, 2181 → 2150, 2162, 2164, 2165 |  |
| 2167 | Toilet dado work | 2025-09-25 → 2026-01-31 (+128d) | 2025-10-03 → 2026-02-08 (+128d) | 8d → 9d | 2151, 2164, 2181 → 2151, 2164, 2165 |  |
| 2168 | Toilet flooring work | 2025-10-03 → 2026-02-08 (+128d) | 2025-10-11 → 2026-02-15 (+127d) | 8d → 7.88d |  |  |
| 2169 | Living dinning flooring | 2025-09-17 → 2026-01-15 (+120d) | 2025-09-29 → 2026-01-19 (+112d) | 12d → 4.5d | 2153FS+0.25d → 2153FS+0.25d, 2162FS+0.25d |  |
| 2170 | Aluminium door-window fixing | 2025-10-06 → 2026-02-12 (+129d) | 2025-10-18 → 2026-02-22 (+127d) | 12d → 11.25d | 2154FS+0.25d → 2154FS+0.25d, 2169FS+0.25d |  |
| 2171 | Putty primer coat | 2025-09-29 → 2026-01-26 (+119d) | 2025-10-05 → 2026-02-01 (+119d) | 6d → 6.75d |  |  |
| 2172 | Door shutter fixing | 2025-09-29 → 2026-02-03 (+127d) | 2025-10-07 → 2026-02-11 (+127d) | 8d → 9d |  |  |

| ID | Task | Start | Finish | Duration | Predecessors | Other |
| --- | --- | --- | --- | --- | --- | --- |
| 2173 | Electrical wiring work | 2025-10-07 → 2026-02-27 (+143d) | 2025-10-15 → 2026-03-11 (+147d) | 8d → 13.5d |  |  |
| 2174 | Painting 1st coat | 2025-10-15 → 2026-03-11 (+147d) | 2025-10-23 → 2026-03-26 (+154d) | 8d → 16.88d |  |  |
| 2175 | False ceiling | 2025-10-23 → 2026-03-26 (+154d) | 2025-10-31 → 2026-04-05 (+156d) | 8d → 11.25d |  |  |
| 2176 | **6th Floor** | 2025-08-21 → 2025-12-25 (+126d) | 2025-12-28 → 2026-04-17 (+110d) | 83.25d → 127d |  | constraint start no earlier than 2025-08-21 → start no earlier than 2025-12-25 |
| 2177 | Block Work | 2025-08-31 → 2025-12-25 (+116d) | 2025-09-08 → 2026-01-02 (+116d) | 8d → 9d |  |  |
| 2178 | Door Frame Fixing | 2025-09-12 → 2026-01-01 (+111d) | 2025-09-21 → 2026-01-08 (+109d) | 9d → 7.88d | 1915, 2162 → 1910, 2162 |  |
| 2179 | Internal Plumbing Works | 2025-09-08 → 2026-01-11 (+125d) | 2025-09-16 → 2026-01-21 (+127d) | 8d → 11.25d |  |  |
| 2180 | Waterproofing | 2025-09-25 → 2026-01-31 (+128d) | 2025-10-05 → 2026-02-12 (+130d) | 10d → 13.5d |  |  |
| 2181 | Internal Plaster | 2025-08-13 → 2026-01-08 (+148d) | 2025-08-21 → 2026-01-12 (+144d) | 8d → 4.5d | 2165FS+0.25d → 2165FS+0.25d, 2178FS+0.25d |  |
| 2182 | IPS flooring work | 2025-10-05 → 2026-02-12 (+130d) | 2025-10-15 → 2026-02-21 (+129d) | 10d → 10.12d | 2166, 2178, 2180, 2197 → 2166, 2178, 2180, 2181 |  |
| 2183 | Toilet dado work | 2025-10-05 → 2026-02-12 (+130d) | 2025-10-13 → 2026-02-20 (+130d) | 8d → 9d | 2167, 2180, 2197 → 2167, 2180, 2181 |  |
| 2184 | Toilet flooring work | 2025-10-13 → 2026-02-20 (+130d) | 2025-10-21 → 2026-02-27 (+129d) | 8d → 7.88d |  |  |
| 2185 | Living dinning flooring | 2025-09-30 → 2026-01-19 (+111d) | 2025-10-12 → 2026-01-23 (+103d) | 12d → 4.5d | 2169FS+0.25d → 2169FS+0.25d, 2178FS+0.25d |  |
| 2186 | Aluminium door-window fixing | 2025-10-19 → 2026-02-22 (+126d) | 2025-10-31 → 2026-03-04 (+124d) | 12d → 11.25d | 2170FS+0.25d → 2170FS+0.25d, 2185FS+0.25d |  |
| 2187 | Putty primer coat | 2025-10-12 → 2026-02-01 (+112d) | 2025-10-18 → 2026-02-07 (+112d) | 6d → 6.75d |  |  |
| 2188 | Door shutter fixing | 2025-10-12 → 2026-02-11 (+122d) | 2025-10-20 → 2026-02-19 (+122d) | 8d → 9d |  |  |
| 2189 | Electrical wiring work | 2025-10-20 → 2026-03-11 (+142d) | 2025-10-28 → 2026-03-23 (+146d) | 8d → 13.5d |  |  |
| 2190 | Painting 1st coat | 2025-10-28 → 2026-03-26 (+149d) | 2025-12-20 → 2026-04-07 (+108d) | 8d → 13.5d |  |  |
| 2191 | False ceiling | 2025-12-20 → 2026-04-07 (+108d) | 2025-12-28 → 2026-04-17 (+110d) | 8d → 11.25d |  |  |
| 2192 | **7th Floor** | 2025-08-30 → 2026-01-02 (+125d) | 2026-01-09 → 2026-04-29 (+110d) | 87.25d → 131.25d |  | constraint start no earlier than 2025-08-30 → start no earlier than 2026-01-02 |
| 2193 | Block Work | 2025-09-09 → 2026-01-02 (+115d) | 2025-09-17 → 2026-01-10 (+115d) | 8d → 9d |  |  |
| 2194 | Door Frame Fixing | 2025-09-21 → 2026-01-10 (+111d) | 2025-09-30 → 2026-01-17 (+109d) | 9d → 7.88d |  |  |
| 2195 | Internal Plumbing Works | 2025-09-17 → 2026-01-21 (+126d) | 2025-09-25 → 2026-01-31 (+128d) | 8d → 11.25d |  |  |
| 2196 | Waterproofing | 2025-10-05 → 2026-02-12 (+130d) | 2025-10-15 → 2026-02-24 (+132d) | 10d → 13.5d |  |  |
| 2197 | Internal Plaster | 2025-08-21 → 2026-01-17 (+149d) | 2025-08-29 → 2026-01-21 (+145d) | 8d → 4.5d | 2181FS+0.25d → 2181FS+0.25d, 2194FS+0.25d |  |
| 2198 | IPS flooring work | 2025-10-15 → 2026-02-21 (+129d) | 2025-10-25 → 2026-03-02 (+128d) | 10d → 10.12d | 2182, 2194, 2196, 2213 → 2182FS+0.25d, 2194FS+0.25d |  |
| 2199 | Toilet dado work | 2025-10-15 → 2026-02-24 (+132d) | 2025-10-23 → 2026-03-04 (+132d) | 8d → 9d | 2183, 2196, 2213 → 2183, 2196, 2197 |  |
| 2200 | Toilet flooring work | 2025-10-23 → 2026-03-04 (+132d) | 2025-10-31 → 2026-03-11 (+131d) | 8d → 7.88d |  |  |
| 2201 | Living dinning flooring | 2025-10-12 → 2026-01-23 (+103d) | 2025-10-24 → 2026-01-27 (+95d) | 12d → 4.5d | 2185FS+0.25d → 2185FS+0.25d, 2194FS+0.25d |  |
| 2202 | Aluminium door-window fixing | 2025-10-31 → 2026-03-04 (+124d) | 2025-12-27 → 2026-03-14 (+77d) | 12d → 11.25d | 2186FS+0.25d → 2186FS+0.25d, 2201FS+0.25d |  |
| 2203 | Putty primer coat | 2025-10-24 → 2026-02-07 (+106d) | 2025-10-30 → 2026-02-13 (+106d) | 6d → 6.75d |  |  |
| 2204 | Door shutter fixing | 2025-10-24 → 2026-02-19 (+118d) | 2025-12-16 → 2026-02-27 (+73d) | 8d → 9d |  |  |
| 2205 | Electrical wiring work | 2025-12-16 → 2026-03-23 (+97d) | 2025-12-24 → 2026-04-04 (+101d) | 8d → 13.5d |  |  |
| 2206 | Painting 1st coat | 2025-12-24 → 2026-04-07 (+104d) | 2026-01-01 → 2026-04-19 (+108d) | 8d → 13.5d |  |  |
| 2207 | False ceiling | 2026-01-01 → 2026-04-19 (+108d) | 2026-01-09 → 2026-04-29 (+110d) | 8d → 11.25d |  |  |
| 2208 | **8th Floor** | 2025-09-07 → 2026-01-10 (+125d) | 2026-01-21 → 2026-05-11 (+110d) | 91.25d → 135.5d |  | constraint start no earlier than 2025-09-07 → start no earlier than 2026-01-10 |
| 2209 | Block Work | 2025-09-17 → 2026-01-10 (+115d) | 2025-09-25 → 2026-01-18 (+115d) | 8d → 9d |  |  |
| 2210 | Door Frame Fixing | 2025-09-30 → 2026-01-18 (+110d) | 2025-10-09 → 2026-01-25 (+108d) | 9d → 7.88d |  |  |
| 2211 | Internal Plumbing Works | 2025-09-25 → 2026-01-31 (+128d) | 2025-10-03 → 2026-02-10 (+130d) | 8d → 11.25d |  |  |
| 2212 | Waterproofing | 2025-10-15 → 2026-02-24 (+132d) | 2025-10-25 → 2026-03-08 (+134d) | 10d → 13.5d |  |  |
| 2213 | Internal Plaster | 2025-08-30 → 2026-01-26 (+149d) | 2025-09-07 → 2026-01-29 (+144d) | 8d → 4.5d | 2197FS+0.25d → 2197FS+0.25d, 2210FS+0.25d |  |
| 2214 | IPS flooring work | 2025-10-25 → 2026-03-08 (+134d) | 2025-12-19 → 2026-03-17 (+88d) | 10d → 10.12d | 2198, 2210, 2212, 2229 → 2198, 2210, 2212, 2213 |  |
| 2215 | Toilet dado work | 2025-10-25 → 2026-03-08 (+134d) | 2025-12-17 → 2026-03-16 (+89d) | 8d → 9d | 2199, 2212, 2229 → 2199, 2212, 2213 |  |
| 2216 | Toilet flooring work | 2025-12-17 → 2026-03-16 (+89d) | 2025-12-25 → 2026-03-23 (+88d) | 8d → 7.88d |  |  |
| 2217 | Living dinning flooring | 2025-10-24 → 2026-01-27 (+95d) | 2025-12-20 → 2026-01-31 (+42d) | 12d → 4.5d | 2201FS+0.25d → 2201FS+0.25d, 2210FS+0.25d |  |
| 2218 | Aluminium door-window fixing | 2025-12-27 → 2026-03-14 (+77d) | 2026-01-08 → 2026-03-24 (+75d) | 12d → 11.25d | 2202FS+0.25d → 2202FS+0.25d, 2217FS+0.25d |  |
| 2219 | Putty primer coat | 2025-12-20 → 2026-02-13 (+55d) | 2025-12-26 → 2026-02-19 (+55d) | 6d → 6.75d |  |  |
| 2220 | Door shutter fixing | 2025-12-20 → 2026-02-27 (+69d) | 2025-12-28 → 2026-03-07 (+69d) | 8d → 9d |  |  |
| 2221 | Electrical wiring work | 2025-12-28 → 2026-04-04 (+97d) | 2026-01-05 → 2026-04-16 (+101d) | 8d → 13.5d |  |  |
| 2222 | Painting 1st coat | 2026-01-05 → 2026-04-19 (+104d) | 2026-01-13 → 2026-05-01 (+108d) | 8d → 13.5d |  |  |
| 2223 | False ceiling | 2026-01-13 → 2026-05-01 (+108d) | 2026-01-21 → 2026-05-11 (+110d) | 8d → 11.25d |  |  |
| 2224 | **9th Floor** | 2025-09-15 → 2026-01-19 (+126d) | 2026-02-02 → 2026-05-23 (+110d) | 95.25d → 139.75d |  | constraint start no earlier than 2025-09-15 → start no earlier than 2026-01-19 |
| 2225 | Block Work | 2025-09-25 → 2026-01-19 (+116d) | 2025-10-03 → 2026-01-26 (+115d) | 8d → 9d |  |  |
| 2226 | Door Frame Fixing | 2025-10-09 → 2026-01-27 (+110d) | 2025-10-18 → 2026-02-02 (+107d) | 9d → 7.88d |  |  |
| 2227 | Internal Plumbing Works | 2025-10-03 → 2026-02-10 (+130d) | 2025-10-11 → 2026-02-20 (+132d) | 8d → 11.25d |  |  |
| 2228 | Waterproofing | 2025-10-25 → 2026-03-08 (+134d) | 2025-12-19 → 2026-03-20 (+91d) | 10d → 13.5d |  |  |
| 2229 | Internal Plaster | 2025-09-07 → 2026-02-03 (+149d) | 2025-09-15 → 2026-02-07 (+145d) | 8d → 4.5d | 2213FS+0.25d → 2213FS+0.25d, 2226FS+0.25d |  |
| 2230 | IPS flooring work | 2025-12-19 → 2026-03-20 (+91d) | 2025-12-29 → 2026-03-29 (+90d) | 10d → 10.12d | 2214, 2226, 2228, 2245 → 2214, 2226, 2228, 2229 |  |
| 2231 | Toilet dado work | 2025-12-19 → 2026-03-20 (+91d) | 2025-12-27 → 2026-03-28 (+91d) | 8d → 9d | 2215, 2228, 2245 → 2215, 2228, 2229 |  |
| 2232 | Toilet flooring work | 2025-12-27 → 2026-03-28 (+91d) | 2026-01-04 → 2026-04-04 (+90d) | 8d → 7.88d |  |  |
| 2233 | Living dinning flooring | 2025-12-20 → 2026-02-03 (+45d) | 2026-01-01 → 2026-02-07 (+37d) | 12d → 4.5d | 2217FS+0.25d → 2217FS+0.25d, 2226FS+0.25d |  |
| 2234 | Aluminium door-window fixing | 2026-01-08 → 2026-03-29 (+80d) | 2026-01-20 → 2026-04-08 (+78d) | 12d → 11.25d | 2218FS+0.25d → 2218, 2230, 2233 |  |
| 2235 | Putty primer coat | 2026-01-01 → 2026-02-19 (+49d) | 2026-01-07 → 2026-02-25 (+49d) | 6d → 6.75d |  |  |
| 2236 | Door shutter fixing | 2026-01-01 → 2026-03-07 (+65d) | 2026-01-09 → 2026-03-15 (+65d) | 8d → 9d |  |  |
| 2237 | Electrical wiring work | 2026-01-09 → 2026-04-16 (+97d) | 2026-01-17 → 2026-04-28 (+101d) | 8d → 13.5d |  |  |
| 2238 | Painting 1st coat | 2026-01-17 → 2026-05-01 (+104d) | 2026-01-25 → 2026-05-13 (+108d) | 8d → 13.5d |  |  |
| 2239 | False ceiling | 2026-01-25 → 2026-05-13 (+108d) | 2026-02-02 → 2026-05-23 (+110d) | 8d → 11.25d |  |  |
| 2240 | **10th Floor** | 2025-09-23 → 2026-01-27 (+126d) | 2026-02-15 → 2026-06-04 (+109d) | 99.25d → 144d |  | constraint start no earlier than 2025-09-23 → start no earlier than 2026-01-27 |
| 2241 | Block Work | 2025-10-03 → 2026-01-27 (+116d) | 2025-10-11 → 2026-02-04 (+116d) | 8d → 9d |  |  |
| 2242 | Door Frame Fixing | 2025-10-18 → 2026-02-04 (+109d) | 2025-10-27 → 2026-02-11 (+107d) | 9d → 7.88d |  |  |

| ID | Task | Start | Finish | Duration | Predecessors | Other |
| --- | --- | --- | --- | --- | --- | --- |
| 2243 | Internal Plumbing Works | 2025-10-11 → 2026-02-20 (+132d) | 2025-10-19 → 2026-03-02 (+134d) | 8d → 11.25d |  |  |
| 2244 | Waterproofing | 2025-12-19 → 2026-03-20 (+91d) | 2025-12-29 → 2026-04-01 (+93d) | 10d → 13.5d |  |  |
| 2245 | Internal Plaster | 2025-09-15 → 2026-02-11 (+149d) | 2025-09-23 → 2026-02-15 (+145d) | 8d → 4.5d | 2229FS+0.25d → 2229FS+0.25d, 2242FS+0.25d |  |
| 2246 | IPS flooring work | 2025-12-29 → 2026-04-01 (+93d) | 2026-01-08 → 2026-04-10 (+92d) | 10d → 10.12d | 2230, 2242, 2244, 2261 → 2230, 2242, 2244, 2245 |  |
| 2247 | Toilet dado work | 2025-12-29 → 2026-04-01 (+93d) | 2026-01-06 → 2026-04-09 (+93d) | 8d → 9d | 2231, 2244, 2261 → 2231, 2244, 2245 |  |
| 2248 | Toilet flooring work | 2026-01-06 → 2026-04-09 (+93d) | 2026-01-14 → 2026-04-16 (+92d) | 8d → 7.88d |  |  |
| 2249 | Living dinning flooring | 2026-01-02 → 2026-02-11 (+40d) | 2026-01-14 → 2026-02-15 (+32d) | 12d → 4.5d | 2233FS+0.25d → 2233FS+0.25d, 2242FS+0.25d |  |
| 2250 | Aluminium door-window fixing | 2026-01-21 → 2026-04-08 (+77d) | 2026-02-02 → 2026-04-18 (+75d) | 12d → 11.25d | 2234FS+0.25d → 2234FS+0.25d, 2249FS+0.25d |  |
| 2251 | Putty primer coat | 2026-01-14 → 2026-02-25 (+42d) | 2026-01-20 → 2026-03-03 (+42d) | 6d → 6.75d |  |  |
| 2252 | Door shutter fixing | 2026-01-14 → 2026-03-15 (+60d) | 2026-01-22 → 2026-03-23 (+60d) | 8d → 9d |  |  |
| 2253 | Electrical wiring work | 2026-01-22 → 2026-04-28 (+96d) | 2026-01-30 → 2026-05-10 (+100d) | 8d → 13.5d |  |  |
| 2254 | Painting 1st coat | 2026-01-30 → 2026-05-13 (+103d) | 2026-02-07 → 2026-05-25 (+107d) | 8d → 13.5d |  |  |
| 2255 | False ceiling | 2026-02-07 → 2026-05-25 (+107d) | 2026-02-15 → 2026-06-04 (+109d) | 8d → 11.25d |  |  |
| 2256 | **11th Floor** | 2025-10-12 → 2026-02-04 (+115d) | 2026-02-27 → 2026-06-16 (+109d) | 93.25d → 148.25d |  | constraint start no earlier than 2025-10-12 → start no earlier than 2026-02-04 |
| 2257 | Block Work | 2025-10-12 → 2026-02-04 (+115d) | 2025-10-20 → 2026-02-12 (+115d) | 8d → 9d |  |  |
| 2258 | Door Frame Fixing | 2025-10-27 → 2026-02-12 (+108d) | 2025-12-20 → 2026-02-19 (+61d) | 9d → 7.88d |  |  |
| 2259 | Internal Plumbing Works | 2025-10-20 → 2026-03-02 (+133d) | 2025-10-28 → 2026-03-12 (+135d) | 8d → 11.25d |  |  |
| 2260 | Waterproofing | 2025-12-29 → 2026-04-01 (+93d) | 2026-01-08 → 2026-04-13 (+95d) | 10d → 13.5d |  |  |
| 2261 | Internal Plaster | 2025-09-23 → 2026-02-19 (+149d) | 2025-10-01 → 2026-02-23 (+145d) | 8d → 4.5d | 2245FS+0.25d → 2245FS+0.25d, 2258FS+0.25d |  |
| 2262 | IPS flooring work | 2026-01-08 → 2026-04-13 (+95d) | 2026-01-18 → 2026-04-22 (+94d) | 10d → 10.12d |  |  |
| 2263 | Toilet dado work | 2026-01-08 → 2026-04-13 (+95d) | 2026-01-16 → 2026-04-21 (+95d) | 8d → 9d | 2247, 2260, 2277 → 2247, 2260, 2261 |  |
| 2264 | Toilet flooring work | 2026-01-16 → 2026-04-21 (+95d) | 2026-01-24 → 2026-04-28 (+94d) | 8d → 7.88d |  |  |
| 2265 | Living dinning flooring | 2026-01-14 → 2026-02-19 (+36d) | 2026-01-26 → 2026-02-23 (+28d) | 12d → 4.5d | 2249FS+0.25d → 2249FS+0.25d, 2258FS+0.25d |  |
| 2266 | Aluminium door-window fixing | 2026-02-02 → 2026-04-18 (+75d) | 2026-02-14 → 2026-04-28 (+73d) | 12d → 11.25d | 2250FS+0.25d → 2250FS+0.25d, 2265FS+0.25d |  |
| 2267 | Putty primer coat | 2026-01-26 → 2026-03-03 (+36d) | 2026-02-01 → 2026-03-09 (+36d) | 6d → 6.75d |  |  |
| 2268 | Door shutter fixing | 2026-01-26 → 2026-03-23 (+56d) | 2026-02-03 → 2026-03-31 (+56d) | 8d → 9d |  |  |
| 2269 | Electrical wiring work | 2026-02-03 → 2026-05-10 (+96d) | 2026-02-11 → 2026-05-22 (+100d) | 8d → 13.5d |  |  |
| 2270 | Painting 1st coat | 2026-02-11 → 2026-05-25 (+103d) | 2026-02-19 → 2026-06-06 (+107d) | 8d → 13.5d |  |  |
| 2271 | False ceiling | 2026-02-19 → 2026-06-06 (+107d) | 2026-02-27 → 2026-06-16 (+109d) | 8d → 11.25d |  |  |
| 2272 | **12th Floor** | 2025-10-20 → 2026-02-12 (+115d) | 2026-03-19 → 2026-06-28 (+101d) | 105.25d → 152.5d |  | constraint start no earlier than 2025-10-20 → start no earlier than 2026-02-12 |
| 2273 | Block Work | 2025-10-20 → 2026-02-12 (+115d) | 2025-10-28 → 2026-02-20 (+115d) | 8d → 9d |  |  |
| 2274 | Door Frame Fixing | 2025-12-20 → 2026-02-20 (+62d) | 2025-12-29 → 2026-02-27 (+60d) | 9d → 7.88d |  |  |
| 2275 | Internal Plumbing Works | 2025-10-28 → 2026-03-12 (+135d) | 2025-12-20 → 2026-03-22 (+92d) | 8d → 11.25d |  |  |
| 2276 | Waterproofing | 2026-01-08 → 2026-04-13 (+95d) | 2026-01-18 → 2026-04-25 (+97d) | 10d → 13.5d |  |  |
| 2277 | Internal Plaster | 2025-10-20 → 2026-02-27 (+130d) | 2025-10-28 → 2026-03-03 (+126d) | 8d → 4.5d | 2261FS+0.25d, 2257FS+0.25d → 2261FS+0.25d, 2274FS+0.25d |  |
| 2278 | IPS flooring work | 2026-01-18 → 2026-04-25 (+97d) | 2026-01-28 → 2026-05-04 (+96d) | 10d → 10.12d |  |  |
| 2279 | Toilet dado work | 2026-01-18 → 2026-04-25 (+97d) | 2026-01-26 → 2026-05-03 (+97d) | 8d → 9d | 2263, 2276, 2293 → 2263, 2276, 2277 |  |
| 2280 | Toilet flooring work | 2026-01-26 → 2026-05-03 (+97d) | 2026-02-03 → 2026-05-10 (+96d) | 8d → 7.88d |  |  |
| 2281 | Living dinning flooring | 2026-02-03 → 2026-02-27 (+24d) | 2026-02-15 → 2026-03-03 (+16d) | 12d → 4.5d | 2265, 2274, 2280 → 2265FS+0.25d, 2274FS+0.25d |  |
| 2282 | Aluminium door-window fixing | 2026-02-15 → 2026-05-04 (+78d) | 2026-02-27 → 2026-05-14 (+76d) | 12d → 11.25d |  |  |
| 2283 | Putty primer coat | 2026-02-15 → 2026-03-09 (+22d) | 2026-02-21 → 2026-03-15 (+22d) | 6d → 6.75d |  |  |
| 2284 | Door shutter fixing | 2026-02-15 → 2026-03-31 (+44d) | 2026-02-23 → 2026-04-08 (+44d) | 8d → 9d |  |  |
| 2285 | Electrical wiring work | 2026-02-23 → 2026-05-22 (+88d) | 2026-03-03 → 2026-06-03 (+92d) | 8d → 13.5d |  |  |
| 2286 | Painting 1st coat | 2026-03-03 → 2026-06-06 (+95d) | 2026-03-11 → 2026-06-18 (+99d) | 8d → 13.5d |  |  |
| 2287 | False ceiling | 2026-03-11 → 2026-06-18 (+99d) | 2026-03-19 → 2026-06-28 (+101d) | 8d → 11.25d |  |  |
| 2288 | **13th Floor** | 2025-10-28 → 2026-02-20 (+115d) | 2026-03-31 → 2026-07-12 (+103d) | 109.25d → 159d |  | constraint start no earlier than 2025-10-28 → start no earlier than 2026-02-20 |
| 2289 | Block Work | 2025-10-28 → 2026-02-20 (+115d) | 2025-12-20 → 2026-02-28 (+70d) | 8d → 9d |  |  |
| 2290 | Door Frame Fixing | 2025-12-29 → 2026-02-28 (+61d) | 2026-01-07 → 2026-03-07 (+59d) | 9d → 7.88d |  |  |
| 2291 | Internal Plumbing Works | 2025-12-20 → 2026-03-22 (+92d) | 2025-12-28 → 2026-04-01 (+94d) | 8d → 11.25d |  |  |
| 2292 | Waterproofing | 2026-01-18 → 2026-04-25 (+97d) | 2026-01-28 → 2026-05-07 (+99d) | 10d → 13.5d |  |  |
| 2293 | Internal Plaster | 2025-10-28 → 2026-03-08 (+131d) | 2025-12-20 → 2026-03-12 (+82d) | 8d → 4.5d | 2277FS+0.25d, 2273FS+0.25d → 2277FS+0.25d, 2290FS+0.25d |  |
| 2294 | IPS flooring work | 2026-01-28 → 2026-05-07 (+99d) | 2026-02-07 → 2026-05-16 (+98d) | 10d → 10.12d | 2278, 2290, 2292, 2309 → 2278, 2290, 2292, 2293 |  |
| 2295 | Toilet dado work | 2026-01-28 → 2026-05-07 (+99d) | 2026-02-05 → 2026-05-15 (+99d) | 8d → 9d | 2279, 2292, 2309 → 2279, 2292, 2293 |  |
| 2296 | Toilet flooring work | 2026-02-05 → 2026-05-15 (+99d) | 2026-02-13 → 2026-05-22 (+98d) | 8d → 7.88d |  |  |
| 2297 | Living dinning flooring | 2026-02-15 → 2026-05-22 (+96d) | 2026-02-27 → 2026-05-31 (+93d) | 12d → 10.12d | 2281FS+0.25d → 2281, 2290, 2296 |  |
| 2298 | Aluminium door-window fixing | 2026-02-27 → 2026-05-31 (+93d) | 2026-03-11 → 2026-06-10 (+91d) | 12d → 11.25d | 2282FS+0.25d → 2282, 2294, 2297 |  |
| 2299 | Putty primer coat | 2026-02-27 → 2026-05-31 (+93d) | 2026-03-05 → 2026-06-06 (+93d) | 6d → 6.75d |  |  |
| 2300 | Door shutter fixing | 2026-02-27 → 2026-05-31 (+93d) | 2026-03-07 → 2026-06-08 (+93d) | 8d → 9d |  |  |
| 2301 | Electrical wiring work | 2026-03-07 → 2026-06-08 (+93d) | 2026-03-15 → 2026-06-20 (+97d) | 8d → 13.5d |  |  |
| 2302 | Painting 1st coat | 2026-03-15 → 2026-06-20 (+97d) | 2026-03-23 → 2026-07-02 (+101d) | 8d → 13.5d |  |  |
| 2303 | False ceiling | 2026-03-23 → 2026-07-02 (+101d) | 2026-03-31 → 2026-07-12 (+103d) | 8d → 11.25d |  |  |
| 2304 | **14th Floor** | 2025-12-20 → 2026-03-01 (+71d) | 2026-04-06 → 2026-07-24 (+109d) | 107d → 163.25d |  | constraint start no earlier than 2025-12-20 → start no earlier than 2026-03-01 |
| 2305 | Block Work | 2025-12-20 → 2026-03-01 (+71d) | 2025-12-25 → 2026-03-09 (+74d) | 5d → 9d |  |  |
| 2306 | Door Frame Fixing | 2026-01-07 → 2026-03-09 (+61d) | 2026-01-16 → 2026-03-16 (+59d) | 9d → 7.88d |  |  |
| 2307 | Internal Plumbing Works | 2025-12-28 → 2026-04-01 (+94d) | 2026-01-12 → 2026-04-11 (+89d) | 15d → 11.25d |  |  |
| 2308 | Waterproofing | 2026-01-28 → 2026-05-07 (+99d) | 2026-02-12 → 2026-05-19 (+96d) | 15d → 13.5d |  |  |
| 2309 | Internal Plaster | 2025-12-20 → 2026-03-16 (+86d) | 2025-12-28 → 2026-03-20 (+82d) | 8d → 4.5d | 2293FS+0.25d, 2289FS+0.25d → 2293FS+0.25d, 2306FS+0.25d |  |
| 2310 | IPS flooring work | 2026-02-12 → 2026-05-19 (+96d) | 2026-02-24 → 2026-05-28 (+93d) | 12d → 10.12d |  |  |
| 2311 | Toilet dado work | 2026-02-12 → 2026-05-19 (+96d) | 2026-02-24 → 2026-05-27 (+92d) | 12d → 9d | 2295, 2308, 2325 → 2295, 2308, 2309 |  |
| 2312 | Toilet flooring work | 2026-02-24 → 2026-05-27 (+92d) | 2026-03-08 → 2026-06-03 (+87d) | 12d → 7.88d |  |  |

| ID | Task | Start | Finish | Duration | Predecessors | Other |
| --- | --- | --- | --- | --- | --- | --- |
| 2313 | Living dinning flooring | 2026-02-28 → 2026-06-03 (+95d) | 2026-03-07 → 2026-06-12 (+97d) | 7d → 10.12d | 2297FS+0.25d → 2297, 2306, 2312 |  |
| 2314 | Aluminium door-window fixing | 2026-03-12 → 2026-06-12 (+92d) | 2026-03-30 → 2026-06-22 (+84d) | 18d → 11.25d | 2298FS+0.25d → 2298, 2310, 2313 |  |
| 2315 | Putty primer coat | 2026-03-07 → 2026-06-12 (+97d) | 2026-03-13 → 2026-06-18 (+97d) | 6d → 6.75d |  |  |
| 2316 | Door shutter fixing | 2026-03-07 → 2026-06-12 (+97d) | 2026-03-13 → 2026-06-20 (+99d) | 6d → 9d |  |  |
| 2317 | Electrical wiring work | 2026-03-15 → 2026-06-20 (+97d) | 2026-03-21 → 2026-07-02 (+103d) | 6d → 13.5d |  |  |
| 2318 | Painting 1st coat | 2026-03-23 → 2026-07-02 (+101d) | 2026-03-29 → 2026-07-14 (+107d) | 6d → 13.5d |  |  |
| 2319 | False ceiling | 2026-03-31 → 2026-07-14 (+105d) | 2026-04-06 → 2026-07-24 (+109d) | 6d → 11.25d |  |  |
| 2320 | **15th Floor** | 2025-12-26 → 2026-03-09 (+73d) | 2026-04-25 → 2026-08-05 (+102d) | 120d → 167.5d |  | constraint start no earlier than 2025-12-26 → start no earlier than 2026-03-09 |
| 2321 | Block Work | 2025-12-26 → 2026-03-09 (+73d) | 2025-12-31 → 2026-03-17 (+76d) | 5d → 9d |  |  |
| 2322 | Door Frame Fixing | 2026-01-16 → 2026-03-17 (+60d) | 2026-01-25 → 2026-03-24 (+58d) | 9d → 7.88d |  |  |
| 2323 | Internal Plumbing Works | 2026-01-12 → 2026-04-11 (+89d) | 2026-01-27 → 2026-04-21 (+84d) | 15d → 11.25d |  |  |
| 2324 | Waterproofing | 2026-02-12 → 2026-05-19 (+96d) | 2026-02-27 → 2026-05-31 (+93d) | 15d → 13.5d |  |  |
| 2325 | Internal Plaster | 2025-12-29 → 2026-03-24 (+85d) | 2026-01-06 → 2026-03-28 (+81d) | 8d → 4.5d | 2309FS+0.25d → 2309FS+0.25d, 2322FS+0.25d |  |
| 2326 | IPS flooring work | 2026-02-27 → 2026-05-31 (+93d) | 2026-03-11 → 2026-06-09 (+90d) | 12d → 10.12d |  |  |
| 2327 | Toilet dado work | 2026-02-27 → 2026-05-31 (+93d) | 2026-03-11 → 2026-06-08 (+89d) | 12d → 9d | 2311, 2324, 2341 → 2311, 2324, 2325 |  |
| 2328 | Toilet flooring work | 2026-03-11 → 2026-06-08 (+89d) | 2026-03-23 → 2026-06-15 (+84d) | 12d → 7.88d |  |  |
| 2329 | Living dinning flooring | 2026-03-07 → 2026-06-15 (+100d) | 2026-03-14 → 2026-06-24 (+102d) | 7d → 10.12d | 2313FS+0.25d → 2313, 2322, 2328 |  |
| 2330 | Aluminium door-window fixing | 2026-03-30 → 2026-06-24 (+86d) | 2026-04-17 → 2026-07-04 (+78d) | 18d → 11.25d |  |  |
| 2331 | Putty primer coat | 2026-03-14 → 2026-06-24 (+102d) | 2026-03-20 → 2026-06-30 (+102d) | 6d → 6.75d |  |  |
| 2332 | Door shutter fixing | 2026-03-14 → 2026-06-24 (+102d) | 2026-03-22 → 2026-07-02 (+102d) | 7.94d → 9d |  |  |
| 2333 | Electrical wiring work | 2026-03-22 → 2026-07-02 (+102d) | 2026-04-03 → 2026-07-14 (+102d) | 11.94d → 13.5d |  |  |
| 2334 | Painting 1st coat | 2026-04-03 → 2026-07-14 (+102d) | 2026-04-15 → 2026-07-26 (+102d) | 11.94d → 13.5d |  |  |
| 2335 | False ceiling | 2026-04-15 → 2026-07-26 (+102d) | 2026-04-25 → 2026-08-05 (+102d) | 9.94d → 11.25d |  |  |
| 2336 | **16th Floor** | 2025-12-31 → 2026-03-17 (+76d) | 2026-05-07 → 2026-08-26 (+111d) | 126.69d → 181.88d |  | constraint start no earlier than 2025-12-31 → start no earlier than 2026-03-17 |
| 2337 | Block Work | 2025-12-31 → 2026-03-17 (+76d) | 2026-01-10 → 2026-03-25 (+74d) | 10d → 9d |  |  |
| 2338 | Door Frame Fixing | 2026-01-25 → 2026-03-25 (+59d) | 2026-02-03 → 2026-04-03 (+59d) | 9d → 10.12d |  |  |
| 2339 | Internal Plumbing Works | 2026-01-27 → 2026-04-21 (+84d) | 2026-02-11 → 2026-05-01 (+79d) | 15d → 11.25d |  |  |
| 2340 | Waterproofing | 2026-02-27 → 2026-05-31 (+93d) | 2026-03-14 → 2026-06-12 (+90d) | 15d → 13.5d |  |  |
| 2341 | Internal Plaster | 2026-01-06 → 2026-06-12 (+157d) | 2026-01-14 → 2026-06-21 (+158d) | 8d → 10.12d | 2325FS+0.25d → 2325, 2338, 2339, 2340 |  |
| 2342 | IPS flooring work | 2026-03-14 → 2026-06-12 (+90d) | 2026-03-26 → 2026-06-21 (+87d) | 12d → 10.12d |  |  |
| 2343 | Toilet dado work | 2026-03-14 → 2026-06-21 (+99d) | 2026-03-26 → 2026-06-29 (+95d) | 12d → 9d | 2327, 2340, 2357 → 2327, 2340, 2341 |  |
| 2344 | Toilet flooring work | 2026-03-26 → 2026-06-29 (+95d) | 2026-04-07 → 2026-07-06 (+90d) | 12d → 7.88d |  |  |
| 2345 | Living dinning flooring | 2026-03-14 → 2026-07-06 (+114d) | 2026-03-21 → 2026-07-15 (+116d) | 7d → 10.12d | 2329FS+0.25d → 2329, 2338, 2344 |  |
| 2346 | Aluminium door-window fixing | 2026-04-17 → 2026-07-15 (+89d) | 2026-05-05 → 2026-07-25 (+81d) | 18d → 11.25d | 2330FS+0.25d → 2330, 2342, 2345 |  |
| 2347 | Putty primer coat | 2026-03-21 → 2026-07-15 (+116d) | 2026-03-27 → 2026-07-21 (+116d) | 5.94d → 6.75d |  |  |
| 2348 | Door shutter fixing | 2026-03-22 → 2026-07-15 (+115d) | 2026-03-30 → 2026-07-23 (+115d) | 7.94d → 9d |  |  |
| 2349 | Electrical wiring work | 2026-04-03 → 2026-07-23 (+111d) | 2026-04-15 → 2026-08-04 (+111d) | 11.94d → 13.5d |  |  |
| 2350 | Painting 1st coat | 2026-04-15 → 2026-08-04 (+111d) | 2026-04-27 → 2026-08-16 (+111d) | 11.94d → 13.5d |  |  |
| 2351 | False ceiling | 2026-04-27 → 2026-08-16 (+111d) | 2026-05-07 → 2026-08-26 (+111d) | 9.94d → 11.25d |  |  |
| 2352 | **17th Floor** | 2026-01-10 → 2026-05-31 (+141d) | 2026-05-23 → 2026-09-15 (+115d) | 132.75d → 121.5d |  | constraint start no earlier than 2026-01-10 → start no earlier than 2026-05-31 |
| 2353 | Block Work | 2026-01-10 → 2026-05-31 (+141d) | 2026-01-22 → 2026-06-07 (+136d) | 12d → 9d | 2337FS+0.25d → 2075, 2337 |  |
| 2354 | Door Frame Fixing | 2026-02-03 → 2026-06-08 (+125d) | 2026-02-12 → 2026-06-16 (+124d) | 9d → 10.12d |  |  |
| 2355 | Internal Plumbing Works | 2026-02-11 → 2026-06-08 (+117d) | 2026-02-26 → 2026-06-17 (+111d) | 15d → 11.25d |  |  |
| 2356 | Waterproofing | 2026-03-14 → 2026-06-18 (+96d) | 2026-03-29 → 2026-06-29 (+92d) | 15d → 13.5d |  |  |
| 2357 | Internal Plaster | 2026-01-14 → 2026-06-30 (+167d) | 2026-01-26 → 2026-07-08 (+163d) | 12d → 10.12d | 2341FS+0.25d → 2341, 2354, 2355, 2356 |  |
| 2358 | IPS flooring work | 2026-03-29 → 2026-06-30 (+93d) | 2026-04-10 → 2026-07-08 (+89d) | 12d → 10.12d |  |  |
| 2359 | Toilet dado work | 2026-03-29 → 2026-07-09 (+102d) | 2026-04-10 → 2026-07-16 (+97d) | 12d → 9d | 2343, 2356, 2373 → 2343, 2356, 2357 |  |
| 2360 | Toilet flooring work | 2026-04-10 → 2026-07-17 (+98d) | 2026-04-22 → 2026-07-23 (+92d) | 12d → 7.88d |  |  |
| 2361 | Living dinning flooring | 2026-03-21 → 2026-07-24 (+125d) | 2026-03-28 → 2026-08-04 (+129d) | 7d → 13.5d | 2345FS+0.25d → 2345, 2354, 2360 |  |
| 2362 | Aluminium door-window fixing | 2026-05-05 → 2026-08-05 (+92d) | 2026-05-23 → 2026-08-16 (+85d) | 18d → 13.5d |  |  |
| 2363 | Putty primer coat | 2026-03-28 → 2026-08-05 (+130d) | 2026-04-03 → 2026-08-10 (+129d) | 5.94d → 6.75d |  |  |
| 2364 | Door shutter fixing | 2026-03-30 → 2026-08-05 (+128d) | 2026-04-07 → 2026-08-12 (+127d) | 7.94d → 9d |  |  |
| 2365 | Electrical wiring work | 2026-04-15 → 2026-08-13 (+120d) | 2026-04-27 → 2026-08-24 (+119d) | 11.94d → 13.5d |  |  |
| 2366 | Painting 1st coat | 2026-04-27 → 2026-08-25 (+120d) | 2026-05-09 → 2026-09-05 (+119d) | 11.94d → 13.5d |  |  |
| 2367 | False ceiling | 2026-05-09 → 2026-09-06 (+120d) | 2026-05-19 → 2026-09-15 (+119d) | 9.94d → 11.25d |  |  |
| 2368 | **18th Floor** | 2026-01-22 → 2026-06-11 (+140d) | 2026-06-10 → 2026-09-27 (+109d) | 138.5d → 122.62d |  | constraint start no earlier than 2026-01-22 → start no earlier than 2026-06-11 |
| 2369 | Block Work | 2026-01-22 → 2026-06-11 (+140d) | 2026-02-03 → 2026-06-18 (+135d) | 12d → 9d | 2353FS+0.25d → 2076, 2353 |  |
| 2370 | Door Frame Fixing | 2026-02-12 → 2026-06-19 (+127d) | 2026-02-21 → 2026-06-27 (+126d) | 9d → 10.12d |  |  |
| 2371 | Internal Plumbing Works | 2026-02-26 → 2026-06-19 (+113d) | 2026-03-13 → 2026-06-28 (+107d) | 15d → 11.25d |  |  |
| 2372 | Waterproofing | 2026-03-29 → 2026-06-30 (+93d) | 2026-04-13 → 2026-07-11 (+89d) | 15d → 13.5d |  |  |
| 2373 | Internal Plaster | 2026-01-26 → 2026-07-12 (+167d) | 2026-02-07 → 2026-07-20 (+163d) | 12d → 10.12d | 2357FS+0.25d → 2357, 2370, 2371, 2372 |  |
| 2374 | IPS flooring work | 2026-04-13 → 2026-07-12 (+90d) | 2026-04-25 → 2026-07-20 (+86d) | 12d → 10.12d |  |  |
| 2375 | Toilet dado work | 2026-04-13 → 2026-07-21 (+99d) | 2026-04-25 → 2026-07-28 (+94d) | 12d → 9d | 2359, 2372, 2389 → 2359, 2372, 2373 |  |
| 2376 | Toilet flooring work | 2026-04-25 → 2026-07-29 (+95d) | 2026-05-07 → 2026-08-04 (+89d) | 12d → 7.88d |  |  |
| 2377 | Living dinning flooring | 2026-03-29 → 2026-08-05 (+129d) | 2026-04-05 → 2026-08-16 (+133d) | 7d → 13.5d | 2361FS+0.25d → 2361, 2370, 2376 |  |
| 2378 | Aluminium door-window fixing | 2026-05-23 → 2026-08-17 (+86d) | 2026-06-10 → 2026-08-28 (+79d) | 18d → 13.5d |  |  |
| 2379 | Putty primer coat | 2026-04-05 → 2026-08-17 (+134d) | 2026-04-11 → 2026-08-22 (+133d) | 5.94d → 6.75d |  |  |
| 2380 | Door shutter fixing | 2026-04-07 → 2026-08-17 (+132d) | 2026-04-15 → 2026-08-24 (+131d) | 7.94d → 9d |  |  |
| 2381 | Electrical wiring work | 2026-04-27 → 2026-08-25 (+120d) | 2026-05-09 → 2026-09-05 (+119d) | 11.94d → 13.5d |  |  |
| 2382 | Painting 1st coat | 2026-05-09 → 2026-09-06 (+120d) | 2026-05-21 → 2026-09-17 (+119d) | 11.94d → 13.5d |  |  |

| ID | Task | Start | Finish | Duration | Predecessors | Other |
| --- | --- | --- | --- | --- | --- | --- |
| 2383 | False ceiling | 2026-05-21 → 2026-09-18 (+120d) | 2026-05-30 → 2026-09-27 (+120d) | 9.94d → 11.25d |  |  |
| 2384 | **19th Floor** | 2026-02-04 → 2026-06-22 (+138d) | 2026-07-10 → 2026-10-09 (+91d) | 156.25d → 123.75d |  | constraint start no earlier than 2026-02-04 → start no earlier than 2026-06-22 |
| 2385 | Block Work | 2026-02-04 → 2026-06-22 (+138d) | 2026-02-16 → 2026-06-29 (+133d) | 12d → 9d | 2369FS+0.25d → 2077, 2369 |  |
| 2386 | Door Frame Fixing | 2026-02-21 → 2026-06-30 (+129d) | 2026-03-02 → 2026-07-08 (+128d) | 9d → 10.12d |  |  |
| 2387 | Internal Plumbing Works | 2026-03-13 → 2026-06-30 (+109d) | 2026-03-28 → 2026-07-09 (+103d) | 15d → 11.25d |  |  |
| 2388 | Waterproofing | 2026-04-13 → 2026-07-12 (+90d) | 2026-04-28 → 2026-07-23 (+86d) | 15d → 13.5d |  |  |
| 2389 | Internal Plaster | 2026-02-08 → 2026-07-24 (+166d) | 2026-02-20 → 2026-08-01 (+162d) | 12d → 10.12d | 2373FS+0.25d → 2373, 2386, 2387, 2388 |  |
| 2390 | IPS flooring work | 2026-04-28 → 2026-08-02 (+96d) | 2026-05-10 → 2026-08-10 (+92d) | 12d → 10.12d | 2374, 2386, 2388, 2405 → 2374, 2386, 2388, 2389 |  |
| 2391 | Toilet dado work | 2026-04-28 → 2026-08-02 (+96d) | 2026-05-10 → 2026-08-09 (+91d) | 12d → 9d | 2375, 2388, 2405 → 2375, 2388, 2389 |  |
| 2392 | Toilet flooring work | 2026-05-10 → 2026-08-10 (+92d) | 2026-05-22 → 2026-08-16 (+86d) | 12d → 7.88d |  |  |
| 2393 | Living dinning flooring | 2026-05-22 → 2026-08-17 (+87d) | 2026-05-29 → 2026-08-28 (+91d) | 7d → 13.5d |  |  |
| 2394 | Aluminium door-window fixing | 2026-06-10 → 2026-08-29 (+80d) | 2026-06-28 → 2026-09-09 (+73d) | 18d → 13.5d |  |  |
| 2395 | Putty primer coat | 2026-05-29 → 2026-08-29 (+92d) | 2026-06-04 → 2026-09-03 (+91d) | 5.94d → 6.75d |  |  |
| 2396 | Door shutter fixing | 2026-05-29 → 2026-08-29 (+92d) | 2026-06-06 → 2026-09-05 (+91d) | 7.94d → 9d |  |  |
| 2397 | Electrical wiring work | 2026-06-06 → 2026-09-06 (+92d) | 2026-06-18 → 2026-09-17 (+91d) | 11.94d → 13.5d |  |  |
| 2398 | Painting 1st coat | 2026-06-18 → 2026-09-18 (+92d) | 2026-06-30 → 2026-09-29 (+91d) | 11.94d → 13.5d |  |  |
| 2399 | False ceiling | 2026-06-30 → 2026-09-30 (+92d) | 2026-07-10 → 2026-10-09 (+91d) | 9.94d → 11.25d |  |  |
| 2400 | **20th Floor** | 2026-02-16 → 2026-07-03 (+137d) | 2026-07-25 → 2026-10-21 (+88d) | 159d → 124.88d |  | constraint start no earlier than 2026-02-16 → start no earlier than 2026-07-03 |
| 2401 | Block Work | 2026-02-16 → 2026-07-03 (+137d) | 2026-02-28 → 2026-07-10 (+132d) | 12d → 9d | 2385FS+0.25d → 2078, 2385 |  |
| 2402 | Door Frame Fixing | 2026-03-02 → 2026-07-11 (+131d) | 2026-03-11 → 2026-07-19 (+130d) | 9d → 10.12d |  |  |
| 2403 | Internal Plumbing Works | 2026-03-28 → 2026-07-11 (+105d) | 2026-04-12 → 2026-07-20 (+99d) | 15d → 11.25d |  |  |
| 2404 | Waterproofing | 2026-04-28 → 2026-07-24 (+87d) | 2026-05-13 → 2026-08-04 (+83d) | 15d → 13.5d |  |  |
| 2405 | Internal Plaster | 2026-02-20 → 2026-08-05 (+166d) | 2026-03-04 → 2026-08-13 (+162d) | 12d → 10.12d | 2389FS+0.25d → 2389, 2402, 2403, 2404 |  |
| 2406 | IPS flooring work | 2026-05-13 → 2026-08-14 (+93d) | 2026-05-25 → 2026-08-22 (+89d) | 12d → 10.12d | 2390, 2402, 2404, 2421 → 2390, 2402, 2404, 2405 |  |
| 2407 | Toilet dado work | 2026-05-13 → 2026-08-14 (+93d) | 2026-05-25 → 2026-08-21 (+88d) | 12d → 9d | 2391, 2404, 2421 → 2391, 2404, 2405 |  |
| 2408 | Toilet flooring work | 2026-05-25 → 2026-08-22 (+89d) | 2026-06-06 → 2026-08-28 (+83d) | 12d → 7.88d |  |  |
| 2409 | Living dinning flooring | 2026-06-06 → 2026-08-29 (+84d) | 2026-06-13 → 2026-09-09 (+88d) | 7d → 13.5d |  |  |
| 2410 | Aluminium door-window fixing | 2026-06-28 → 2026-09-10 (+74d) | 2026-07-16 → 2026-09-21 (+67d) | 18d → 13.5d |  |  |
| 2411 | Putty primer coat | 2026-06-13 → 2026-09-10 (+89d) | 2026-06-19 → 2026-09-15 (+88d) | 5.94d → 6.75d |  |  |
| 2412 | Door shutter fixing | 2026-06-13 → 2026-09-10 (+89d) | 2026-06-21 → 2026-09-17 (+88d) | 7.94d → 9d |  |  |
| 2413 | Electrical wiring work | 2026-06-21 → 2026-09-18 (+89d) | 2026-07-03 → 2026-09-29 (+88d) | 11.94d → 13.5d |  |  |
| 2414 | Painting 1st coat | 2026-07-03 → 2026-09-30 (+89d) | 2026-07-15 → 2026-10-11 (+88d) | 11.94d → 13.5d |  |  |
| 2415 | False ceiling | 2026-07-15 → 2026-10-12 (+89d) | 2026-07-25 → 2026-10-21 (+88d) | 9.94d → 11.25d |  |  |
| 2416 | **21st Floor** | 2026-03-13 → 2026-07-14 (+123d) | 2026-08-06 → 2026-12-17 (+133d) | 145.69d → 126d |  | constraint start no earlier than 2026-03-13 → start no earlier than 2026-07-14 |
| 2417 | Block Work | 2026-03-13 → 2026-07-14 (+123d) | 2026-03-21 → 2026-07-21 (+122d) | 7.94d → 9d | 2074FS+0.25d, 2401FS+0.25d → 2079, 2401 |  |
| 2418 | Door Frame Fixing | 2026-03-21 → 2026-07-22 (+123d) | 2026-03-30 → 2026-07-30 (+122d) | 8.94d → 10.12d |  |  |
| 2419 | Internal Plumbing Works | 2026-03-21 → 2026-07-22 (+123d) | 2026-03-31 → 2026-07-31 (+122d) | 9.94d → 11.25d | 2417FS+0.25d → 2403, 2417 |  |
| 2420 | Waterproofing | 2026-05-13 → 2026-08-05 (+84d) | 2026-05-25 → 2026-08-16 (+83d) | 11.94d → 13.5d |  |  |
| 2421 | Internal Plaster | 2026-03-04 → 2026-08-17 (+166d) | 2026-03-16 → 2026-08-25 (+162d) | 12d → 10.12d | 2405FS+0.25d → 2405, 2418, 2419, 2420 |  |
| 2422 | IPS flooring work | 2026-05-25 → 2026-08-26 (+93d) | 2026-06-03 → 2026-09-03 (+92d) | 8.94d → 10.12d | 2406, 2418, 2420, 2437 → 2406, 2418, 2420, 2421 |  |
| 2423 | Toilet dado work | 2026-05-25 → 2026-08-26 (+93d) | 2026-06-02 → 2026-09-02 (+92d) | 7.94d → 9d | 2407, 2420, 2437 → 2407, 2420, 2421 |  |
| 2424 | Toilet flooring work | 2026-06-06 → 2026-09-03 (+89d) | 2026-06-13 → 2026-09-09 (+88d) | 6.94d → 7.88d |  |  |
| 2425 | Living dinning flooring | 2026-06-13 → 2026-09-10 (+89d) | 2026-06-25 → 2026-09-21 (+88d) | 11.94d → 13.5d |  |  |
| 2426 | Aluminium door-window fixing | 2026-07-16 → 2026-09-22 (+68d) | 2026-07-28 → 2026-10-03 (+67d) | 11.94d → 13.5d |  |  |
| 2427 | Putty primer coat | 2026-06-25 → 2026-09-22 (+89d) | 2026-07-01 → 2026-09-27 (+88d) | 5.94d → 6.75d |  |  |
| 2428 | Door shutter fixing | 2026-06-25 → 2026-09-22 (+89d) | 2026-07-03 → 2026-09-29 (+88d) | 7.94d → 9d |  |  |
| 2429 | Electrical wiring work | 2026-07-03 → 2026-09-30 (+89d) | 2026-07-15 → 2026-10-11 (+88d) | 11.94d → 13.5d |  |  |
| 2430 | Painting 1st coat | 2026-07-15 → 2026-10-12 (+89d) | 2026-07-27 → 2026-10-23 (+88d) | 11.94d → 13.5d |  |  |
| 2431 | False ceiling | 2026-07-27 → 2026-10-24 (+89d) | 2026-08-06 → 2026-12-17 (+133d) | 9.94d → 11.25d |  |  |
| 2432 | **22nd Floor** | 2026-05-14 → 2026-07-25 (+72d) | 2026-08-29 → 2026-12-29 (+122d) | 107.31d → 127.12d |  | constraint start no earlier than 2026-05-14 → start no earlier than 2026-07-25 |
| 2433 | Block Work | 2026-05-14 → 2026-07-25 (+72d) | 2026-05-22 → 2026-08-01 (+71d) | 7.94d → 9d |  |  |
| 2434 | Door Frame Fixing | 2026-05-22 → 2026-08-02 (+72d) | 2026-05-31 → 2026-08-10 (+71d) | 8.94d → 10.12d |  |  |
| 2435 | Internal Plumbing Works | 2026-05-22 → 2026-08-02 (+72d) | 2026-06-01 → 2026-08-11 (+71d) | 9.94d → 11.25d |  |  |
| 2436 | Waterproofing | 2026-06-01 → 2026-08-17 (+77d) | 2026-06-13 → 2026-08-28 (+76d) | 11.94d → 13.5d |  |  |
| 2437 | Internal Plaster | 2026-03-31 → 2026-08-29 (+151d) | 2026-04-09 → 2026-09-06 (+150d) | 8.94d → 10.12d | 2421FS+0.25d, 2417FS+10d → 2421, 2434, 2435, 2436 |  |
| 2438 | IPS flooring work | 2026-06-22 → 2026-09-07 (+77d) | 2026-07-01 → 2026-09-15 (+76d) | 8.94d → 10.12d | 2422, 2434, 2436, 2453 → 2422, 2434, 2436, 2437 |  |
| 2439 | Toilet dado work | 2026-06-22 → 2026-09-07 (+77d) | 2026-06-30 → 2026-09-14 (+76d) | 7.94d → 9d | 2423, 2436, 2453 → 2423, 2436, 2437 |  |
| 2440 | Toilet flooring work | 2026-06-30 → 2026-09-15 (+77d) | 2026-07-07 → 2026-09-21 (+76d) | 6.94d → 7.88d |  |  |
| 2441 | Living dinning flooring | 2026-07-07 → 2026-09-22 (+77d) | 2026-07-18 → 2026-10-03 (+77d) | 11.94d → 13.5d |  |  |
| 2442 | Aluminium door-window fixing | 2026-07-28 → 2026-10-04 (+68d) | 2026-08-09 → 2026-10-15 (+67d) | 11.94d → 13.5d |  |  |
| 2443 | Putty primer coat | 2026-07-19 → 2026-10-04 (+77d) | 2026-07-24 → 2026-10-09 (+77d) | 5.94d → 6.75d |  |  |
| 2444 | Door shutter fixing | 2026-07-19 → 2026-10-04 (+77d) | 2026-07-26 → 2026-10-11 (+77d) | 7.94d → 9d |  |  |
| 2445 | Electrical wiring work | 2026-07-26 → 2026-10-12 (+78d) | 2026-08-07 → 2026-10-23 (+77d) | 11.94d → 13.5d |  |  |
| 2446 | Painting 1st coat | 2026-08-07 → 2026-10-24 (+78d) | 2026-08-19 → 2026-12-19 (+122d) | 11.94d → 13.5d |  |  |
| 2447 | False ceiling | 2026-08-19 → 2026-12-20 (+123d) | 2026-08-29 → 2026-12-29 (+122d) | 9.94d → 11.25d |  |  |
| 2448 | **23rd Floor** | 2026-05-23 → 2026-08-05 (+74d) | 2026-09-13 → 2027-01-13 (+122d) | 113.25d → 131.62d |  | constraint start no earlier than 2026-05-23 → start no earlier than 2026-08-05 |
| 2449 | Block Work | 2026-05-23 → 2026-08-05 (+74d) | 2026-05-31 → 2026-08-12 (+73d) | 7.94d → 9d |  |  |
| 2450 | Door Frame Fixing | 2026-05-31 → 2026-08-13 (+74d) | 2026-06-09 → 2026-08-21 (+73d) | 8.94d → 10.12d |  |  |
| 2451 | Internal Plumbing Works | 2026-06-01 → 2026-08-13 (+73d) | 2026-06-11 → 2026-08-22 (+72d) | 9.94d → 11.25d |  |  |
| 2452 | Waterproofing | 2026-06-13 → 2026-08-29 (+77d) | 2026-06-25 → 2026-09-09 (+76d) | 11.94d → 13.5d |  |  |

| ID | Task | Start | Finish | Duration | Predecessors | Other |
| --- | --- | --- | --- | --- | --- | --- |
| 2453 | Internal Plaster | 2026-06-13 → 2026-09-10 (+89d) | 2026-06-22 → 2026-09-18 (+88d) | 8.94d → 10.12d | 2437, 2434, 2435, 2436 → 2437, 2450, 2451, 2452 |  |
| 2454 | IPS flooring work | 2026-07-04 → 2026-09-19 (+77d) | 2026-07-13 → 2026-09-27 (+76d) | 8.94d → 10.12d | 2438, 2450, 2452, 2469 → 2438, 2450, 2452, 2453 |  |
| 2455 | Toilet dado work | 2026-07-04 → 2026-09-19 (+77d) | 2026-07-12 → 2026-09-26 (+76d) | 7.94d → 9d | 2439, 2452, 2469 → 2439, 2452, 2453 |  |
| 2456 | Toilet flooring work | 2026-07-12 → 2026-09-27 (+77d) | 2026-07-18 → 2026-10-03 (+77d) | 6.94d → 7.88d |  |  |
| 2457 | Living dinning flooring | 2026-07-19 → 2026-10-04 (+77d) | 2026-08-02 → 2026-10-18 (+77d) | 14.94d → 16.88d |  |  |
| 2458 | Aluminium door-window fixing | 2026-08-09 → 2026-10-19 (+71d) | 2026-08-24 → 2026-12-17 (+115d) | 14.94d → 16.88d |  |  |
| 2459 | Putty primer coat | 2026-08-02 → 2026-10-19 (+78d) | 2026-08-08 → 2026-10-24 (+77d) | 5.94d → 6.75d |  |  |
| 2460 | Door shutter fixing | 2026-08-02 → 2026-10-19 (+78d) | 2026-08-10 → 2026-10-26 (+77d) | 7.94d → 9d |  |  |
| 2461 | Electrical wiring work | 2026-08-10 → 2026-10-27 (+78d) | 2026-08-22 → 2026-12-22 (+122d) | 11.94d → 13.5d |  |  |
| 2462 | Painting 1st coat | 2026-08-22 → 2026-12-23 (+123d) | 2026-09-03 → 2027-01-03 (+122d) | 11.94d → 13.5d |  |  |
| 2463 | False ceiling | 2026-09-03 → 2027-01-04 (+123d) | 2026-09-13 → 2027-01-13 (+122d) | 9.94d → 11.25d |  |  |
| 2464 | **24th Floor** | 2026-06-03 → 2026-08-16 (+74d) | 2026-09-28 → 2027-01-28 (+122d) | 117.06d → 136.12d |  | constraint start no earlier than 2026-06-03 → start no earlier than 2026-08-16 |
| 2465 | Block Work | 2026-06-03 → 2026-08-16 (+74d) | 2026-06-11 → 2026-08-23 (+73d) | 7.94d → 9d |  |  |
| 2466 | Door Frame Fixing | 2026-06-11 → 2026-08-24 (+74d) | 2026-06-20 → 2026-09-01 (+73d) | 8.94d → 10.12d |  |  |
| 2467 | Internal Plumbing Works | 2026-06-11 → 2026-08-24 (+74d) | 2026-06-21 → 2026-09-02 (+73d) | 9.94d → 11.25d |  |  |
| 2468 | Waterproofing | 2026-06-25 → 2026-09-10 (+77d) | 2026-07-07 → 2026-09-21 (+76d) | 11.94d → 13.5d |  |  |
| 2469 | Internal Plaster | 2026-06-25 → 2026-09-22 (+89d) | 2026-07-04 → 2026-09-30 (+88d) | 8.94d → 10.12d | 2453, 2450, 2451, 2452 → 2453, 2466, 2467, 2468 |  |
| 2470 | IPS flooring work | 2026-07-16 → 2026-10-01 (+77d) | 2026-07-24 → 2026-10-09 (+77d) | 8.94d → 10.12d | 2454, 2466, 2468, 2485 → 2454, 2466, 2468, 2469 |  |
| 2471 | Toilet dado work | 2026-07-16 → 2026-10-01 (+77d) | 2026-07-23 → 2026-10-08 (+77d) | 7.94d → 9d | 2455, 2468, 2485 → 2455, 2468, 2469 |  |
| 2472 | Toilet flooring work | 2026-07-24 → 2026-10-09 (+77d) | 2026-07-30 → 2026-10-15 (+77d) | 6.94d → 7.88d |  |  |
| 2473 | Living dinning flooring | 2026-08-02 → 2026-10-19 (+78d) | 2026-08-17 → 2026-12-17 (+122d) | 14.94d → 16.88d |  |  |
| 2474 | Aluminium door-window fixing | 2026-08-24 → 2026-12-18 (+116d) | 2026-09-08 → 2027-01-01 (+115d) | 14.94d → 16.88d |  |  |
| 2475 | Putty primer coat | 2026-08-17 → 2026-12-18 (+123d) | 2026-08-23 → 2026-12-23 (+122d) | 5.94d → 6.75d |  |  |
| 2476 | Door shutter fixing | 2026-08-17 → 2026-12-18 (+123d) | 2026-08-25 → 2026-12-25 (+122d) | 7.94d → 9d |  |  |
| 2477 | Electrical wiring work | 2026-08-25 → 2026-12-26 (+123d) | 2026-09-06 → 2027-01-06 (+122d) | 11.94d → 13.5d |  |  |
| 2478 | Painting 1st coat | 2026-09-06 → 2027-01-07 (+123d) | 2026-09-18 → 2027-01-18 (+122d) | 11.94d → 13.5d |  |  |
| 2479 | False ceiling | 2026-09-18 → 2027-01-19 (+123d) | 2026-09-28 → 2027-01-28 (+122d) | 9.94d → 11.25d |  |  |
| 2480 | **25th Floor** | 2026-06-17 → 2026-08-27 (+71d) | 2026-10-13 → 2027-02-12 (+122d) | 118.25d → 140.62d |  | constraint start no earlier than 2026-06-17 → start no earlier than 2026-08-27 |
| 2481 | Block Work | 2026-06-17 → 2026-08-27 (+71d) | 2026-06-25 → 2026-09-03 (+70d) | 7.94d → 9d |  |  |
| 2482 | Door Frame Fixing | 2026-06-25 → 2026-09-04 (+71d) | 2026-07-04 → 2026-09-12 (+70d) | 8.94d → 10.12d |  |  |
| 2483 | Internal Plumbing Works | 2026-06-25 → 2026-09-04 (+71d) | 2026-07-05 → 2026-09-13 (+70d) | 9.94d → 11.25d |  |  |
| 2484 | Waterproofing | 2026-07-07 → 2026-09-22 (+77d) | 2026-07-19 → 2026-10-03 (+76d) | 11.94d → 13.5d |  |  |
| 2485 | Internal Plaster | 2026-07-07 → 2026-10-04 (+89d) | 2026-07-16 → 2026-10-12 (+88d) | 8.94d → 10.12d | 2469, 2466, 2467, 2468 → 2469, 2482, 2483, 2484 |  |
| 2486 | IPS flooring work | 2026-07-28 → 2026-10-13 (+77d) | 2026-08-05 → 2026-10-21 (+77d) | 8.94d → 10.12d | 2470, 2482, 2484, 2501 → 2470, 2482, 2484, 2485 |  |
| 2487 | Toilet dado work | 2026-07-28 → 2026-10-13 (+77d) | 2026-08-04 → 2026-10-20 (+77d) | 7.94d → 9d | 2471, 2484, 2501 → 2471, 2484, 2485 |  |
| 2488 | Toilet flooring work | 2026-08-04 → 2026-10-21 (+78d) | 2026-08-11 → 2026-10-27 (+77d) | 6.94d → 7.88d |  |  |
| 2489 | Living dinning flooring | 2026-08-17 → 2026-12-18 (+123d) | 2026-09-01 → 2027-01-01 (+122d) | 14.94d → 16.88d |  |  |
| 2490 | Aluminium door-window fixing | 2026-09-08 → 2027-01-02 (+116d) | 2026-09-23 → 2027-01-16 (+115d) | 14.94d → 16.88d |  |  |
| 2491 | Putty primer coat | 2026-09-01 → 2027-01-02 (+123d) | 2026-09-07 → 2027-01-07 (+122d) | 5.94d → 6.75d |  |  |
| 2492 | Door shutter fixing | 2026-09-01 → 2027-01-02 (+123d) | 2026-09-09 → 2027-01-09 (+122d) | 7.94d → 9d |  |  |
| 2493 | Electrical wiring work | 2026-09-09 → 2027-01-10 (+123d) | 2026-09-21 → 2027-01-21 (+122d) | 11.94d → 13.5d |  |  |
| 2494 | Painting 1st coat | 2026-09-21 → 2027-01-22 (+123d) | 2026-10-03 → 2027-02-02 (+122d) | 11.94d → 13.5d |  |  |
| 2495 | False ceiling | 2026-10-03 → 2027-02-03 (+123d) | 2026-10-13 → 2027-02-12 (+122d) | 9.94d → 11.25d |  |  |
| 2496 | **26th Floor** | 2026-06-30 → 2026-09-07 (+69d) | 2026-10-28 → 2027-02-27 (+122d) | 120.44d → 145.12d |  | constraint start no earlier than 2026-06-30 → start no earlier than 2026-09-07 |
| 2497 | Block Work | 2026-06-30 → 2026-09-07 (+69d) | 2026-07-07 → 2026-09-14 (+69d) | 7.94d → 9d |  |  |
| 2498 | Door Frame Fixing | 2026-07-08 → 2026-09-15 (+69d) | 2026-07-16 → 2026-09-23 (+69d) | 8.94d → 10.12d |  |  |
| 2499 | Internal Plumbing Works | 2026-07-08 → 2026-09-15 (+69d) | 2026-07-17 → 2026-09-24 (+69d) | 9.94d → 11.25d |  |  |
| 2500 | Waterproofing | 2026-07-19 → 2026-10-04 (+77d) | 2026-07-30 → 2026-10-15 (+77d) | 11.94d → 13.5d |  |  |
| 2501 | Internal Plaster | 2026-07-19 → 2026-10-16 (+89d) | 2026-07-27 → 2026-10-24 (+89d) | 8.94d → 10.12d | 2485, 2482, 2483, 2484 → 2485, 2498, 2499, 2500 |  |
| 2502 | IPS flooring work | 2026-08-08 → 2026-10-25 (+78d) | 2026-08-17 → 2026-12-17 (+122d) | 8.94d → 10.12d | 2486, 2498, 2500, 2517 → 2486, 2498, 2500, 2501 |  |
| 2503 | Toilet dado work | 2026-08-08 → 2026-10-25 (+78d) | 2026-08-16 → 2026-12-16 (+122d) | 7.94d → 9d | 2487, 2500, 2517 → 2487, 2500, 2501 |  |
| 2504 | Toilet flooring work | 2026-08-16 → 2026-12-17 (+123d) | 2026-08-23 → 2026-12-23 (+122d) | 6.94d → 7.88d |  |  |
| 2505 | Living dinning flooring | 2026-09-01 → 2027-01-02 (+123d) | 2026-09-16 → 2027-01-16 (+122d) | 14.94d → 16.88d |  |  |
| 2506 | Aluminium door-window fixing | 2026-09-23 → 2027-01-17 (+116d) | 2026-10-08 → 2027-01-31 (+115d) | 14.94d → 16.88d |  |  |
| 2507 | Putty primer coat | 2026-09-16 → 2027-01-17 (+123d) | 2026-09-22 → 2027-01-22 (+122d) | 5.94d → 6.75d |  |  |
| 2508 | Door shutter fixing | 2026-09-16 → 2027-01-17 (+123d) | 2026-09-24 → 2027-01-24 (+122d) | 7.94d → 9d |  |  |
| 2509 | Electrical wiring work | 2026-09-24 → 2027-01-25 (+123d) | 2026-10-06 → 2027-02-05 (+122d) | 11.94d → 13.5d |  |  |
| 2510 | Painting 1st coat | 2026-10-06 → 2027-02-06 (+123d) | 2026-10-18 → 2027-02-17 (+122d) | 11.94d → 13.5d |  |  |
| 2511 | False ceiling | 2026-10-18 → 2027-02-18 (+123d) | 2026-10-28 → 2027-02-27 (+122d) | 9.94d → 11.25d |  |  |
| 2512 | **27th Floor** | 2026-07-13 → 2026-09-18 (+67d) | 2026-12-27 → 2027-03-14 (+77d) | 121.62d → 149.62d |  | constraint start no earlier than 2026-07-13 → start no earlier than 2026-09-18 |
| 2513 | Block Work | 2026-07-13 → 2026-09-18 (+67d) | 2026-07-21 → 2026-09-25 (+66d) | 7.94d → 9d |  |  |
| 2514 | Door Frame Fixing | 2026-07-21 → 2026-09-26 (+67d) | 2026-07-30 → 2026-10-04 (+66d) | 8.94d → 10.12d |  |  |
| 2515 | Internal Plumbing Works | 2026-07-21 → 2026-09-26 (+67d) | 2026-07-31 → 2026-10-05 (+66d) | 9.94d → 11.25d |  |  |
| 2516 | Waterproofing | 2026-07-31 → 2026-10-16 (+77d) | 2026-08-12 → 2026-10-27 (+76d) | 11.94d → 13.5d |  |  |
| 2517 | Internal Plaster | 2026-07-31 → 2026-10-28 (+89d) | 2026-08-08 → 2026-12-20 (+134d) | 8.94d → 10.12d | 2501, 2498, 2499, 2500 → 2501, 2514, 2515, 2516 |  |
| 2518 | IPS flooring work | 2026-08-21 → 2026-12-21 (+122d) | 2026-08-30 → 2026-12-29 (+121d) | 8.94d → 10.12d | 2502, 2514, 2516, 2533 → 2502, 2514, 2516, 2517 |  |
| 2519 | Toilet dado work | 2026-08-21 → 2026-12-21 (+122d) | 2026-08-29 → 2026-12-28 (+121d) | 7.94d → 9d | 2503, 2516, 2533 → 2503, 2516, 2517 |  |
| 2520 | Toilet flooring work | 2026-08-29 → 2026-12-29 (+122d) | 2026-09-05 → 2027-01-04 (+121d) | 6.94d → 7.88d |  |  |
| 2521 | Living dinning flooring | 2026-09-16 → 2027-01-17 (+123d) | 2026-10-01 → 2027-01-31 (+122d) | 14.94d → 16.88d |  |  |
| 2522 | Aluminium door-window fixing | 2026-10-08 → 2027-02-01 (+116d) | 2026-10-22 → 2027-02-15 (+116d) | 14.94d → 16.88d |  |  |

| ID | Task | Start | Finish | Duration | Predecessors | Other |
| --- | --- | --- | --- | --- | --- | --- |
| 2523 | Putty primer coat | 2026-10-01 → 2027-02-01 (+123d) | 2026-10-07 → 2027-02-06 (+122d) | 5.94d → 6.75d |  |  |
| 2524 | Door shutter fixing | 2026-10-01 → 2027-02-01 (+123d) | 2026-10-09 → 2027-02-08 (+122d) | 7.94d → 9d |  |  |
| 2525 | Electrical wiring work | 2026-10-09 → 2027-02-09 (+123d) | 2026-10-21 → 2027-02-20 (+122d) | 11.94d → 13.5d |  |  |
| 2526 | Painting 1st coat | 2026-10-21 → 2027-02-21 (+123d) | 2026-12-17 → 2027-03-04 (+77d) | 11.94d → 13.5d |  |  |
| 2527 | False ceiling | 2026-12-17 → 2027-03-05 (+78d) | 2026-12-27 → 2027-03-14 (+77d) | 9.94d → 11.25d |  |  |
| 2528 | **28th Floor** | 2026-07-26 → 2026-09-29 (+65d) | 2027-01-11 → 2027-03-29 (+77d) | 123.81d → 154.12d |  | constraint start no earlier than 2026-07-26 → start no earlier than 2026-09-29 |
| 2529 | Block Work | 2026-07-26 → 2026-09-29 (+65d) | 2026-08-03 → 2026-10-06 (+64d) | 7.94d → 9d |  |  |
| 2530 | Door Frame Fixing | 2026-08-03 → 2026-10-07 (+65d) | 2026-08-12 → 2026-10-15 (+64d) | 8.94d → 10.12d |  |  |
| 2531 | Internal Plumbing Works | 2026-08-03 → 2026-10-07 (+65d) | 2026-08-13 → 2026-10-16 (+64d) | 9.94d → 11.25d |  |  |
| 2532 | Waterproofing | 2026-08-13 → 2026-10-28 (+76d) | 2026-08-25 → 2026-12-23 (+120d) | 11.94d → 13.5d |  |  |
| 2533 | Internal Plaster | 2026-08-12 → 2026-12-24 (+134d) | 2026-08-21 → 2027-01-01 (+133d) | 8.94d → 10.12d | 2517, 2514, 2515, 2516 → 2517, 2530, 2531, 2532 |  |
| 2534 | IPS flooring work | 2026-09-03 → 2027-01-02 (+121d) | 2026-09-12 → 2027-01-10 (+120d) | 8.94d → 10.12d | 2518, 2530, 2532, 2549 → 2518, 2530, 2532, 2533 |  |
| 2535 | Toilet dado work | 2026-09-03 → 2027-01-02 (+121d) | 2026-09-11 → 2027-01-09 (+120d) | 7.94d → 9d | 2519, 2532, 2549 → 2519, 2532, 2533 |  |
| 2536 | Toilet flooring work | 2026-09-11 → 2027-01-10 (+121d) | 2026-09-18 → 2027-01-16 (+120d) | 6.94d → 7.88d |  |  |
| 2537 | Living dinning flooring | 2026-10-01 → 2027-02-01 (+123d) | 2026-10-16 → 2027-02-15 (+122d) | 14.94d → 16.88d |  |  |
| 2538 | Aluminium door-window fixing | 2026-10-23 → 2027-02-16 (+116d) | 2026-12-21 → 2027-03-02 (+71d) | 14.94d → 16.88d |  |  |
| 2539 | Putty primer coat | 2026-10-16 → 2027-02-16 (+123d) | 2026-10-22 → 2027-02-21 (+122d) | 5.94d → 6.75d |  |  |
| 2540 | Door shutter fixing | 2026-10-16 → 2027-02-16 (+123d) | 2026-10-24 → 2027-02-23 (+122d) | 7.94d → 9d |  |  |
| 2541 | Electrical wiring work | 2026-10-24 → 2027-02-24 (+123d) | 2026-12-20 → 2027-03-07 (+77d) | 11.94d → 13.5d |  |  |
| 2542 | Painting 1st coat | 2026-12-20 → 2027-03-08 (+78d) | 2027-01-01 → 2027-03-19 (+77d) | 11.94d → 13.5d |  |  |
| 2543 | False ceiling | 2027-01-01 → 2027-03-20 (+78d) | 2027-01-11 → 2027-03-29 (+77d) | 9.94d → 11.25d |  |  |
| 2544 | **29th Floor** | 2026-08-11 → 2026-10-10 (+60d) | 2027-01-26 → 2027-04-13 (+77d) | 123d → 158.62d |  | constraint start no earlier than 2026-08-11 → start no earlier than 2026-10-10 |
| 2545 | Block Work | 2026-08-11 → 2026-10-10 (+60d) | 2026-08-19 → 2026-10-17 (+59d) | 7.94d → 9d |  |  |
| 2546 | Door Frame Fixing | 2026-08-19 → 2026-10-18 (+60d) | 2026-08-28 → 2026-10-26 (+59d) | 8.94d → 10.12d |  |  |
| 2547 | Internal Plumbing Works | 2026-08-19 → 2026-10-18 (+60d) | 2026-08-29 → 2026-10-27 (+59d) | 9.94d → 11.25d |  |  |
| 2548 | Waterproofing | 2026-08-29 → 2026-12-24 (+117d) | 2026-09-10 → 2027-01-04 (+116d) | 11.94d → 13.5d |  |  |
| 2549 | Internal Plaster | 2026-08-25 → 2027-01-05 (+133d) | 2026-09-03 → 2027-01-13 (+132d) | 8.94d → 10.12d | 2533, 2530, 2531, 2532 → 2533, 2546, 2547, 2548 |  |
| 2550 | IPS flooring work | 2026-09-19 → 2027-01-14 (+117d) | 2026-09-27 → 2027-01-22 (+117d) | 8.94d → 10.12d | 2534, 2546, 2548, 2565 → 2534, 2546, 2548, 2549 |  |
| 2551 | Toilet dado work | 2026-09-19 → 2027-01-14 (+117d) | 2026-09-26 → 2027-01-21 (+117d) | 7.94d → 9d | 2535, 2548, 2565 → 2535, 2548, 2549 |  |
| 2552 | Toilet flooring work | 2026-09-27 → 2027-01-22 (+117d) | 2026-10-03 → 2027-01-28 (+117d) | 6.94d → 7.88d |  |  |
| 2553 | Living dinning flooring | 2026-10-16 → 2027-02-16 (+123d) | 2026-10-31 → 2027-03-02 (+122d) | 14.94d → 16.88d |  |  |
| 2554 | Aluminium door-window fixing | 2026-12-21 → 2027-03-03 (+72d) | 2027-01-05 → 2027-03-17 (+71d) | 14.94d → 16.88d |  |  |
| 2555 | Putty primer coat | 2026-10-31 → 2027-03-03 (+123d) | 2026-12-21 → 2027-03-08 (+77d) | 5.94d → 6.75d |  |  |
| 2556 | Door shutter fixing | 2026-10-31 → 2027-03-03 (+123d) | 2026-12-23 → 2027-03-10 (+77d) | 7.94d → 9d |  |  |
| 2557 | Electrical wiring work | 2026-12-23 → 2027-03-11 (+78d) | 2027-01-04 → 2027-03-22 (+77d) | 11.94d → 13.5d |  |  |
| 2558 | Painting 1st coat | 2027-01-04 → 2027-03-23 (+78d) | 2027-01-16 → 2027-04-03 (+77d) | 11.94d → 13.5d |  |  |
| 2559 | False ceiling | 2027-01-16 → 2027-04-04 (+78d) | 2027-01-26 → 2027-04-13 (+77d) | 9.94d → 11.25d |  |  |
| 2560 | **30th Floor** | 2026-09-21 → 2026-10-21 (+30d) | 2027-03-02 → 2027-05-04 (+63d) | 116.31d → 169.88d |  | constraint start no earlier than 2026-09-21 → start no earlier than 2026-10-21 |
| 2561 | Block Work | 2026-09-21 → 2026-10-21 (+30d) | 2026-09-29 → 2026-10-28 (+29d) | 7.94d → 9d |  |  |
| 2562 | Door Frame Fixing | 2026-09-29 → 2026-10-29 (+30d) | 2026-10-08 → 2026-12-21 (+74d) | 8.94d → 10.12d |  |  |
| 2563 | Internal Plumbing Works | 2026-09-29 → 2026-10-29 (+30d) | 2026-10-09 → 2026-12-22 (+74d) | 9.94d → 11.25d |  |  |
| 2564 | Waterproofing | 2026-10-09 → 2027-01-05 (+88d) | 2026-10-21 → 2027-01-16 (+87d) | 11.94d → 13.5d |  |  |
| 2565 | Internal Plaster | 2026-09-10 → 2027-01-17 (+129d) | 2026-09-19 → 2027-01-25 (+128d) | 8.94d → 10.12d | 2549, 2546, 2547, 2548 → 2549, 2562, 2563, 2564 |  |
| 2566 | IPS flooring work | 2026-10-30 → 2027-01-26 (+88d) | 2026-12-23 → 2027-02-03 (+42d) | 8.94d → 10.12d | 2550, 2562, 2564, 2581 → 2550, 2562, 2564, 2565 |  |
| 2567 | Toilet dado work | 2026-10-30 → 2027-01-26 (+88d) | 2026-12-22 → 2027-02-02 (+42d) | 7.94d → 9d | 2551, 2564, 2581 → 2551, 2564, 2565 |  |
| 2568 | Toilet flooring work | 2026-12-22 → 2027-02-03 (+43d) | 2026-12-29 → 2027-02-09 (+42d) | 6.94d → 7.88d |  |  |
| 2569 | Living dinning flooring | 2026-12-29 → 2027-03-03 (+64d) | 2027-01-13 → 2027-03-17 (+63d) | 14.94d → 16.88d |  |  |
| 2570 | Aluminium door-window fixing | 2027-01-13 → 2027-03-18 (+64d) | 2027-01-28 → 2027-04-01 (+63d) | 14.94d → 16.88d |  |  |
| 2571 | Putty primer coat | 2027-01-13 → 2027-03-18 (+64d) | 2027-01-19 → 2027-03-23 (+63d) | 5.94d → 6.75d |  |  |
| 2572 | Door shutter fixing | 2027-01-13 → 2027-03-18 (+64d) | 2027-01-21 → 2027-03-25 (+63d) | 7.94d → 9d |  |  |
| 2573 | Electrical wiring work | 2027-01-21 → 2027-03-26 (+64d) | 2027-02-05 → 2027-04-09 (+63d) | 14.94d → 16.88d |  |  |
| 2574 | Painting 1st coat | 2027-02-05 → 2027-04-10 (+64d) | 2027-02-20 → 2027-04-24 (+63d) | 14.94d → 16.88d |  |  |
| 2575 | False ceiling | 2027-02-20 → 2027-04-25 (+64d) | 2027-03-02 → 2027-05-04 (+63d) | 9.94d → 11.25d |  |  |
| 2576 | **31st Floor** | 2026-09-29 → 2026-12-16 (+78d) | 2027-03-17 → 2027-05-19 (+63d) | 123.31d → 174.38d |  | constraint start no earlier than 2026-09-29 → start no earlier than 2026-12-16 |
| 2577 | Block Work | 2026-09-29 → 2026-12-16 (+78d) | 2026-10-07 → 2026-12-23 (+77d) | 7.94d → 9d |  |  |
| 2578 | Door Frame Fixing | 2026-10-08 → 2026-12-24 (+77d) | 2026-10-17 → 2027-01-01 (+76d) | 8.94d → 10.12d |  |  |
| 2579 | Internal Plumbing Works | 2026-10-09 → 2026-12-24 (+76d) | 2026-10-19 → 2027-01-02 (+75d) | 9.94d → 11.25d |  |  |
| 2580 | Waterproofing | 2026-10-21 → 2027-01-17 (+88d) | 2026-12-17 → 2027-01-26 (+40d) | 11.94d → 11.25d |  |  |
| 2581 | Internal Plaster | 2026-10-21 → 2027-01-27 (+98d) | 2026-10-30 → 2027-02-04 (+97d) | 8.94d → 10.12d | 2565, 2562, 2563, 2564 → 2565, 2578, 2579, 2580 |  |
| 2582 | IPS flooring work | 2026-12-26 → 2027-02-05 (+41d) | 2027-01-04 → 2027-02-13 (+40d) | 8.94d → 10.12d | 2566, 2578, 2580, 2613 → 2566, 2578, 2580, 2581 |  |
| 2583 | Toilet dado work | 2026-12-26 → 2027-02-05 (+41d) | 2027-01-03 → 2027-02-12 (+40d) | 7.94d → 9d | 2567, 2580, 2613 → 2567, 2580, 2581 |  |
| 2584 | Toilet flooring work | 2027-01-03 → 2027-02-13 (+41d) | 2027-01-10 → 2027-02-19 (+40d) | 6.94d → 7.88d |  |  |
| 2585 | Living dinning flooring | 2027-01-13 → 2027-03-18 (+64d) | 2027-01-28 → 2027-04-01 (+63d) | 14.94d → 16.88d |  |  |
| 2586 | Aluminium door-window fixing | 2027-01-28 → 2027-04-02 (+64d) | 2027-02-09 → 2027-04-13 (+63d) | 11.94d → 13.5d |  |  |
| 2587 | Putty primer coat | 2027-01-28 → 2027-04-02 (+64d) | 2027-02-03 → 2027-04-07 (+63d) | 5.94d → 6.75d |  |  |
| 2588 | Door shutter fixing | 2027-01-28 → 2027-04-02 (+64d) | 2027-02-05 → 2027-04-09 (+63d) | 7.94d → 9d |  |  |
| 2589 | Electrical wiring work | 2027-02-05 → 2027-04-10 (+64d) | 2027-02-20 → 2027-04-24 (+63d) | 14.94d → 16.88d |  |  |
| 2590 | Painting 1st coat | 2027-02-20 → 2027-04-25 (+64d) | 2027-03-07 → 2027-05-09 (+63d) | 14.94d → 16.88d |  |  |
| 2591 | False ceiling | 2027-03-07 → 2027-05-10 (+64d) | 2027-03-17 → 2027-05-19 (+63d) | 9.94d → 11.25d |  |  |
| 2592 | **32nd Floor** | 2026-10-07 → 2026-12-24 (+78d) | 2027-03-31 → 2027-06-03 (+64d) | 130.31d → 182.25d |  | constraint start no earlier than 2026-10-07 → start no earlier than 2026-12-24 |

| ID | Task | Start | Finish | Duration | Predecessors | Other |
| --- | --- | --- | --- | --- | --- | --- |
| 2593 | Block Work | 2026-10-07 → 2026-12-24 (+78d) | 2026-10-15 → 2026-12-31 (+77d) | 7.94d → 9d |  |  |
| 2594 | Door Frame Fixing | 2026-10-17 → 2027-01-02 (+77d) | 2026-10-26 → 2027-01-10 (+76d) | 8.94d → 10.12d |  |  |
| 2595 | Internal Plumbing Works | 2026-10-19 → 2027-01-03 (+76d) | 2026-10-29 → 2027-01-12 (+75d) | 9.94d → 11.25d |  |  |
| 2596 | Waterproofing | 2026-12-17 → 2027-01-13 (+27d) | 2026-12-29 → 2027-01-24 (+26d) | 11.94d → 13.5d | 2580, 2595 → 2595 |  |
| 2597 | Internal Plaster | 2027-02-03 → 2027-02-05 (+2d) | 2027-02-12 → 2027-02-13 (+1d) | 8.94d → 10.12d | 2661, 2642, 2643, 2644 → 2581, 2594, 2595, 2596 |  |
| 2598 | IPS flooring work | 2027-02-12 → 2027-02-14 (+2d) | 2027-02-21 → 2027-02-22 (+1d) | 8.94d → 10.12d | 2646, 2642, 2644, 2597 → 2582, 2594, 2596, 2597 |  |
| 2599 | Toilet dado work | 2027-02-12 → 2027-02-14 (+2d) | 2027-02-20 → 2027-02-21 (+1d) | 7.94d → 9d | 2647, 2644, 2597 → 2583, 2596, 2597 |  |
| 2600 | Toilet flooring work | 2027-02-20 → 2027-02-22 (+2d) | 2027-02-27 → 2027-02-28 (+1d) | 6.94d → 7.88d | 2648, 2599 → 2584, 2599 |  |
| 2601 | Living dinning flooring | 2027-03-14 → 2027-04-02 (+19d) | 2027-03-29 → 2027-04-16 (+18d) | 14.94d → 16.88d | 2649, 2642, 2600 → 2585, 2594, 2600 |  |
| 2602 | Aluminium door-window fixing | 2027-03-29 → 2027-04-17 (+19d) | 2027-04-12 → 2027-04-28 (+16d) | 14.94d → 13.5d | 2650, 2598, 2601 → 2586, 2598, 2601 |  |
| 2603 | Putty primer coat | 2027-03-29 → 2027-04-17 (+19d) | 2027-04-03 → 2027-04-22 (+19d) | 5.94d → 6.75d | 2651, 2601 → 2587, 2601 |  |
| 2604 | Door shutter fixing | 2027-03-29 → 2027-04-17 (+19d) | 2027-04-05 → 2027-04-24 (+19d) | 7.94d → 9d | 2652, 2601 → 2588, 2601 |  |
| 2605 | Electrical wiring work | 2027-04-06 → 2027-04-25 (+19d) | 2027-04-17 → 2027-05-09 (+22d) | 11.94d → 16.88d | 2653, 2604 → 2589, 2604 |  |
| 2606 | Painting 1st coat | 2027-04-17 → 2027-05-10 (+23d) | 2027-04-29 → 2027-05-24 (+25d) | 11.94d → 16.88d | 2654, 2603, 2604, 2605 → 2590, 2603, 2604, 2605 |  |
| 2607 | False ceiling | 2027-04-29 → 2027-05-25 (+26d) | 2027-05-09 → 2027-06-03 (+25d) | 9.94d → 11.25d | 2655, 2606 → 2591, 2606 |  |
| 2608 | **33rd Floor** | 2026-10-15 → 2027-01-01 (+78d) | 2027-04-12 → 2027-06-15 (+64d) | 134.31d → 186.75d |  | constraint start no earlier than 2026-10-15 → start no earlier than 2027-01-01 |
| 2609 | Block Work | 2026-10-15 → 2027-01-01 (+78d) | 2026-10-23 → 2027-01-08 (+77d) | 7.94d → 9d |  |  |
| 2610 | Door Frame Fixing | 2026-10-26 → 2027-01-11 (+77d) | 2026-12-19 → 2027-01-19 (+31d) | 8.94d → 10.12d |  |  |
| 2611 | Internal Plumbing Works | 2026-10-29 → 2027-01-13 (+76d) | 2026-12-23 → 2027-01-22 (+30d) | 9.94d → 11.25d |  |  |
| 2612 | Waterproofing | 2026-12-29 → 2027-01-25 (+27d) | 2027-01-10 → 2027-02-03 (+24d) | 11.94d → 11.25d |  |  |
| 2613 | Internal Plaster | 2026-12-17 → 2027-02-14 (+59d) | 2026-12-26 → 2027-02-21 (+57d) | 8.94d → 9d | 2581, 2578, 2579, 2580 → 2597, 2610, 2611, 2612 |  |
| 2614 | IPS flooring work | 2027-01-07 → 2027-02-23 (+47d) | 2027-01-16 → 2027-03-03 (+46d) | 8.94d → 10.12d | 2582, 2594, 2596, 2629 → 2598, 2610, 2612, 2613 |  |
| 2615 | Toilet dado work | 2027-01-07 → 2027-02-22 (+46d) | 2027-01-15 → 2027-03-01 (+45d) | 7.94d → 9d | 2583, 2596, 2629 → 2599, 2612, 2613 |  |
| 2616 | Toilet flooring work | 2027-01-15 → 2027-03-02 (+46d) | 2027-01-22 → 2027-03-08 (+45d) | 6.94d → 7.88d | 2584, 2615 → 2600, 2615 |  |
| 2617 | Living dinning flooring | 2027-01-28 → 2027-04-17 (+79d) | 2027-02-12 → 2027-05-01 (+78d) | 14.94d → 16.88d | 2585, 2594, 2616 → 2601, 2610, 2616 |  |
| 2618 | Aluminium door-window fixing | 2027-02-12 → 2027-05-02 (+79d) | 2027-02-24 → 2027-05-16 (+81d) | 11.94d → 16.88d | 2586, 2614, 2617 → 2602, 2614, 2617 |  |
| 2619 | Putty primer coat | 2027-02-12 → 2027-05-02 (+79d) | 2027-02-18 → 2027-05-07 (+78d) | 5.94d → 6.75d | 2587, 2617 → 2603, 2617 |  |
| 2620 | Door shutter fixing | 2027-02-12 → 2027-05-02 (+79d) | 2027-02-20 → 2027-05-09 (+78d) | 7.94d → 9d | 2588, 2617 → 2604, 2617 |  |
| 2621 | Electrical wiring work | 2027-02-20 → 2027-05-10 (+79d) | 2027-03-07 → 2027-05-21 (+75d) | 14.94d → 13.5d | 2589, 2620 → 2605, 2620 |  |
| 2622 | Painting 1st coat | 2027-03-07 → 2027-05-25 (+79d) | 2027-03-22 → 2027-06-05 (+75d) | 14.94d → 13.5d | 2590, 2619, 2620, 2621 → 2606, 2619, 2620, 2621 |  |
| 2623 | False ceiling | 2027-03-22 → 2027-06-06 (+76d) | 2027-03-31 → 2027-06-15 (+76d) | 9.94d → 11.25d | 2591, 2622 → 2607, 2622 |  |
| 2624 | **34th Floor** | 2026-10-23 → 2027-01-09 (+78d) | 2027-04-24 → 2027-06-27 (+64d) | 138.31d → 191.25d |  | constraint start no earlier than 2026-10-23 → start no earlier than 2027-01-09 |
| 2625 | Block Work | 2026-10-23 → 2027-01-09 (+78d) | 2026-10-31 → 2027-01-16 (+77d) | 7.94d → 9d |  |  |
| 2626 | Door Frame Fixing | 2026-12-19 → 2027-01-20 (+32d) | 2026-12-28 → 2027-01-28 (+31d) | 8.94d → 10.12d |  |  |
| 2627 | Internal Plumbing Works | 2026-12-23 → 2027-01-23 (+31d) | 2027-01-02 → 2027-02-01 (+30d) | 9.94d → 11.25d |  |  |
| 2628 | Waterproofing | 2027-01-10 → 2027-02-04 (+25d) | 2027-01-22 → 2027-02-13 (+22d) | 11.94d → 11.25d |  |  |
| 2629 | Internal Plaster | 2026-12-29 → 2027-02-22 (+55d) | 2027-01-07 → 2027-03-01 (+53d) | 8.94d → 9d | 2613, 2594, 2595, 2596 → 2613, 2626, 2627, 2628 |  |
| 2630 | IPS flooring work | 2027-01-19 → 2027-03-04 (+44d) | 2027-01-28 → 2027-03-12 (+43d) | 8.94d → 10.12d | 2614, 2610, 2612, 2645 → 2614, 2626, 2628, 2629 |  |
| 2631 | Toilet dado work | 2027-01-19 → 2027-03-02 (+42d) | 2027-01-27 → 2027-03-09 (+41d) | 7.94d → 9d | 2615, 2612, 2645 → 2615, 2628, 2629 |  |
| 2632 | Toilet flooring work | 2027-01-27 → 2027-03-10 (+42d) | 2027-02-03 → 2027-03-16 (+41d) | 6.94d → 7.88d |  |  |
| 2633 | Living dinning flooring | 2027-02-12 → 2027-05-02 (+79d) | 2027-02-27 → 2027-05-16 (+78d) | 14.94d → 16.88d | 2617, 2610, 2632 → 2617, 2626, 2632 |  |
| 2634 | Aluminium door-window fixing | 2027-02-27 → 2027-05-17 (+79d) | 2027-03-14 → 2027-05-31 (+78d) | 14.94d → 16.88d |  |  |
| 2635 | Putty primer coat | 2027-02-27 → 2027-05-17 (+79d) | 2027-03-05 → 2027-05-22 (+78d) | 5.94d → 6.75d |  |  |
| 2636 | Door shutter fixing | 2027-02-27 → 2027-05-17 (+79d) | 2027-03-07 → 2027-05-24 (+78d) | 7.94d → 9d |  |  |
| 2637 | Electrical wiring work | 2027-03-07 → 2027-05-25 (+79d) | 2027-03-19 → 2027-06-05 (+78d) | 11.94d → 13.5d |  |  |
| 2638 | Painting 1st coat | 2027-03-22 → 2027-06-06 (+76d) | 2027-04-02 → 2027-06-17 (+76d) | 11.94d → 13.5d |  |  |
| 2639 | False ceiling | 2027-04-03 → 2027-06-18 (+76d) | 2027-04-12 → 2027-06-27 (+76d) | 9.94d → 11.25d |  |  |
| 2640 | **35th Floor** | 2026-10-31 → 2027-01-17 (+78d) | 2027-05-09 → 2027-07-12 (+64d) | 145.31d → 199.12d |  | constraint start no earlier than 2026-10-31 → start no earlier than 2027-01-17 |
| 2641 | Block Work | 2026-10-31 → 2027-01-17 (+78d) | 2026-12-23 → 2027-01-24 (+32d) | 7.94d → 9d |  |  |
| 2642 | Door Frame Fixing | 2026-12-28 → 2027-01-29 (+32d) | 2027-01-06 → 2027-02-06 (+31d) | 8.94d → 10.12d |  |  |
| 2643 | Internal Plumbing Works | 2027-01-02 → 2027-02-02 (+31d) | 2027-01-12 → 2027-02-10 (+29d) | 9.94d → 10.12d |  |  |
| 2644 | Waterproofing | 2027-01-22 → 2027-02-14 (+23d) | 2027-02-03 → 2027-02-23 (+20d) | 11.94d → 11.25d |  |  |
| 2645 | Internal Plaster | 2027-01-10 → 2027-02-24 (+45d) | 2027-01-19 → 2027-03-03 (+43d) | 8.94d → 9d | 2629, 2610, 2611, 2612 → 2642, 2643, 2644 |  |
| 2646 | IPS flooring work | 2027-01-31 → 2027-03-13 (+41d) | 2027-02-09 → 2027-03-21 (+40d) | 8.94d → 10.12d | 2630, 2626, 2628, 2661 → 2630, 2642, 2644, 2645 |  |
| 2647 | Toilet dado work | 2027-01-31 → 2027-03-10 (+38d) | 2027-02-08 → 2027-03-17 (+37d) | 7.94d → 9d | 2631, 2628, 2661 → 2631, 2644, 2645 |  |
| 2648 | Toilet flooring work | 2027-02-08 → 2027-03-18 (+38d) | 2027-02-15 → 2027-03-24 (+37d) | 6.94d → 7.88d |  |  |
| 2649 | Living dinning flooring | 2027-02-27 → 2027-05-17 (+79d) | 2027-03-14 → 2027-05-31 (+78d) | 14.94d → 16.88d | 2633, 2626, 2648 → 2633, 2642, 2648 |  |
| 2650 | Aluminium door-window fixing | 2027-03-14 → 2027-06-01 (+79d) | 2027-03-29 → 2027-06-15 (+78d) | 14.94d → 16.88d |  |  |
| 2651 | Putty primer coat | 2027-03-14 → 2027-06-01 (+79d) | 2027-03-20 → 2027-06-06 (+78d) | 5.94d → 6.75d |  |  |
| 2652 | Door shutter fixing | 2027-03-14 → 2027-06-01 (+79d) | 2027-03-22 → 2027-06-08 (+78d) | 7.94d → 9d |  |  |
| 2653 | Electrical wiring work | 2027-03-22 → 2027-06-09 (+79d) | 2027-04-02 → 2027-06-20 (+79d) | 11.94d → 13.5d |  |  |
| 2654 | Painting 1st coat | 2027-04-03 → 2027-06-21 (+79d) | 2027-04-14 → 2027-07-02 (+79d) | 11.94d → 13.5d |  |  |
| 2655 | False ceiling | 2027-04-14 → 2027-07-03 (+80d) | 2027-04-24 → 2027-07-12 (+79d) | 9.94d → 11.25d |  |  |
| 2656 | **Terrace Finishing** | 2026-08-04 → 2026-09-30 (+57d) | 2026-10-23 → 2027-02-01 (+101d) | 79.88d → 90d |  | constraint start no earlier than 2026-08-04 → start no earlier than 2026-09-30 |
| 2657 | Terrace waterproofing | 2026-08-04 → 2026-09-30 (+57d) | 2026-09-13 → 2026-12-23 (+101d) | 39.94d → 45d | 2055 → 2050 |  |
| 2658 | Terrace finishing | 2026-09-13 → 2026-12-24 (+102d) | 2026-10-23 → 2027-02-01 (+101d) | 39.94d → 45d |  |  |
| 2659 | **Common Area Finishing** | 2025-09-18 → 2026-12-24 (+462d) | 2026-08-09 → 2027-10-14 (+431d) | 279.31d → 331.88d |  | constraint start no earlier than 2025-09-18 → start no earlier than 2026-12-24 |
| 2660 | Block Work | 2025-09-18 → 2026-12-24 (+462d) | 2025-10-28 → 2027-02-01 (+461d) | 39.94d → 45d | 2061FS+0.25d → 2055 |  |
| 2661 | Internal Plaster | 2027-01-22 → 2027-02-02 (+11d) | 2027-01-31 → 2027-06-01 (+121d) | 8.94d → 135d | 2645, 2626, 2627, 2628 → 2666SS+22.5d |  |
| 2662 | Staircase railing fixing | 2026-03-12 → 2027-05-18 (+432d) | 2026-08-09 → 2027-10-14 (+431d) | 149.94d → 168.75d | 2664SS+26.75d, 2663SS+26.75d → 2664SS+33.75d, 2663SS+33.75d |  |

| ID | Task | Start | Finish | Duration | Predecessors | Other |
| --- | --- | --- | --- | --- | --- | --- |
| 2663 | Main staircase flooring | 2026-02-13 → 2027-04-18 (+429d) | 2026-07-13 → 2027-09-14 (+428d) | 149.94d → 168.75d | 2664SS+13.38d → 2664SS+16.88d |  |
| 2664 | Fire staircase flooring | 2026-01-31 → 2027-04-03 (+427d) | 2026-06-30 → 2027-08-30 (+426d) | 149.94d → 168.75d | 3018SS+13.38d, 2668SS+26.75d → 2661SS+16.88d, 2668SS+33.75d |  |
| 2665 | Fire door work | 2026-03-12 → 2027-05-18 (+432d) | 2026-05-11 → 2027-07-16 (+431d) | 59.94d → 67.5d | 2663SS+26.75d, 2664SS+26.75d → 2663SS+33.75d, 2664SS+33.75d |  |
| 2666 | Electrical wiring work | 2025-10-06 → 2027-01-13 (+464d) | 2026-03-20 → 2027-05-12 (+418d) | 119.94d → 135d | 2660SS+17.88d → 2660SS+22.5d |  |
| 2667 | Lobby flooring | 2025-10-10 → 2027-01-16 (+463d) | 2026-04-23 → 2027-06-15 (+418d) | 150d → 168.75d | 2666SS+3.38d → 2666SS+4.12d |  |
| 2668 | Ceiling & wall putty-primer | 2026-01-04 → 2027-03-04 (+424d) | 2026-04-24 → 2027-06-21 (+423d) | 109.94d → 123.75d | 3018SS+26.75d → 2661SS+33.75d |  |
| 2669 | Ceiling & wall painting | 2026-01-22 → 2027-03-24 (+426d) | 2026-05-02 → 2027-07-01 (+425d) | 99.94d → 112.5d | 2668SS+17.88d → 2668SS+22.5d |  |
| 2670 | Light fixture supply & installation | 2026-03-16 → 2027-05-23 (+433d) | 2026-04-30 → 2027-07-06 (+432d) | 44.94d → 50.62d | 2669SS+53.38d → 2669SS+67.5d |  |
| 2671 | **Balcony Glass Railing** | 2027-06-10 → 2027-07-18 (+38d) | 2027-08-07 → 2027-09-25 (+49d) | 58.12d → 78.75d |  | constraint start no earlier than 2027-06-10 → start no earlier than 2027-07-18 |
| 2672 | 1st Floor | 2027-06-10 → 2027-07-18 (+38d) | 2027-06-12 → 2027-07-19 (+37d) | 1.94d → 2.25d |  |  |
| 2673 | 2nd Floor | 2027-06-12 → 2027-07-20 (+38d) | 2027-06-14 → 2027-07-21 (+37d) | 1.94d → 2.25d |  |  |
| 2674 | 3rd Floor | 2027-06-14 → 2027-07-22 (+38d) | 2027-06-16 → 2027-07-23 (+37d) | 1.94d → 2.25d |  |  |
| 2675 | 4th Floor | 2027-06-16 → 2027-07-24 (+38d) | 2027-06-18 → 2027-07-25 (+37d) | 1.94d → 2.25d |  |  |
| 2676 | 5th Floor | 2027-06-18 → 2027-07-26 (+38d) | 2027-06-20 → 2027-07-27 (+37d) | 1.94d → 2.25d |  |  |
| 2677 | 6th Floor | 2027-06-20 → 2027-07-28 (+38d) | 2027-06-22 → 2027-07-29 (+37d) | 1.94d → 2.25d |  |  |
| 2678 | 7th Floor | 2027-06-22 → 2027-07-30 (+38d) | 2027-06-24 → 2027-07-31 (+37d) | 1.94d → 2.25d |  |  |
| 2679 | 8th Floor | 2027-06-24 → 2027-08-01 (+38d) | 2027-06-26 → 2027-08-02 (+37d) | 1.94d → 2.25d |  |  |
| 2680 | 9th Floor | 2027-06-26 → 2027-08-03 (+38d) | 2027-06-27 → 2027-08-04 (+38d) | 1.94d → 2.25d |  |  |
| 2681 | 10th Floor | 2027-06-28 → 2027-08-05 (+38d) | 2027-06-29 → 2027-08-06 (+38d) | 1.94d → 2.25d |  |  |
| 2682 | 11th Floor | 2027-06-29 → 2027-08-07 (+39d) | 2027-07-01 → 2027-08-08 (+38d) | 1.94d → 2.25d |  |  |
| 2683 | 12th Floor | 2027-07-01 → 2027-08-09 (+39d) | 2027-07-03 → 2027-08-10 (+38d) | 1.94d → 2.25d |  |  |
| 2684 | 13th Floor | 2027-07-03 → 2027-08-11 (+39d) | 2027-07-05 → 2027-08-12 (+38d) | 1.94d → 2.25d |  |  |
| 2685 | 14th Floor | 2027-07-05 → 2027-08-13 (+39d) | 2027-07-07 → 2027-08-14 (+38d) | 1.94d → 2.25d |  |  |
| 2686 | 15th Floor | 2027-07-07 → 2027-08-15 (+39d) | 2027-07-09 → 2027-08-16 (+38d) | 1.94d → 2.25d |  |  |
| 2687 | 16th Floor | 2027-07-09 → 2027-08-17 (+39d) | 2027-07-11 → 2027-08-18 (+38d) | 1.94d → 2.25d |  |  |
| 2688 | 17th Floor | 2027-07-11 → 2027-08-19 (+39d) | 2027-07-13 → 2027-08-20 (+38d) | 1.94d → 2.25d |  |  |
| 2689 | 18th Floor | 2027-07-13 → 2027-08-21 (+39d) | 2027-07-15 → 2027-08-22 (+38d) | 1.94d → 2.25d |  |  |
| 2690 | 19th Floor | 2027-07-15 → 2027-08-23 (+39d) | 2027-07-17 → 2027-08-24 (+38d) | 1.94d → 2.25d |  |  |
| 2691 | 20th Floor | 2027-07-17 → 2027-08-25 (+39d) | 2027-07-19 → 2027-08-26 (+38d) | 1.94d → 2.25d |  |  |
| 2692 | 21st Floor | 2027-07-19 → 2027-08-27 (+39d) | 2027-07-21 → 2027-08-28 (+38d) | 1.94d → 2.25d |  |  |
| 2693 | 22nd Floor | 2027-07-21 → 2027-08-29 (+39d) | 2027-07-23 → 2027-08-30 (+38d) | 1.94d → 2.25d |  |  |
| 2694 | 23rd Floor | 2027-07-23 → 2027-08-31 (+39d) | 2027-07-25 → 2027-09-01 (+38d) | 1.94d → 2.25d |  |  |
| 2695 | 24th Floor | 2027-07-25 → 2027-09-02 (+39d) | 2027-07-27 → 2027-09-03 (+38d) | 1.94d → 2.25d |  |  |
| 2696 | 25th Floor | 2027-07-27 → 2027-09-04 (+39d) | 2027-07-28 → 2027-09-05 (+39d) | 1.94d → 2.25d |  |  |
| 2697 | 26th Floor | 2027-07-29 → 2027-09-06 (+39d) | 2027-07-30 → 2027-09-07 (+39d) | 1.94d → 2.25d |  |  |
| 2698 | 27th Floor | 2027-07-30 → 2027-09-08 (+40d) | 2027-08-01 → 2027-09-09 (+39d) | 1.94d → 2.25d |  |  |
| 2699 | 28th Floor | 2027-08-01 → 2027-09-10 (+40d) | 2027-08-03 → 2027-09-11 (+39d) | 1.94d → 2.25d |  |  |
| 2700 | 29th Floor | 2027-08-03 → 2027-09-12 (+40d) | 2027-08-05 → 2027-09-13 (+39d) | 1.94d → 2.25d |  |  |
| 2701 | 30th Floor | 2027-08-05 → 2027-09-14 (+40d) | 2027-08-07 → 2027-09-15 (+39d) | 1.94d → 2.25d |  |  |
| 2702 | 31st Floor | 2027-08-07 → 2027-09-16 (+40d) | 2027-08-07 → 2027-09-17 (+41d) | 0d → 2.25d |  |  |
| 2703 | 32nd Floor | 2027-08-07 → 2027-09-18 (+42d) | 2027-08-07 → 2027-09-19 (+43d) | 0d → 2.25d |  |  |
| 2704 | 33rd Floor | 2027-08-07 → 2027-09-20 (+44d) | 2027-08-07 → 2027-09-21 (+45d) | 0d → 2.25d |  |  |
| 2705 | 34th Floor | 2027-08-07 → 2027-09-22 (+46d) | 2027-08-07 → 2027-09-23 (+47d) | 0d → 2.25d |  |  |
| 2706 | 35th Floor | 2027-08-07 → 2027-09-24 (+48d) | 2027-08-07 → 2027-09-25 (+49d) | 0d → 2.25d |  |  |
| 2707 | **MEP work** | 2026-01-31 → 2026-12-24 (+327d) | 2027-12-10 → 2028-04-23 (+135d) | 633.12d → 497.25d |  | constraint start no earlier than 2026-01-31 → start no earlier than 2026-12-24 |
| 2708 | **Electrical work** | 2026-09-14 → 2026-12-24 (+101d) | 2027-06-20 → 2027-08-20 (+61d) | 233.25d → 270d |  | constraint start no earlier than 2026-09-14 → start no earlier than 2026-12-24 |
| 2709 | Cable Tray | 2026-09-14 → 2026-12-24 (+101d) | 2027-01-27 → 2027-03-23 (+55d) | 89.94d → 101.25d | 2768 → 2055 |  |
| 2710 | Cable, main & sub main | 2026-10-24 → 2027-02-07 (+106d) | 2027-02-26 → 2027-04-27 (+60d) | 79.94d → 90d | 2709SS+40d → 2709SS+50.62d |  |
| 2711 | LT panel & DB | 2027-01-27 → 2027-03-24 (+56d) | 2027-05-27 → 2027-07-21 (+55d) | 119.94d → 135d |  |  |
| 2712 | Rising main | 2027-03-22 → 2027-05-23 (+62d) | 2027-06-20 → 2027-08-20 (+61d) | 89.94d → 101.25d | 2709FS+53.38d → 2709FS+67.5d |  |
| 2713 | EARTHING Works | 2027-02-10 → 2027-04-08 (+57d) | 2027-04-11 → 2027-06-06 (+56d) | 59.94d → 67.5d | 2709FS+13.38d → 2709FS+16.88d |  |
| 2714 | Advance lightening protection | 2026-10-23 → 2027-02-02 (+102d) | 2027-02-05 → 2027-04-02 (+56d) | 59.94d → 67.5d |  |  |
| 2715 | Inverter | 2027-04-11 → 2027-06-07 (+57d) | 2027-05-15 → 2027-07-11 (+57d) | 34.94d → 39.38d |  |  |
| 2716 | Energy meter | 2027-02-26 → 2027-04-28 (+61d) | 2027-04-27 → 2027-06-26 (+60d) | 59.94d → 67.5d |  |  |
| 2717 | Exhast fan | 2027-01-20 → 2027-04-22 (+92d) | 2027-03-20 → 2027-06-20 (+92d) | 60d → 67.5d | 1733FF+4.5d → 2650FF+5.62d |  |
| 2718 | FTTH | 2027-04-02 → 2027-05-28 (+56d) | 2027-05-31 → 2027-07-26 (+56d) | 59.94d → 67.5d | 2713FS-9d → 2713FS-11.25d |  |
| 2719 | Security System - FA & PA | 2027-04-07 → 2027-06-02 (+56d) | 2027-05-31 → 2027-07-26 (+56d) | 54.94d → 61.88d |  |  |
| 2720 | Solar water heater | 2026-10-23 → 2027-02-02 (+102d) | 2027-02-05 → 2027-04-02 (+56d) | 59.94d → 67.5d |  |  |
| 2721 | **Plumbing wrok** | 2026-02-26 → 2026-12-24 (+301d) | 2027-07-05 → 2027-08-20 (+46d) | 448.75d → 270d |  | constraint start no earlier than 2026-02-26 → start no earlier than 2026-12-24 |
| 2722 | Terrace looping | 2026-09-13 → 2026-12-24 (+102d) | 2026-10-28 → 2027-02-06 (+101d) | 44.94d → 50.62d |  |  |
| 2723 | Shaft Plumbing | 2026-10-28 → 2027-02-07 (+102d) | 2027-04-11 → 2027-06-06 (+56d) | 119.94d → 135d |  |  |
| 2724 | CP sanitary fixture supply | 2027-04-21 → 2027-05-24 (+33d) | 2027-07-05 → 2027-08-06 (+32d) | 74.94d → 84.38d | 2597, 2600FS+53.38d → 2645, 2648FS+67.5d |  |
| 2725 | Cold & flushing water supply | 2026-02-26 → 2027-05-03 (+431d) | 2026-05-27 → 2027-07-31 (+430d) | 89.94d → 101.25d | 3018SS+80d → 2661SS+101.25d |  |
| 2726 | Misc work | 2026-05-18 → 2027-07-22 (+430d) | 2026-06-17 → 2027-08-20 (+429d) | 29.94d → 33.75d | 2725FS-9d → 2725FS-11.25d |  |
| 2727 | **Fire fighting work** | 2026-01-31 → 2026-12-24 (+327d) | 2027-02-25 → 2027-10-29 (+246d) | 345.06d → 348.75d |  | constraint start no earlier than 2026-01-31 → start no earlier than 2026-12-24 |
| 2728 | Fire hydrant work | 2026-01-31 → 2027-04-03 (+427d) | 2026-04-30 → 2027-07-01 (+427d) | 89.94d → 101.25d | 3018SS+53.38d → 2661SS+67.5d |  |
| 2729 | Sprinkler & piping work | 2026-05-27 → 2027-08-01 (+431d) | 2026-08-23 → 2027-10-29 (+432d) | 88d → 101.25d | 2728FS+26.75d → 2728FS+33.75d |  |
| 2730 | Shaft Downtake works | 2026-09-13 → 2026-12-24 (+102d) | 2027-01-26 → 2027-03-23 (+56d) | 89.94d → 101.25d |  |  |
| 2731 | Connection to pump room | 2027-01-26 → 2027-03-24 (+57d) | 2027-02-25 → 2027-04-22 (+56d) | 29.94d → 33.75d |  |  |
| 2732 | **Lift work** | 2026-09-14 → 2026-12-24 (+101d) | 2027-04-17 → 2027-06-11 (+55d) | 169.81d → 191.25d |  | constraint start no earlier than 2026-09-14 → start no earlier than 2026-12-24 |

| ID | Task | Start | Finish | Duration | Complete | Predecessors | Other |
| --- | --- | --- | --- | --- | --- | --- | --- |
| 2733 | Lift Shaft Handover | 2026-09-14 → 2026-12-24 (+101d) | 2026-10-24 → 2027-02-01 (+100d) | 39.94d → 45d |  | 2768 → 2055 |  |
| 2734 | Lift installation work | 2026-10-24 → 2027-02-02 (+101d) | 2027-01-22 → 2027-03-18 (+55d) | 44.94d → 50.62d |  |  |  |
| 2735 | Lift testing and commissioning | 2027-01-22 → 2027-03-19 (+56d) | 2027-04-17 → 2027-06-11 (+55d) | 84.94d → 95.62d |  |  |  |
| 2736 | **AC work** | 2027-09-04 → 2028-01-15 (+133d) | 2027-12-10 → 2028-04-23 (+135d) | 96.94d → 112.5d |  |  | constraint start no earlier than 2027-09-04 → start no earlier than 2028-01-15 |
| 2737 | Split AC | 2027-09-04 → 2028-01-15 (+133d) | 2027-12-10 → 2028-04-23 (+135d) | 96.94d → 112.5d |  | 2753FS-26.75d → 2753FS-33.75d |  |
| 2738 | **Tower Completion** | 2026-10-28 → 2027-01-19 (+83d) | 2027-08-09 → 2027-10-15 (+67d) | 239.88d → 303.75d |  |  | constraint start no earlier than 2026-10-28 → start no earlier than 2027-01-19 |
| 2739 | SURFACE PREPARATION | 2026-10-28 → 2027-01-19 (+83d) | 2027-03-02 → 2027-04-08 (+37d) | 79.94d → 90d |  | 2093FS+1.88d → 2093FS+2.25d |  |
| 2740 | External Painting | 2027-03-02 → 2027-04-09 (+38d) | 2027-06-10 → 2027-07-17 (+37d) | 99.94d → 112.5d |  |  |  |
| 2741 | Final coat of painting | 2027-06-10 → 2027-07-18 (+38d) | 2027-08-09 → 2027-10-15 (+67d) | 60d → 101.25d |  |  |  |
| 2742 | Misc. work | 2027-06-10 → 2027-07-18 (+38d) | 2027-08-09 → 2027-09-15 (+37d) | 59.94d → 67.5d |  |  |  |
| 2743 | **Basement lobby** | 2026-04-23 → 2027-06-15 (+418d) | 2026-06-22 → 2027-08-14 (+418d) | 60d → 67.5d |  |  | constraint start no earlier than 2026-04-23 → start no earlier than 2027-06-15 |
| 2744 | Basement lobby | 2026-04-23 → 2027-06-15 (+418d) | 2026-06-22 → 2027-08-14 (+418d) | 60d → 67.5d |  |  |  |
| 2745 | **Post OC activities** | 2027-04-17 → 2027-06-21 (+65d) | 2028-02-28 → 2028-07-12 (+135d) | 316.25d → 385.88d |  |  | constraint start no earlier than 2027-04-17 → start no earlier than 2027-06-21 |
| 2746 | Wardrobe installation | 2027-09-04 → 2028-01-15 (+133d) | 2028-02-28 → 2028-07-12 (+135d) | 176.94d → 202.5d |  | 2753FS-26.75d → 2753FS-33.75d |  |
| 2747 | CP & SANITARYWARE | 2027-09-04 → 2028-01-15 (+133d) | 2027-12-30 → 2028-05-13 (+135d) | 116.94d → 135d |  | 2753FS-26.75d, 2724 → 2753FS-33.75d, 2724 |  |
| 2748 | Wooden Flooring | 2027-09-04 → 2028-01-15 (+133d) | 2028-02-28 → 2028-07-12 (+135d) | 176.94d → 202.5d |  | 2753FS-26.75d → 2753FS-33.75d |  |
| 2749 | Electrical Fixtures And Fittings | 2027-04-17 → 2027-06-21 (+65d) | 2027-07-01 → 2027-10-18 (+109d) | 74.94d → 135d |  | 2605 → 2653 |  |
| 2750 | Modular Kitchen | 2027-09-04 → 2028-01-15 (+133d) | 2028-02-28 → 2028-07-12 (+135d) | 176.94d → 202.5d |  |  |  |
| 2751 | Final Coat Paint | 2027-09-17 → 2028-01-30 (+135d) | 2027-12-16 → 2028-04-28 (+134d) | 89.94d → 101.25d |  | 2753FS-13.38d, 2670 → 2753FS-16.88d, 2670 |  |
| 2752 | OC Application/Readiness | 2027-08-07 → 2027-10-30 (+84d) | 2027-08-07 → 2027-10-30 (+84d) | 0d → 1.12d |  | 2768, 2662FS+7.12d, 1867, 1868, 2053, 2665, 2607, 2706, 2711, 2712, 2714, 2715, 2716, 3634, 2719, 2720, 2723, 2726, 2729, 2731, 2735 → 2055, 2662FS+9d, 1867, 1868, 2053, 2655, 2706, 2711, 2712, 2714, 2715, 2716, 2717, 2719, 2720, 2723, 2726, 2731, 2729, 2735, 2741, 2742, 2744 |  |
| 2753 | OC Receipt | 2027-09-30 → 2028-02-13 (+136d) | 2027-09-30 → 2028-02-13 (+136d) | 0.94d → 1.12d |  | 2752FS+53.38d, 2741, 2742 → 2752FS+67.5d |  |
| 2754 | Offer To Possession | 2028-02-28 → 2028-07-13 (+136d) | 2028-03-29 → 2028-08-11 (+135d) | 29.94d → 33.75d |  | 2746, 2747, 2748, 2749, 2750, 2751 → 2746, 2747, 2748, 2749, 2750, 2751, 2737 |  |
| 2755 | **Tower 2** | 2024-01-10 → 2024-05-14 (+125d) | 2028-04-06 → 2028-11-08 (+216d) | 1428.31d → 1692.44d | 3% → 2% |  | constraint start no earlier than 2024-01-10 → start no earlier than 2024-05-14 |
| 2756 | **Substructure** | 2024-01-10 → 2024-05-14 (+125d) | 2025-10-06 → 2026-02-09 (+126d) | 604.94d → 665.31d | 56% → 39% |  | constraint start no earlier than 2024-01-10 → start no earlier than 2024-05-14 |
| 2757 | **Soil Bed Preparation** | 2024-01-10 → 2024-05-14 (+125d) | 2025-05-30 → 2025-08-23 (+85d) | 476.44d → 524.69d | 78% → 79% |  | constraint start no earlier than 2024-01-10 → start no earlier than 2024-05-14 |
| 2758 | Test Piling | 2024-02-01 → 2024-05-14 (+103d) | 2024-02-25 → 2024-08-14 (+171d) | 24.94d → 104.44d |  | none → 7SS | constraint start no earlier than 2024-02-01 → start no earlier than 2024-05-14 |
| 2759 | Excavation | 2024-01-10 → 2024-06-26 (+168d) | 2024-02-08 → 2024-07-25 (+168d) | 29.94d → 33.56d |  | 7SS+36.74d → 2758SS+43d | constraint start no earlier than 2024-01-10 → start no earlier than 2024-06-26 |
| 2760 | Main Piling Work | 2024-04-12 → 2024-09-04 (+145d) | 2024-10-11 → 2025-04-05 (+176d) | 169.06d → 185.62d | 100% → 97% | 7FS-12.45d → 2758FS+20d | constraint start no earlier than 2024-04-12 → start no earlier than 2024-09-04 |
| 2761 | Anti-termite | 2025-04-01 → 2025-04-02 (+1d) | 2025-04-05 → 2025-04-07 (+2d) | 4.94d → 5.62d |  | 2759FS-14.7d, 2760FS+1.94d → 2760FF+2d, 2759 |  |
| 2762 | PCC | 2024-10-18 → 2025-04-04 (+168d) | 2024-10-27 → 2025-04-09 (+164d) | 9.69d → 5.62d | 100% → 0% | 2761SS+21.89d → 2761SS+2.25d | constraint start no earlier than 2024-10-18 → none |
| 2763 | Backfilling | 2025-04-01 → 2025-06-24 (+84d) | 2025-05-30 → 2025-08-23 (+85d) | 59.94d → 67.5d |  | 2792FS-8d → 2776 |  |
| 2764 | **RCC Structure** | 2024-12-16 → 2025-04-09 (+114d) | 2025-05-05 → 2025-07-19 (+75d) | 140.94d → 113.62d | 76% → 0% |  | constraint start no earlier than 2024-12-16 → start no earlier than 2025-04-09 |
| 2765 | **Raft Foundation** | 2024-12-16 → 2025-04-09 (+114d) | 2025-01-16 → 2025-05-05 (+109d) | 32d → 29.25d | 100% → 0% |  | constraint start no earlier than 2024-12-16 → start no earlier than 2025-04-09 |
| 2766 | Reinforcement | 2024-12-16 → 2025-04-09 (+114d) | 2025-01-11 → 2025-04-26 (+105d) | 26d → 19.12d | 100% → 0% | 2762SS+5d → 2762 | constraint start no earlier than 2024-12-16 → none |
| 2767 | Formwork | 2024-12-24 → 2025-04-21 (+118d) | 2025-01-13 → 2025-05-03 (+110d) | 21d → 13.5d | 100% → 0% | 2766FF → 2766FF+7.88d | constraint start no earlier than 2024-12-24 → none |
| 2768 | Concreting | 2026-09-11 → 2025-05-03 (-496d) | 2026-09-14 → 2025-05-05 (-497d) | 2.94d → 2.25d |  | 2054 → 2767 |  |
| 2769 | **Basement 1 Slab** | 2025-01-17 → 2025-05-05 (+108d) | 2025-02-25 → 2025-05-30 (+94d) | 40d → 28.12d | 100% → 0% |  | constraint start no earlier than 2025-01-17 → start no earlier than 2025-05-05 |
| 2770 | Reinforcement | 2025-01-17 → 2025-05-05 (+108d) | 2025-02-20 → 2025-05-25 (+94d) | 21d → 22.5d | 100% → 0% | 2776 → 2768 | constraint start no earlier than 2025-01-17 → none |
| 2771 | Formwork | 2025-10-11 → 2025-05-06 (-158d) | 2025-10-18 → 2025-05-26 (-145d) | 7d → 22.5d |  | 2854SS+1d → 2770SS+1.12d |  |
| 2772 | Concreting | 2025-10-18 → 2025-05-26 (-145d) | 2025-10-19 → 2025-05-30 (-142d) | 1d → 4.5d |  |  |  |
| 2773 | **Basement 2 Slab/GF** | 2025-02-13 → 2025-05-30 (+106d) | 2025-03-09 → 2025-06-24 (+107d) | 25d → 28.12d | 100% → 0% |  | constraint start no earlier than 2025-02-13 → start no earlier than 2025-05-30 |
| 2774 | Reinforcement | 2025-10-20 → 2025-05-30 (-143d) | 2025-10-28 → 2025-06-19 (-131d) | 8d → 22.5d |  | 2772FS+1d → 2772 |  |
| 2775 | Formwork | 2025-01-20 → 2025-05-31 (+131d) | 2025-02-24 → 2025-06-20 (+116d) | 21d → 22.5d | 100% → 0% | 2770SS+3d → 2774SS+1.12d | constraint start no earlier than 2025-01-20 → none |
| 2776 | Concreting | 2025-01-13 → 2025-06-20 (+158d) | 2025-01-16 → 2025-06-24 (+159d) | 4d → 4.5d | 100% → 0% | 2767FS+2d → 2775 | constraint start no earlier than 2025-01-13 → none |
| 2778 | Reinforcement | 2025-02-13 → 2025-06-24 (+131d) | 2025-03-06 → 2025-07-14 (+130d) | 16d → 22.5d | 100% → 0% | 2780 → 2776 | constraint start no earlier than 2025-02-13 → none |
| 2779 | Formwork | 2025-02-17 → 2025-06-25 (+128d) | 2025-03-07 → 2025-07-15 (+130d) | 14d → 22.5d | 100% → 0% | 2778SS+3d → 2778SS+1.12d | constraint start no earlier than 2025-02-17 → none |
| 2780 | Concreting | 2025-02-25 → 2025-07-15 (+140d) | 2025-02-25 → 2025-07-19 (+144d) | 1d → 4.5d | 100% → 0% | 2775 → 2779 | constraint start no earlier than 2025-02-25 → none |
| 2781 | **Substructure Finishing** | 2025-05-29 → 2025-08-18 (+81d) | 2025-10-06 → 2026-02-09 (+126d) | 129.81d → 146.25d |  |  | constraint start no earlier than 2025-05-29 → start no earlier than 2025-08-18 |
| 2782 | Masonary work | 2025-05-29 → 2025-08-18 (+81d) | 2025-07-13 → 2025-10-02 (+81d) | 44.94d → 50.62d |  | 2797FS+26.75d → 2780FS+33.75d |  |
| 2783 | Plaster | 2025-07-13 → 2025-10-02 (+81d) | 2025-08-22 → 2025-12-26 (+126d) | 39.94d → 45d |  |  |  |
| 2784 | Structural steel | 2025-06-25 → 2025-09-17 (+84d) | 2025-08-24 → 2025-12-31 (+129d) | 59.94d → 67.5d |  | 2797FS+53.38d → 2780FS+67.5d |  |
| 2785 | White Wash | 2025-08-22 → 2025-12-26 (+126d) | 2025-10-06 → 2026-02-09 (+126d) | 44.94d → 50.62d |  |  |  |
| 2786 | **Superstructure** | 2025-05-05 → 2025-07-19 (+75d) | 2027-08-07 → 2027-10-25 (+79d) | 733.56d → 830.25d |  |  | constraint start no earlier than 2025-05-05 → start no earlier than 2025-07-19 |
| 2787 | **RCC structure** | 2025-05-05 → 2025-07-19 (+75d) | 2026-09-04 → 2027-01-03 (+121d) | 442d → 498.38d |  |  | constraint start no earlier than 2025-05-05 → start no earlier than 2025-07-19 |
| 2788 | **1st floor slab** | 2025-05-05 → 2025-07-19 (+75d) | 2025-05-29 → 2025-08-13 (+76d) | 24d → 28.12d |  |  | constraint start no earlier than 2025-05-05 → start no earlier than 2025-07-19 |
| 2789 | Reinforcement | 2025-03-01 → 2025-07-19 (+140d) | 2025-05-05 → 2025-08-10 (+97d) | 42.94d → 24.75d | 55% → 0% | 2792FS-8d → 2780 | constraint start no earlier than 2025-03-01 → none |
| 2790 | Wall conduiting | 2025-05-08 → 2025-07-22 (+75d) | 2025-05-12 → 2025-07-25 (+74d) | 4d → 3.38d |  | 2794SS+2.75d → 2789SS+3.38d |  |
| 2791 | Formwork | 2025-03-04 → 2025-07-22 (+140d) | 2025-05-04 → 2025-08-12 (+100d) | 39.94d → 23.62d | 45% → 0% | 2789SS+3d → 2789SS+3.38d | constraint start no earlier than 2025-03-04 → none |
| 2792 | Concreting | 2025-03-01 → 2025-08-12 (+164d) | 2025-03-09 → 2025-08-13 (+157d) | 3d → 1.12d | 100% → 0% | 2779FS-6d → 2791 | constraint start no earlier than 2025-03-01 → none |
| 2793 | **2nd floor slab** | 2025-06-01 → 2025-08-13 (+73d) | 2025-06-22 → 2025-09-03 (+73d) | 21d → 23.62d |  |  | constraint start no earlier than 2025-06-01 → start no earlier than 2025-08-13 |
| 2794 | Reinforcement | 2025-05-05 → 2025-08-13 (+100d) | 2025-05-25 → 2025-08-31 (+98d) | 20d → 20.25d |  | 2797FS+2.75d → 2792 |  |
| 2795 | Wall conduiting | 2025-06-04 → 2025-08-15 (+72d) | 2025-06-08 → 2025-08-18 (+71d) | 4d → 3.38d |  | 2790, 2799SS+2.75d → 2790FS+0.25d, 2794SS+2.25d |  |
| 2796 | Formwork | 2025-05-08 → 2025-08-16 (+100d) | 2025-05-28 → 2025-09-02 (+97d) | 20d → 19.12d |  | 2794SS+3d → 2794SS+3.38d |  |
| 2797 | Concreting | 2025-04-22 → 2025-09-02 (+133d) | 2025-05-02 → 2025-09-03 (+124d) | 9.94d → 1.12d |  | 2791 → 2796 |  |
| 2798 | **3rd floor slab** | 2025-06-23 → 2025-09-03 (+72d) | 2025-07-08 → 2025-09-18 (+72d) | 15d → 16.88d |  |  | constraint start no earlier than 2025-06-23 → start no earlier than 2025-09-03 |
| 2799 | Reinforcement | 2025-06-01 → 2025-09-03 (+94d) | 2025-06-21 → 2025-09-14 (+85d) | 20d → 12.38d |  | 2802FS+2.75d → 2797 |  |
| 2800 | Wall conduiting | 2025-06-26 → 2025-09-06 (+72d) | 2025-06-29 → 2025-09-09 (+72d) | 3d → 3.38d |  | 2795, 2804SS+2.75d → 2795, 2799SS+3.38d |  |
| 2801 | Formwork | 2025-06-01 → 2025-09-07 (+98d) | 2025-06-21 → 2025-09-17 (+88d) | 20d → 11.25d |  | 2799SS → 2799SS+4.5d |  |
| 2802 | Concreting | 2025-05-28 → 2025-09-17 (+112d) | 2025-05-29 → 2025-09-18 (+112d) | 1d → 1.12d |  | 2796 → 2801 |  |
| 2803 | **4th floor slab** | 2025-07-09 → 2025-09-18 (+71d) | 2025-07-18 → 2025-09-27 (+71d) | 9d → 10.12d |  |  | constraint start no earlier than 2025-07-09 → start no earlier than 2025-09-18 |

| ID | Task | Start | Finish | Duration | Predecessors | Other |
| --- | --- | --- | --- | --- | --- | --- |
| 2804 | Reinforcement | 2025-06-23 → 2025-09-18 (+87d) | 2025-07-04 → 2025-09-25 (+83d) | 11d → 7.88d | 2807FS+1d → 2802 |  |
| 2805 | Wall conduiting | 2025-07-10 → 2025-09-19 (+71d) | 2025-07-13 → 2025-09-21 (+70d) | 3d → 2.25d | 2800, 2809SS+1d → 2800, 2804SS+1.12d |  |
| 2806 | Formwork | 2025-06-23 → 2025-09-20 (+89d) | 2025-07-07 → 2025-09-26 (+81d) | 14d → 6.75d | 2804SS → 2804SS+2.25d |  |
| 2807 | Concreting | 2025-06-21 → 2025-09-26 (+97d) | 2025-06-22 → 2025-09-27 (+97d) | 1d → 1.12d | 2801 → 2806 |  |
| 2808 | **5th floor slab** | 2025-07-19 → 2025-09-27 (+70d) | 2025-07-28 → 2025-10-06 (+70d) | 9d → 10.12d |  | constraint start no earlier than 2025-07-19 → start no earlier than 2025-09-27 |
| 2809 | Reinforcement | 2025-07-09 → 2025-09-27 (+80d) | 2025-07-17 → 2025-10-04 (+79d) | 8d → 7.88d | 2812FS+1d → 2807 |  |
| 2810 | Wall conduiting | 2025-07-20 → 2025-09-28 (+70d) | 2025-07-23 → 2025-09-30 (+69d) | 3d → 2.25d | 2805, 2814SS+1d → 2805, 2809SS+1.12d |  |
| 2811 | Formwork | 2025-07-10 → 2025-09-29 (+81d) | 2025-07-17 → 2025-10-05 (+80d) | 7d → 6.75d | 2809SS+1d → 2809SS+2.25d |  |
| 2812 | Concreting | 2025-07-07 → 2025-10-05 (+90d) | 2025-07-08 → 2025-10-06 (+90d) | 1d → 1.12d | 2806 → 2811 |  |
| 2813 | **6th floor slab** | 2025-07-29 → 2025-10-06 (+69d) | 2025-08-07 → 2025-10-15 (+69d) | 9d → 10.12d |  | constraint start no earlier than 2025-07-29 → start no earlier than 2025-10-06 |
| 2814 | Reinforcement | 2025-07-19 → 2025-10-06 (+79d) | 2025-07-27 → 2025-10-13 (+78d) | 8d → 7.88d | 2817FS+1d → 2812 |  |
| 2815 | Wall conduiting | 2025-07-30 → 2025-10-07 (+69d) | 2025-08-02 → 2025-10-09 (+68d) | 3d → 2.25d | 2810, 2819SS+1d → 2810, 2814SS+1.12d |  |
| 2816 | Formwork | 2025-07-20 → 2025-10-08 (+80d) | 2025-07-27 → 2025-10-14 (+79d) | 7d → 6.75d | 2814SS+1d → 2814SS+2.25d |  |
| 2817 | Concreting | 2025-07-17 → 2025-10-14 (+89d) | 2025-07-18 → 2025-10-15 (+89d) | 1d → 1.12d | 2811 → 2816 |  |
| 2818 | **7th floor slab** | 2025-08-08 → 2025-10-15 (+68d) | 2025-08-17 → 2025-10-24 (+68d) | 9d → 10.12d |  | constraint start no earlier than 2025-08-08 → start no earlier than 2025-10-15 |
| 2819 | Reinforcement | 2025-07-29 → 2025-10-15 (+78d) | 2025-08-06 → 2025-10-22 (+77d) | 8d → 7.88d | 2822FS+1d → 2817 |  |
| 2820 | Wall conduiting | 2025-08-09 → 2025-10-16 (+68d) | 2025-08-12 → 2025-10-18 (+67d) | 3d → 2.25d | 2815, 2824SS+1d → 2815, 2819SS+1.12d |  |
| 2821 | Formwork | 2025-07-30 → 2025-10-17 (+79d) | 2025-08-06 → 2025-10-23 (+78d) | 7d → 6.75d | 2819SS+1d → 2819SS+2.25d |  |
| 2822 | Concreting | 2025-07-27 → 2025-10-23 (+88d) | 2025-07-28 → 2025-10-24 (+88d) | 1d → 1.12d | 2816 → 2821 |  |
| 2823 | **8th floor slab** | 2025-08-18 → 2025-10-24 (+67d) | 2025-08-30 → 2025-12-20 (+112d) | 12d → 13.5d |  | constraint start no earlier than 2025-08-18 → start no earlier than 2025-10-24 |
| 2824 | Reinforcement | 2025-08-08 → 2025-10-24 (+77d) | 2025-08-16 → 2025-12-18 (+124d) | 8d → 11.25d | 2827FS+1d → 2822 |  |
| 2825 | Wall conduiting | 2025-08-19 → 2025-10-25 (+67d) | 2025-08-22 → 2025-10-27 (+66d) | 3d → 2.25d | 2820, 2829SS+1d → 2820, 2824SS+1.12d |  |
| 2826 | Formwork | 2025-08-09 → 2025-10-26 (+78d) | 2025-08-16 → 2025-12-19 (+125d) | 7d → 10.12d | 2824SS+1d → 2824SS+2.25d |  |
| 2827 | Concreting | 2025-08-06 → 2025-12-19 (+135d) | 2025-08-07 → 2025-12-20 (+135d) | 1d → 1.12d | 2821 → 2826 |  |
| 2828 | **9th floor slab** | 2025-08-31 → 2025-12-20 (+111d) | 2025-09-09 → 2025-12-29 (+111d) | 9d → 10.12d |  | constraint start no earlier than 2025-08-31 → start no earlier than 2025-12-20 |
| 2829 | Reinforcement | 2025-08-18 → 2025-12-20 (+124d) | 2025-08-28 → 2025-12-27 (+121d) | 10d → 7.88d | 2832FS+1d → 2827 |  |
| 2830 | Wall conduiting | 2025-09-01 → 2025-12-21 (+111d) | 2025-09-04 → 2025-12-23 (+110d) | 3d → 2.25d | 2825, 2834SS+1d → 2825, 2829SS+1.12d |  |
| 2831 | Formwork | 2025-08-19 → 2025-12-22 (+125d) | 2025-08-29 → 2025-12-28 (+121d) | 10d → 6.75d | 2829SS+1d → 2829SS+2.25d |  |
| 2832 | Concreting | 2025-08-16 → 2025-12-28 (+134d) | 2025-08-17 → 2025-12-29 (+134d) | 1d → 1.12d | 2826 → 2831 |  |
| 2833 | **10th floor slab** | 2025-09-10 → 2025-12-29 (+110d) | 2025-09-19 → 2026-01-07 (+110d) | 9d → 10.12d |  | constraint start no earlier than 2025-09-10 → start no earlier than 2025-12-29 |
| 2834 | Reinforcement | 2025-08-31 → 2025-12-29 (+120d) | 2025-09-08 → 2026-01-05 (+119d) | 8d → 7.88d | 2837FS+1d → 2832 |  |
| 2835 | Wall conduiting | 2025-09-11 → 2025-12-30 (+110d) | 2025-09-14 → 2026-01-01 (+109d) | 3d → 2.25d | 2830, 2839SS+1d → 2830, 2834SS+1.12d |  |
| 2836 | Formwork | 2025-09-01 → 2025-12-31 (+121d) | 2025-09-08 → 2026-01-06 (+120d) | 7d → 6.75d | 2834SS+1d → 2834SS+2.25d |  |
| 2837 | Concreting | 2025-08-29 → 2026-01-06 (+130d) | 2025-08-30 → 2026-01-07 (+130d) | 1d → 1.12d | 2831 → 2836 |  |
| 2838 | **11th floor slab** | 2025-09-20 → 2026-01-07 (+109d) | 2025-09-29 → 2026-01-16 (+109d) | 9d → 10.12d |  | constraint start no earlier than 2025-09-20 → start no earlier than 2026-01-07 |
| 2839 | Reinforcement | 2025-09-10 → 2026-01-07 (+119d) | 2025-09-18 → 2026-01-14 (+118d) | 8d → 7.88d | 2842FS+1d → 2837 |  |
| 2840 | Wall conduiting | 2025-09-21 → 2026-01-08 (+109d) | 2025-09-24 → 2026-01-10 (+108d) | 3d → 2.25d | 2835, 2844SS+1d → 2835, 2839SS+1.12d |  |
| 2841 | Formwork | 2025-09-11 → 2026-01-09 (+120d) | 2025-09-18 → 2026-01-15 (+119d) | 7d → 6.75d | 2839SS+1d → 2839SS+2.25d |  |
| 2842 | Concreting | 2025-09-08 → 2026-01-15 (+129d) | 2025-09-09 → 2026-01-16 (+129d) | 1d → 1.12d | 2836 → 2841 |  |
| 2843 | **12th floor slab** | 2025-09-30 → 2026-01-16 (+108d) | 2025-10-09 → 2026-01-25 (+108d) | 9d → 10.12d |  | constraint start no earlier than 2025-09-30 → start no earlier than 2026-01-16 |
| 2844 | Reinforcement | 2025-09-20 → 2026-01-16 (+118d) | 2025-09-28 → 2026-01-23 (+117d) | 8d → 7.88d | 2847FS+1d → 2842 |  |
| 2845 | Wall conduiting | 2025-10-01 → 2026-01-17 (+108d) | 2025-10-04 → 2026-01-19 (+107d) | 3d → 2.25d | 2840, 2849SS+1d → 2840, 2844SS+1.12d |  |
| 2846 | Formwork | 2025-09-21 → 2026-01-18 (+119d) | 2025-09-28 → 2026-01-24 (+118d) | 7d → 6.75d | 2844SS+1d → 2844SS+2.25d |  |
| 2847 | Concreting | 2025-09-18 → 2026-01-24 (+128d) | 2025-09-19 → 2026-01-25 (+128d) | 1d → 1.12d | 2841 → 2846 |  |
| 2848 | **13th floor slab** | 2025-10-10 → 2026-01-25 (+107d) | 2025-10-19 → 2026-02-03 (+107d) | 9d → 10.12d |  | constraint start no earlier than 2025-10-10 → start no earlier than 2026-01-25 |
| 2849 | Reinforcement | 2025-09-30 → 2026-01-25 (+117d) | 2025-10-08 → 2026-02-01 (+116d) | 8d → 7.88d | 2852FS+1d → 2847 |  |
| 2850 | Wall conduiting | 2025-10-11 → 2026-01-26 (+107d) | 2025-10-14 → 2026-01-28 (+106d) | 3d → 2.25d | 2845, 2854SS+1d → 2845, 2849SS+1.12d |  |
| 2851 | Formwork | 2025-10-01 → 2026-01-27 (+118d) | 2025-10-08 → 2026-02-02 (+117d) | 7d → 6.75d | 2849SS+1d → 2849SS+2.25d |  |
| 2852 | Concreting | 2025-09-28 → 2026-02-02 (+127d) | 2025-09-29 → 2026-02-03 (+127d) | 1d → 1.12d | 2846 → 2851 |  |
| 2853 | **14th floor slab** | 2025-10-20 → 2026-02-03 (+106d) | 2025-10-29 → 2026-02-12 (+106d) | 9d → 10.12d |  | constraint start no earlier than 2025-10-20 → start no earlier than 2026-02-03 |
| 2854 | Reinforcement | 2025-10-10 → 2026-02-03 (+116d) | 2025-10-18 → 2026-02-10 (+115d) | 8d → 7.88d | 2857FS+1d → 2852 |  |
| 2855 | Wall conduiting | 2025-10-21 → 2026-02-04 (+106d) | 2025-10-24 → 2026-02-06 (+105d) | 3d → 2.25d | 2850, 2774SS+1d → 2850, 2854SS+1.12d |  |
| 2856 | Formwork | 2025-10-21 → 2026-02-05 (+107d) | 2025-10-28 → 2026-02-11 (+106d) | 7d → 6.75d | 2774SS+1d → 2854SS+2.25d |  |
| 2857 | Concreting | 2025-10-08 → 2026-02-11 (+126d) | 2025-10-09 → 2026-02-12 (+126d) | 1d → 1.12d | 2851 → 2856 |  |
| 2858 | **15th floor slab** | 2025-10-30 → 2026-02-12 (+105d) | 2025-12-23 → 2026-02-21 (+60d) | 9d → 10.12d |  | constraint start no earlier than 2025-10-30 → start no earlier than 2026-02-12 |
| 2859 | Reinforcement | 2025-10-30 → 2026-02-12 (+105d) | 2025-12-22 → 2026-02-19 (+59d) | 8d → 7.88d | 2862FS+1d → 2857 |  |
| 2860 | Wall conduiting | 2025-10-31 → 2026-02-13 (+105d) | 2025-12-18 → 2026-02-15 (+59d) | 3d → 2.25d | 2855, 2859SS+1d → 2855, 2859SS+1.12d |  |
| 2861 | Formwork | 2025-10-31 → 2026-02-14 (+106d) | 2025-12-22 → 2026-02-20 (+60d) | 7d → 6.75d | 2859SS+1d → 2859SS+2.25d |  |
| 2862 | Concreting | 2025-10-28 → 2026-02-20 (+115d) | 2025-10-29 → 2026-02-21 (+115d) | 1d → 1.12d | 2856 → 2861 |  |
| 2863 | **16th floor slab** | 2025-12-24 → 2026-02-21 (+59d) | 2026-01-05 → 2026-03-05 (+59d) | 12d → 13.5d |  | constraint start no earlier than 2025-12-24 → start no earlier than 2026-02-21 |
| 2864 | Reinforcement | 2025-12-24 → 2026-02-21 (+59d) | 2026-01-03 → 2026-03-02 (+58d) | 10d → 10.12d | 2867FS+1d → 2862 |  |
| 2865 | Wall conduiting | 2025-12-25 → 2026-02-22 (+59d) | 2025-12-28 → 2026-02-24 (+58d) | 3d → 2.25d | 2860, 2864SS+1d → 2860, 2864SS+1.12d |  |
| 2866 | Formwork | 2025-12-25 → 2026-02-23 (+60d) | 2026-01-04 → 2026-03-04 (+59d) | 10d → 10.12d | 2864SS+1d → 2864SS+2.25d |  |
| 2867 | Concreting | 2025-12-22 → 2026-03-04 (+72d) | 2025-12-23 → 2026-03-05 (+72d) | 1d → 1.12d | 2861 → 2866 |  |
| 2868 | **17th floor slab** | 2026-01-06 → 2026-03-05 (+58d) | 2026-01-15 → 2026-03-14 (+58d) | 9d → 10.12d |  | constraint start no earlier than 2026-01-06 → start no earlier than 2026-03-05 |
| 2869 | Reinforcement | 2026-01-06 → 2026-03-05 (+58d) | 2026-01-14 → 2026-03-12 (+57d) | 8d → 7.88d | 2872FS+1d → 2867 |  |
| 2870 | Wall conduiting | 2026-01-07 → 2026-03-06 (+58d) | 2026-01-10 → 2026-03-08 (+57d) | 3d → 2.25d | 2865, 2869SS+1d → 2865, 2869SS+1.12d |  |
| 2871 | Formwork | 2026-01-07 → 2026-03-07 (+59d) | 2026-01-14 → 2026-03-13 (+58d) | 7d → 6.75d | 2869SS+1d → 2869SS+2.25d |  |
| 2872 | Concreting | 2026-01-04 → 2026-03-13 (+68d) | 2026-01-05 → 2026-03-14 (+68d) | 1d → 1.12d | 2866 → 2871 |  |
| 2873 | **18th floor slab** | 2026-01-16 → 2026-03-14 (+57d) | 2026-01-25 → 2026-03-23 (+57d) | 9d → 10.12d |  | constraint start no earlier than 2026-01-16 → start no earlier than 2026-03-14 |

| ID | Task | Start | Finish | Duration | Predecessors | Other |
| --- | --- | --- | --- | --- | --- | --- |
| 2874 | Reinforcement | 2026-01-16 → 2026-03-14 (+57d) | 2026-01-24 → 2026-03-21 (+56d) | 8d → 7.88d | 2877FS+1d → 2872 |  |
| 2875 | Wall conduiting | 2026-01-17 → 2026-03-15 (+57d) | 2026-01-20 → 2026-03-17 (+56d) | 3d → 2.25d | 2870, 2874SS+1d → 2870, 2874SS+1.12d |  |
| 2876 | Formwork | 2026-01-17 → 2026-03-16 (+58d) | 2026-01-24 → 2026-03-22 (+57d) | 7d → 6.75d | 2874SS+1d → 2874SS+2.25d |  |
| 2877 | Concreting | 2026-01-14 → 2026-03-22 (+67d) | 2026-01-15 → 2026-03-23 (+67d) | 1d → 1.12d | 2871 → 2876 |  |
| 2878 | **19th floor slab** | 2026-01-26 → 2026-03-23 (+56d) | 2026-02-03 → 2026-03-31 (+56d) | 8d → 9d |  | constraint start no earlier than 2026-01-26 → start no earlier than 2026-03-23 |
| 2879 | Reinforcement | 2026-01-26 → 2026-03-23 (+56d) | 2026-02-02 → 2026-03-30 (+56d) | 7d → 7.88d | 2882FS+1d → 2877 |  |
| 2880 | Wall conduiting | 2026-01-27 → 2026-03-24 (+56d) | 2026-01-30 → 2026-03-26 (+55d) | 3d → 2.25d | 2875, 2879SS+1d → 2875, 2879SS+1.12d |  |
| 2881 | Formwork | 2026-01-27 → 2026-03-24 (+56d) | 2026-02-02 → 2026-03-30 (+56d) | 6d → 6.75d | 2879SS+1d → 2879SS+1.12d |  |
| 2882 | Concreting | 2026-01-24 → 2026-03-30 (+65d) | 2026-01-25 → 2026-03-31 (+65d) | 1d → 1.12d | 2876 → 2881 |  |
| 2883 | **20th floor slab** | 2026-02-04 → 2026-03-31 (+55d) | 2026-02-12 → 2026-04-08 (+55d) | 8d → 9d |  | constraint start no earlier than 2026-02-04 → start no earlier than 2026-03-31 |
| 2884 | Reinforcement | 2026-02-04 → 2026-03-31 (+55d) | 2026-02-11 → 2026-04-07 (+55d) | 7d → 7.88d | 2887FS+1d → 2882 |  |
| 2885 | Wall conduiting | 2026-02-05 → 2026-04-01 (+55d) | 2026-02-08 → 2026-04-03 (+54d) | 3d → 2.25d | 2880, 2884SS+1d → 2880, 2884SS+1.12d |  |
| 2886 | Formwork | 2026-02-05 → 2026-04-01 (+55d) | 2026-02-11 → 2026-04-07 (+55d) | 6d → 6.75d | 2884SS+1d → 2884SS+1.12d |  |
| 2887 | Concreting | 2026-02-02 → 2026-04-07 (+64d) | 2026-02-03 → 2026-04-08 (+64d) | 1d → 1.12d | 2881 → 2886 |  |
| 2888 | **21st floor slab** | 2026-02-13 → 2026-04-08 (+54d) | 2026-02-21 → 2026-04-18 (+56d) | 8d → 11.25d |  | constraint start no earlier than 2026-02-13 → start no earlier than 2026-04-08 |
| 2889 | Reinforcement | 2026-02-13 → 2026-04-08 (+54d) | 2026-02-20 → 2026-04-16 (+55d) | 7d → 9d | 2892FS+1d → 2887 |  |
| 2890 | Wall conduiting | 2026-02-14 → 2026-04-09 (+54d) | 2026-02-17 → 2026-04-11 (+53d) | 3d → 2.25d | 2885, 2889SS+1d → 2885, 2889SS+1.12d |  |
| 2891 | Formwork | 2026-02-14 → 2026-04-10 (+55d) | 2026-02-20 → 2026-04-17 (+56d) | 6d → 7.88d | 2889SS+1d → 2889SS+2.25d |  |
| 2892 | Concreting | 2026-02-11 → 2026-04-17 (+65d) | 2026-02-12 → 2026-04-18 (+65d) | 1d → 1.12d | 2886 → 2891 |  |
| 2893 | **22nd floor slab** | 2026-02-22 → 2026-04-18 (+55d) | 2026-03-02 → 2026-04-28 (+57d) | 8d → 11.25d |  | constraint start no earlier than 2026-02-22 → start no earlier than 2026-04-18 |
| 2894 | Reinforcement | 2026-02-22 → 2026-04-18 (+55d) | 2026-03-01 → 2026-04-26 (+56d) | 7d → 9d | 2897FS+1d → 2892 |  |
| 2895 | Wall conduiting | 2026-02-23 → 2026-04-19 (+55d) | 2026-02-26 → 2026-04-21 (+54d) | 3d → 2.25d | 2890, 2894SS+1d → 2890, 2894SS+1.12d |  |
| 2896 | Formwork | 2026-02-23 → 2026-04-20 (+56d) | 2026-03-01 → 2026-04-27 (+57d) | 6d → 7.88d | 2894SS+1d → 2894SS+2.25d |  |
| 2897 | Concreting | 2026-02-20 → 2026-04-27 (+66d) | 2026-02-21 → 2026-04-28 (+66d) | 1d → 1.12d | 2891 → 2896 |  |
| 2898 | **23rd floor slab** | 2026-03-03 → 2026-04-28 (+56d) | 2026-03-11 → 2026-05-08 (+58d) | 8d → 11.25d |  | constraint start no earlier than 2026-03-03 → start no earlier than 2026-04-28 |
| 2899 | Reinforcement | 2026-03-03 → 2026-04-28 (+56d) | 2026-03-10 → 2026-05-06 (+57d) | 7d → 9d | 2902FS+1d → 2897 |  |
| 2900 | Wall conduiting | 2026-03-04 → 2026-04-29 (+56d) | 2026-03-07 → 2026-05-01 (+55d) | 3d → 2.25d | 2895, 2899SS+1d → 2895, 2899SS+1.12d |  |
| 2901 | Formwork | 2026-03-04 → 2026-04-30 (+57d) | 2026-03-10 → 2026-05-07 (+58d) | 6d → 7.88d | 2899SS+1d → 2899SS+2.25d |  |
| 2902 | Concreting | 2026-03-01 → 2026-05-07 (+67d) | 2026-03-02 → 2026-05-08 (+67d) | 1d → 1.12d | 2896 → 2901 |  |
| 2903 | **24th floor slab** | 2026-03-11 → 2026-05-08 (+58d) | 2026-03-23 → 2026-05-21 (+59d) | 12d → 14.62d |  | constraint start no earlier than 2026-03-11 → start no earlier than 2026-05-08 |
| 2904 | Reinforcement | 2026-03-11 → 2026-05-08 (+58d) | 2026-03-21 → 2026-05-18 (+58d) | 10d → 11.25d | 2907 → 2902 |  |
| 2905 | Wall conduiting | 2026-03-12 → 2026-05-09 (+58d) | 2026-03-15 → 2026-05-11 (+57d) | 3d → 2.25d | 2900, 2904SS+1d → 2900, 2904SS+1.12d |  |
| 2906 | Formwork | 2026-03-12 → 2026-05-10 (+59d) | 2026-03-22 → 2026-05-20 (+59d) | 10d → 11.25d | 2904SS+1d → 2904SS+2.25d |  |
| 2907 | Concreting | 2026-03-10 → 2026-05-20 (+71d) | 2026-03-11 → 2026-05-21 (+71d) | 1d → 1.12d | 2901 → 2906 |  |
| 2908 | **25th floor slab** | 2026-03-24 → 2026-05-21 (+58d) | 2026-04-05 → 2026-06-03 (+59d) | 12d → 14.62d |  | constraint start no earlier than 2026-03-24 → start no earlier than 2026-05-21 |
| 2909 | Reinforcement | 2026-03-24 → 2026-05-21 (+58d) | 2026-04-03 → 2026-05-31 (+58d) | 10d → 11.25d | 2912FS+1d → 2907 |  |
| 2910 | Wall conduiting | 2026-03-25 → 2026-05-22 (+58d) | 2026-03-28 → 2026-05-24 (+57d) | 3d → 2.25d | 2905, 2909SS+1d → 2905, 2909SS+1.12d |  |
| 2911 | Formwork | 2026-03-25 → 2026-05-23 (+59d) | 2026-04-04 → 2026-06-02 (+59d) | 10d → 11.25d | 2909SS+1d → 2909SS+2.25d |  |
| 2912 | Concreting | 2026-03-22 → 2026-06-02 (+72d) | 2026-03-23 → 2026-06-03 (+72d) | 1d → 1.12d | 2906 → 2911 |  |
| 2913 | **26th floor slab** | 2026-04-06 → 2026-06-03 (+58d) | 2026-04-14 → 2026-06-13 (+60d) | 8d → 11.25d |  | constraint start no earlier than 2026-04-06 → start no earlier than 2026-06-03 |
| 2914 | Reinforcement | 2026-04-06 → 2026-06-03 (+58d) | 2026-04-13 → 2026-06-11 (+59d) | 7d → 9d | 2917FS+1d → 2912 |  |
| 2915 | Wall conduiting | 2026-04-07 → 2026-06-04 (+58d) | 2026-04-10 → 2026-06-06 (+57d) | 3d → 2.25d | 2910, 2914SS+1d → 2910, 2914SS+1.12d |  |
| 2916 | Formwork | 2026-04-07 → 2026-06-05 (+59d) | 2026-04-13 → 2026-06-12 (+60d) | 6d → 7.88d | 2914SS+1d → 2914SS+2.25d |  |
| 2917 | Concreting | 2026-04-04 → 2026-06-12 (+69d) | 2026-04-05 → 2026-06-13 (+69d) | 1d → 1.12d | 2911 → 2916 |  |
| 2918 | **27th floor slab** | 2026-04-14 → 2026-06-13 (+60d) | 2026-04-22 → 2026-06-23 (+62d) | 8d → 11.25d |  | constraint start no earlier than 2026-04-14 → start no earlier than 2026-06-13 |
| 2919 | Reinforcement | 2026-04-14 → 2026-06-13 (+60d) | 2026-04-21 → 2026-06-21 (+61d) | 7d → 9d | 2922 → 2917 |  |
| 2920 | Wall conduiting | 2026-04-15 → 2026-06-14 (+60d) | 2026-04-18 → 2026-06-16 (+59d) | 3d → 2.25d | 2915, 2919SS+1d → 2915, 2919SS+1.12d |  |
| 2921 | Formwork | 2026-04-15 → 2026-06-15 (+61d) | 2026-04-21 → 2026-06-22 (+62d) | 6d → 7.88d | 2919SS+1d → 2919SS+2.25d |  |
| 2922 | Concreting | 2026-04-13 → 2026-06-22 (+70d) | 2026-04-14 → 2026-06-23 (+70d) | 1d → 1.12d | 2916 → 2921 |  |
| 2923 | **28th floor slab** | 2026-04-22 → 2026-06-23 (+62d) | 2026-04-30 → 2026-07-03 (+64d) | 8d → 11.25d |  | constraint start no earlier than 2026-04-22 → start no earlier than 2026-06-23 |
| 2924 | Reinforcement | 2026-04-22 → 2026-06-23 (+62d) | 2026-04-29 → 2026-07-01 (+63d) | 7d → 9d | 2927 → 2922 |  |
| 2925 | Wall conduiting | 2026-04-23 → 2026-06-24 (+62d) | 2026-04-26 → 2026-06-26 (+61d) | 3d → 2.25d | 2920, 2924SS+1d → 2920, 2924SS+1.12d |  |
| 2926 | Formwork | 2026-04-23 → 2026-06-25 (+63d) | 2026-04-29 → 2026-07-02 (+64d) | 6d → 7.88d | 2924SS+1d → 2924SS+2.25d |  |
| 2927 | Concreting | 2026-04-21 → 2026-07-02 (+72d) | 2026-04-22 → 2026-07-03 (+72d) | 1d → 1.12d | 2921 → 2926 |  |
| 2928 | **29th floor slab** | 2026-04-30 → 2026-07-03 (+64d) | 2026-05-08 → 2026-07-13 (+66d) | 8d → 11.25d |  | constraint start no earlier than 2026-04-30 → start no earlier than 2026-07-03 |
| 2929 | Reinforcement | 2026-04-30 → 2026-07-03 (+64d) | 2026-05-07 → 2026-07-11 (+65d) | 7d → 9d | 2932 → 2927 |  |
| 2930 | Wall conduiting | 2026-05-01 → 2026-07-04 (+64d) | 2026-05-04 → 2026-07-06 (+63d) | 3d → 2.25d | 2925, 2929SS+1d → 2925, 2929SS+1.12d |  |
| 2931 | Formwork | 2026-05-01 → 2026-07-05 (+65d) | 2026-05-07 → 2026-07-12 (+66d) | 6d → 7.88d | 2929SS+1d → 2929SS+2.25d |  |
| 2932 | Concreting | 2026-04-29 → 2026-07-12 (+74d) | 2026-04-30 → 2026-07-13 (+74d) | 1d → 1.12d | 2926 → 2931 |  |
| 2933 | **30th floor slab** | 2026-05-08 → 2026-07-13 (+66d) | 2026-05-16 → 2026-07-23 (+68d) | 8d → 11.25d |  | constraint start no earlier than 2026-05-08 → start no earlier than 2026-07-13 |
| 2934 | Reinforcement | 2026-05-08 → 2026-07-13 (+66d) | 2026-05-15 → 2026-07-21 (+67d) | 7d → 9d | 2937 → 2932 |  |
| 2935 | Wall conduiting | 2026-05-09 → 2026-07-14 (+66d) | 2026-05-12 → 2026-07-16 (+65d) | 3d → 2.25d | 2930, 2934SS+1d → 2930, 2934SS+1.12d |  |
| 2936 | Formwork | 2026-05-09 → 2026-07-15 (+67d) | 2026-05-15 → 2026-07-22 (+68d) | 6d → 7.88d | 2934SS+1d → 2934SS+2.25d |  |
| 2937 | Concreting | 2026-05-07 → 2026-07-22 (+76d) | 2026-05-08 → 2026-07-23 (+76d) | 1d → 1.12d | 2931 → 2936 |  |
| 2938 | **31st floor slab** | 2026-05-16 → 2026-07-23 (+68d) | 2026-05-24 → 2026-08-04 (+72d) | 8d → 13.5d |  | constraint start no earlier than 2026-05-16 → start no earlier than 2026-07-23 |
| 2939 | Reinforcement | 2026-05-16 → 2026-07-23 (+68d) | 2026-05-23 → 2026-08-01 (+70d) | 7d → 10.12d | 2942 → 2937 |  |
| 2940 | Wall conduiting | 2026-05-17 → 2026-07-24 (+68d) | 2026-05-20 → 2026-07-26 (+67d) | 3d → 2.25d | 2935, 2939SS+1d → 2935, 2939SS+1.12d |  |
| 2941 | Formwork | 2026-05-17 → 2026-07-25 (+69d) | 2026-05-23 → 2026-08-03 (+72d) | 6d → 10.12d | 2939SS+1d → 2939SS+2.25d |  |
| 2942 | Concreting | 2026-05-15 → 2026-08-03 (+80d) | 2026-05-16 → 2026-08-04 (+80d) | 1d → 1.12d | 2936 → 2941 |  |
| 2943 | **32nd floor slab** | 2026-05-24 → 2026-08-04 (+72d) | 2026-06-06 → 2026-08-17 (+72d) | 12.75d → 14.62d |  | constraint start no earlier than 2026-05-24 → start no earlier than 2026-08-04 |

| ID | Task | Start | Finish | Duration | Predecessors | Other |
| --- | --- | --- | --- | --- | --- | --- |
| 2944 | Reinforcement | 2026-05-24 → 2026-08-04 (+72d) | 2026-06-03 → 2026-08-14 (+72d) | 9.94d → 11.25d | 2947 → 2942 |  |
| 2945 | Wall conduiting | 2026-05-25 → 2026-08-05 (+72d) | 2026-05-27 → 2026-08-07 (+72d) | 1.94d → 2.25d | 2940, 2944SS+1d → 2940, 2944SS+1.12d |  |
| 2946 | Formwork | 2026-05-26 → 2026-08-06 (+72d) | 2026-06-05 → 2026-08-16 (+72d) | 9.94d → 11.25d | 2944SS+1.88d → 2944SS+2.25d |  |
| 2947 | Concreting | 2026-05-23 → 2026-08-16 (+85d) | 2026-05-24 → 2026-08-17 (+85d) | 1d → 1.12d | 2941 → 2946 |  |
| 2948 | **33rd floor slab** | 2026-06-06 → 2026-08-17 (+72d) | 2026-06-17 → 2026-08-29 (+73d) | 11.75d → 13.5d |  | constraint start no earlier than 2026-06-06 → start no earlier than 2026-08-17 |
| 2949 | Reinforcement | 2026-06-06 → 2026-08-17 (+72d) | 2026-06-15 → 2026-08-26 (+72d) | 8.94d → 10.12d | 2952 → 2947 |  |
| 2950 | Wall conduiting | 2026-06-07 → 2026-08-18 (+72d) | 2026-06-09 → 2026-08-20 (+72d) | 1.94d → 2.25d | 2945, 2949SS+1d → 2945, 2949SS+1.12d |  |
| 2951 | Formwork | 2026-06-08 → 2026-08-19 (+72d) | 2026-06-16 → 2026-08-28 (+73d) | 8.94d → 10.12d | 2949SS+1.88d → 2949SS+2.25d |  |
| 2952 | Concreting | 2026-06-05 → 2026-08-28 (+84d) | 2026-06-06 → 2026-08-29 (+84d) | 0.94d → 1.12d | 2946 → 2951 |  |
| 2953 | **34th floor slab** | 2026-06-17 → 2026-08-29 (+73d) | 2026-06-30 → 2026-09-11 (+73d) | 12.75d → 14.62d |  | constraint start no earlier than 2026-06-17 → start no earlier than 2026-08-29 |
| 2954 | Reinforcement | 2026-06-17 → 2026-08-29 (+73d) | 2026-06-27 → 2026-09-08 (+73d) | 9.94d → 11.25d | 2957 → 2952 |  |
| 2955 | Wall conduiting | 2026-06-18 → 2026-08-30 (+73d) | 2026-06-20 → 2026-09-01 (+73d) | 1.94d → 2.25d | 2950, 2954SS+1d → 2950, 2954SS+1.12d |  |
| 2956 | Formwork | 2026-06-19 → 2026-08-31 (+73d) | 2026-06-29 → 2026-09-10 (+73d) | 9.94d → 11.25d | 2954SS+1.88d → 2954SS+2.25d |  |
| 2957 | Concreting | 2026-06-16 → 2026-09-10 (+86d) | 2026-06-17 → 2026-09-11 (+86d) | 0.94d → 1.12d | 2951 → 2956 |  |
| 2958 | **35th floor slab** | 2026-06-30 → 2026-09-11 (+73d) | 2026-07-12 → 2026-09-23 (+73d) | 11.75d → 13.5d |  | constraint start no earlier than 2026-06-30 → start no earlier than 2026-09-11 |
| 2959 | Reinforcement | 2026-06-30 → 2026-09-11 (+73d) | 2026-07-09 → 2026-09-20 (+73d) | 8.94d → 10.12d | 2962 → 2957 |  |
| 2960 | Wall conduiting | 2026-07-01 → 2026-09-12 (+73d) | 2026-07-03 → 2026-09-14 (+73d) | 1.94d → 2.25d | 2955, 2959SS+1d → 2955, 2959SS+1.12d |  |
| 2961 | Formwork | 2026-07-03 → 2026-09-14 (+73d) | 2026-07-11 → 2026-09-22 (+73d) | 7.94d → 9d | 2960SS+1.88d → 2960SS+2.25d |  |
| 2962 | Concreting | 2026-06-29 → 2026-09-22 (+85d) | 2026-06-30 → 2026-09-23 (+85d) | 0.94d → 1.12d | 2956 → 2961 |  |
| 2963 | **Terrace floor slab** | 2026-07-12 → 2026-09-23 (+73d) | 2026-07-27 → 2026-10-08 (+73d) | 14.75d → 16.88d |  | constraint start no earlier than 2026-07-12 → start no earlier than 2026-09-23 |
| 2964 | Reinforcement | 2026-07-12 → 2026-09-23 (+73d) | 2026-07-23 → 2026-10-04 (+73d) | 10.94d → 12.38d | 2967 → 2962 |  |
| 2965 | Wall conduiting | 2026-07-13 → 2026-09-24 (+73d) | 2026-07-15 → 2026-09-26 (+73d) | 1.94d → 2.25d | 2960, 2964SS+1d → 2960, 2964SS+1.12d |  |
| 2966 | Formwork | 2026-07-14 → 2026-09-25 (+73d) | 2026-07-26 → 2026-10-07 (+73d) | 11.94d → 13.5d | 2964SS+1.88d → 2964SS+2.25d |  |
| 2967 | Concreting | 2026-07-11 → 2026-10-07 (+88d) | 2026-07-12 → 2026-10-08 (+88d) | 0.94d → 1.12d | 2961 → 2966 |  |
| 2968 | **OHT & Mumty** | 2026-07-27 → 2026-10-08 (+73d) | 2026-09-04 → 2027-01-03 (+121d) | 39.5d → 47.25d |  | constraint start no earlier than 2026-07-27 → start no earlier than 2026-10-08 |
| 2969 | Reinforcement | 2026-07-27 → 2026-10-08 (+73d) | 2026-08-26 → 2026-12-22 (+118d) | 29.94d → 33.75d | 2972 → 2967 |  |
| 2970 | Wall conduiting | 2026-07-28 → 2026-10-09 (+73d) | 2026-08-02 → 2026-10-14 (+73d) | 4.94d → 5.62d | 2965, 2969SS+1d → 2965, 2969SS+1.12d |  |
| 2971 | Formwork | 2026-07-30 → 2026-10-14 (+76d) | 2026-09-01 → 2026-12-31 (+121d) | 32.94d → 37.12d | 2969SS+3.62d → 2969SS+4.5d, 2970 |  |
| 2972 | Concreting | 2026-07-26 → 2026-12-31 (+158d) | 2026-07-27 → 2027-01-03 (+160d) | 0.94d → 3.38d | 2966 → 2971 |  |
| 2973 | **Post Pour Activities** | 2025-07-28 → 2025-09-27 (+61d) | 2026-10-16 → 2027-01-21 (+97d) | 400.25d → 439.88d |  | constraint start no earlier than 2025-07-28 → start no earlier than 2025-09-27 |
| 2974 | 1st Floor | 2025-07-28 → 2025-09-27 (+61d) | 2025-08-04 → 2025-10-08 (+65d) | 7d → 12.38d | 2822 → 2807 |  |
| 2975 | 2nd Floor | 2025-08-17 → 2025-10-08 (+52d) | 2025-08-24 → 2025-10-19 (+56d) | 7d → 12.38d | 2974, 2832 → 2974, 2812 |  |
| 2976 | 3rd Floor | 2025-08-30 → 2025-10-19 (+50d) | 2025-09-06 → 2025-10-30 (+54d) | 7d → 12.38d | 2975, 2837 → 2975, 2817 |  |
| 2977 | 4th Floor | 2025-09-09 → 2025-10-30 (+51d) | 2025-09-16 → 2025-12-25 (+100d) | 7d → 12.38d | 2976, 2842 → 2976, 2822 |  |
| 2978 | 5th Floor | 2025-09-19 → 2025-12-25 (+97d) | 2025-09-26 → 2026-01-05 (+101d) | 7d → 12.38d | 2977, 2847 → 2977, 2827 |  |
| 2979 | 6th Floor | 2025-09-29 → 2026-01-05 (+98d) | 2025-10-06 → 2026-01-16 (+102d) | 7d → 12.38d | 2978, 2852 → 2978, 2832 |  |
| 2980 | 7th Floor | 2025-10-09 → 2026-01-16 (+99d) | 2025-10-16 → 2026-01-27 (+103d) | 7d → 12.38d | 2979, 2857 → 2979, 2837 |  |
| 2981 | 8th Floor | 2025-10-19 → 2026-01-27 (+100d) | 2025-10-26 → 2026-02-07 (+104d) | 7d → 12.38d | 2980, 2772 → 2980, 2842 |  |
| 2982 | 9th Floor | 2025-10-29 → 2026-02-07 (+101d) | 2025-12-20 → 2026-02-18 (+60d) | 7d → 12.38d | 2981, 2862 → 2981, 2847 |  |
| 2983 | 10th Floor | 2025-12-23 → 2026-02-18 (+57d) | 2025-12-30 → 2026-02-28 (+60d) | 7d → 11.25d | 2982, 2867 → 2982, 2852 |  |
| 2984 | 11th Floor | 2026-01-05 → 2026-02-28 (+54d) | 2026-01-12 → 2026-03-10 (+57d) | 7d → 11.25d | 2983, 2872 → 2983, 2857 |  |
| 2985 | 12th Floor | 2026-01-15 → 2026-03-10 (+54d) | 2026-01-22 → 2026-03-20 (+57d) | 7d → 11.25d | 2984, 2877 → 2984, 2862 |  |
| 2986 | 13th Floor | 2026-01-25 → 2026-03-20 (+54d) | 2026-02-01 → 2026-03-30 (+57d) | 7d → 11.25d | 2985, 2882 → 2985, 2867 |  |
| 2987 | 14th Floor | 2026-02-03 → 2026-03-30 (+55d) | 2026-02-10 → 2026-04-10 (+59d) | 7d → 12.38d | 2986, 2887 → 2986, 2872 |  |
| 2988 | 15th Floor | 2026-02-12 → 2026-04-10 (+57d) | 2026-02-19 → 2026-04-21 (+61d) | 7d → 12.38d | 2987, 2892 → 2987, 2877 |  |
| 2989 | 16th Floor | 2026-02-21 → 2026-04-21 (+59d) | 2026-02-28 → 2026-05-02 (+63d) | 7d → 12.38d | 2988, 2897 → 2988, 2882 |  |
| 2990 | 17th Floor | 2026-03-02 → 2026-05-02 (+61d) | 2026-03-09 → 2026-05-13 (+65d) | 7d → 12.38d | 2989, 2902 → 2989, 2887 |  |
| 2991 | 18th Floor | 2026-03-11 → 2026-05-13 (+63d) | 2026-03-18 → 2026-05-24 (+67d) | 7d → 12.38d | 2990, 2907 → 2990, 2892 |  |
| 2992 | 19th Floor | 2026-03-23 → 2026-05-24 (+62d) | 2026-03-30 → 2026-06-04 (+66d) | 7d → 12.38d | 2991, 2912 → 2991, 2897 |  |
| 2993 | 20th Floor | 2026-04-05 → 2026-06-04 (+60d) | 2026-04-12 → 2026-06-15 (+64d) | 7d → 12.38d | 2992, 2917 → 2992, 2902 |  |
| 2994 | 21st Floor | 2026-04-14 → 2026-06-15 (+62d) | 2026-04-21 → 2026-06-26 (+66d) | 7d → 12.38d | 2993, 2922 → 2993, 2907 |  |
| 2995 | 22nd Floor | 2026-04-22 → 2026-06-26 (+65d) | 2026-04-29 → 2026-07-07 (+69d) | 7d → 12.38d | 2994, 2927 → 2994, 2912 |  |
| 2996 | 23rd Floor | 2026-04-30 → 2026-07-07 (+68d) | 2026-05-07 → 2026-07-18 (+72d) | 7d → 12.38d | 2995, 2932 → 2995, 2917 |  |
| 2997 | 24th Floor | 2026-05-08 → 2026-07-18 (+71d) | 2026-05-15 → 2026-07-29 (+75d) | 7d → 12.38d | 2996, 2937 → 2996, 2922 |  |
| 2998 | 25th Floor | 2026-05-16 → 2026-07-29 (+74d) | 2026-05-23 → 2026-08-09 (+78d) | 7d → 12.38d | 2997, 2942 → 2997, 2927 |  |
| 2999 | 26th Floor | 2026-05-24 → 2026-08-09 (+77d) | 2026-05-31 → 2026-08-20 (+81d) | 7d → 12.38d | 2998, 2947 → 2998, 2932 |  |
| 3000 | 27th Floor | 2026-06-06 → 2026-08-20 (+75d) | 2026-06-13 → 2026-08-31 (+79d) | 7d → 12.38d | 2999, 2952 → 2999, 2937 |  |
| 3001 | 28th Floor | 2026-06-17 → 2026-08-31 (+75d) | 2026-06-24 → 2026-09-11 (+79d) | 7d → 12.38d | 3000, 2957 → 3000, 2942 |  |
| 3002 | 29th Floor | 2026-06-30 → 2026-09-11 (+73d) | 2026-07-07 → 2026-09-22 (+77d) | 7d → 12.38d | 3001, 2962 → 3001, 2947 |  |
| 3003 | 30th Floor | 2026-07-12 → 2026-09-22 (+72d) | 2026-07-19 → 2026-10-03 (+76d) | 7d → 12.38d | 3002, 2967 → 3002, 2952 |  |
| 3004 | 31st Floor | 2026-07-27 → 2026-10-03 (+68d) | 2026-08-03 → 2026-10-14 (+72d) | 7d → 12.38d | 3003, 2972 → 3003, 2957 |  |
| 3005 | 32nd Flood | 2026-09-04 → 2026-10-14 (+40d) | 2026-09-11 → 2026-10-25 (+44d) | 7d → 12.38d | 3004, 3689 → 3004, 2962 |  |
| 3006 | 33rd Floor | 2026-09-11 → 2026-10-25 (+44d) | 2026-09-18 → 2026-12-20 (+93d) | 7d → 12.38d |  |  |
| 3007 | 34th Floor | 2026-09-18 → 2026-12-20 (+93d) | 2026-09-25 → 2026-12-28 (+94d) | 7d → 9d |  |  |
| 3008 | 35th Floor | 2026-09-25 → 2026-12-28 (+94d) | 2026-10-02 → 2027-01-05 (+95d) | 7d → 9d |  |  |
| 3009 | Terrace | 2026-10-02 → 2027-01-05 (+95d) | 2026-10-09 → 2027-01-13 (+96d) | 7d → 9d |  |  |
| 3010 | Mumty & Machine Room | 2026-10-09 → 2027-01-13 (+96d) | 2026-10-16 → 2027-01-21 (+97d) | 7d → 9d |  |  |
| 3011 | **Finishing work** | 2025-08-04 → 2025-10-08 (+65d) | 2027-08-07 → 2027-10-25 (+79d) | 642.56d → 738.88d |  | constraint start no earlier than 2025-08-04 → start no earlier than 2025-10-08 |
| 3012 | **Flat finishing** | 2025-08-04 → 2025-10-08 (+65d) | 2027-04-30 → 2027-07-18 (+79d) | 544.19d → 627.5d |  | constraint start no earlier than 2025-08-04 → start no earlier than 2025-10-08 |
| 3013 | **1st Floor** | 2025-08-04 → 2025-10-08 (+65d) | 2025-10-04 → 2026-02-21 (+140d) | 61.25d → 102.38d |  | constraint start no earlier than 2025-08-04 → start no earlier than 2025-10-08 |

| ID | Task | Start | Finish | Duration | Predecessors | Other |
| --- | --- | --- | --- | --- | --- | --- |
| 3014 | Block Work | 2025-08-04 → 2025-10-08 (+65d) | 2025-08-12 → 2025-10-16 (+65d) | 8d → 9d | 2974FS+0.25d → 2974FS+0.25d, 2807 |  |
| 3015 | Door Frame Fixing | 2025-08-12 → 2025-10-16 (+65d) | 2025-08-21 → 2025-10-21 (+61d) | 9d → 5.62d |  |  |
| 3016 | Internal Plumbing Works | 2025-08-12 → 2025-10-16 (+65d) | 2025-08-20 → 2025-10-26 (+67d) | 8d → 11.25d |  |  |
| 3017 | Waterproofing | 2025-08-20 → 2025-10-26 (+67d) | 2025-08-30 → 2025-12-22 (+114d) | 10d → 13.5d |  |  |
| 3018 | Internal Plaster | 2025-10-24 → 2025-10-21 (-3d) | 2026-04-07 → 2025-10-30 (-159d) | 119.94d → 10.12d | 2666SS+17.88d → 3015FS+0.25d |  |
| 3019 | IPS flooring work | 2025-08-30 → 2025-12-22 (+114d) | 2025-09-09 → 2025-12-31 (+113d) | 10d → 10.12d |  |  |
| 3020 | Toilet dado work | 2025-08-17 → 2025-12-22 (+127d) | 2025-08-25 → 2025-12-30 (+127d) | 8d → 9d | 2832 → 3017, 3018 |  |
| 3021 | Toilet flooring work | 2025-08-25 → 2025-12-30 (+127d) | 2025-09-02 → 2026-01-06 (+126d) | 8d → 7.88d |  |  |
| 3022 | Living dinning flooring | 2025-08-21 → 2026-01-06 (+138d) | 2025-09-02 → 2026-01-10 (+130d) | 12d → 4.5d | 3015FS+0.25d → 3015, 3021 |  |
| 3023 | Aluminium door-window fixing | 2025-09-09 → 2026-01-10 (+123d) | 2025-09-21 → 2026-01-18 (+119d) | 12d → 9d | 3019FS+0.25d → 2822, 3022FS+0.25d |  |
| 3024 | Putty primer coat | 2025-09-02 → 2026-01-10 (+130d) | 2025-09-08 → 2026-01-19 (+133d) | 6d → 10.12d |  |  |
| 3025 | Door shutter fixing | 2025-09-02 → 2026-01-10 (+130d) | 2025-09-10 → 2026-01-18 (+130d) | 8d → 9d |  |  |
| 3026 | Electrical wiring work | 2025-09-10 → 2026-01-18 (+130d) | 2025-09-18 → 2026-01-30 (+134d) | 8d → 13.5d |  |  |
| 3027 | Painting 1st coat | 2025-09-18 → 2026-01-30 (+134d) | 2025-09-26 → 2026-02-11 (+138d) | 8d → 13.5d |  |  |
| 3028 | False ceiling | 2025-09-26 → 2026-02-11 (+138d) | 2025-10-04 → 2026-02-21 (+140d) | 8d → 11.25d |  |  |
| 3029 | **2nd Floor** | 2025-08-12 → 2025-10-16 (+65d) | 2025-10-17 → 2026-03-05 (+139d) | 65.25d → 106.88d |  | constraint start no earlier than 2025-08-12 → start no earlier than 2025-10-16 |
| 3030 | Block Work | 2025-08-12 → 2025-10-16 (+65d) | 2025-08-20 → 2025-10-24 (+65d) | 8d → 9d |  |  |
| 3031 | Door Frame Fixing | 2025-08-21 → 2025-10-24 (+64d) | 2025-08-30 → 2025-10-29 (+60d) | 9d → 5.62d |  |  |
| 3032 | Internal Plumbing Works | 2025-08-20 → 2025-10-26 (+67d) | 2025-08-28 → 2025-12-20 (+114d) | 8d → 11.25d |  |  |
| 3033 | Waterproofing | 2025-08-30 → 2025-12-22 (+114d) | 2025-09-09 → 2026-01-03 (+116d) | 10d → 13.5d |  |  |
| 3034 | Internal Plaster | 2025-08-13 → 2025-10-31 (+79d) | 2025-08-21 → 2025-12-24 (+125d) | 8d → 10.12d | 3014FS+1d → 3018FS+0.25d, 3031FS+0.25d |  |
| 3035 | IPS flooring work | 2025-09-09 → 2026-01-03 (+116d) | 2025-09-19 → 2026-01-12 (+115d) | 10d → 10.12d |  |  |
| 3036 | Toilet dado work | 2025-08-25 → 2026-01-03 (+131d) | 2025-09-02 → 2026-01-11 (+131d) | 8d → 9d | 3020FS+0.25d → 3020, 3033, 3034 |  |
| 3037 | Toilet flooring work | 2025-09-02 → 2026-01-11 (+131d) | 2025-09-10 → 2026-01-18 (+130d) | 8d → 7.88d |  |  |
| 3038 | Living dinning flooring | 2025-09-03 → 2026-01-18 (+137d) | 2025-09-15 → 2026-01-22 (+129d) | 12d → 4.5d | 3022FS+0.25d → 3022FS+0.25d, 3037FS+0.25d |  |
| 3039 | Aluminium door-window fixing | 2025-09-22 → 2026-01-23 (+123d) | 2025-10-04 → 2026-01-31 (+119d) | 12d → 9d | 3023FS+0.25d → 3023FS+0.25d, 3038FS+0.25d |  |
| 3040 | Putty primer coat | 2025-09-15 → 2026-01-22 (+129d) | 2025-09-21 → 2026-01-28 (+129d) | 6d → 6.75d |  |  |
| 3041 | Door shutter fixing | 2025-09-15 → 2026-01-22 (+129d) | 2025-09-23 → 2026-01-30 (+129d) | 8d → 9d |  |  |
| 3042 | Electrical wiring work | 2025-09-23 → 2026-01-30 (+129d) | 2025-10-01 → 2026-02-11 (+133d) | 8d → 13.5d |  |  |
| 3043 | Painting 1st coat | 2025-10-01 → 2026-02-11 (+133d) | 2025-10-09 → 2026-02-23 (+137d) | 8d → 13.5d |  |  |
| 3044 | False ceiling | 2025-10-09 → 2026-02-23 (+137d) | 2025-10-17 → 2026-03-05 (+139d) | 8d → 11.25d |  |  |
| 3045 | **3rd Floor** | 2025-08-21 → 2025-10-25 (+65d) | 2025-10-29 → 2026-03-17 (+139d) | 69.25d → 111.12d |  | constraint start no earlier than 2025-08-21 → start no earlier than 2025-10-25 |
| 3046 | Block Work | 2025-08-21 → 2025-10-25 (+65d) | 2025-08-29 → 2025-12-17 (+110d) | 8d → 9d |  |  |
| 3047 | Door Frame Fixing | 2025-08-30 → 2025-12-17 (+109d) | 2025-09-08 → 2025-12-22 (+105d) | 9d → 5.62d |  |  |
| 3048 | Internal Plumbing Works | 2025-08-29 → 2025-12-20 (+113d) | 2025-09-06 → 2025-12-30 (+115d) | 8d → 11.25d |  |  |
| 3049 | Waterproofing | 2025-09-09 → 2026-01-03 (+116d) | 2025-09-19 → 2026-01-15 (+118d) | 10d → 13.5d |  |  |
| 3050 | Internal Plaster | 2025-08-21 → 2025-12-24 (+125d) | 2025-08-29 → 2026-01-02 (+126d) | 8d → 10.12d | 3030FS+0.25d → 3034FS+0.25d, 3047FS+0.25d |  |
| 3051 | IPS flooring work | 2025-09-19 → 2026-01-15 (+118d) | 2025-09-29 → 2026-01-24 (+117d) | 10d → 10.12d | 3035, 3047, 3049, 3066 → 3035, 3047, 3049, 3050 |  |
| 3052 | Toilet dado work | 2025-09-02 → 2026-01-15 (+135d) | 2025-09-10 → 2026-01-23 (+135d) | 8d → 9d | 3036FS+0.25d → 3036, 3049, 3050 |  |
| 3053 | Toilet flooring work | 2025-09-10 → 2026-01-23 (+135d) | 2025-09-18 → 2026-01-30 (+134d) | 8d → 7.88d |  |  |
| 3054 | Living dinning flooring | 2025-09-15 → 2026-01-30 (+137d) | 2025-09-27 → 2026-02-03 (+129d) | 12d → 4.5d | 3038FS+0.25d → 3038FS+0.25d, 3053FS+0.25d |  |
| 3055 | Aluminium door-window fixing | 2025-10-04 → 2026-02-04 (+123d) | 2025-10-16 → 2026-02-12 (+119d) | 12d → 9d | 3039FS+0.25d → 3039FS+0.25d, 3054FS+0.25d |  |
| 3056 | Putty primer coat | 2025-09-27 → 2026-02-03 (+129d) | 2025-10-03 → 2026-02-09 (+129d) | 6d → 6.75d |  |  |
| 3057 | Door shutter fixing | 2025-09-27 → 2026-02-03 (+129d) | 2025-10-05 → 2026-02-11 (+129d) | 8d → 9d |  |  |
| 3058 | Electrical wiring work | 2025-10-05 → 2026-02-11 (+129d) | 2025-10-13 → 2026-02-23 (+133d) | 8d → 13.5d |  |  |
| 3059 | Painting 1st coat | 2025-10-13 → 2026-02-23 (+133d) | 2025-10-21 → 2026-03-07 (+137d) | 8d → 13.5d |  |  |
| 3060 | False ceiling | 2025-10-21 → 2026-03-07 (+137d) | 2025-10-29 → 2026-03-17 (+139d) | 8d → 11.25d |  |  |
| 3061 | **4th Floor** | 2025-08-29 → 2025-12-17 (+110d) | 2025-12-25 → 2026-03-29 (+94d) | 73.25d → 115.38d |  | constraint start no earlier than 2025-08-29 → start no earlier than 2025-12-17 |
| 3062 | Block Work | 2025-08-29 → 2025-12-17 (+110d) | 2025-09-06 → 2025-12-25 (+110d) | 8d → 9d |  |  |
| 3063 | Door Frame Fixing | 2025-09-08 → 2025-12-25 (+108d) | 2025-09-17 → 2025-12-30 (+104d) | 9d → 5.62d |  |  |
| 3064 | Internal Plumbing Works | 2025-09-06 → 2025-12-30 (+115d) | 2025-09-14 → 2026-01-09 (+117d) | 8d → 11.25d |  |  |
| 3065 | Waterproofing | 2025-09-19 → 2026-01-15 (+118d) | 2025-09-29 → 2026-01-27 (+120d) | 10d → 13.5d |  |  |
| 3066 | Internal Plaster | 2025-08-29 → 2026-01-02 (+126d) | 2025-09-06 → 2026-01-11 (+127d) | 8d → 10.12d | 3050FS+0.25d → 3050FS+0.25d, 3063FS+0.25d |  |
| 3067 | IPS flooring work | 2025-09-29 → 2026-01-27 (+120d) | 2025-10-09 → 2026-02-05 (+119d) | 10d → 10.12d | 3051, 3063, 3065, 3082 → 3051, 3063, 3065, 3066 |  |
| 3068 | Toilet dado work | 2025-09-11 → 2026-01-27 (+138d) | 2025-09-19 → 2026-02-04 (+138d) | 8d → 9d | 3052FS+0.25d → 3052, 3065, 3066 |  |
| 3069 | Toilet flooring work | 2025-09-19 → 2026-02-04 (+138d) | 2025-09-27 → 2026-02-11 (+137d) | 8d → 7.88d |  |  |
| 3070 | Living dinning flooring | 2025-09-27 → 2026-02-11 (+137d) | 2025-10-09 → 2026-02-15 (+129d) | 12d → 4.5d | 3054FS+0.25d → 3054FS+0.25d, 3069FS+0.25d |  |
| 3071 | Aluminium door-window fixing | 2025-10-16 → 2026-02-16 (+123d) | 2025-10-28 → 2026-02-24 (+119d) | 12d → 9d | 3055FS+0.25d → 3055FS+0.25d, 3070FS+0.25d |  |
| 3072 | Putty primer coat | 2025-10-09 → 2026-02-15 (+129d) | 2025-10-15 → 2026-02-21 (+129d) | 6d → 6.75d |  |  |
| 3073 | Door shutter fixing | 2025-10-09 → 2026-02-15 (+129d) | 2025-10-17 → 2026-02-23 (+129d) | 8d → 9d |  |  |
| 3074 | Electrical wiring work | 2025-10-17 → 2026-02-23 (+129d) | 2025-10-25 → 2026-03-07 (+133d) | 8d → 13.5d |  |  |
| 3075 | Painting 1st coat | 2025-10-25 → 2026-03-07 (+133d) | 2025-12-17 → 2026-03-19 (+92d) | 8d → 13.5d |  |  |
| 3076 | False ceiling | 2025-12-17 → 2026-03-19 (+92d) | 2025-12-25 → 2026-03-29 (+94d) | 8d → 11.25d |  |  |
| 3077 | **5th Floor** | 2025-09-06 → 2025-12-25 (+110d) | 2026-01-06 → 2026-04-13 (+97d) | 77.25d → 123d |  | constraint start no earlier than 2025-09-06 → start no earlier than 2025-12-25 |
| 3078 | Block Work | 2025-09-06 → 2025-12-25 (+110d) | 2025-09-14 → 2026-01-02 (+110d) | 8d → 9d |  |  |
| 3079 | Door Frame Fixing | 2025-09-17 → 2026-01-02 (+107d) | 2025-09-26 → 2026-01-07 (+103d) | 9d → 5.62d |  |  |
| 3080 | Internal Plumbing Works | 2025-09-14 → 2026-01-09 (+117d) | 2025-09-22 → 2026-01-19 (+119d) | 8d → 11.25d |  |  |
| 3081 | Waterproofing | 2025-09-29 → 2026-01-27 (+120d) | 2025-10-09 → 2026-02-08 (+122d) | 10d → 13.5d |  |  |
| 3082 | Internal Plaster | 2025-09-06 → 2026-01-11 (+127d) | 2025-09-14 → 2026-01-20 (+128d) | 8d → 10.12d | 3066FS+0.25d → 3066FS+0.25d, 3079FS+0.25d |  |
| 3083 | IPS flooring work | 2025-10-09 → 2026-02-08 (+122d) | 2025-10-19 → 2026-02-17 (+121d) | 10d → 10.12d | 3067, 3079, 3081, 3098 → 3067, 3079, 3081, 3082 |  |

| ID | Task | Start | Finish | Duration | Predecessors | Other |
| --- | --- | --- | --- | --- | --- | --- |
| 3084 | Toilet dado work | 2025-10-09 → 2026-02-08 (+122d) | 2025-10-17 → 2026-02-16 (+122d) | 8d → 9d | 3068, 3081, 3098 → 3068, 3081, 3082 |  |
| 3085 | Toilet flooring work | 2025-10-17 → 2026-02-16 (+122d) | 2025-10-25 → 2026-02-23 (+121d) | 8d → 7.88d |  |  |
| 3086 | Living dinning flooring | 2025-10-09 → 2026-02-23 (+137d) | 2025-10-21 → 2026-02-27 (+129d) | 12d → 4.5d | 3070FS+0.25d → 3070FS+0.25d, 3085FS+0.25d |  |
| 3087 | Aluminium door-window fixing | 2025-10-28 → 2026-02-28 (+123d) | 2025-12-24 → 2026-03-08 (+74d) | 12d → 9d | 3071FS+0.25d → 3071FS+0.25d, 3086FS+0.25d |  |
| 3088 | Putty primer coat | 2025-10-21 → 2026-02-27 (+129d) | 2025-10-27 → 2026-03-05 (+129d) | 6d → 6.75d |  |  |
| 3089 | Door shutter fixing | 2025-10-21 → 2026-02-27 (+129d) | 2025-10-29 → 2026-03-07 (+129d) | 8d → 9d |  |  |
| 3090 | Electrical wiring work | 2025-10-29 → 2026-03-07 (+129d) | 2025-12-21 → 2026-03-19 (+88d) | 8d → 13.5d |  |  |
| 3091 | Painting 1st coat | 2025-12-21 → 2026-03-19 (+88d) | 2025-12-29 → 2026-04-03 (+95d) | 8d → 16.88d |  |  |
| 3092 | False ceiling | 2025-12-29 → 2026-04-03 (+95d) | 2026-01-06 → 2026-04-13 (+97d) | 8d → 11.25d |  |  |
| 3093 | **6th Floor** | 2025-09-14 → 2026-01-02 (+110d) | 2026-01-19 → 2026-04-25 (+96d) | 81.25d → 127.25d |  | constraint start no earlier than 2025-09-14 → start no earlier than 2026-01-02 |
| 3094 | Block Work | 2025-09-14 → 2026-01-02 (+110d) | 2025-09-22 → 2026-01-10 (+110d) | 8d → 9d |  |  |
| 3095 | Door Frame Fixing | 2025-09-26 → 2026-01-07 (+103d) | 2025-10-05 → 2026-01-12 (+99d) | 9d → 5.62d | 2837, 3079 → 2827, 3079 |  |
| 3096 | Internal Plumbing Works | 2025-09-22 → 2026-01-19 (+119d) | 2025-09-30 → 2026-01-29 (+121d) | 8d → 11.25d |  |  |
| 3097 | Waterproofing | 2025-10-09 → 2026-02-08 (+122d) | 2025-10-19 → 2026-02-20 (+124d) | 10d → 13.5d |  |  |
| 3098 | Internal Plaster | 2025-09-14 → 2026-01-20 (+128d) | 2025-09-22 → 2026-01-29 (+129d) | 8d → 10.12d | 3082FS+0.25d → 3082FS+0.25d, 3095FS+0.25d |  |
| 3099 | IPS flooring work | 2025-10-19 → 2026-02-20 (+124d) | 2025-10-29 → 2026-03-01 (+123d) | 10d → 10.12d | 3083, 3095, 3097, 3114 → 3083, 3095, 3097, 3098 |  |
| 3100 | Toilet dado work | 2025-10-19 → 2026-02-20 (+124d) | 2025-10-27 → 2026-02-28 (+124d) | 8d → 9d | 3084, 3097, 3114 → 3084, 3097, 3098 |  |
| 3101 | Toilet flooring work | 2025-10-27 → 2026-02-28 (+124d) | 2025-12-19 → 2026-03-07 (+78d) | 8d → 7.88d |  |  |
| 3102 | Living dinning flooring | 2025-10-22 → 2026-03-07 (+136d) | 2025-12-18 → 2026-03-11 (+83d) | 12d → 4.5d | 3086FS+0.25d → 3086FS+0.25d, 3101FS+0.25d |  |
| 3103 | Aluminium door-window fixing | 2025-12-25 → 2026-03-12 (+77d) | 2026-01-06 → 2026-03-20 (+73d) | 12d → 9d | 3087FS+0.25d → 3087FS+0.25d, 3102FS+0.25d |  |
| 3104 | Putty primer coat | 2025-12-18 → 2026-03-11 (+83d) | 2025-12-24 → 2026-03-17 (+83d) | 6d → 6.75d |  |  |
| 3105 | Door shutter fixing | 2025-12-18 → 2026-03-11 (+83d) | 2025-12-26 → 2026-03-19 (+83d) | 8d → 9d |  |  |
| 3106 | Electrical wiring work | 2025-12-26 → 2026-03-19 (+83d) | 2026-01-03 → 2026-03-31 (+87d) | 8d → 13.5d |  |  |
| 3107 | Painting 1st coat | 2026-01-03 → 2026-04-03 (+90d) | 2026-01-11 → 2026-04-15 (+94d) | 8d → 13.5d |  |  |
| 3108 | False ceiling | 2026-01-11 → 2026-04-15 (+94d) | 2026-01-19 → 2026-04-25 (+96d) | 8d → 11.25d |  |  |
| 3109 | **7th Floor** | 2025-09-23 → 2026-01-10 (+109d) | 2026-01-31 → 2026-05-07 (+96d) | 85.25d → 131.5d |  | constraint start no earlier than 2025-09-23 → start no earlier than 2026-01-10 |
| 3110 | Block Work | 2025-09-23 → 2026-01-10 (+109d) | 2025-10-01 → 2026-01-18 (+109d) | 8d → 9d |  |  |
| 3111 | Door Frame Fixing | 2025-10-05 → 2026-01-18 (+105d) | 2025-10-14 → 2026-01-23 (+101d) | 9d → 5.62d |  |  |
| 3112 | Internal Plumbing Works | 2025-10-01 → 2026-01-29 (+120d) | 2025-10-09 → 2026-02-08 (+122d) | 8d → 11.25d |  |  |
| 3113 | Waterproofing | 2025-10-19 → 2026-02-20 (+124d) | 2025-10-29 → 2026-03-04 (+126d) | 10d → 13.5d |  |  |
| 3114 | Internal Plaster | 2025-09-23 → 2026-01-30 (+129d) | 2025-10-01 → 2026-02-08 (+130d) | 8d → 10.12d | 3098FS+0.25d → 3098FS+0.25d, 3111FS+0.25d |  |
| 3115 | IPS flooring work | 2025-10-29 → 2026-03-04 (+126d) | 2025-12-23 → 2026-03-13 (+80d) | 10d → 10.12d | 3099, 3111, 3113, 3130 → 3099, 3111, 3113, 3114 |  |
| 3116 | Toilet dado work | 2025-10-29 → 2026-03-04 (+126d) | 2025-12-21 → 2026-03-12 (+81d) | 8d → 9d | 3100, 3113, 3130 → 3100, 3113, 3114 |  |
| 3117 | Toilet flooring work | 2025-12-21 → 2026-03-12 (+81d) | 2025-12-29 → 2026-03-19 (+80d) | 8d → 7.88d |  |  |
| 3118 | Living dinning flooring | 2025-12-18 → 2026-03-12 (+84d) | 2025-12-30 → 2026-03-15 (+75d) | 12d → 3.38d | 3102FS+0.25d → 3102FS+0.25d, 3111 |  |
| 3119 | Aluminium door-window fixing | 2026-01-06 → 2026-03-20 (+73d) | 2026-01-18 → 2026-03-28 (+69d) | 12d → 9d |  |  |
| 3120 | Putty primer coat | 2025-12-30 → 2026-03-17 (+77d) | 2026-01-05 → 2026-03-23 (+77d) | 6d → 6.75d |  |  |
| 3121 | Door shutter fixing | 2025-12-30 → 2026-03-19 (+79d) | 2026-01-07 → 2026-03-27 (+79d) | 8d → 9d |  |  |
| 3122 | Electrical wiring work | 2026-01-07 → 2026-03-31 (+83d) | 2026-01-15 → 2026-04-12 (+87d) | 8d → 13.5d |  |  |
| 3123 | Painting 1st coat | 2026-01-15 → 2026-04-15 (+90d) | 2026-01-23 → 2026-04-27 (+94d) | 8d → 13.5d |  |  |
| 3124 | False ceiling | 2026-01-23 → 2026-04-27 (+94d) | 2026-01-31 → 2026-05-07 (+96d) | 8d → 11.25d |  |  |
| 3125 | **8th Floor** | 2025-10-01 → 2026-01-19 (+110d) | 2026-02-12 → 2026-05-19 (+96d) | 89.25d → 135.75d |  | constraint start no earlier than 2025-10-01 → start no earlier than 2026-01-19 |
| 3126 | Block Work | 2025-10-01 → 2026-01-19 (+110d) | 2025-10-09 → 2026-01-27 (+110d) | 8d → 9d |  |  |
| 3127 | Door Frame Fixing | 2025-10-14 → 2026-01-27 (+105d) | 2025-10-23 → 2026-02-01 (+101d) | 9d → 5.62d |  |  |
| 3128 | Internal Plumbing Works | 2025-10-09 → 2026-02-08 (+122d) | 2025-10-17 → 2026-02-18 (+124d) | 8d → 11.25d |  |  |
| 3129 | Waterproofing | 2025-10-29 → 2026-03-04 (+126d) | 2025-12-23 → 2026-03-16 (+83d) | 10d → 13.5d |  |  |
| 3130 | Internal Plaster | 2025-10-01 → 2026-02-08 (+130d) | 2025-10-09 → 2026-02-17 (+131d) | 8d → 10.12d | 3114FS+0.25d → 3114FS+0.25d, 3127FS+0.25d |  |
| 3131 | IPS flooring work | 2025-12-23 → 2026-03-16 (+83d) | 2026-01-02 → 2026-03-25 (+82d) | 10d → 10.12d | 3115, 3127, 3129, 3146 → 3115, 3127, 3129, 3130 |  |
| 3132 | Toilet dado work | 2025-12-23 → 2026-03-16 (+83d) | 2025-12-31 → 2026-03-24 (+83d) | 8d → 9d | 3116, 3129, 3146 → 3116, 3129, 3130 |  |
| 3133 | Toilet flooring work | 2025-12-31 → 2026-03-24 (+83d) | 2026-01-08 → 2026-03-31 (+82d) | 8d → 7.88d |  |  |
| 3134 | Living dinning flooring | 2025-12-30 → 2026-03-15 (+75d) | 2026-01-11 → 2026-03-18 (+66d) | 12d → 3.38d |  |  |
| 3135 | Aluminium door-window fixing | 2026-01-18 → 2026-03-28 (+69d) | 2026-01-30 → 2026-04-09 (+69d) | 12d → 13.5d | 3119FS+0.25d → 3119FS+0.25d, 3134FS+0.25d |  |
| 3136 | Putty primer coat | 2026-01-11 → 2026-03-23 (+71d) | 2026-01-17 → 2026-03-29 (+71d) | 6d → 6.75d |  |  |
| 3137 | Door shutter fixing | 2026-01-11 → 2026-03-27 (+75d) | 2026-01-19 → 2026-04-04 (+75d) | 8d → 9d |  |  |
| 3138 | Electrical wiring work | 2026-01-19 → 2026-04-12 (+83d) | 2026-01-27 → 2026-04-24 (+87d) | 8d → 13.5d |  |  |
| 3139 | Painting 1st coat | 2026-01-27 → 2026-04-27 (+90d) | 2026-02-04 → 2026-05-09 (+94d) | 8d → 13.5d |  |  |
| 3140 | False ceiling | 2026-02-04 → 2026-05-09 (+94d) | 2026-02-12 → 2026-05-19 (+96d) | 8d → 11.25d |  |  |
| 3141 | **9th Floor** | 2025-10-09 → 2026-01-27 (+110d) | 2026-02-24 → 2026-05-31 (+96d) | 93.25d → 140d |  | constraint start no earlier than 2025-10-09 → start no earlier than 2026-01-27 |
| 3142 | Block Work | 2025-10-09 → 2026-01-27 (+110d) | 2025-10-17 → 2026-02-04 (+110d) | 8d → 9d |  |  |
| 3143 | Door Frame Fixing | 2025-10-23 → 2026-02-04 (+104d) | 2025-12-16 → 2026-02-09 (+55d) | 9d → 5.62d |  |  |
| 3144 | Internal Plumbing Works | 2025-10-17 → 2026-02-18 (+124d) | 2025-10-25 → 2026-02-28 (+126d) | 8d → 11.25d |  |  |
| 3145 | Waterproofing | 2025-12-23 → 2026-03-16 (+83d) | 2026-01-02 → 2026-03-28 (+85d) | 10d → 13.5d |  |  |
| 3146 | Internal Plaster | 2025-10-09 → 2026-02-17 (+131d) | 2025-10-17 → 2026-02-26 (+132d) | 8d → 10.12d | 3130FS+0.25d → 3130FS+0.25d, 3143FS+0.25d |  |
| 3147 | IPS flooring work | 2026-01-02 → 2026-03-28 (+85d) | 2026-01-12 → 2026-04-06 (+84d) | 10d → 10.12d | 3131, 3143, 3145, 3162 → 3131, 3143, 3145, 3146 |  |
| 3148 | Toilet dado work | 2026-01-02 → 2026-03-28 (+85d) | 2026-01-10 → 2026-04-05 (+85d) | 8d → 9d | 3132, 3145, 3162 → 3132, 3145, 3146 |  |
| 3149 | Toilet flooring work | 2026-01-10 → 2026-04-05 (+85d) | 2026-01-18 → 2026-04-12 (+84d) | 8d → 7.88d |  |  |
| 3150 | Living dinning flooring | 2026-01-11 → 2026-03-18 (+66d) | 2026-01-23 → 2026-03-21 (+57d) | 12d → 3.38d |  |  |
| 3151 | Aluminium door-window fixing | 2026-01-30 → 2026-04-09 (+69d) | 2026-02-11 → 2026-04-21 (+69d) | 12d → 13.5d | 3135FS+0.25d → 3135FS+0.25d, 3150FS+0.25d |  |
| 3152 | Putty primer coat | 2026-01-23 → 2026-03-29 (+65d) | 2026-01-29 → 2026-04-04 (+65d) | 6d → 6.75d |  |  |
| 3153 | Door shutter fixing | 2026-01-23 → 2026-04-04 (+71d) | 2026-01-31 → 2026-04-12 (+71d) | 8d → 9d |  |  |

| ID | Task | Start | Finish | Duration | Predecessors | Other |
| --- | --- | --- | --- | --- | --- | --- |
| 3154 | Electrical wiring work | 2026-01-31 → 2026-04-24 (+83d) | 2026-02-08 → 2026-05-06 (+87d) | 8d → 13.5d |  |  |
| 3155 | Painting 1st coat | 2026-02-08 → 2026-05-09 (+90d) | 2026-02-16 → 2026-05-21 (+94d) | 8d → 13.5d |  |  |
| 3156 | False ceiling | 2026-02-16 → 2026-05-21 (+94d) | 2026-02-24 → 2026-05-31 (+96d) | 8d → 11.25d |  |  |
| 3157 | **10th Floor** | 2025-10-17 → 2026-02-04 (+110d) | 2026-03-09 → 2026-06-12 (+95d) | 97.25d → 144.25d |  | constraint start no earlier than 2025-10-17 → start no earlier than 2026-02-04 |
| 3158 | Block Work | 2025-10-17 → 2026-02-04 (+110d) | 2025-10-25 → 2026-02-12 (+110d) | 8d → 9d |  |  |
| 3159 | Door Frame Fixing | 2025-12-16 → 2026-02-12 (+58d) | 2025-12-25 → 2026-02-17 (+54d) | 9d → 5.62d |  |  |
| 3160 | Internal Plumbing Works | 2025-10-25 → 2026-02-28 (+126d) | 2025-12-17 → 2026-03-10 (+83d) | 8d → 11.25d |  |  |
| 3161 | Waterproofing | 2026-01-02 → 2026-03-28 (+85d) | 2026-01-12 → 2026-04-09 (+87d) | 10d → 13.5d |  |  |
| 3162 | Internal Plaster | 2025-10-17 → 2026-02-26 (+132d) | 2025-10-25 → 2026-03-07 (+133d) | 8d → 10.12d | 3146FS+0.25d → 3146FS+0.25d, 3159FS+0.25d |  |
| 3163 | IPS flooring work | 2026-01-12 → 2026-04-09 (+87d) | 2026-01-22 → 2026-04-18 (+86d) | 10d → 10.12d | 3147, 3159, 3161, 3210 → 3147, 3159, 3161, 3162 |  |
| 3164 | Toilet dado work | 2026-01-12 → 2026-04-09 (+87d) | 2026-01-20 → 2026-04-17 (+87d) | 8d → 9d | 3148, 3161, 3210 → 3148, 3161, 3162 |  |
| 3165 | Toilet flooring work | 2026-01-20 → 2026-04-17 (+87d) | 2026-01-28 → 2026-04-24 (+86d) | 8d → 7.88d |  |  |
| 3166 | Living dinning flooring | 2026-01-24 → 2026-03-21 (+56d) | 2026-02-05 → 2026-03-24 (+47d) | 12d → 3.38d |  |  |
| 3167 | Aluminium door-window fixing | 2026-02-12 → 2026-04-21 (+68d) | 2026-02-24 → 2026-05-03 (+68d) | 12d → 13.5d | 3151FS+0.25d → 3151FS+0.25d, 3166FS+0.25d |  |
| 3168 | Putty primer coat | 2026-03-13 → 2026-04-04 (+22d) | 2026-03-19 → 2026-04-10 (+22d) | 6d → 6.75d | 3248, 3230 → 3152, 3166 |  |
| 3169 | Door shutter fixing | 2026-03-13 → 2026-04-12 (+30d) | 2026-03-21 → 2026-04-20 (+30d) | 8d → 9d | 3249, 3230 → 3153, 3166 |  |
| 3170 | Electrical wiring work | 2026-03-21 → 2026-05-06 (+46d) | 2026-03-29 → 2026-05-18 (+50d) | 8d → 13.5d | 3250, 3169 → 3154, 3169 |  |
| 3171 | Painting 1st coat | 2026-03-29 → 2026-05-21 (+53d) | 2026-04-06 → 2026-06-02 (+57d) | 8d → 13.5d | 3251, 3168, 3169, 3170 → 3155, 3168, 3169, 3170 |  |
| 3172 | False ceiling | 2026-04-06 → 2026-06-02 (+57d) | 2026-04-14 → 2026-06-12 (+59d) | 8d → 11.25d | 3252, 3171 → 3156, 3171 |  |
| 3173 | **11th Floor** | 2025-10-26 → 2026-02-12 (+109d) | 2026-03-17 → 2026-06-24 (+99d) | 97d → 148.5d |  | constraint start no earlier than 2025-10-26 → start no earlier than 2026-02-12 |
| 3174 | Block Work | 2026-01-12 → 2026-02-12 (+31d) | 2026-01-20 → 2026-02-20 (+31d) | 8d → 9d | 3254FS+0.25d → 3158FS+0.25d |  |
| 3175 | Door Frame Fixing | 2026-01-30 → 2026-02-20 (+21d) | 2026-02-08 → 2026-02-25 (+17d) | 9d → 5.62d | 3255, 3174 → 3159, 3174 |  |
| 3176 | Internal Plumbing Works | 2026-01-20 → 2026-03-10 (+49d) | 2026-01-28 → 2026-03-20 (+51d) | 8d → 11.25d | 3256, 3174 → 3160, 3174 |  |
| 3177 | Waterproofing | 2026-02-21 → 2026-04-09 (+47d) | 2026-03-03 → 2026-04-21 (+49d) | 10d → 13.5d | 3257, 3176 → 3161, 3176 |  |
| 3178 | Internal Plaster | 2026-01-20 → 2026-03-08 (+47d) | 2026-01-28 → 2026-03-17 (+48d) | 8d → 10.12d | 3274FS+0.25d → 3162FS+0.25d, 3175FS+0.25d |  |
| 3179 | IPS flooring work | 2026-01-22 → 2026-04-21 (+89d) | 2026-02-01 → 2026-04-30 (+88d) | 10d → 10.12d | 3163, 3207, 3208, 3209 → 3163, 3175, 3176, 3177 |  |
| 3180 | Toilet dado work | 2026-01-22 → 2026-04-21 (+89d) | 2026-01-30 → 2026-04-29 (+89d) | 8d → 9d | 3164, 3209, 3226 → 3164, 3177, 3178 |  |
| 3181 | Toilet flooring work | 2026-01-30 → 2026-04-29 (+89d) | 2026-02-07 → 2026-05-06 (+88d) | 8d → 7.88d |  |  |
| 3182 | Living dinning flooring | 2026-02-05 → 2026-03-24 (+47d) | 2026-02-12 → 2026-03-28 (+44d) | 7d → 4.5d |  |  |
| 3183 | Aluminium door-window fixing | 2026-02-24 → 2026-05-04 (+69d) | 2026-03-08 → 2026-05-16 (+69d) | 12d → 13.5d | 3167FS+0.25d → 3167FS+0.25d, 3182FS+0.25d |  |
| 3184 | Putty primer coat | 2026-03-21 → 2026-04-10 (+20d) | 2026-03-27 → 2026-04-16 (+20d) | 6d → 6.75d | 3168, 3246 → 3168, 3182 |  |
| 3185 | Door shutter fixing | 2026-03-21 → 2026-04-20 (+30d) | 2026-03-29 → 2026-04-28 (+30d) | 8d → 9d | 3169, 3246 → 3169, 3182 |  |
| 3186 | Electrical wiring work | 2026-03-29 → 2026-05-18 (+50d) | 2026-04-06 → 2026-05-30 (+54d) | 8d → 13.5d |  |  |
| 3187 | Painting 1st coat | 2026-04-06 → 2026-06-02 (+57d) | 2026-04-14 → 2026-06-14 (+61d) | 8d → 13.5d |  |  |
| 3188 | False ceiling | 2026-04-14 → 2026-06-14 (+61d) | 2026-04-22 → 2026-06-24 (+63d) | 8d → 11.25d |  |  |
| 3189 | **12th Floor** | 2025-12-18 → 2026-02-21 (+65d) | 2026-03-28 → 2026-07-06 (+100d) | 100.25d → 152.75d |  | constraint start no earlier than 2025-12-18 → start no earlier than 2026-02-21 |
| 3190 | Block Work | 2026-01-20 → 2026-02-21 (+32d) | 2026-01-28 → 2026-03-01 (+32d) | 8d → 9d |  |  |
| 3191 | Door Frame Fixing | 2026-02-08 → 2026-03-01 (+21d) | 2026-02-17 → 2026-03-06 (+17d) | 9d → 5.62d |  |  |
| 3192 | Internal Plumbing Works | 2026-01-28 → 2026-03-20 (+51d) | 2026-02-05 → 2026-03-30 (+53d) | 8d → 11.25d |  |  |
| 3193 | Waterproofing | 2026-03-03 → 2026-04-21 (+49d) | 2026-03-13 → 2026-05-03 (+51d) | 10d → 13.5d |  |  |
| 3194 | Internal Plaster | 2026-01-28 → 2026-03-17 (+48d) | 2026-02-05 → 2026-03-24 (+47d) | 8d → 7.88d | 3178FS+0.25d → 3178FS+0.25d, 3191FS+0.25d |  |
| 3195 | IPS flooring work | 2026-02-01 → 2026-05-03 (+91d) | 2026-02-11 → 2026-05-12 (+90d) | 10d → 10.12d | 3179, 3223, 3224, 3225 → 3179, 3191, 3192, 3193 |  |
| 3196 | Toilet dado work | 2026-02-01 → 2026-05-03 (+91d) | 2026-02-09 → 2026-05-11 (+91d) | 8d → 9d | 3180, 3225, 3242 → 3180, 3193, 3194 |  |
| 3197 | Toilet flooring work | 2026-02-09 → 2026-05-11 (+91d) | 2026-02-17 → 2026-05-18 (+90d) | 8d → 7.88d |  |  |
| 3198 | Living dinning flooring | 2026-02-12 → 2026-03-29 (+45d) | 2026-02-24 → 2026-04-10 (+45d) | 12d → 13.5d | 3182FS+0.25d → 3182FS+0.25d, 3191FS+0.25d |  |
| 3199 | Aluminium door-window fixing | 2026-03-08 → 2026-05-16 (+69d) | 2026-03-20 → 2026-05-28 (+69d) | 12d → 13.5d | 3183FS+0.25d → 3183, 3195, 3198 |  |
| 3200 | Putty primer coat | 2026-02-05 → 2026-04-16 (+70d) | 2026-02-11 → 2026-04-22 (+70d) | 6d → 6.75d | 3152, 3166 → 3184, 3198 |  |
| 3201 | Door shutter fixing | 2026-02-05 → 2026-04-28 (+82d) | 2026-02-13 → 2026-05-06 (+82d) | 8d → 9d | 3153, 3166 → 3185, 3198 |  |
| 3202 | Electrical wiring work | 2026-02-13 → 2026-05-30 (+106d) | 2026-02-21 → 2026-06-11 (+110d) | 8d → 13.5d | 3154, 3201 → 3186, 3201 |  |
| 3203 | Painting 1st coat | 2026-02-21 → 2026-06-14 (+113d) | 2026-03-01 → 2026-06-26 (+117d) | 8d → 13.5d | 3155, 3200, 3201, 3202 → 3187, 3200, 3201, 3202 |  |
| 3204 | False ceiling | 2026-03-01 → 2026-06-26 (+117d) | 2026-03-09 → 2026-07-06 (+119d) | 8d → 11.25d | 3156, 3203 → 3188, 3203 |  |
| 3205 | **13th Floor** | 2025-12-26 → 2026-03-01 (+65d) | 2026-04-05 → 2026-07-26 (+112d) | 100.25d → 165.75d |  | constraint start no earlier than 2025-12-26 → start no earlier than 2026-03-01 |
| 3206 | Block Work | 2025-10-26 → 2026-03-01 (+126d) | 2025-12-18 → 2026-03-09 (+81d) | 8d → 9d | 3158FS+0.25d → 3190FS+0.25d |  |
| 3207 | Door Frame Fixing | 2025-12-25 → 2026-03-09 (+74d) | 2026-01-03 → 2026-03-18 (+74d) | 9d → 10.12d | 3159, 3206 → 3191, 3206 |  |
| 3208 | Internal Plumbing Works | 2025-12-18 → 2026-03-30 (+102d) | 2025-12-26 → 2026-04-09 (+104d) | 8d → 11.25d | 3160, 3206 → 3192, 3206 |  |
| 3209 | Waterproofing | 2026-01-12 → 2026-05-03 (+111d) | 2026-01-22 → 2026-05-15 (+113d) | 10d → 13.5d | 3161, 3208 → 3193, 3208 |  |
| 3210 | Internal Plaster | 2025-10-26 → 2026-03-24 (+149d) | 2025-12-18 → 2026-03-29 (+101d) | 8d → 5.62d | 3162FS+0.25d → 3194FS+0.25d, 3207FS+0.25d |  |
| 3211 | IPS flooring work | 2026-02-11 → 2026-05-15 (+93d) | 2026-02-21 → 2026-05-24 (+92d) | 10d → 10.12d | 3195, 3239, 3241, 3258 → 3195, 3207, 3209, 3210 |  |
| 3212 | Toilet dado work | 2026-02-11 → 2026-05-15 (+93d) | 2026-02-19 → 2026-05-23 (+93d) | 8d → 9d | 3196, 3241, 3258 → 3196, 3209, 3210 |  |
| 3213 | Toilet flooring work | 2026-02-19 → 2026-05-23 (+93d) | 2026-02-27 → 2026-05-30 (+92d) | 8d → 7.88d |  |  |
| 3214 | Living dinning flooring | 2026-02-24 → 2026-05-30 (+95d) | 2026-03-04 → 2026-06-14 (+102d) | 8d → 16.88d | 3198FS+0.25d → 3198, 3207, 3213 |  |
| 3215 | Aluminium door-window fixing | 2026-03-20 → 2026-06-14 (+86d) | 2026-03-31 → 2026-06-29 (+90d) | 11d → 16.88d | 3199FS+0.25d → 3199, 3211, 3214 |  |
| 3216 | Putty primer coat | 2026-02-12 → 2026-06-14 (+122d) | 2026-02-18 → 2026-06-20 (+122d) | 6d → 6.75d | 3200, 3182 → 3200, 3214 |  |
| 3217 | Door shutter fixing | 2026-02-13 → 2026-06-14 (+121d) | 2026-02-21 → 2026-06-22 (+121d) | 8d → 9d | 3201, 3182 → 3201, 3214 |  |
| 3218 | Electrical wiring work | 2026-02-21 → 2026-06-22 (+121d) | 2026-03-01 → 2026-07-04 (+125d) | 8d → 13.5d |  |  |
| 3219 | Painting 1st coat | 2026-03-01 → 2026-07-04 (+125d) | 2026-03-09 → 2026-07-16 (+129d) | 8d → 13.5d |  |  |
| 3220 | False ceiling | 2026-03-09 → 2026-07-16 (+129d) | 2026-03-17 → 2026-07-26 (+131d) | 8d → 11.25d |  |  |
| 3221 | **14th Floor** | 2026-01-03 → 2026-03-09 (+65d) | 2026-04-14 → 2026-08-10 (+118d) | 100.25d → 173.38d |  | constraint start no earlier than 2026-01-03 → start no earlier than 2026-03-09 |
| 3222 | Block Work | 2025-12-18 → 2026-03-09 (+81d) | 2025-12-26 → 2026-03-17 (+81d) | 8d → 9d |  |  |
| 3223 | Door Frame Fixing | 2026-01-03 → 2026-03-18 (+74d) | 2026-01-12 → 2026-03-27 (+74d) | 9d → 10.12d |  |  |

| ID | Task | Start | Finish | Duration | Predecessors | Other |
| --- | --- | --- | --- | --- | --- | --- |
| 3224 | Internal Plumbing Works | 2025-12-26 → 2026-04-09 (+104d) | 2026-01-03 → 2026-04-19 (+106d) | 8d → 11.25d |  |  |
| 3225 | Waterproofing | 2026-01-22 → 2026-05-15 (+113d) | 2026-02-01 → 2026-05-27 (+115d) | 10d → 13.5d |  |  |
| 3226 | Internal Plaster | 2025-12-18 → 2026-03-29 (+101d) | 2025-12-26 → 2026-04-03 (+98d) | 8d → 5.62d | 3210FS+0.25d → 3210FS+0.25d, 3223FS+0.25d |  |
| 3227 | IPS flooring work | 2026-02-21 → 2026-05-27 (+95d) | 2026-03-03 → 2026-06-05 (+94d) | 10d → 10.12d | 3211, 3255, 3256, 3257 → 3211, 3223, 3224, 3225 |  |
| 3228 | Toilet dado work | 2026-02-21 → 2026-05-27 (+95d) | 2026-03-01 → 2026-06-04 (+95d) | 8d → 9d | 3212, 3257, 3274 → 3212, 3225, 3226 |  |
| 3229 | Toilet flooring work | 2026-03-01 → 2026-06-04 (+95d) | 2026-03-09 → 2026-06-11 (+94d) | 8d → 7.88d |  |  |
| 3230 | Living dinning flooring | 2026-03-05 → 2026-06-14 (+101d) | 2026-03-13 → 2026-06-29 (+108d) | 8d → 16.88d | 3214FS+0.25d → 3214, 3223, 3229 |  |
| 3231 | Aluminium door-window fixing | 2026-04-01 → 2026-06-29 (+89d) | 2026-04-13 → 2026-07-14 (+92d) | 12d → 16.88d | 3215FS+0.25d → 3215, 3227, 3230 |  |
| 3232 | Putty primer coat | 2026-02-24 → 2026-06-29 (+125d) | 2026-03-02 → 2026-07-05 (+125d) | 6d → 6.75d | 3216, 3198 → 3216, 3230 |  |
| 3233 | Door shutter fixing | 2026-02-24 → 2026-06-29 (+125d) | 2026-03-04 → 2026-07-07 (+125d) | 8d → 9d | 3217, 3198 → 3217, 3230 |  |
| 3234 | Electrical wiring work | 2026-03-04 → 2026-07-07 (+125d) | 2026-03-12 → 2026-07-19 (+129d) | 8d → 13.5d |  |  |
| 3235 | Painting 1st coat | 2026-03-12 → 2026-07-19 (+129d) | 2026-03-20 → 2026-07-31 (+133d) | 8d → 13.5d |  |  |
| 3236 | False ceiling | 2026-03-20 → 2026-07-31 (+133d) | 2026-03-28 → 2026-08-10 (+135d) | 8d → 11.25d |  |  |
| 3237 | **15th Floor** | 2026-01-12 → 2026-03-17 (+64d) | 2026-04-25 → 2026-08-25 (+122d) | 103d → 181d |  | constraint start no earlier than 2026-01-12 → start no earlier than 2026-03-17 |
| 3238 | Block Work | 2025-12-26 → 2026-03-17 (+81d) | 2026-01-03 → 2026-03-25 (+81d) | 8d → 9d |  |  |
| 3239 | Door Frame Fixing | 2026-01-12 → 2026-03-27 (+74d) | 2026-01-21 → 2026-04-05 (+74d) | 9d → 10.12d |  |  |
| 3240 | Internal Plumbing Works | 2026-01-03 → 2026-04-19 (+106d) | 2026-01-11 → 2026-04-29 (+108d) | 8d → 11.25d |  |  |
| 3241 | Waterproofing | 2026-02-01 → 2026-05-27 (+115d) | 2026-02-11 → 2026-06-08 (+117d) | 10d → 13.5d |  |  |
| 3242 | Internal Plaster | 2025-12-26 → 2026-06-08 (+164d) | 2026-01-03 → 2026-06-17 (+165d) | 8d → 10.12d | 3226FS+0.25d → 3226, 3239, 3240, 3241 |  |
| 3243 | IPS flooring work | 2026-03-03 → 2026-06-08 (+97d) | 2026-03-13 → 2026-06-17 (+96d) | 10d → 10.12d | 3227, 3175, 3176, 3177 → 3227, 3239, 3240, 3241 |  |
| 3244 | Toilet dado work | 2026-03-03 → 2026-06-17 (+106d) | 2026-03-11 → 2026-06-25 (+106d) | 8d → 9d | 3228, 3177, 3178 → 3228, 3241, 3242 |  |
| 3245 | Toilet flooring work | 2026-03-11 → 2026-06-25 (+106d) | 2026-03-19 → 2026-07-02 (+105d) | 8d → 7.88d |  |  |
| 3246 | Living dinning flooring | 2026-03-13 → 2026-07-02 (+111d) | 2026-03-21 → 2026-07-14 (+115d) | 8d → 13.5d | 3230FS+0.25d → 3230, 3239, 3245 |  |
| 3247 | Aluminium door-window fixing | 2026-04-13 → 2026-07-14 (+92d) | 2026-04-25 → 2026-07-26 (+92d) | 12d → 13.5d |  |  |
| 3248 | Putty primer coat | 2026-03-04 → 2026-07-14 (+132d) | 2026-03-10 → 2026-07-20 (+132d) | 6d → 6.75d | 3232, 3214 → 3232, 3246 |  |
| 3249 | Door shutter fixing | 2026-03-04 → 2026-07-14 (+132d) | 2026-03-12 → 2026-07-22 (+132d) | 8d → 9d | 3233, 3214 → 3233, 3246 |  |
| 3250 | Electrical wiring work | 2026-03-12 → 2026-07-22 (+132d) | 2026-03-20 → 2026-08-03 (+136d) | 8d → 13.5d |  |  |
| 3251 | Painting 1st coat | 2026-03-20 → 2026-08-03 (+136d) | 2026-03-28 → 2026-08-15 (+140d) | 8d → 13.5d |  |  |
| 3252 | False ceiling | 2026-03-28 → 2026-08-15 (+140d) | 2026-04-05 → 2026-08-25 (+142d) | 8d → 11.25d |  |  |
| 3253 | **16th Floor** | 2026-01-20 → 2026-05-24 (+124d) | 2026-05-07 → 2026-09-09 (+125d) | 106.75d → 121.5d |  | constraint start no earlier than 2026-01-20 → start no earlier than 2026-05-24 |
| 3254 | Block Work | 2026-01-03 → 2026-05-24 (+141d) | 2026-01-11 → 2026-06-01 (+141d) | 8d → 9d | 3238FS+0.25d → 2991, 3238 |  |
| 3255 | Door Frame Fixing | 2026-01-21 → 2026-06-01 (+131d) | 2026-01-30 → 2026-06-10 (+131d) | 9d → 10.12d |  |  |
| 3256 | Internal Plumbing Works | 2026-01-11 → 2026-06-01 (+141d) | 2026-01-19 → 2026-06-11 (+143d) | 8d → 11.25d |  |  |
| 3257 | Waterproofing | 2026-02-11 → 2026-06-11 (+120d) | 2026-02-21 → 2026-06-23 (+122d) | 10d → 13.5d |  |  |
| 3258 | Internal Plaster | 2026-01-03 → 2026-06-23 (+171d) | 2026-01-11 → 2026-07-02 (+172d) | 8d → 10.12d | 3242FS+0.25d → 3242, 3255, 3256, 3257 |  |
| 3259 | IPS flooring work | 2026-03-13 → 2026-06-23 (+102d) | 2026-03-23 → 2026-07-02 (+101d) | 10d → 10.12d | 3243, 3191, 3192, 3193 → 3243, 3255, 3256, 3257 |  |
| 3260 | Toilet dado work | 2026-03-13 → 2026-07-02 (+111d) | 2026-03-21 → 2026-07-10 (+111d) | 8d → 9d | 3244, 3193, 3194 → 3244, 3257, 3258 |  |
| 3261 | Toilet flooring work | 2026-03-21 → 2026-07-10 (+111d) | 2026-03-29 → 2026-07-17 (+110d) | 8d → 7.88d |  |  |
| 3262 | Living dinning flooring | 2026-03-21 → 2026-07-17 (+118d) | 2026-03-27 → 2026-07-29 (+124d) | 6d → 13.5d | 3246FS+0.25d → 3246, 3255, 3261 |  |
| 3263 | Aluminium door-window fixing | 2026-04-25 → 2026-07-29 (+95d) | 2026-05-07 → 2026-08-10 (+95d) | 12d → 13.5d |  |  |
| 3264 | Putty primer coat | 2026-03-27 → 2026-07-29 (+124d) | 2026-04-02 → 2026-08-04 (+124d) | 6d → 6.75d | 3184, 3262 → 3248, 3262 |  |
| 3265 | Door shutter fixing | 2026-03-29 → 2026-07-29 (+122d) | 2026-04-06 → 2026-08-06 (+122d) | 8d → 9d | 3185, 3262 → 3249, 3262 |  |
| 3266 | Electrical wiring work | 2026-04-06 → 2026-08-06 (+122d) | 2026-04-14 → 2026-08-18 (+126d) | 8d → 13.5d | 3186, 3265 → 3250, 3265 |  |
| 3267 | Painting 1st coat | 2026-04-14 → 2026-08-18 (+126d) | 2026-04-22 → 2026-08-30 (+130d) | 8d → 13.5d | 3187, 3264, 3265, 3266 → 3251, 3264, 3265, 3266 |  |
| 3268 | False ceiling | 2026-04-22 → 2026-08-30 (+130d) | 2026-04-30 → 2026-09-09 (+132d) | 8d → 11.25d | 3188, 3267 → 3252, 3267 |  |
| 3269 | **17th Floor** | 2026-01-28 → 2026-06-04 (+127d) | 2026-05-19 → 2026-09-21 (+125d) | 110.5d → 122.62d |  | constraint start no earlier than 2026-01-28 → start no earlier than 2026-06-04 |
| 3270 | Block Work | 2026-01-28 → 2026-06-04 (+127d) | 2026-02-05 → 2026-06-12 (+127d) | 8d → 9d | 3190FS+0.25d → 2992, 3254 |  |
| 3271 | Door Frame Fixing | 2026-02-17 → 2026-06-12 (+115d) | 2026-02-26 → 2026-06-21 (+115d) | 9d → 10.12d | 3191, 3270 → 3255, 3270 |  |
| 3272 | Internal Plumbing Works | 2026-02-05 → 2026-06-12 (+127d) | 2026-02-13 → 2026-06-22 (+129d) | 8d → 11.25d | 3192, 3270 → 3256, 3270 |  |
| 3273 | Waterproofing | 2026-03-13 → 2026-06-23 (+102d) | 2026-03-23 → 2026-07-05 (+104d) | 10d → 13.5d | 3193, 3272 → 3257, 3272 |  |
| 3274 | Internal Plaster | 2026-01-12 → 2026-07-05 (+174d) | 2026-01-20 → 2026-07-14 (+175d) | 8d → 10.12d | 3258FS+0.25d → 3258, 3271, 3272, 3273 |  |
| 3275 | IPS flooring work | 2026-03-23 → 2026-07-05 (+104d) | 2026-04-02 → 2026-07-14 (+103d) | 10d → 10.12d |  |  |
| 3276 | Toilet dado work | 2026-03-23 → 2026-07-14 (+113d) | 2026-03-31 → 2026-07-22 (+113d) | 8d → 9d | 3260, 3273, 3290 → 3260, 3273, 3274 |  |
| 3277 | Toilet flooring work | 2026-03-31 → 2026-07-22 (+113d) | 2026-04-08 → 2026-07-29 (+112d) | 8d → 7.88d |  |  |
| 3278 | Living dinning flooring | 2026-03-27 → 2026-07-29 (+124d) | 2026-04-03 → 2026-08-10 (+129d) | 7d → 13.5d | 3262FS+0.25d → 3262, 3271, 3277 |  |
| 3279 | Aluminium door-window fixing | 2026-05-07 → 2026-08-10 (+95d) | 2026-05-19 → 2026-08-22 (+95d) | 12d → 13.5d |  |  |
| 3280 | Putty primer coat | 2026-04-03 → 2026-08-10 (+129d) | 2026-04-09 → 2026-08-16 (+129d) | 6d → 6.75d |  |  |
| 3281 | Door shutter fixing | 2026-04-06 → 2026-08-10 (+126d) | 2026-04-14 → 2026-08-18 (+126d) | 8d → 9d |  |  |
| 3282 | Electrical wiring work | 2026-04-14 → 2026-08-18 (+126d) | 2026-04-22 → 2026-08-30 (+130d) | 8d → 13.5d |  |  |
| 3283 | Painting 1st coat | 2026-04-22 → 2026-08-30 (+130d) | 2026-04-30 → 2026-09-11 (+134d) | 8d → 13.5d |  |  |
| 3284 | False ceiling | 2026-04-30 → 2026-09-11 (+134d) | 2026-05-08 → 2026-09-21 (+136d) | 8d → 11.25d |  |  |
| 3285 | **18th Floor** | 2026-02-05 → 2026-06-15 (+130d) | 2026-06-12 → 2026-10-03 (+113d) | 126.25d → 123.75d |  | constraint start no earlier than 2026-02-05 → start no earlier than 2026-06-15 |
| 3286 | Block Work | 2026-02-05 → 2026-06-15 (+130d) | 2026-02-13 → 2026-06-23 (+130d) | 7.94d → 9d | 3270FS+0.25d → 2993, 3270 |  |
| 3287 | Door Frame Fixing | 2026-02-26 → 2026-06-23 (+117d) | 2026-03-07 → 2026-07-02 (+117d) | 8.94d → 10.12d |  |  |
| 3288 | Internal Plumbing Works | 2026-02-13 → 2026-06-23 (+130d) | 2026-02-23 → 2026-07-03 (+130d) | 9.94d → 11.25d |  |  |
| 3289 | Waterproofing | 2026-03-23 → 2026-07-05 (+104d) | 2026-04-04 → 2026-07-17 (+104d) | 11.94d → 13.5d |  |  |
| 3290 | Internal Plaster | 2026-02-05 → 2026-07-17 (+162d) | 2026-02-13 → 2026-07-26 (+163d) | 8d → 10.12d | 3194FS+0.25d → 3274, 3287, 3288, 3289 |  |
| 3291 | IPS flooring work | 2026-04-04 → 2026-07-17 (+104d) | 2026-04-13 → 2026-07-26 (+104d) | 8.94d → 10.12d |  |  |
| 3292 | Toilet dado work | 2026-04-04 → 2026-07-26 (+113d) | 2026-04-12 → 2026-08-03 (+113d) | 7.94d → 9d | 3276, 3289, 3306 → 3276, 3289, 3290 |  |
| 3293 | Toilet flooring work | 2026-04-12 → 2026-08-03 (+113d) | 2026-04-19 → 2026-08-10 (+113d) | 6.94d → 7.88d |  |  |

| ID | Task | Start | Finish | Duration | Predecessors | Other |
| --- | --- | --- | --- | --- | --- | --- |
| 3294 | Living dinning flooring | 2026-04-19 → 2026-08-10 (+113d) | 2026-05-01 → 2026-08-22 (+113d) | 11.94d → 13.5d |  |  |
| 3295 | Aluminium door-window fixing | 2026-05-19 → 2026-08-22 (+95d) | 2026-05-31 → 2026-09-03 (+95d) | 11.94d → 13.5d |  |  |
| 3296 | Putty primer coat | 2026-05-01 → 2026-08-22 (+113d) | 2026-05-07 → 2026-08-28 (+113d) | 5.94d → 6.75d |  |  |
| 3297 | Door shutter fixing | 2026-05-01 → 2026-08-22 (+113d) | 2026-05-09 → 2026-08-30 (+113d) | 7.94d → 9d |  |  |
| 3298 | Electrical wiring work | 2026-05-09 → 2026-08-30 (+113d) | 2026-05-21 → 2026-09-11 (+113d) | 11.94d → 13.5d |  |  |
| 3299 | Painting 1st coat | 2026-05-21 → 2026-09-11 (+113d) | 2026-06-02 → 2026-09-23 (+113d) | 11.94d → 13.5d |  |  |
| 3300 | False ceiling | 2026-06-02 → 2026-09-23 (+113d) | 2026-06-12 → 2026-10-03 (+113d) | 9.94d → 11.25d |  |  |
| 3301 | **19th Floor** | 2026-02-14 → 2026-06-26 (+132d) | 2026-06-24 → 2026-10-15 (+113d) | 130d → 124.88d |  | constraint start no earlier than 2026-02-14 → start no earlier than 2026-06-26 |
| 3302 | Block Work | 2026-02-14 → 2026-06-26 (+132d) | 2026-02-21 → 2026-07-04 (+133d) | 7.94d → 9d | 3286FS+0.25d → 2994, 3286 |  |
| 3303 | Door Frame Fixing | 2026-03-07 → 2026-07-04 (+119d) | 2026-03-16 → 2026-07-13 (+119d) | 8.94d → 10.12d |  |  |
| 3304 | Internal Plumbing Works | 2026-02-23 → 2026-07-04 (+131d) | 2026-03-05 → 2026-07-14 (+131d) | 9.94d → 11.25d |  |  |
| 3305 | Waterproofing | 2026-04-04 → 2026-07-17 (+104d) | 2026-04-16 → 2026-07-29 (+104d) | 11.94d → 13.5d |  |  |
| 3306 | Internal Plaster | 2026-02-14 → 2026-07-29 (+165d) | 2026-02-23 → 2026-08-07 (+165d) | 8.94d → 10.12d | 3290FS+0.25d → 3290, 3303, 3304, 3305 |  |
| 3307 | IPS flooring work | 2026-04-16 → 2026-08-07 (+113d) | 2026-04-25 → 2026-08-16 (+113d) | 8.94d → 10.12d | 3291, 3303, 3305, 3322 → 3291, 3303, 3305, 3306 |  |
| 3308 | Toilet dado work | 2026-04-16 → 2026-08-07 (+113d) | 2026-04-24 → 2026-08-15 (+113d) | 7.94d → 9d | 3292, 3305, 3322 → 3292, 3305, 3306 |  |
| 3309 | Toilet flooring work | 2026-04-24 → 2026-08-15 (+113d) | 2026-05-01 → 2026-08-22 (+113d) | 6.94d → 7.88d |  |  |
| 3310 | Living dinning flooring | 2026-05-01 → 2026-08-22 (+113d) | 2026-05-13 → 2026-09-03 (+113d) | 11.94d → 13.5d |  |  |
| 3311 | Aluminium door-window fixing | 2026-05-31 → 2026-09-03 (+95d) | 2026-06-11 → 2026-09-15 (+96d) | 11.94d → 13.5d |  |  |
| 3312 | Putty primer coat | 2026-05-13 → 2026-09-03 (+113d) | 2026-05-19 → 2026-09-09 (+113d) | 5.94d → 6.75d |  |  |
| 3313 | Door shutter fixing | 2026-05-13 → 2026-09-03 (+113d) | 2026-05-21 → 2026-09-11 (+113d) | 7.94d → 9d |  |  |
| 3314 | Electrical wiring work | 2026-05-21 → 2026-09-11 (+113d) | 2026-06-02 → 2026-09-23 (+113d) | 11.94d → 13.5d |  |  |
| 3315 | Painting 1st coat | 2026-06-02 → 2026-09-23 (+113d) | 2026-06-14 → 2026-10-05 (+113d) | 11.94d → 13.5d |  |  |
| 3316 | False ceiling | 2026-06-14 → 2026-10-05 (+113d) | 2026-06-24 → 2026-10-15 (+113d) | 9.94d → 11.25d |  |  |
| 3317 | **20th Floor** | 2026-02-22 → 2026-07-07 (+135d) | 2026-07-14 → 2026-10-27 (+105d) | 142.69d → 126d |  | constraint start no earlier than 2026-02-22 → start no earlier than 2026-07-07 |
| 3318 | Block Work | 2026-02-22 → 2026-07-07 (+135d) | 2026-03-02 → 2026-07-15 (+135d) | 7.94d → 9d | 3302FS+0.25d → 2995, 3302 |  |
| 3319 | Door Frame Fixing | 2026-03-16 → 2026-07-15 (+121d) | 2026-03-25 → 2026-07-24 (+121d) | 8.94d → 10.12d |  |  |
| 3320 | Internal Plumbing Works | 2026-03-05 → 2026-07-15 (+132d) | 2026-03-15 → 2026-07-25 (+132d) | 9.94d → 11.25d |  |  |
| 3321 | Waterproofing | 2026-04-16 → 2026-07-29 (+104d) | 2026-04-28 → 2026-08-10 (+104d) | 11.94d → 13.5d |  |  |
| 3322 | Internal Plaster | 2026-02-23 → 2026-08-10 (+168d) | 2026-03-04 → 2026-08-19 (+168d) | 8.94d → 10.12d | 3306FS+0.25d → 3306, 3319, 3320, 3321 |  |
| 3323 | IPS flooring work | 2026-05-07 → 2026-08-19 (+104d) | 2026-05-16 → 2026-08-28 (+104d) | 8.94d → 10.12d | 3307, 3319, 3321, 3338 → 3307, 3319, 3321, 3322 |  |
| 3324 | Toilet dado work | 2026-05-07 → 2026-08-19 (+104d) | 2026-05-15 → 2026-08-27 (+104d) | 7.94d → 9d | 3308, 3321, 3338 → 3308, 3321, 3322 |  |
| 3325 | Toilet flooring work | 2026-05-15 → 2026-08-27 (+104d) | 2026-05-22 → 2026-09-03 (+104d) | 6.94d → 7.88d |  |  |
| 3326 | Living dinning flooring | 2026-05-22 → 2026-09-03 (+104d) | 2026-06-03 → 2026-09-15 (+104d) | 11.94d → 13.5d |  |  |
| 3327 | Aluminium door-window fixing | 2026-06-12 → 2026-09-15 (+95d) | 2026-06-23 → 2026-09-27 (+96d) | 11.94d → 13.5d |  |  |
| 3328 | Putty primer coat | 2026-06-03 → 2026-09-15 (+104d) | 2026-06-09 → 2026-09-21 (+104d) | 5.94d → 6.75d |  |  |
| 3329 | Door shutter fixing | 2026-06-03 → 2026-09-15 (+104d) | 2026-06-11 → 2026-09-23 (+104d) | 7.94d → 9d |  |  |
| 3330 | Electrical wiring work | 2026-06-11 → 2026-09-23 (+104d) | 2026-06-23 → 2026-10-05 (+104d) | 11.94d → 13.5d |  |  |
| 3331 | Painting 1st coat | 2026-06-23 → 2026-10-05 (+104d) | 2026-07-04 → 2026-10-17 (+105d) | 11.94d → 13.5d |  |  |
| 3332 | False ceiling | 2026-07-05 → 2026-10-17 (+104d) | 2026-07-14 → 2026-10-27 (+105d) | 9.94d → 11.25d |  |  |
| 3333 | **21st Floor** | 2026-05-07 → 2026-07-18 (+72d) | 2026-08-22 → 2026-12-23 (+123d) | 107.31d → 127.12d |  | constraint start no earlier than 2026-05-07 → start no earlier than 2026-07-18 |
| 3334 | Block Work | 2026-05-07 → 2026-07-18 (+72d) | 2026-05-15 → 2026-07-26 (+72d) | 7.94d → 9d |  |  |
| 3335 | Door Frame Fixing | 2026-05-15 → 2026-07-26 (+72d) | 2026-05-24 → 2026-08-04 (+72d) | 8.94d → 10.12d |  |  |
| 3336 | Internal Plumbing Works | 2026-05-15 → 2026-07-26 (+72d) | 2026-05-25 → 2026-08-05 (+72d) | 9.94d → 11.25d |  |  |
| 3337 | Waterproofing | 2026-05-25 → 2026-08-10 (+77d) | 2026-06-06 → 2026-08-22 (+77d) | 11.94d → 13.5d |  |  |
| 3338 | Internal Plaster | 2026-04-28 → 2026-08-22 (+116d) | 2026-05-07 → 2026-08-31 (+116d) | 8.94d → 10.12d | 3322, 3319, 3320, 3321 → 3322, 3335, 3336, 3337 |  |
| 3339 | IPS flooring work | 2026-06-15 → 2026-08-31 (+77d) | 2026-06-24 → 2026-09-09 (+77d) | 8.94d → 10.12d | 3323, 3335, 3337, 3354 → 3323, 3335, 3337, 3338 |  |
| 3340 | Toilet dado work | 2026-06-15 → 2026-08-31 (+77d) | 2026-06-23 → 2026-09-08 (+77d) | 7.94d → 9d | 3324, 3337, 3354 → 3324, 3337, 3338 |  |
| 3341 | Toilet flooring work | 2026-06-23 → 2026-09-08 (+77d) | 2026-06-29 → 2026-09-15 (+78d) | 6.94d → 7.88d |  |  |
| 3342 | Living dinning flooring | 2026-06-30 → 2026-09-15 (+77d) | 2026-07-11 → 2026-09-27 (+78d) | 11.94d → 13.5d |  |  |
| 3343 | Aluminium door-window fixing | 2026-07-11 → 2026-09-27 (+78d) | 2026-07-23 → 2026-10-09 (+78d) | 11.94d → 13.5d |  |  |
| 3344 | Putty primer coat | 2026-07-11 → 2026-09-27 (+78d) | 2026-07-17 → 2026-10-03 (+78d) | 5.94d → 6.75d |  |  |
| 3345 | Door shutter fixing | 2026-07-11 → 2026-09-27 (+78d) | 2026-07-19 → 2026-10-05 (+78d) | 7.94d → 9d |  |  |
| 3346 | Electrical wiring work | 2026-07-19 → 2026-10-05 (+78d) | 2026-07-31 → 2026-10-17 (+78d) | 11.94d → 13.5d |  |  |
| 3347 | Painting 1st coat | 2026-07-31 → 2026-10-17 (+78d) | 2026-08-12 → 2026-10-29 (+78d) | 11.94d → 13.5d |  |  |
| 3348 | False ceiling | 2026-08-12 → 2026-10-29 (+78d) | 2026-08-22 → 2026-12-23 (+123d) | 9.94d → 11.25d |  |  |
| 3349 | **22nd Floor** | 2026-05-15 → 2026-07-29 (+75d) | 2026-09-03 → 2027-01-04 (+123d) | 111.25d → 128.25d |  | constraint start no earlier than 2026-05-15 → start no earlier than 2026-07-29 |
| 3350 | Block Work | 2026-05-15 → 2026-07-29 (+75d) | 2026-05-23 → 2026-08-06 (+75d) | 7.94d → 9d |  |  |
| 3351 | Door Frame Fixing | 2026-05-24 → 2026-08-06 (+74d) | 2026-06-02 → 2026-08-15 (+74d) | 8.94d → 10.12d |  |  |
| 3352 | Internal Plumbing Works | 2026-05-25 → 2026-08-06 (+73d) | 2026-06-04 → 2026-08-16 (+73d) | 9.94d → 11.25d |  |  |
| 3353 | Waterproofing | 2026-06-06 → 2026-08-22 (+77d) | 2026-06-18 → 2026-09-03 (+77d) | 11.94d → 13.5d |  |  |
| 3354 | Internal Plaster | 2026-06-06 → 2026-09-03 (+89d) | 2026-06-15 → 2026-09-12 (+89d) | 8.94d → 10.12d | 3338, 3335, 3336, 3337 → 3338, 3351, 3352, 3353 |  |
| 3355 | IPS flooring work | 2026-06-27 → 2026-09-12 (+77d) | 2026-07-05 → 2026-09-21 (+78d) | 8.94d → 10.12d | 3339, 3351, 3353, 3370 → 3339, 3351, 3353, 3354 |  |
| 3356 | Toilet dado work | 2026-06-27 → 2026-09-12 (+77d) | 2026-07-04 → 2026-09-20 (+78d) | 7.94d → 9d | 3340, 3353, 3370 → 3340, 3353, 3354 |  |
| 3357 | Toilet flooring work | 2026-07-05 → 2026-09-20 (+77d) | 2026-07-11 → 2026-09-27 (+78d) | 6.94d → 7.88d |  |  |
| 3358 | Living dinning flooring | 2026-07-11 → 2026-09-27 (+78d) | 2026-07-23 → 2026-10-09 (+78d) | 11.94d → 13.5d |  |  |
| 3359 | Aluminium door-window fixing | 2026-07-23 → 2026-10-09 (+78d) | 2026-08-04 → 2026-10-21 (+78d) | 11.94d → 13.5d |  |  |
| 3360 | Putty primer coat | 2026-07-23 → 2026-10-09 (+78d) | 2026-07-29 → 2026-10-15 (+78d) | 5.94d → 6.75d |  |  |
| 3361 | Door shutter fixing | 2026-07-23 → 2026-10-09 (+78d) | 2026-07-31 → 2026-10-17 (+78d) | 7.94d → 9d |  |  |
| 3362 | Electrical wiring work | 2026-07-31 → 2026-10-17 (+78d) | 2026-08-12 → 2026-10-29 (+78d) | 11.94d → 13.5d |  |  |
| 3363 | Painting 1st coat | 2026-08-12 → 2026-10-29 (+78d) | 2026-08-24 → 2026-12-25 (+123d) | 11.94d → 13.5d |  |  |

| ID | Task | Start | Finish | Duration | Predecessors | Other |
| --- | --- | --- | --- | --- | --- | --- |
| 3364 | False ceiling | 2026-08-24 → 2026-12-25 (+123d) | 2026-09-03 → 2027-01-04 (+123d) | 9.94d → 11.25d |  |  |
| 3365 | **23rd Floor** | 2026-05-23 → 2026-08-09 (+78d) | 2026-09-18 → 2027-01-19 (+123d) | 118.19d → 132.75d |  | constraint start no earlier than 2026-05-23 → start no earlier than 2026-08-09 |
| 3366 | Block Work | 2026-05-23 → 2026-08-09 (+78d) | 2026-05-31 → 2026-08-17 (+78d) | 7.94d → 9d |  |  |
| 3367 | Door Frame Fixing | 2026-06-02 → 2026-08-17 (+76d) | 2026-06-11 → 2026-08-26 (+76d) | 8.94d → 10.12d |  |  |
| 3368 | Internal Plumbing Works | 2026-06-04 → 2026-08-17 (+74d) | 2026-06-14 → 2026-08-27 (+74d) | 9.94d → 11.25d |  |  |
| 3369 | Waterproofing | 2026-06-18 → 2026-09-03 (+77d) | 2026-06-30 → 2026-09-15 (+77d) | 11.94d → 13.5d |  |  |
| 3370 | Internal Plaster | 2026-06-18 → 2026-09-15 (+89d) | 2026-06-27 → 2026-09-24 (+89d) | 8.94d → 10.12d | 3354, 3351, 3352, 3353 → 3354, 3367, 3368, 3369 |  |
| 3371 | IPS flooring work | 2026-07-09 → 2026-09-24 (+77d) | 2026-07-17 → 2026-10-03 (+78d) | 8.94d → 10.12d | 3355, 3367, 3369, 3386 → 3355, 3367, 3369, 3370 |  |
| 3372 | Toilet dado work | 2026-07-09 → 2026-09-24 (+77d) | 2026-07-16 → 2026-10-02 (+78d) | 7.94d → 9d | 3356, 3369, 3386 → 3356, 3369, 3370 |  |
| 3373 | Toilet flooring work | 2026-07-16 → 2026-10-02 (+78d) | 2026-07-23 → 2026-10-09 (+78d) | 6.94d → 7.88d |  |  |
| 3374 | Living dinning flooring | 2026-07-23 → 2026-10-09 (+78d) | 2026-08-07 → 2026-10-24 (+78d) | 14.94d → 16.88d |  |  |
| 3375 | Aluminium door-window fixing | 2026-08-07 → 2026-10-24 (+78d) | 2026-08-22 → 2026-12-23 (+123d) | 14.94d → 16.88d |  |  |
| 3376 | Putty primer coat | 2026-08-07 → 2026-10-24 (+78d) | 2026-08-13 → 2026-10-30 (+78d) | 5.94d → 6.75d |  |  |
| 3377 | Door shutter fixing | 2026-08-07 → 2026-10-24 (+78d) | 2026-08-15 → 2026-12-16 (+123d) | 7.94d → 9d |  |  |
| 3378 | Electrical wiring work | 2026-08-15 → 2026-12-16 (+123d) | 2026-08-27 → 2026-12-28 (+123d) | 11.94d → 13.5d |  |  |
| 3379 | Painting 1st coat | 2026-08-27 → 2026-12-28 (+123d) | 2026-09-08 → 2027-01-09 (+123d) | 11.94d → 13.5d |  |  |
| 3380 | False ceiling | 2026-09-08 → 2027-01-09 (+123d) | 2026-09-18 → 2027-01-19 (+123d) | 9.94d → 11.25d |  |  |
| 3381 | **24th Floor** | 2026-05-31 → 2026-08-20 (+81d) | 2026-10-03 → 2027-02-03 (+123d) | 125.12d → 137.25d |  | constraint start no earlier than 2026-05-31 → start no earlier than 2026-08-20 |
| 3382 | Block Work | 2026-05-31 → 2026-08-20 (+81d) | 2026-06-08 → 2026-08-28 (+81d) | 7.94d → 9d |  |  |
| 3383 | Door Frame Fixing | 2026-06-11 → 2026-08-28 (+78d) | 2026-06-20 → 2026-09-06 (+78d) | 8.94d → 10.12d |  |  |
| 3384 | Internal Plumbing Works | 2026-06-14 → 2026-08-28 (+75d) | 2026-06-24 → 2026-09-07 (+75d) | 9.94d → 11.25d |  |  |
| 3385 | Waterproofing | 2026-06-30 → 2026-09-15 (+77d) | 2026-07-11 → 2026-09-27 (+78d) | 11.94d → 13.5d |  |  |
| 3386 | Internal Plaster | 2026-06-30 → 2026-09-27 (+89d) | 2026-07-08 → 2026-10-06 (+90d) | 8.94d → 10.12d | 3370, 3367, 3368, 3369 → 3370, 3383, 3384, 3385 |  |
| 3387 | IPS flooring work | 2026-07-20 → 2026-10-06 (+78d) | 2026-07-29 → 2026-10-15 (+78d) | 8.94d → 10.12d | 3371, 3383, 3385, 3402 → 3371, 3383, 3385, 3386 |  |
| 3388 | Toilet dado work | 2026-07-20 → 2026-10-06 (+78d) | 2026-07-28 → 2026-10-14 (+78d) | 7.94d → 9d | 3372, 3385, 3402 → 3372, 3385, 3386 |  |
| 3389 | Toilet flooring work | 2026-07-28 → 2026-10-14 (+78d) | 2026-08-04 → 2026-10-21 (+78d) | 6.94d → 7.88d |  |  |
| 3390 | Living dinning flooring | 2026-08-07 → 2026-10-24 (+78d) | 2026-08-22 → 2026-12-23 (+123d) | 14.94d → 16.88d |  |  |
| 3391 | Aluminium door-window fixing | 2026-08-22 → 2026-12-23 (+123d) | 2026-09-06 → 2027-01-07 (+123d) | 14.94d → 16.88d |  |  |
| 3392 | Putty primer coat | 2026-08-22 → 2026-12-23 (+123d) | 2026-08-28 → 2026-12-29 (+123d) | 5.94d → 6.75d |  |  |
| 3393 | Door shutter fixing | 2026-08-22 → 2026-12-23 (+123d) | 2026-08-30 → 2026-12-31 (+123d) | 7.94d → 9d |  |  |
| 3394 | Electrical wiring work | 2026-08-30 → 2026-12-31 (+123d) | 2026-09-11 → 2027-01-12 (+123d) | 11.94d → 13.5d |  |  |
| 3395 | Painting 1st coat | 2026-09-11 → 2027-01-12 (+123d) | 2026-09-23 → 2027-01-24 (+123d) | 11.94d → 13.5d |  |  |
| 3396 | False ceiling | 2026-09-23 → 2027-01-24 (+123d) | 2026-10-03 → 2027-02-03 (+123d) | 9.94d → 11.25d |  |  |
| 3397 | **25th Floor** | 2026-06-13 → 2026-08-31 (+79d) | 2026-10-18 → 2027-02-18 (+123d) | 127.31d → 141.75d |  | constraint start no earlier than 2026-06-13 → start no earlier than 2026-08-31 |
| 3398 | Block Work | 2026-06-13 → 2026-08-31 (+79d) | 2026-06-21 → 2026-09-08 (+79d) | 7.94d → 9d |  |  |
| 3399 | Door Frame Fixing | 2026-06-21 → 2026-09-08 (+79d) | 2026-06-29 → 2026-09-17 (+80d) | 8.94d → 10.12d |  |  |
| 3400 | Internal Plumbing Works | 2026-06-24 → 2026-09-08 (+76d) | 2026-07-03 → 2026-09-18 (+77d) | 9.94d → 11.25d |  |  |
| 3401 | Waterproofing | 2026-07-12 → 2026-09-27 (+77d) | 2026-07-23 → 2026-10-09 (+78d) | 11.94d → 13.5d |  |  |
| 3402 | Internal Plaster | 2026-07-12 → 2026-10-09 (+89d) | 2026-07-20 → 2026-10-18 (+90d) | 8.94d → 10.12d | 3386, 3383, 3384, 3385 → 3386, 3399, 3400, 3401 |  |
| 3403 | IPS flooring work | 2026-08-01 → 2026-10-18 (+78d) | 2026-08-10 → 2026-10-27 (+78d) | 8.94d → 10.12d | 3387, 3399, 3401, 3418 → 3387, 3399, 3401, 3402 |  |
| 3404 | Toilet dado work | 2026-08-01 → 2026-10-18 (+78d) | 2026-08-09 → 2026-10-26 (+78d) | 7.94d → 9d | 3388, 3401, 3418 → 3388, 3401, 3402 |  |
| 3405 | Toilet flooring work | 2026-08-09 → 2026-10-26 (+78d) | 2026-08-16 → 2026-12-17 (+123d) | 6.94d → 7.88d |  |  |
| 3406 | Living dinning flooring | 2026-08-22 → 2026-12-23 (+123d) | 2026-09-06 → 2027-01-07 (+123d) | 14.94d → 16.88d |  |  |
| 3407 | Aluminium door-window fixing | 2026-09-06 → 2027-01-07 (+123d) | 2026-09-21 → 2027-01-22 (+123d) | 14.94d → 16.88d |  |  |
| 3408 | Putty primer coat | 2026-09-06 → 2027-01-07 (+123d) | 2026-09-12 → 2027-01-13 (+123d) | 5.94d → 6.75d |  |  |
| 3409 | Door shutter fixing | 2026-09-06 → 2027-01-07 (+123d) | 2026-09-14 → 2027-01-15 (+123d) | 7.94d → 9d |  |  |
| 3410 | Electrical wiring work | 2026-09-14 → 2027-01-15 (+123d) | 2026-09-26 → 2027-01-27 (+123d) | 11.94d → 13.5d |  |  |
| 3411 | Painting 1st coat | 2026-09-26 → 2027-01-27 (+123d) | 2026-10-08 → 2027-02-08 (+123d) | 11.94d → 13.5d |  |  |
| 3412 | False ceiling | 2026-10-08 → 2027-02-08 (+123d) | 2026-10-18 → 2027-02-18 (+123d) | 9.94d → 11.25d |  |  |
| 3413 | **26th Floor** | 2026-06-24 → 2026-09-11 (+79d) | 2026-12-17 → 2027-03-05 (+78d) | 130.5d → 146.25d |  | constraint start no earlier than 2026-06-24 → start no earlier than 2026-09-11 |
| 3414 | Block Work | 2026-06-24 → 2026-09-11 (+79d) | 2026-07-02 → 2026-09-19 (+79d) | 7.94d → 9d |  |  |
| 3415 | Door Frame Fixing | 2026-07-02 → 2026-09-19 (+79d) | 2026-07-11 → 2026-09-28 (+79d) | 8.94d → 10.12d |  |  |
| 3416 | Internal Plumbing Works | 2026-07-04 → 2026-09-19 (+77d) | 2026-07-13 → 2026-09-29 (+78d) | 9.94d → 11.25d |  |  |
| 3417 | Waterproofing | 2026-07-23 → 2026-10-09 (+78d) | 2026-08-04 → 2026-10-21 (+78d) | 11.94d → 13.5d |  |  |
| 3418 | Internal Plaster | 2026-07-23 → 2026-10-21 (+90d) | 2026-08-01 → 2026-10-30 (+90d) | 8.94d → 10.12d | 3402, 3399, 3400, 3401 → 3402, 3415, 3416, 3417 |  |
| 3419 | IPS flooring work | 2026-08-13 → 2026-10-30 (+78d) | 2026-08-22 → 2026-12-23 (+123d) | 8.94d → 10.12d | 3403, 3415, 3417, 3434 → 3403, 3415, 3417, 3418 |  |
| 3420 | Toilet dado work | 2026-08-13 → 2026-10-30 (+78d) | 2026-08-21 → 2026-12-22 (+123d) | 7.94d → 9d | 3404, 3417, 3434 → 3404, 3417, 3418 |  |
| 3421 | Toilet flooring work | 2026-08-21 → 2026-12-22 (+123d) | 2026-08-28 → 2026-12-29 (+123d) | 6.94d → 7.88d |  |  |
| 3422 | Living dinning flooring | 2026-09-06 → 2027-01-07 (+123d) | 2026-09-21 → 2027-01-22 (+123d) | 14.94d → 16.88d |  |  |
| 3423 | Aluminium door-window fixing | 2026-09-21 → 2027-01-22 (+123d) | 2026-10-06 → 2027-02-06 (+123d) | 14.94d → 16.88d |  |  |
| 3424 | Putty primer coat | 2026-09-21 → 2027-01-22 (+123d) | 2026-09-27 → 2027-01-28 (+123d) | 5.94d → 6.75d |  |  |
| 3425 | Door shutter fixing | 2026-09-21 → 2027-01-22 (+123d) | 2026-09-29 → 2027-01-30 (+123d) | 7.94d → 9d |  |  |
| 3426 | Electrical wiring work | 2026-09-29 → 2027-01-30 (+123d) | 2026-10-11 → 2027-02-11 (+123d) | 11.94d → 13.5d |  |  |
| 3427 | Painting 1st coat | 2026-10-11 → 2027-02-11 (+123d) | 2026-10-23 → 2027-02-23 (+123d) | 11.94d → 13.5d |  |  |
| 3428 | False ceiling | 2026-10-23 → 2027-02-23 (+123d) | 2026-12-17 → 2027-03-05 (+78d) | 9.94d → 11.25d |  |  |
| 3429 | **27th Floor** | 2026-07-07 → 2026-09-22 (+77d) | 2027-01-01 → 2027-03-20 (+78d) | 132.69d → 150.75d |  | constraint start no earlier than 2026-07-07 → start no earlier than 2026-09-22 |
| 3430 | Block Work | 2026-07-07 → 2026-09-22 (+77d) | 2026-07-15 → 2026-09-30 (+77d) | 7.94d → 9d |  |  |
| 3431 | Door Frame Fixing | 2026-07-15 → 2026-09-30 (+77d) | 2026-07-24 → 2026-10-09 (+77d) | 8.94d → 10.12d |  |  |
| 3432 | Internal Plumbing Works | 2026-07-15 → 2026-09-30 (+77d) | 2026-07-25 → 2026-10-10 (+77d) | 9.94d → 11.25d |  |  |
| 3433 | Waterproofing | 2026-08-04 → 2026-10-21 (+78d) | 2026-08-16 → 2026-12-17 (+123d) | 11.94d → 13.5d |  |  |

| ID | Task | Start | Finish | Duration | Predecessors | Other |
| --- | --- | --- | --- | --- | --- | --- |
| 3434 | Internal Plaster | 2026-08-04 → 2026-12-17 (+135d) | 2026-08-13 → 2026-12-26 (+135d) | 8.94d → 10.12d | 3418, 3415, 3416, 3417 → 3418, 3431, 3432, 3433 |  |
| 3435 | IPS flooring work | 2026-08-25 → 2026-12-26 (+123d) | 2026-09-03 → 2027-01-04 (+123d) | 8.94d → 10.12d | 3419, 3431, 3433, 3450 → 3419, 3431, 3433, 3434 |  |
| 3436 | Toilet dado work | 2026-08-25 → 2026-12-26 (+123d) | 2026-09-02 → 2027-01-03 (+123d) | 7.94d → 9d | 3420, 3433, 3450 → 3420, 3433, 3434 |  |
| 3437 | Toilet flooring work | 2026-09-02 → 2027-01-03 (+123d) | 2026-09-09 → 2027-01-10 (+123d) | 6.94d → 7.88d |  |  |
| 3438 | Living dinning flooring | 2026-09-21 → 2027-01-22 (+123d) | 2026-10-06 → 2027-02-06 (+123d) | 14.94d → 16.88d |  |  |
| 3439 | Aluminium door-window fixing | 2026-10-06 → 2027-02-06 (+123d) | 2026-10-21 → 2027-02-21 (+123d) | 14.94d → 16.88d |  |  |
| 3440 | Putty primer coat | 2026-10-06 → 2027-02-06 (+123d) | 2026-10-12 → 2027-02-12 (+123d) | 5.94d → 6.75d |  |  |
| 3441 | Door shutter fixing | 2026-10-06 → 2027-02-06 (+123d) | 2026-10-14 → 2027-02-14 (+123d) | 7.94d → 9d |  |  |
| 3442 | Electrical wiring work | 2026-10-14 → 2027-02-14 (+123d) | 2026-10-26 → 2027-02-26 (+123d) | 11.94d → 13.5d |  |  |
| 3443 | Painting 1st coat | 2026-10-26 → 2027-02-26 (+123d) | 2026-12-22 → 2027-03-10 (+78d) | 11.94d → 13.5d |  |  |
| 3444 | False ceiling | 2026-12-22 → 2027-03-10 (+78d) | 2027-01-01 → 2027-03-20 (+78d) | 9.94d → 11.25d |  |  |
| 3445 | **28th Floor** | 2026-07-19 → 2026-10-03 (+76d) | 2027-01-16 → 2027-04-04 (+78d) | 135.88d → 155.25d |  | constraint start no earlier than 2026-07-19 → start no earlier than 2026-10-03 |
| 3446 | Block Work | 2026-07-19 → 2026-10-03 (+76d) | 2026-07-27 → 2026-10-11 (+76d) | 7.94d → 9d |  |  |
| 3447 | Door Frame Fixing | 2026-07-27 → 2026-10-11 (+76d) | 2026-08-05 → 2026-10-20 (+76d) | 8.94d → 10.12d |  |  |
| 3448 | Internal Plumbing Works | 2026-07-27 → 2026-10-11 (+76d) | 2026-08-06 → 2026-10-21 (+76d) | 9.94d → 11.25d |  |  |
| 3449 | Waterproofing | 2026-08-16 → 2026-12-17 (+123d) | 2026-08-28 → 2026-12-29 (+123d) | 11.94d → 13.5d |  |  |
| 3450 | Internal Plaster | 2026-08-16 → 2026-12-29 (+135d) | 2026-08-25 → 2027-01-07 (+135d) | 8.94d → 10.12d | 3434, 3431, 3432, 3433 → 3434, 3447, 3448, 3449 |  |
| 3451 | IPS flooring work | 2026-09-06 → 2027-01-07 (+123d) | 2026-09-15 → 2027-01-16 (+123d) | 8.94d → 10.12d | 3435, 3447, 3449, 3466 → 3435, 3447, 3449, 3450 |  |
| 3452 | Toilet dado work | 2026-09-06 → 2027-01-07 (+123d) | 2026-09-14 → 2027-01-15 (+123d) | 7.94d → 9d | 3436, 3449, 3466 → 3436, 3449, 3450 |  |
| 3453 | Toilet flooring work | 2026-09-14 → 2027-01-15 (+123d) | 2026-09-21 → 2027-01-22 (+123d) | 6.94d → 7.88d |  |  |
| 3454 | Living dinning flooring | 2026-10-06 → 2027-02-06 (+123d) | 2026-10-21 → 2027-02-21 (+123d) | 14.94d → 16.88d |  |  |
| 3455 | Aluminium door-window fixing | 2026-10-21 → 2027-02-21 (+123d) | 2026-12-20 → 2027-03-08 (+78d) | 14.94d → 16.88d |  |  |
| 3456 | Putty primer coat | 2026-10-21 → 2027-02-21 (+123d) | 2026-10-27 → 2027-02-27 (+123d) | 5.94d → 6.75d |  |  |
| 3457 | Door shutter fixing | 2026-10-21 → 2027-02-21 (+123d) | 2026-10-29 → 2027-03-01 (+123d) | 7.94d → 9d |  |  |
| 3458 | Electrical wiring work | 2026-10-29 → 2027-03-01 (+123d) | 2026-12-25 → 2027-03-13 (+78d) | 11.94d → 13.5d |  |  |
| 3459 | Painting 1st coat | 2026-12-25 → 2027-03-13 (+78d) | 2027-01-06 → 2027-03-25 (+78d) | 11.94d → 13.5d |  |  |
| 3460 | False ceiling | 2027-01-06 → 2027-03-25 (+78d) | 2027-01-16 → 2027-04-04 (+78d) | 9.94d → 11.25d |  |  |
| 3461 | **29th Floor** | 2026-08-03 → 2026-10-14 (+72d) | 2027-01-31 → 2027-04-19 (+78d) | 136.06d → 159.75d |  | constraint start no earlier than 2026-08-03 → start no earlier than 2026-10-14 |
| 3462 | Block Work | 2026-08-03 → 2026-10-14 (+72d) | 2026-08-11 → 2026-10-22 (+72d) | 7.94d → 9d |  |  |
| 3463 | Door Frame Fixing | 2026-08-11 → 2026-10-22 (+72d) | 2026-08-19 → 2026-10-31 (+73d) | 8.94d → 10.12d |  |  |
| 3464 | Internal Plumbing Works | 2026-08-11 → 2026-10-22 (+72d) | 2026-08-20 → 2026-12-16 (+118d) | 9.94d → 11.25d |  |  |
| 3465 | Waterproofing | 2026-08-28 → 2026-12-29 (+123d) | 2026-09-09 → 2027-01-10 (+123d) | 11.94d → 13.5d |  |  |
| 3466 | Internal Plaster | 2026-08-28 → 2027-01-10 (+135d) | 2026-09-06 → 2027-01-19 (+135d) | 8.94d → 10.12d | 3450, 3447, 3448, 3449 → 3450, 3463, 3464, 3465 |  |
| 3467 | IPS flooring work | 2026-09-18 → 2027-01-19 (+123d) | 2026-09-27 → 2027-01-28 (+123d) | 8.94d → 10.12d | 3451, 3463, 3465, 3482 → 3451, 3463, 3465, 3466 |  |
| 3468 | Toilet dado work | 2026-09-18 → 2027-01-19 (+123d) | 2026-09-26 → 2027-01-27 (+123d) | 7.94d → 9d | 3452, 3465, 3482 → 3452, 3465, 3466 |  |
| 3469 | Toilet flooring work | 2026-09-26 → 2027-01-27 (+123d) | 2026-10-03 → 2027-02-03 (+123d) | 6.94d → 7.88d |  |  |
| 3470 | Living dinning flooring | 2026-10-21 → 2027-02-21 (+123d) | 2026-12-20 → 2027-03-08 (+78d) | 14.94d → 16.88d |  |  |
| 3471 | Aluminium door-window fixing | 2026-12-20 → 2027-03-08 (+78d) | 2027-01-04 → 2027-03-23 (+78d) | 14.94d → 16.88d |  |  |
| 3472 | Putty primer coat | 2026-12-20 → 2027-03-08 (+78d) | 2026-12-26 → 2027-03-14 (+78d) | 5.94d → 6.75d |  |  |
| 3473 | Door shutter fixing | 2026-12-20 → 2027-03-08 (+78d) | 2026-12-28 → 2027-03-16 (+78d) | 7.94d → 9d |  |  |
| 3474 | Electrical wiring work | 2026-12-28 → 2027-03-16 (+78d) | 2027-01-09 → 2027-03-28 (+78d) | 11.94d → 13.5d |  |  |
| 3475 | Painting 1st coat | 2027-01-09 → 2027-03-28 (+78d) | 2027-01-21 → 2027-04-09 (+78d) | 11.94d → 13.5d |  |  |
| 3476 | False ceiling | 2027-01-21 → 2027-04-09 (+78d) | 2027-01-31 → 2027-04-19 (+78d) | 9.94d → 11.25d |  |  |
| 3477 | **30th Floor** | 2026-09-11 → 2026-10-25 (+44d) | 2027-02-21 → 2027-05-10 (+78d) | 117.5d → 171d |  | constraint start no earlier than 2026-09-11 → start no earlier than 2026-10-25 |
| 3478 | Block Work | 2026-09-11 → 2026-10-25 (+44d) | 2026-09-19 → 2026-12-17 (+89d) | 7.94d → 9d |  |  |
| 3479 | Door Frame Fixing | 2026-09-19 → 2026-12-17 (+89d) | 2026-09-28 → 2026-12-26 (+89d) | 8.94d → 10.12d |  |  |
| 3480 | Internal Plumbing Works | 2026-09-19 → 2026-12-17 (+89d) | 2026-09-29 → 2026-12-27 (+89d) | 9.94d → 11.25d |  |  |
| 3481 | Waterproofing | 2026-09-29 → 2027-01-10 (+103d) | 2026-10-11 → 2027-01-22 (+103d) | 11.94d → 13.5d |  |  |
| 3482 | Internal Plaster | 2026-09-09 → 2027-01-22 (+135d) | 2026-09-18 → 2027-01-31 (+135d) | 8.94d → 10.12d | 3466, 3463, 3464, 3465 → 3466, 3479, 3480, 3481 |  |
| 3483 | IPS flooring work | 2026-10-20 → 2027-01-31 (+103d) | 2026-10-29 → 2027-02-09 (+103d) | 8.94d → 10.12d | 3467, 3479, 3481, 3498 → 3467, 3479, 3481, 3482 |  |
| 3484 | Toilet dado work | 2026-10-20 → 2027-01-31 (+103d) | 2026-10-28 → 2027-02-08 (+103d) | 7.94d → 9d | 3468, 3481, 3498 → 3468, 3481, 3482 |  |
| 3485 | Toilet flooring work | 2026-10-28 → 2027-02-08 (+103d) | 2026-12-19 → 2027-02-15 (+58d) | 6.94d → 7.88d |  |  |
| 3486 | Living dinning flooring | 2026-12-20 → 2027-03-08 (+78d) | 2027-01-04 → 2027-03-23 (+78d) | 14.94d → 16.88d |  |  |
| 3487 | Aluminium door-window fixing | 2027-01-04 → 2027-03-23 (+78d) | 2027-01-19 → 2027-04-07 (+78d) | 14.94d → 16.88d |  |  |
| 3488 | Putty primer coat | 2027-01-04 → 2027-03-23 (+78d) | 2027-01-10 → 2027-03-29 (+78d) | 5.94d → 6.75d |  |  |
| 3489 | Door shutter fixing | 2027-01-04 → 2027-03-23 (+78d) | 2027-01-12 → 2027-03-31 (+78d) | 7.94d → 9d |  |  |
| 3490 | Electrical wiring work | 2027-01-12 → 2027-03-31 (+78d) | 2027-01-27 → 2027-04-15 (+78d) | 14.94d → 16.88d |  |  |
| 3491 | Painting 1st coat | 2027-01-27 → 2027-04-15 (+78d) | 2027-02-11 → 2027-04-30 (+78d) | 14.94d → 16.88d |  |  |
| 3492 | False ceiling | 2027-02-11 → 2027-04-30 (+78d) | 2027-02-21 → 2027-05-10 (+78d) | 9.94d → 11.25d |  |  |
| 3493 | **31st Floor** | 2026-09-19 → 2026-12-20 (+92d) | 2027-03-08 → 2027-05-25 (+78d) | 124.5d → 175.5d |  | constraint start no earlier than 2026-09-19 → start no earlier than 2026-12-20 |
| 3494 | Block Work | 2026-09-19 → 2026-12-20 (+92d) | 2026-09-27 → 2026-12-28 (+92d) | 7.94d → 9d |  |  |
| 3495 | Door Frame Fixing | 2026-09-28 → 2026-12-28 (+91d) | 2026-10-07 → 2027-01-06 (+91d) | 8.94d → 10.12d |  |  |
| 3496 | Internal Plumbing Works | 2026-09-29 → 2026-12-28 (+90d) | 2026-10-09 → 2027-01-07 (+90d) | 9.94d → 11.25d |  |  |
| 3497 | Waterproofing | 2026-10-11 → 2027-01-07 (+88d) | 2026-10-23 → 2027-01-19 (+88d) | 11.94d → 13.5d | 3481, 3496 → 3496 |  |
| 3498 | Internal Plaster | 2026-10-11 → 2027-01-31 (+112d) | 2026-10-20 → 2027-02-09 (+112d) | 8.94d → 10.12d | 3482, 3479, 3480, 3481 → 3482, 3495, 3496, 3497 |  |
| 3499 | IPS flooring work | 2026-12-16 → 2027-02-09 (+55d) | 2026-12-25 → 2027-02-18 (+55d) | 8.94d → 10.12d | 3483, 3495, 3497, 3514 → 3483, 3495, 3497, 3498 |  |
| 3500 | Toilet dado work | 2026-12-16 → 2027-02-09 (+55d) | 2026-12-24 → 2027-02-17 (+55d) | 7.94d → 9d | 3484, 3497, 3514 → 3484, 3497, 3498 |  |
| 3501 | Toilet flooring work | 2026-12-24 → 2027-02-17 (+55d) | 2026-12-31 → 2027-02-24 (+55d) | 6.94d → 7.88d |  |  |
| 3502 | Living dinning flooring | 2027-01-04 → 2027-03-23 (+78d) | 2027-01-19 → 2027-04-07 (+78d) | 14.94d → 16.88d |  |  |
| 3503 | Aluminium door-window fixing | 2027-01-19 → 2027-04-07 (+78d) | 2027-01-31 → 2027-04-19 (+78d) | 11.94d → 13.5d |  |  |

| ID | Task | Start | Finish | Duration | Predecessors | Other |
| --- | --- | --- | --- | --- | --- | --- |
| 3504 | Putty primer coat | 2027-01-19 → 2027-04-07 (+78d) | 2027-01-25 → 2027-04-13 (+78d) | 5.94d → 6.75d |  |  |
| 3505 | Door shutter fixing | 2027-01-19 → 2027-04-07 (+78d) | 2027-01-27 → 2027-04-15 (+78d) | 7.94d → 9d |  |  |
| 3506 | Electrical wiring work | 2027-01-27 → 2027-04-15 (+78d) | 2027-02-11 → 2027-04-30 (+78d) | 14.94d → 16.88d |  |  |
| 3507 | Painting 1st coat | 2027-02-11 → 2027-04-30 (+78d) | 2027-02-26 → 2027-05-15 (+78d) | 14.94d → 16.88d |  |  |
| 3508 | False ceiling | 2027-02-26 → 2027-05-15 (+78d) | 2027-03-08 → 2027-05-25 (+78d) | 9.94d → 11.25d |  |  |
| 3509 | **32nd Floor** | 2026-09-27 → 2026-12-28 (+92d) | 2027-03-22 → 2027-06-09 (+79d) | 131.5d → 183.38d |  | constraint start no earlier than 2026-09-27 → start no earlier than 2026-12-28 |
| 3510 | Block Work | 2026-09-27 → 2026-12-28 (+92d) | 2026-10-05 → 2027-01-05 (+92d) | 7.94d → 9d |  |  |
| 3511 | Door Frame Fixing | 2026-10-07 → 2027-01-06 (+91d) | 2026-10-16 → 2027-01-15 (+91d) | 8.94d → 10.12d |  |  |
| 3512 | Internal Plumbing Works | 2026-10-09 → 2027-01-07 (+90d) | 2026-10-19 → 2027-01-17 (+90d) | 9.94d → 11.25d |  |  |
| 3513 | Waterproofing | 2026-10-23 → 2027-01-19 (+88d) | 2026-12-19 → 2027-01-31 (+43d) | 11.94d → 13.5d |  |  |
| 3514 | Internal Plaster | 2026-10-23 → 2027-02-09 (+109d) | 2026-12-16 → 2027-02-18 (+64d) | 8.94d → 10.12d | 3498, 3495, 3496, 3497 → 3498, 3511, 3512, 3513 |  |
| 3515 | IPS flooring work | 2026-12-28 → 2027-02-18 (+52d) | 2027-01-06 → 2027-02-27 (+52d) | 8.94d → 10.12d | 3499, 3511, 3513, 3530 → 3499, 3511, 3513, 3514 |  |
| 3516 | Toilet dado work | 2026-12-28 → 2027-02-18 (+52d) | 2027-01-05 → 2027-02-26 (+52d) | 7.94d → 9d | 3500, 3513, 3530 → 3500, 3513, 3514 |  |
| 3517 | Toilet flooring work | 2027-01-05 → 2027-02-26 (+52d) | 2027-01-12 → 2027-03-05 (+52d) | 6.94d → 7.88d |  |  |
| 3518 | Living dinning flooring | 2027-01-19 → 2027-04-07 (+78d) | 2027-02-03 → 2027-04-22 (+78d) | 14.94d → 16.88d |  |  |
| 3519 | Aluminium door-window fixing | 2027-02-03 → 2027-04-22 (+78d) | 2027-02-15 → 2027-05-04 (+78d) | 11.94d → 13.5d |  |  |
| 3520 | Putty primer coat | 2027-02-03 → 2027-04-22 (+78d) | 2027-02-09 → 2027-04-28 (+78d) | 5.94d → 6.75d |  |  |
| 3521 | Door shutter fixing | 2027-02-03 → 2027-04-22 (+78d) | 2027-02-11 → 2027-04-30 (+78d) | 7.94d → 9d |  |  |
| 3522 | Electrical wiring work | 2027-02-11 → 2027-04-30 (+78d) | 2027-02-26 → 2027-05-15 (+78d) | 14.94d → 16.88d |  |  |
| 3523 | Painting 1st coat | 2027-02-26 → 2027-05-15 (+78d) | 2027-03-13 → 2027-05-30 (+78d) | 14.94d → 16.88d |  |  |
| 3524 | False ceiling | 2027-03-13 → 2027-05-30 (+78d) | 2027-03-22 → 2027-06-09 (+79d) | 9.94d → 11.25d |  |  |
| 3525 | **33rd Floor** | 2026-10-05 → 2027-01-05 (+92d) | 2027-04-03 → 2027-06-21 (+79d) | 135.5d → 187.88d |  | constraint start no earlier than 2026-10-05 → start no earlier than 2027-01-05 |
| 3526 | Block Work | 2026-10-05 → 2027-01-05 (+92d) | 2026-10-13 → 2027-01-13 (+92d) | 7.94d → 9d |  |  |
| 3527 | Door Frame Fixing | 2026-10-16 → 2027-01-15 (+91d) | 2026-10-25 → 2027-01-24 (+91d) | 8.94d → 10.12d |  |  |
| 3528 | Internal Plumbing Works | 2026-10-19 → 2027-01-17 (+90d) | 2026-10-29 → 2027-01-27 (+90d) | 9.94d → 11.25d |  |  |
| 3529 | Waterproofing | 2026-12-19 → 2027-01-31 (+43d) | 2026-12-31 → 2027-02-12 (+43d) | 11.94d → 13.5d |  |  |
| 3530 | Internal Plaster | 2026-12-19 → 2027-02-12 (+55d) | 2026-12-28 → 2027-02-21 (+55d) | 8.94d → 10.12d | 3514, 3511, 3512, 3513 → 3527, 3528, 3529 |  |
| 3531 | IPS flooring work | 2027-01-09 → 2027-02-27 (+49d) | 2027-01-18 → 2027-03-08 (+49d) | 8.94d → 10.12d | 3515, 3527, 3529, 3546 → 3515, 3527, 3529, 3530 |  |
| 3532 | Toilet dado work | 2027-01-09 → 2027-02-26 (+48d) | 2027-01-17 → 2027-03-06 (+48d) | 7.94d → 9d | 3516, 3529, 3546 → 3516, 3529, 3530 |  |
| 3533 | Toilet flooring work | 2027-01-17 → 2027-03-06 (+48d) | 2027-01-24 → 2027-03-13 (+48d) | 6.94d → 7.88d |  |  |
| 3534 | Living dinning flooring | 2027-02-03 → 2027-04-22 (+78d) | 2027-02-18 → 2027-05-07 (+78d) | 14.94d → 16.88d |  |  |
| 3535 | Aluminium door-window fixing | 2027-02-18 → 2027-05-07 (+78d) | 2027-03-05 → 2027-05-22 (+78d) | 14.94d → 16.88d |  |  |
| 3536 | Putty primer coat | 2027-02-18 → 2027-05-07 (+78d) | 2027-02-24 → 2027-05-13 (+78d) | 5.94d → 6.75d |  |  |
| 3537 | Door shutter fixing | 2027-02-18 → 2027-05-07 (+78d) | 2027-02-26 → 2027-05-15 (+78d) | 7.94d → 9d |  |  |
| 3538 | Electrical wiring work | 2027-02-26 → 2027-05-15 (+78d) | 2027-03-10 → 2027-05-27 (+78d) | 11.94d → 13.5d |  |  |
| 3539 | Painting 1st coat | 2027-03-13 → 2027-05-30 (+78d) | 2027-03-24 → 2027-06-11 (+79d) | 11.94d → 13.5d |  |  |
| 3540 | False ceiling | 2027-03-25 → 2027-06-11 (+78d) | 2027-04-03 → 2027-06-21 (+79d) | 9.94d → 11.25d |  |  |
| 3541 | **34th Floor** | 2026-10-13 → 2027-01-13 (+92d) | 2027-04-15 → 2027-07-03 (+79d) | 139.5d → 192.38d |  | constraint start no earlier than 2026-10-13 → start no earlier than 2027-01-13 |
| 3542 | Block Work | 2026-10-13 → 2027-01-13 (+92d) | 2026-10-21 → 2027-01-21 (+92d) | 7.94d → 9d |  |  |
| 3543 | Door Frame Fixing | 2026-10-25 → 2027-01-24 (+91d) | 2026-12-18 → 2027-02-02 (+46d) | 8.94d → 10.12d |  |  |
| 3544 | Internal Plumbing Works | 2026-10-29 → 2027-01-27 (+90d) | 2026-12-23 → 2027-02-06 (+45d) | 9.94d → 11.25d |  |  |
| 3545 | Waterproofing | 2026-12-31 → 2027-02-06 (+37d) | 2027-01-12 → 2027-02-16 (+35d) | 11.94d → 11.25d | 3529, 3544 → 3544 |  |
| 3546 | Internal Plaster | 2026-12-31 → 2027-02-21 (+52d) | 2027-01-09 → 2027-03-02 (+52d) | 8.94d → 10.12d | 3530, 3527, 3528, 3529 → 3530, 3543, 3544, 3545 |  |
| 3547 | IPS flooring work | 2027-01-21 → 2027-03-08 (+46d) | 2027-01-30 → 2027-03-17 (+46d) | 8.94d → 10.12d | 3531, 3543, 3545, 3562 → 3531, 3543, 3545, 3546 |  |
| 3548 | Toilet dado work | 2027-01-21 → 2027-03-06 (+44d) | 2027-01-29 → 2027-03-14 (+44d) | 7.94d → 9d | 3532, 3545, 3562 → 3532, 3545, 3546 |  |
| 3549 | Toilet flooring work | 2027-01-29 → 2027-03-14 (+44d) | 2027-02-04 → 2027-03-21 (+45d) | 6.94d → 7.88d |  |  |
| 3550 | Living dinning flooring | 2027-02-18 → 2027-05-07 (+78d) | 2027-03-05 → 2027-05-22 (+78d) | 14.94d → 16.88d |  |  |
| 3551 | Aluminium door-window fixing | 2027-03-05 → 2027-05-22 (+78d) | 2027-03-20 → 2027-06-06 (+78d) | 14.94d → 16.88d |  |  |
| 3552 | Putty primer coat | 2027-03-05 → 2027-05-22 (+78d) | 2027-03-11 → 2027-05-28 (+78d) | 5.94d → 6.75d |  |  |
| 3553 | Door shutter fixing | 2027-03-05 → 2027-05-22 (+78d) | 2027-03-13 → 2027-05-30 (+78d) | 7.94d → 9d |  |  |
| 3554 | Electrical wiring work | 2027-03-13 → 2027-05-30 (+78d) | 2027-03-24 → 2027-06-11 (+79d) | 11.94d → 13.5d |  |  |
| 3555 | Painting 1st coat | 2027-03-25 → 2027-06-11 (+78d) | 2027-04-05 → 2027-06-23 (+79d) | 11.94d → 13.5d |  |  |
| 3556 | False ceiling | 2027-04-05 → 2027-06-23 (+79d) | 2027-04-15 → 2027-07-03 (+79d) | 9.94d → 11.25d |  |  |
| 3557 | **35th Floor** | 2026-10-21 → 2027-01-21 (+92d) | 2027-04-30 → 2027-07-18 (+79d) | 146.5d → 200.25d |  | constraint start no earlier than 2026-10-21 → start no earlier than 2027-01-21 |
| 3558 | Block Work | 2026-10-21 → 2027-01-21 (+92d) | 2026-10-29 → 2027-01-29 (+92d) | 7.94d → 9d |  |  |
| 3559 | Door Frame Fixing | 2026-12-18 → 2027-02-02 (+46d) | 2026-12-27 → 2027-02-11 (+46d) | 8.94d → 10.12d |  |  |
| 3560 | Internal Plumbing Works | 2026-12-23 → 2027-02-06 (+45d) | 2027-01-02 → 2027-02-16 (+45d) | 9.94d → 11.25d |  |  |
| 3561 | Waterproofing | 2027-01-12 → 2027-02-16 (+35d) | 2027-01-24 → 2027-02-28 (+35d) | 11.94d → 13.5d |  |  |
| 3562 | Internal Plaster | 2027-01-12 → 2027-03-02 (+49d) | 2027-01-21 → 2027-03-11 (+49d) | 8.94d → 10.12d | 3546, 3543, 3544, 3545 → 3546, 3559, 3560, 3561 |  |
| 3563 | IPS flooring work | 2027-02-02 → 2027-03-17 (+43d) | 2027-02-10 → 2027-03-26 (+44d) | 8.94d → 10.12d | 3547, 3559, 3561, 3578 → 3547, 3559, 3561, 3562 |  |
| 3564 | Toilet dado work | 2027-02-02 → 2027-03-14 (+40d) | 2027-02-09 → 2027-03-22 (+41d) | 7.94d → 9d | 3548, 3561, 3578 → 3548, 3561, 3562 |  |
| 3565 | Toilet flooring work | 2027-02-10 → 2027-03-22 (+40d) | 2027-02-16 → 2027-03-29 (+41d) | 6.94d → 7.88d |  |  |
| 3566 | Living dinning flooring | 2027-03-05 → 2027-05-22 (+78d) | 2027-03-20 → 2027-06-06 (+78d) | 14.94d → 16.88d |  |  |
| 3567 | Aluminium door-window fixing | 2027-03-20 → 2027-06-06 (+78d) | 2027-04-03 → 2027-06-21 (+79d) | 14.94d → 16.88d |  |  |
| 3568 | Putty primer coat | 2027-03-20 → 2027-06-06 (+78d) | 2027-03-25 → 2027-06-12 (+79d) | 5.94d → 6.75d |  |  |
| 3569 | Door shutter fixing | 2027-03-20 → 2027-06-06 (+78d) | 2027-03-27 → 2027-06-14 (+79d) | 7.94d → 9d |  |  |
| 3570 | Electrical wiring work | 2027-03-28 → 2027-06-14 (+78d) | 2027-04-08 → 2027-06-26 (+79d) | 11.94d → 13.5d |  |  |
| 3571 | Painting 1st coat | 2027-04-08 → 2027-06-26 (+79d) | 2027-04-20 → 2027-07-08 (+79d) | 11.94d → 13.5d |  |  |
| 3572 | False ceiling | 2027-04-20 → 2027-07-08 (+79d) | 2027-04-30 → 2027-07-18 (+79d) | 9.94d → 11.25d |  |  |
| 3573 | **Terrace Finishing** | 2026-07-27 → 2026-10-08 (+73d) | 2026-10-14 → 2027-02-10 (+119d) | 79.88d → 90d |  | constraint start no earlier than 2026-07-27 → start no earlier than 2026-10-08 |

| ID | Task | Start | Finish | Duration | Predecessors | Other |
| --- | --- | --- | --- | --- | --- | --- |
| 3574 | Terrace waterproofing | 2026-07-27 → 2026-10-08 (+73d) | 2026-09-05 → 2027-01-01 (+118d) | 39.94d → 45d | 2972 → 2967 |  |
| 3575 | Terrace finishing | 2026-09-05 → 2027-01-01 (+118d) | 2026-10-14 → 2027-02-10 (+119d) | 39.94d → 45d |  |  |
| 3576 | **Common Area Finishing** | 2025-09-26 → 2027-01-03 (+464d) | 2026-08-16 → 2027-10-25 (+435d) | 279.31d → 331.88d |  | constraint start no earlier than 2025-09-26 → start no earlier than 2027-01-03 |
| 3577 | Block Work | 2025-09-26 → 2027-01-03 (+464d) | 2025-12-20 → 2027-02-12 (+419d) | 39.94d → 45d | 2978FS+0.25d → 2972 |  |
| 3578 | Internal Plaster | 2027-01-24 → 2027-02-12 (+19d) | 2027-02-02 → 2027-06-12 (+130d) | 8.94d → 135d | 3562, 3559, 3560, 3561 → 3583SS+22.5d |  |
| 3579 | Staircase railing fixing | 2026-03-20 → 2027-05-28 (+434d) | 2026-08-16 → 2027-10-25 (+435d) | 149.94d → 168.75d | 3581SS+26.75d, 3580SS+26.75d → 3581SS+33.75d, 3580SS+33.75d |  |
| 3580 | Main staircase flooring | 2026-02-21 → 2027-04-28 (+431d) | 2026-07-21 → 2027-09-25 (+431d) | 149.94d → 168.75d | 3581SS+13.38d → 3581SS+16.88d |  |
| 3581 | Fire staircase flooring | 2026-02-07 → 2027-04-13 (+430d) | 2026-07-07 → 2027-09-10 (+430d) | 149.94d → 168.75d | 3935SS+13.38d, 3585SS+26.75d → 3578SS+16.88d, 3585SS+33.75d |  |
| 3582 | Fire door work | 2026-03-20 → 2027-05-28 (+434d) | 2026-05-18 → 2027-07-27 (+435d) | 59.94d → 67.5d | 3580SS+26.75d, 3581SS+26.75d → 3580SS+33.75d, 3581SS+33.75d |  |
| 3583 | Electrical wiring work | 2025-10-14 → 2027-01-23 (+466d) | 2026-03-28 → 2027-05-23 (+421d) | 119.94d → 135d | 3577SS+17.88d → 3577SS+22.5d |  |
| 3584 | Lobby flooring | 2025-10-17 → 2027-01-27 (+467d) | 2026-04-30 → 2027-06-26 (+422d) | 150d → 168.75d | 3583SS+3.38d → 3583SS+4.12d |  |
| 3585 | Ceiling & wall putty-primer | 2026-01-12 → 2027-03-14 (+426d) | 2026-05-02 → 2027-07-02 (+426d) | 109.94d → 123.75d | 3935SS+26.75d → 3578SS+33.75d |  |
| 3586 | Ceiling & wall painting | 2026-01-30 → 2027-04-03 (+428d) | 2026-05-09 → 2027-07-12 (+429d) | 99.94d → 112.5d | 3585SS+17.88d → 3585SS+22.5d |  |
| 3587 | Light fixture supply & installation | 2026-03-24 → 2027-06-02 (+435d) | 2026-05-08 → 2027-07-17 (+435d) | 44.94d → 50.62d | 3586SS+53.38d → 3586SS+67.5d |  |
| 3588 | **Balcony Glass Railing** | 2027-05-31 → 2027-07-22 (+52d) | 2027-08-07 → 2027-09-30 (+54d) | 67.81d → 78.75d |  | constraint start no earlier than 2027-05-31 → start no earlier than 2027-07-22 |
| 3589 | 1st Floor | 2027-05-31 → 2027-07-22 (+52d) | 2027-06-02 → 2027-07-24 (+52d) | 1.94d → 2.25d |  |  |
| 3590 | 2nd Floor | 2027-06-02 → 2027-07-24 (+52d) | 2027-06-04 → 2027-07-26 (+52d) | 1.94d → 2.25d |  |  |
| 3591 | 3rd Floor | 2027-06-04 → 2027-07-26 (+52d) | 2027-06-06 → 2027-07-28 (+52d) | 1.94d → 2.25d |  |  |
| 3592 | 4th Floor | 2027-06-06 → 2027-07-28 (+52d) | 2027-06-08 → 2027-07-30 (+52d) | 1.94d → 2.25d |  |  |
| 3593 | 5th Floor | 2027-06-08 → 2027-07-30 (+52d) | 2027-06-10 → 2027-08-01 (+52d) | 1.94d → 2.25d |  |  |
| 3594 | 6th Floor | 2027-06-10 → 2027-08-01 (+52d) | 2027-06-11 → 2027-08-03 (+53d) | 1.94d → 2.25d |  |  |
| 3595 | 7th Floor | 2027-06-12 → 2027-08-03 (+52d) | 2027-06-13 → 2027-08-05 (+53d) | 1.94d → 2.25d |  |  |
| 3596 | 8th Floor | 2027-06-13 → 2027-08-05 (+53d) | 2027-06-15 → 2027-08-07 (+53d) | 1.94d → 2.25d |  |  |
| 3597 | 9th Floor | 2027-06-15 → 2027-08-07 (+53d) | 2027-06-17 → 2027-08-09 (+53d) | 1.94d → 2.25d |  |  |
| 3598 | 10th Floor | 2027-06-17 → 2027-08-09 (+53d) | 2027-06-19 → 2027-08-11 (+53d) | 1.94d → 2.25d |  |  |
| 3599 | 11th Floor | 2027-06-19 → 2027-08-11 (+53d) | 2027-06-21 → 2027-08-13 (+53d) | 1.94d → 2.25d |  |  |
| 3600 | 12th Floor | 2027-06-21 → 2027-08-13 (+53d) | 2027-06-23 → 2027-08-15 (+53d) | 1.94d → 2.25d |  |  |
| 3601 | 13th Floor | 2027-06-23 → 2027-08-15 (+53d) | 2027-06-25 → 2027-08-17 (+53d) | 1.94d → 2.25d |  |  |
| 3602 | 14th Floor | 2027-06-25 → 2027-08-17 (+53d) | 2027-06-27 → 2027-08-19 (+53d) | 1.94d → 2.25d |  |  |
| 3603 | 15th Floor | 2027-06-27 → 2027-08-19 (+53d) | 2027-06-29 → 2027-08-21 (+53d) | 1.94d → 2.25d |  |  |
| 3604 | 16th Floor | 2027-06-29 → 2027-08-21 (+53d) | 2027-07-01 → 2027-08-23 (+53d) | 1.94d → 2.25d |  |  |
| 3605 | 17th Floor | 2027-07-01 → 2027-08-23 (+53d) | 2027-07-03 → 2027-08-25 (+53d) | 1.94d → 2.25d |  |  |
| 3606 | 18th Floor | 2027-07-03 → 2027-08-25 (+53d) | 2027-07-05 → 2027-08-27 (+53d) | 1.94d → 2.25d |  |  |
| 3607 | 19th Floor | 2027-07-05 → 2027-08-27 (+53d) | 2027-07-07 → 2027-08-29 (+53d) | 1.94d → 2.25d |  |  |
| 3608 | 20th Floor | 2027-07-07 → 2027-08-29 (+53d) | 2027-07-09 → 2027-08-31 (+53d) | 1.94d → 2.25d |  |  |
| 3609 | 21st Floor | 2027-07-09 → 2027-08-31 (+53d) | 2027-07-11 → 2027-09-02 (+53d) | 1.94d → 2.25d |  |  |
| 3610 | 22nd Floor | 2027-07-11 → 2027-09-02 (+53d) | 2027-07-12 → 2027-09-04 (+54d) | 1.94d → 2.25d |  |  |
| 3611 | 23rd Floor | 2027-07-13 → 2027-09-04 (+53d) | 2027-07-14 → 2027-09-06 (+54d) | 1.94d → 2.25d |  |  |
| 3612 | 24th Floor | 2027-07-14 → 2027-09-06 (+54d) | 2027-07-16 → 2027-09-08 (+54d) | 1.94d → 2.25d |  |  |
| 3613 | 25th Floor | 2027-07-16 → 2027-09-08 (+54d) | 2027-07-18 → 2027-09-10 (+54d) | 1.94d → 2.25d |  |  |
| 3614 | 26th Floor | 2027-07-18 → 2027-09-10 (+54d) | 2027-07-20 → 2027-09-12 (+54d) | 1.94d → 2.25d |  |  |
| 3615 | 27th Floor | 2027-07-20 → 2027-09-12 (+54d) | 2027-07-22 → 2027-09-14 (+54d) | 1.94d → 2.25d |  |  |
| 3616 | 28th Floor | 2027-07-22 → 2027-09-14 (+54d) | 2027-07-24 → 2027-09-16 (+54d) | 1.94d → 2.25d |  |  |
| 3617 | 29th Floor | 2027-07-24 → 2027-09-16 (+54d) | 2027-07-26 → 2027-09-18 (+54d) | 1.94d → 2.25d |  |  |
| 3618 | 30th Floor | 2027-07-26 → 2027-09-18 (+54d) | 2027-07-28 → 2027-09-20 (+54d) | 1.94d → 2.25d |  |  |
| 3619 | 31st Floor | 2027-07-28 → 2027-09-20 (+54d) | 2027-07-30 → 2027-09-22 (+54d) | 1.94d → 2.25d |  |  |
| 3620 | 32nd Floor | 2027-07-30 → 2027-09-22 (+54d) | 2027-08-01 → 2027-09-24 (+54d) | 1.94d → 2.25d |  |  |
| 3621 | 33rd Floor | 2027-08-01 → 2027-09-24 (+54d) | 2027-08-03 → 2027-09-26 (+54d) | 1.94d → 2.25d |  |  |
| 3622 | 34th Floor | 2027-08-03 → 2027-09-26 (+54d) | 2027-08-05 → 2027-09-28 (+54d) | 1.94d → 2.25d |  |  |
| 3623 | 35th Floor | 2027-08-05 → 2027-09-28 (+54d) | 2027-08-07 → 2027-09-30 (+54d) | 1.94d → 2.25d |  |  |
| 3624 | **MEP work** | 2026-02-07 → 2027-01-01 (+328d) | 2027-12-18 → 2028-05-12 (+146d) | 634.12d → 508.5d |  | constraint start no earlier than 2026-02-07 → start no earlier than 2027-01-01 |
| 3625 | **Electrical work** | 2026-09-04 → 2027-01-03 (+121d) | 2027-06-09 → 2027-08-31 (+83d) | 233.25d → 270d |  | constraint start no earlier than 2026-09-04 → start no earlier than 2027-01-03 |
| 3626 | Cable Tray | 2026-09-04 → 2027-01-03 (+121d) | 2027-01-17 → 2027-04-03 (+76d) | 89.94d → 101.25d | 3689 → 2972 |  |
| 3627 | Cable, main & sub main | 2026-10-14 → 2027-02-17 (+126d) | 2027-02-16 → 2027-05-08 (+81d) | 79.94d → 90d | 3626SS+40d → 3626SS+50.62d |  |
| 3628 | LT panel & DB | 2027-01-17 → 2027-04-03 (+76d) | 2027-05-17 → 2027-08-01 (+76d) | 119.94d → 135d |  |  |
| 3629 | Rising main | 2027-03-11 → 2027-06-02 (+83d) | 2027-06-09 → 2027-08-31 (+83d) | 89.94d → 101.25d | 3626FS+53.38d → 3626FS+67.5d |  |
| 3630 | EARTHING Works | 2027-01-30 → 2027-04-18 (+78d) | 2027-03-31 → 2027-06-17 (+78d) | 59.94d → 67.5d | 3626FS+13.38d → 3626FS+16.88d |  |
| 3631 | Advance lightening protection | 2026-10-15 → 2027-02-10 (+118d) | 2027-01-27 → 2027-04-11 (+74d) | 59.94d → 67.5d |  |  |
| 3632 | Inverter | 2027-03-31 → 2027-06-17 (+78d) | 2027-05-05 → 2027-07-22 (+78d) | 34.94d → 39.38d |  |  |
| 3633 | Energy meter | 2027-02-16 → 2027-05-08 (+81d) | 2027-04-17 → 2027-07-07 (+81d) | 59.94d → 67.5d |  |  |
| 3634 | Exhast fan | 2027-02-16 → 2027-04-27 (+70d) | 2027-04-17 → 2027-06-26 (+70d) | 59.94d → 67.5d | 2602FF+4.5d → 3567FF+5.62d |  |
| 3635 | FTTH | 2027-03-22 → 2027-06-07 (+77d) | 2027-05-21 → 2027-08-06 (+77d) | 59.94d → 67.5d | 3630FS-9d → 3630FS-11.25d |  |
| 3636 | Security System - FA & PA | 2027-03-27 → 2027-06-12 (+77d) | 2027-05-21 → 2027-08-06 (+77d) | 54.94d → 61.88d |  |  |
| 3637 | Solar water heater | 2026-10-15 → 2027-02-10 (+118d) | 2027-01-27 → 2027-04-11 (+74d) | 59.94d → 67.5d |  |  |
| 3638 | **Plumbing wrok** | 2026-03-06 → 2027-01-01 (+301d) | 2027-06-25 → 2027-08-31 (+67d) | 430.88d → 272.25d |  | constraint start no earlier than 2026-03-06 → start no earlier than 2027-01-01 |
| 3639 | Terrace looping | 2026-09-05 → 2027-01-01 (+118d) | 2026-10-19 → 2027-02-15 (+119d) | 44.94d → 50.62d |  |  |
| 3640 | Shaft Plumbing | 2026-10-20 → 2027-02-15 (+118d) | 2027-04-02 → 2027-06-15 (+74d) | 119.94d → 135d |  |  |
| 3641 | CP sanitary fixture supply | 2027-04-11 → 2027-05-28 (+47d) | 2027-06-25 → 2027-08-11 (+47d) | 74.94d → 84.38d | 3578, 3565FS+53.38d → 3562, 3565FS+67.5d |  |
| 3642 | Cold & flushing water supply | 2026-03-06 → 2027-05-13 (+433d) | 2026-06-04 → 2027-08-11 (+433d) | 89.94d → 101.25d | 3935SS+80d → 3578SS+101.25d |  |
| 3643 | Misc work | 2026-05-26 → 2027-08-01 (+432d) | 2026-06-25 → 2027-08-31 (+432d) | 29.94d → 33.75d | 3642FS-9d → 3642FS-11.25d |  |

| ID | Task | Start | Finish | Duration | Complete | Predecessors | Other |
| --- | --- | --- | --- | --- | --- | --- | --- |
| 3644 | **Fire fighting work** | 2026-02-07 → 2027-01-01 (+328d) | 2027-02-16 → 2027-12-24 (+311d) | 329.19d → 351d |  |  | constraint start no earlier than 2026-02-07 → start no earlier than 2027-01-01 |
| 3645 | Fire hydrant work | 2026-02-07 → 2027-04-13 (+430d) | 2026-05-08 → 2027-07-12 (+430d) | 89.94d → 101.25d |  | 3935SS+53.38d → 3578SS+67.5d |  |
| 3646 | Sprinkler & piping work | 2026-06-04 → 2027-08-11 (+433d) | 2026-09-02 → 2027-12-24 (+478d) | 89.94d → 101.25d |  | 3645FS+26.75d → 3645FS+33.75d |  |
| 3647 | Shaft Downtake works | 2026-09-05 → 2027-01-01 (+118d) | 2027-01-17 → 2027-04-01 (+74d) | 89.94d → 101.25d |  |  |  |
| 3648 | Connection to pump room | 2027-01-18 → 2027-04-01 (+73d) | 2027-02-16 → 2027-05-01 (+74d) | 29.94d → 33.75d |  |  |  |
| 3649 | **Lift work** | 2026-09-04 → 2027-01-03 (+121d) | 2027-04-07 → 2027-06-22 (+76d) | 169.81d → 191.25d |  |  | constraint start no earlier than 2026-09-04 → start no earlier than 2027-01-03 |
| 3650 | Lift Shaft Handover | 2026-09-04 → 2027-01-03 (+121d) | 2026-10-14 → 2027-02-12 (+121d) | 39.94d → 45d |  | 3689 → 2972 |  |
| 3651 | Lift installation work | 2026-10-14 → 2027-02-12 (+121d) | 2027-01-12 → 2027-03-29 (+76d) | 44.94d → 50.62d |  |  |  |
| 3652 | Lift testing and commissioning | 2027-01-12 → 2027-03-29 (+76d) | 2027-04-07 → 2027-06-22 (+76d) | 84.94d → 95.62d |  |  |  |
| 3653 | **AC work** | 2027-09-09 → 2028-02-02 (+146d) | 2027-12-18 → 2028-05-12 (+146d) | 99.94d → 112.5d |  |  | constraint start no earlier than 2027-09-09 → start no earlier than 2028-02-02 |
| 3654 | Split AC | 2027-09-09 → 2028-02-02 (+146d) | 2027-12-18 → 2028-05-12 (+146d) | 99.94d → 112.5d |  | 3670FS-26.75d → 3652FS+202.5d |  |
| 3655 | **Tower Completion** | 2026-10-18 → 2027-01-23 (+97d) | 2027-08-13 → 2027-10-20 (+68d) | 253.88d → 303.75d |  |  | constraint start no earlier than 2026-10-18 → start no earlier than 2027-01-23 |
| 3656 | SURFACE PREPARATION | 2026-10-18 → 2027-01-23 (+97d) | 2027-02-20 → 2027-04-13 (+52d) | 79.94d → 90d |  | 3010FS+1.88d → 3010FS+2.25d |  |
| 3657 | External Painting | 2027-02-20 → 2027-04-13 (+52d) | 2027-05-31 → 2027-07-22 (+52d) | 99.94d → 112.5d |  |  |  |
| 3658 | Final coat of painting | 2027-05-31 → 2027-07-22 (+52d) | 2027-08-13 → 2027-10-20 (+68d) | 74d → 101.25d |  |  |  |
| 3659 | Misc. work | 2027-05-31 → 2027-07-22 (+52d) | 2027-07-30 → 2027-09-20 (+52d) | 59.94d → 67.5d |  |  |  |
| 3660 | **Basement lobby** | 2026-04-30 → 2027-06-26 (+422d) | 2026-06-29 → 2027-08-25 (+422d) | 60d → 67.5d |  |  | constraint start no earlier than 2026-04-30 → start no earlier than 2027-06-26 |
| 3661 | Basement lobby | 2026-04-30 → 2027-06-26 (+422d) | 2026-06-29 → 2027-08-25 (+422d) | 60d → 67.5d |  |  |  |
| 3662 | **Post OC activities** | 2027-04-08 → 2027-06-26 (+79d) | 2028-03-07 → 2028-11-08 (+246d) | 333.94d → 513d |  |  | constraint start no earlier than 2027-04-08 → start no earlier than 2027-06-26 |
| 3663 | Wardrobe installation | 2027-09-09 → 2027-12-30 (+112d) | 2028-03-07 → 2028-06-26 (+111d) | 179.94d → 202.5d |  | 3670FS-26.75d → 3670FS-33.75d |  |
| 3664 | CP & SANITARYWARE | 2027-09-09 → 2027-12-30 (+112d) | 2028-01-07 → 2028-04-27 (+111d) | 119.94d → 135d |  | 3670FS-26.75d → 3670FS-33.75d, 3641 |  |
| 3665 | Wooden Flooring | 2027-09-09 → 2027-08-31 (-9d) | 2028-03-07 → 2028-04-12 (+36d) | 179.94d → 202.5d |  | 3670FS-26.75d → 3654FF-33.75d |  |
| 3666 | Electrical Fixtures And Fittings | 2027-04-08 → 2027-06-26 (+79d) | 2027-08-06 → 2027-10-24 (+79d) | 119.94d → 135d |  |  |  |
| 3667 | Modular Kitchen | 2027-09-09 → 2027-08-31 (-9d) | 2028-03-07 → 2028-04-12 (+36d) | 179.94d → 202.5d |  | 3663SS → 3665SS |  |
| 3668 | Final Coat Paint | 2027-09-23 → 2028-08-10 (+322d) | 2027-12-22 → 2028-11-08 (+322d) | 89.94d → 101.25d |  | 3670FS-13.38d → 3665FS+135d |  |
| 3669 | OC Application/Readiness | 2027-08-13 → 2027-12-24 (+133d) | 2027-08-13 → 2028-03-23 (+223d) | 0d → 101.25d |  | 3689, 3579FS+7.12d, 3641, 3587, 3572, 3582, 3623, 3628, 3629, 3631, 3632, 3633, 4551, 3636, 3637, 3640, 3643, 3646, 3648, 3652, 3658, 3659, 3661 → 2784, 2972, 3572, 3579, 3582, 3623, 3631, 3632, 3634, 3636, 3637, 3640, 3643, 3646, 3648, 3652, 3659 |  |
| 3670 | OC Receipt | 2027-10-05 → 2028-01-04 (+91d) | 2027-10-06 → 2028-01-28 (+114d) | 0.94d → 28.12d |  | 3669FS+53.38d → 4586FS+11.25d |  |
| 3671 | Offer To Possession | 2028-03-07 → 2028-01-04 (-63d) | 2028-04-06 → 2028-01-25 (-72d) | 29.94d → 24.75d |  | 3663, 3664, 3665, 3666, 3667, 3668 → 4586FS+11.25d |  |
| 3672 | **Tower 1** | 2023-09-30 → 2024-05-14 (+227d) | 2028-03-02 → 2028-08-16 (+167d) | 1450.06d → 1598.62d | 4% → 2% |  | constraint start no earlier than 2023-09-30 → start no earlier than 2024-05-14 |
| 3673 | **Substructure** | 2023-09-30 → 2024-05-14 (+227d) | 2025-09-02 → 2026-01-31 (+151d) | 628.06d → 655.88d | 63% → 36% |  | constraint start no earlier than 2023-09-30 → start no earlier than 2024-05-14 |
| 3674 | **Soil Bed Preparation** | 2023-09-30 → 2024-05-14 (+227d) | 2025-06-19 → 2025-08-14 (+56d) | 553.5d → 515.25d |  |  | constraint start no earlier than 2023-09-30 → start no earlier than 2024-05-14 |
| 3675 | Test Piling | 2023-09-30 → 2024-05-14 (+227d) | 2024-01-27 → 2024-08-14 (+200d) | 74.94d → 104.44d |  |  | constraint start no earlier than 2023-09-30 → start no earlier than 2024-05-14 |
| 3676 | Excavation | 2024-01-10 → 2024-06-26 (+168d) | 2024-02-08 → 2024-07-25 (+168d) | 29.94d → 33.56d |  | 7SS+36.74d → 3675SS+43d | constraint start no earlier than 2024-01-10 → start no earlier than 2024-06-26 |
| 3677 | Main Piling Work | 2024-04-12 → 2024-09-26 (+167d) | 2024-10-11 → 2025-04-05 (+176d) | 182.56d → 135d | 100% → 96% | 7FS+227.55d → 3675FS+42d | constraint start no earlier than 2024-04-12 → start no earlier than 2024-09-26 |
| 3678 | Anti-termite | 2025-04-01 → 2025-04-02 (+1d) | 2025-04-05 → 2025-04-07 (+2d) | 4.94d → 5.62d |  | 3677FF-92.8d → 3677FF+2d |  |
| 3679 | PCC | 2024-10-18 → 2025-03-10 (+143d) | 2024-10-27 → 2025-04-07 (+162d) | 9.81d → 7.69d | 100% → 70% | 3676FS+55.05d, 3678SS+12.95d → 3677FS-29.94d | constraint start no earlier than 2024-10-18 → none |
| 3680 | Backfilling | 2025-04-01 → 2025-06-16 (+76d) | 2025-04-21 → 2025-08-14 (+115d) | 20.06d → 67.5d |  | none → 3693 | constraint start no earlier than 2025-04-01 → none |
| 3681 | **RCC Structure** | 2024-12-05 → 2025-04-01 (+117d) | 2025-03-29 → 2025-07-10 (+103d) | 118.5d → 113.62d | 100% → 0% |  | constraint start no earlier than 2024-12-05 → start no earlier than 2025-04-01 |
| 3682 | **Raft Foundation** | 2024-12-05 → 2025-04-01 (+117d) | 2024-12-31 → 2025-04-26 (+116d) | 30.5d → 29.25d | 100% → 0% |  | constraint start no earlier than 2024-12-05 → start no earlier than 2025-04-01 |
| 3683 | Reinforcement | 2024-12-05 → 2025-04-01 (+117d) | 2024-12-31 → 2025-04-17 (+107d) | 30d → 19.12d | 100% → 0% | 3679FS-29.5d → 3679FS-18.69d | constraint start no earlier than 2024-12-05 → none |
| 3684 | Formwork | 2025-10-17 → 2025-04-13 (-187d) | 2025-10-23 → 2025-04-24 (-182d) | 7d → 13.5d |  | 3791SS+1d → 3683FF+7.88d |  |
| 3685 | Concreting | 2025-10-24 → 2025-04-25 (-182d) | 2025-10-24 → 2025-04-26 (-181d) | 1d → 2.25d |  |  |  |
| 3686 | **Basement 1 Slab** | 2025-01-01 → 2025-04-27 (+116d) | 2025-02-01 → 2025-05-21 (+109d) | 32d → 28.12d | 100% → 0% |  | constraint start no earlier than 2025-01-01 → start no earlier than 2025-04-27 |
| 3687 | Reinforcement | 2025-10-26 → 2025-04-27 (-182d) | 2025-12-17 → 2025-05-16 (-215d) | 8d → 22.5d |  | 3685FS+1d → 3685 |  |
| 3688 | Formwork | 2024-12-17 → 2025-04-28 (+132d) | 2024-12-29 → 2025-05-17 (+139d) | 11d → 22.5d | 100% → 0% | 3683FF+5d → 3687SS+1.12d | constraint start no earlier than 2024-12-17 → none |
| 3689 | Concreting | 2026-09-01 → 2025-05-18 (-471d) | 2026-09-04 → 2025-05-21 (-471d) | 2.94d → 4.5d |  | 2971 → 3688 |  |
| 3690 | **Basement 2 Slab/GF** | 2025-01-26 → 2025-05-22 (+116d) | 2025-02-20 → 2025-06-15 (+115d) | 26d → 28.12d | 100% → 0% |  | constraint start no earlier than 2025-01-26 → start no earlier than 2025-05-22 |
| 3691 | Reinforcement | 2025-01-01 → 2025-05-22 (+141d) | 2025-02-01 → 2025-06-10 (+129d) | 23d → 22.5d | 100% → 0% | 3693FS+1d → 3689 | constraint start no earlier than 2025-01-01 → none |
| 3692 | Formwork | 2025-01-03 → 2025-05-23 (+140d) | 2025-02-01 → 2025-06-11 (+130d) | 23d → 22.5d | 100% → 0% | 3691FF → 3691SS+1.12d | constraint start no earlier than 2025-01-03 → none |
| 3693 | Concreting | 2024-12-28 → 2025-06-12 (+166d) | 2024-12-31 → 2025-06-15 (+166d) | 4d → 4.5d | 100% → 0% | 3688FF-2d → 3692 | constraint start no earlier than 2024-12-28 → none |
| 3695 | Reinforcement | 2025-01-26 → 2025-06-16 (+141d) | 2025-02-16 → 2025-07-05 (+139d) | 22d → 22.5d | 100% → 0% | 3697FS-6.25d → 3693 | constraint start no earlier than 2025-01-26 → none |
| 3696 | Formwork | 2025-01-29 → 2025-06-17 (+139d) | 2025-02-19 → 2025-07-06 (+137d) | 22d → 22.5d | 100% → 0% | 3695FF+3d → 3695SS+1.12d | constraint start no earlier than 2025-01-29 → none |
| 3697 | Concreting | 2025-01-25 → 2025-07-07 (+163d) | 2025-02-01 → 2025-07-10 (+159d) | 1.25d → 4.5d | 100% → 0% | 3692FF-0.75d → 3696 | constraint start no earlier than 2025-01-25 → none |
| 3698 | **Substructure Finishing** | 2025-04-25 → 2025-08-10 (+107d) | 2025-09-02 → 2026-01-31 (+151d) | 129.81d → 146.25d |  |  | constraint start no earlier than 2025-04-25 → start no earlier than 2025-08-10 |
| 3699 | Masonary work | 2025-04-25 → 2025-08-10 (+107d) | 2025-06-09 → 2025-09-23 (+106d) | 44.94d → 50.62d |  | 3714FS+26.75d → 3697FS+33.75d |  |
| 3700 | Plaster | 2025-06-09 → 2025-09-24 (+107d) | 2025-07-19 → 2025-12-17 (+151d) | 39.94d → 45d |  |  |  |
| 3701 | Structural steel | 2025-05-22 → 2025-09-09 (+110d) | 2025-07-21 → 2025-12-22 (+154d) | 59.94d → 67.5d |  | 3714FS+53.38d → 3697FS+67.5d |  |
| 3702 | White Wash | 2025-07-19 → 2025-12-18 (+152d) | 2025-09-02 → 2026-01-31 (+151d) | 44.94d → 50.62d |  |  |  |
| 3703 | **Superstructure** | 2025-03-31 → 2025-07-11 (+102d) | 2027-06-29 → 2027-10-24 (+117d) | 730.94d → 839.25d |  |  | constraint start no earlier than 2025-03-31 → start no earlier than 2025-07-11 |
| 3704 | **RCC structure** | 2025-03-31 → 2025-07-11 (+102d) | 2026-07-28 → 2026-12-23 (+148d) | 439.38d → 496.12d |  |  | constraint start no earlier than 2025-03-31 → start no earlier than 2025-07-11 |
| 3705 | **1st floor slab** | 2025-03-31 → 2025-07-11 (+102d) | 2025-04-23 → 2025-08-04 (+103d) | 24d → 28.12d | 4% → 0% |  | constraint start no earlier than 2025-03-31 → start no earlier than 2025-07-11 |
| 3706 | Reinforcement | 2025-02-20 → 2025-07-11 (+141d) | 2025-03-27 → 2025-08-01 (+127d) | 20d → 24.75d | 100% → 0% | 3709 → 3697 | constraint start no earlier than 2025-02-20 → none |
| 3707 | Wall conduiting | 2025-04-01 → 2025-07-14 (+104d) | 2025-04-05 → 2025-07-16 (+102d) | 4d → 3.38d |  | 3711SS+2.75d → 3706SS+3.38d |  |
| 3708 | Formwork | 2025-02-26 → 2025-07-14 (+138d) | 2025-03-28 → 2025-08-03 (+128d) | 18d → 23.62d | 100% → 0% | 3706FF+0.75d → 3706SS+3.38d | constraint start no earlier than 2025-02-26 → none |
| 3709 | Concreting | 2025-02-19 → 2025-08-04 (+166d) | 2025-02-20 → 2025-08-04 (+165d) | 2d → 1.12d | 100% → 0% | 3696FS-1d → 3708 | constraint start no earlier than 2025-02-19 → none |
| 3710 | **2nd floor slab** | 2025-04-25 → 2025-08-05 (+102d) | 2025-05-15 → 2025-08-25 (+102d) | 21d → 23.62d |  |  | constraint start no earlier than 2025-04-25 → start no earlier than 2025-08-05 |
| 3711 | Reinforcement | 2025-03-31 → 2025-08-05 (+127d) | 2025-04-19 → 2025-08-22 (+125d) | 20d → 20.25d | 10% → 0% | 3714FS+1d → 3709 | constraint start no earlier than 2025-03-31 → none |
| 3712 | Wall conduiting | 2025-04-27 → 2025-08-07 (+102d) | 2025-05-01 → 2025-08-09 (+100d) | 4d → 3.38d |  | 3707, 3716SS+2.75d → 3707FS+0.25d, 3711SS+2.25d |  |
| 3713 | Formwork | 2025-04-02 → 2025-08-08 (+128d) | 2025-04-22 → 2025-08-24 (+124d) | 21d → 19.12d |  | 3711SS+3d → 3711SS+3.38d |  |
| 3714 | Concreting | 2025-03-28 → 2025-08-25 (+150d) | 2025-03-29 → 2025-08-25 (+149d) | 2d → 1.12d | 100% → 0% | 3708 → 3713 | constraint start no earlier than 2025-03-28 → none |

| ID | Task | Start | Finish | Duration | Predecessors | Other |
| --- | --- | --- | --- | --- | --- | --- |
| 3715 | **3rd floor slab** | 2025-05-17 → 2025-08-26 (+101d) | 2025-05-31 → 2025-09-09 (+101d) | 15d → 16.88d |  | constraint start no earlier than 2025-05-17 → start no earlier than 2025-08-26 |
| 3716 | Reinforcement | 2025-04-25 → 2025-08-26 (+123d) | 2025-05-14 → 2025-09-05 (+114d) | 20d → 12.38d | 3719FS+1d → 3714 |  |
| 3717 | Wall conduiting | 2025-05-19 → 2025-08-29 (+102d) | 2025-05-22 → 2025-08-31 (+101d) | 3d → 3.38d | 3712, 3721SS+2.75d → 3712, 3716SS+3.38d |  |
| 3718 | Formwork | 2025-04-28 → 2025-08-30 (+124d) | 2025-05-14 → 2025-09-08 (+117d) | 17d → 11.25d | 3716SS+3d → 3716SS+4.5d |  |
| 3719 | Concreting | 2025-04-23 → 2025-09-09 (+139d) | 2025-04-23 → 2025-09-09 (+139d) | 1d → 1.12d | 3713 → 3718 |  |
| 3720 | **4th floor slab** | 2025-06-02 → 2025-09-10 (+100d) | 2025-06-10 → 2025-09-18 (+100d) | 9d → 10.12d |  | constraint start no earlier than 2025-06-02 → start no earlier than 2025-09-10 |
| 3721 | Reinforcement | 2025-05-17 → 2025-09-10 (+116d) | 2025-05-27 → 2025-09-16 (+112d) | 11d → 7.88d | 3724FS+1d → 3719 |  |
| 3722 | Wall conduiting | 2025-06-03 → 2025-09-11 (+100d) | 2025-06-05 → 2025-09-12 (+99d) | 3d → 2.25d | 3717, 3726SS+1d → 3717, 3721SS+1.12d |  |
| 3723 | Formwork | 2025-05-20 → 2025-09-12 (+115d) | 2025-05-30 → 2025-09-17 (+110d) | 11d → 6.75d | 3721SS+3d → 3721SS+2.25d |  |
| 3724 | Concreting | 2025-05-15 → 2025-09-18 (+126d) | 2025-05-15 → 2025-09-18 (+126d) | 1d → 1.12d | 3718 → 3723 |  |
| 3725 | **5th floor slab** | 2025-06-12 → 2025-09-19 (+99d) | 2025-06-20 → 2025-09-27 (+99d) | 9d → 10.12d |  | constraint start no earlier than 2025-06-12 → start no earlier than 2025-09-19 |
| 3726 | Reinforcement | 2025-06-02 → 2025-09-19 (+109d) | 2025-06-09 → 2025-09-25 (+108d) | 8d → 7.88d | 3729FS+1d → 3724 |  |
| 3727 | Wall conduiting | 2025-06-13 → 2025-09-20 (+99d) | 2025-06-15 → 2025-09-21 (+98d) | 3d → 2.25d | 3722, 3731SS+1d → 3722, 3726SS+1.12d |  |
| 3728 | Formwork | 2025-06-03 → 2025-09-21 (+110d) | 2025-06-09 → 2025-09-26 (+109d) | 7d → 6.75d | 3726SS+1d → 3726SS+2.25d |  |
| 3729 | Concreting | 2025-05-31 → 2025-09-27 (+119d) | 2025-05-31 → 2025-09-27 (+119d) | 1d → 1.12d | 3723 → 3728 |  |
| 3730 | **6th floor slab** | 2025-06-22 → 2025-09-28 (+98d) | 2025-06-30 → 2025-10-06 (+98d) | 9d → 10.12d |  | constraint start no earlier than 2025-06-22 → start no earlier than 2025-09-28 |
| 3731 | Reinforcement | 2025-06-12 → 2025-09-28 (+108d) | 2025-06-19 → 2025-10-04 (+107d) | 8d → 7.88d | 3734FS+1d → 3729 |  |
| 3732 | Wall conduiting | 2025-06-23 → 2025-09-29 (+98d) | 2025-06-25 → 2025-09-30 (+97d) | 3d → 2.25d | 3727, 3736SS+1d → 3727, 3731SS+1.12d |  |
| 3733 | Formwork | 2025-06-13 → 2025-09-30 (+109d) | 2025-06-19 → 2025-10-05 (+108d) | 7d → 6.75d | 3731SS+1d → 3731SS+2.25d |  |
| 3734 | Concreting | 2025-06-10 → 2025-10-06 (+118d) | 2025-06-10 → 2025-10-06 (+118d) | 1d → 1.12d | 3728 → 3733 |  |
| 3735 | **7th floor slab** | 2025-07-02 → 2025-10-07 (+97d) | 2025-07-10 → 2025-10-15 (+97d) | 9d → 10.12d |  | constraint start no earlier than 2025-07-02 → start no earlier than 2025-10-07 |
| 3736 | Reinforcement | 2025-06-22 → 2025-10-07 (+107d) | 2025-06-29 → 2025-10-13 (+106d) | 8d → 7.88d | 3739FS+1d → 3734 |  |
| 3737 | Wall conduiting | 2025-07-03 → 2025-10-08 (+97d) | 2025-07-05 → 2025-10-09 (+96d) | 3d → 2.25d | 3732, 3741SS+1d → 3732, 3736SS+1.12d |  |
| 3738 | Formwork | 2025-06-23 → 2025-10-09 (+108d) | 2025-06-29 → 2025-10-14 (+107d) | 7d → 6.75d | 3736SS+1d → 3736SS+2.25d |  |
| 3739 | Concreting | 2025-06-20 → 2025-10-15 (+117d) | 2025-06-20 → 2025-10-15 (+117d) | 1d → 1.12d | 3733 → 3738 |  |
| 3740 | **8th floor slab** | 2025-07-12 → 2025-10-16 (+96d) | 2025-07-23 → 2025-10-27 (+96d) | 12d → 13.5d |  | constraint start no earlier than 2025-07-12 → start no earlier than 2025-10-16 |
| 3741 | Reinforcement | 2025-07-02 → 2025-10-16 (+106d) | 2025-07-09 → 2025-10-25 (+108d) | 8d → 11.25d | 3744FS+1d → 3739 |  |
| 3742 | Wall conduiting | 2025-07-13 → 2025-10-17 (+96d) | 2025-07-15 → 2025-10-18 (+95d) | 3d → 2.25d | 3737, 3746SS+1d → 3737, 3741SS+1.12d |  |
| 3743 | Formwork | 2025-07-03 → 2025-10-18 (+107d) | 2025-07-09 → 2025-10-26 (+109d) | 7d → 10.12d | 3741SS+1d → 3741SS+2.25d |  |
| 3744 | Concreting | 2025-06-30 → 2025-10-27 (+119d) | 2025-06-30 → 2025-10-27 (+119d) | 1d → 1.12d | 3738 → 3743 |  |
| 3745 | **9th floor slab** | 2025-07-25 → 2025-10-28 (+95d) | 2025-08-02 → 2025-12-20 (+140d) | 9d → 10.12d |  | constraint start no earlier than 2025-07-25 → start no earlier than 2025-10-28 |
| 3746 | Reinforcement | 2025-07-12 → 2025-10-28 (+108d) | 2025-07-21 → 2025-12-18 (+150d) | 10d → 7.88d | 3749FS+1d → 3744 |  |
| 3747 | Wall conduiting | 2025-07-26 → 2025-10-29 (+95d) | 2025-07-28 → 2025-10-30 (+94d) | 3d → 2.25d | 3742, 3751SS+1d → 3742, 3746SS+1.12d |  |
| 3748 | Formwork | 2025-07-13 → 2025-10-30 (+109d) | 2025-07-22 → 2025-12-19 (+150d) | 10d → 6.75d | 3746SS+1d → 3746SS+2.25d |  |
| 3749 | Concreting | 2025-07-10 → 2025-12-20 (+163d) | 2025-07-10 → 2025-12-20 (+163d) | 1d → 1.12d | 3743 → 3748 |  |
| 3750 | **10th floor slab** | 2025-08-04 → 2025-12-21 (+139d) | 2025-08-12 → 2025-12-29 (+139d) | 9d → 10.12d |  | constraint start no earlier than 2025-08-04 → start no earlier than 2025-12-21 |
| 3751 | Reinforcement | 2025-07-25 → 2025-12-21 (+149d) | 2025-08-01 → 2025-12-27 (+148d) | 8d → 7.88d | 3754FS+1d → 3749 |  |
| 3752 | Wall conduiting | 2025-08-05 → 2025-12-22 (+139d) | 2025-08-07 → 2025-12-23 (+138d) | 3d → 2.25d | 3747, 3756SS+1d → 3747, 3751SS+1.12d |  |
| 3753 | Formwork | 2025-07-26 → 2025-12-23 (+150d) | 2025-08-01 → 2025-12-28 (+149d) | 7d → 6.75d | 3751SS+1d → 3751SS+2.25d |  |
| 3754 | Concreting | 2025-07-23 → 2025-12-29 (+159d) | 2025-07-23 → 2025-12-29 (+159d) | 1d → 1.12d | 3748 → 3753 |  |
| 3755 | **11th floor slab** | 2025-08-14 → 2025-12-30 (+138d) | 2025-08-22 → 2026-01-07 (+138d) | 9d → 10.12d |  | constraint start no earlier than 2025-08-14 → start no earlier than 2025-12-30 |
| 3756 | Reinforcement | 2025-08-04 → 2025-12-30 (+148d) | 2025-08-11 → 2026-01-05 (+147d) | 8d → 7.88d | 3759FS+1d → 3754 |  |
| 3757 | Wall conduiting | 2025-08-15 → 2025-12-31 (+138d) | 2025-08-17 → 2026-01-01 (+137d) | 3d → 2.25d | 3752, 3761SS+1d → 3752, 3756SS+1.12d |  |
| 3758 | Formwork | 2025-08-05 → 2026-01-01 (+149d) | 2025-08-11 → 2026-01-06 (+148d) | 7d → 6.75d | 3756SS+1d → 3756SS+2.25d |  |
| 3759 | Concreting | 2025-08-02 → 2026-01-07 (+158d) | 2025-08-02 → 2026-01-07 (+158d) | 1d → 1.12d | 3753 → 3758 |  |
| 3760 | **12th floor slab** | 2025-08-24 → 2026-01-08 (+137d) | 2025-09-01 → 2026-01-16 (+137d) | 9d → 10.12d |  | constraint start no earlier than 2025-08-24 → start no earlier than 2026-01-08 |
| 3761 | Reinforcement | 2025-08-14 → 2026-01-08 (+147d) | 2025-08-21 → 2026-01-14 (+146d) | 8d → 7.88d | 3764FS+1d → 3759 |  |
| 3762 | Wall conduiting | 2025-08-25 → 2026-01-09 (+137d) | 2025-08-27 → 2026-01-10 (+136d) | 3d → 2.25d | 3757, 3766SS+1d → 3757, 3761SS+1.12d |  |
| 3763 | Formwork | 2025-08-15 → 2026-01-10 (+148d) | 2025-08-21 → 2026-01-15 (+147d) | 7d → 6.75d | 3761SS+1d → 3761SS+2.25d |  |
| 3764 | Concreting | 2025-08-12 → 2026-01-16 (+157d) | 2025-08-12 → 2026-01-16 (+157d) | 1d → 1.12d | 3758 → 3763 |  |
| 3765 | **13th floor slab** | 2025-09-03 → 2026-01-17 (+136d) | 2025-09-11 → 2026-01-25 (+136d) | 9d → 10.12d |  | constraint start no earlier than 2025-09-03 → start no earlier than 2026-01-17 |
| 3766 | Reinforcement | 2025-08-24 → 2026-01-17 (+146d) | 2025-08-31 → 2026-01-23 (+145d) | 8d → 7.88d | 3769FS+1d → 3764 |  |
| 3767 | Wall conduiting | 2025-09-04 → 2026-01-18 (+136d) | 2025-09-06 → 2026-01-19 (+135d) | 3d → 2.25d | 3762, 3771SS+1d → 3762, 3766SS+1.12d |  |
| 3768 | Formwork | 2025-08-25 → 2026-01-19 (+147d) | 2025-08-31 → 2026-01-24 (+146d) | 7d → 6.75d | 3766SS+1d → 3766SS+2.25d |  |
| 3769 | Concreting | 2025-08-22 → 2026-01-25 (+156d) | 2025-08-22 → 2026-01-25 (+156d) | 1d → 1.12d | 3763 → 3768 |  |
| 3770 | **14th floor slab** | 2025-09-13 → 2026-01-26 (+135d) | 2025-09-21 → 2026-02-03 (+135d) | 9d → 10.12d |  | constraint start no earlier than 2025-09-13 → start no earlier than 2026-01-26 |
| 3771 | Reinforcement | 2025-09-03 → 2026-01-26 (+145d) | 2025-09-10 → 2026-02-01 (+144d) | 8d → 7.88d | 3774FS+1d → 3769 |  |
| 3772 | Wall conduiting | 2025-09-14 → 2026-01-27 (+135d) | 2025-09-16 → 2026-01-28 (+134d) | 3d → 2.25d | 3767, 3776SS+1d → 3767, 3771SS+1.12d |  |
| 3773 | Formwork | 2025-09-04 → 2026-01-28 (+146d) | 2025-09-10 → 2026-02-02 (+145d) | 7d → 6.75d | 3771SS+1d → 3771SS+2.25d |  |
| 3774 | Concreting | 2025-09-01 → 2026-02-03 (+155d) | 2025-09-01 → 2026-02-03 (+155d) | 1d → 1.12d | 3768 → 3773 |  |
| 3775 | **15th floor slab** | 2025-09-23 → 2026-02-04 (+134d) | 2025-10-01 → 2026-02-12 (+134d) | 9d → 10.12d |  | constraint start no earlier than 2025-09-23 → start no earlier than 2026-02-04 |
| 3776 | Reinforcement | 2025-09-13 → 2026-02-04 (+144d) | 2025-09-20 → 2026-02-10 (+143d) | 8d → 7.88d | 3779FS+1d → 3774 |  |
| 3777 | Wall conduiting | 2025-09-24 → 2026-02-05 (+134d) | 2025-09-26 → 2026-02-06 (+133d) | 3d → 2.25d | 3772, 3781SS+1d → 3772, 3776SS+1.12d |  |
| 3778 | Formwork | 2025-09-14 → 2026-02-06 (+145d) | 2025-09-20 → 2026-02-11 (+144d) | 7d → 6.75d | 3776SS+1d → 3776SS+2.25d |  |
| 3779 | Concreting | 2025-09-11 → 2026-02-12 (+154d) | 2025-09-11 → 2026-02-12 (+154d) | 1d → 1.12d | 3773 → 3778 |  |
| 3780 | **16th floor slab** | 2025-10-03 → 2026-02-13 (+133d) | 2025-10-14 → 2026-02-24 (+133d) | 12d → 13.5d |  | constraint start no earlier than 2025-10-03 → start no earlier than 2026-02-13 |
| 3781 | Reinforcement | 2025-09-23 → 2026-02-13 (+143d) | 2025-09-30 → 2026-02-21 (+144d) | 8d → 10.12d | 3784FS+1d → 3779 |  |
| 3782 | Wall conduiting | 2025-10-04 → 2026-02-14 (+133d) | 2025-10-06 → 2026-02-15 (+132d) | 3d → 2.25d | 3777, 3786SS+1d → 3777, 3781SS+1.12d |  |
| 3783 | Formwork | 2025-09-24 → 2026-02-15 (+144d) | 2025-09-30 → 2026-02-23 (+146d) | 7d → 10.12d | 3781SS+1d → 3781SS+2.25d |  |
| 3784 | Concreting | 2025-09-21 → 2026-02-24 (+156d) | 2025-09-21 → 2026-02-24 (+156d) | 1d → 1.12d | 3778 → 3783 |  |

| ID | Task | Start | Finish | Duration | Predecessors | Other |
| --- | --- | --- | --- | --- | --- | --- |
| 3785 | **17th floor slab** | 2025-10-16 → 2026-02-25 (+132d) | 2025-10-24 → 2026-03-05 (+132d) | 9d → 10.12d |  | constraint start no earlier than 2025-10-16 → start no earlier than 2026-02-25 |
| 3786 | Reinforcement | 2025-10-03 → 2026-02-25 (+145d) | 2025-10-12 → 2026-03-03 (+142d) | 10d → 7.88d | 3789FS+1d → 3784 |  |
| 3787 | Wall conduiting | 2025-10-17 → 2026-02-26 (+132d) | 2025-10-19 → 2026-02-27 (+131d) | 3d → 2.25d | 3782, 3791SS+1d → 3782, 3786SS+1.12d |  |
| 3788 | Formwork | 2025-10-04 → 2026-02-27 (+146d) | 2025-10-13 → 2026-03-04 (+142d) | 10d → 6.75d | 3786SS+1d → 3786SS+2.25d |  |
| 3789 | Concreting | 2025-10-01 → 2026-03-05 (+155d) | 2025-10-01 → 2026-03-05 (+155d) | 1d → 1.12d | 3783 → 3788 |  |
| 3790 | **18th floor slab** | 2025-10-26 → 2026-03-06 (+131d) | 2025-12-18 → 2026-03-14 (+86d) | 9d → 10.12d |  | constraint start no earlier than 2025-10-26 → start no earlier than 2026-03-06 |
| 3791 | Reinforcement | 2025-10-16 → 2026-03-06 (+141d) | 2025-10-23 → 2026-03-12 (+140d) | 8d → 7.88d | 3794FS+1d → 3789 |  |
| 3792 | Wall conduiting | 2025-10-27 → 2026-03-07 (+131d) | 2025-10-29 → 2026-03-08 (+130d) | 3d → 2.25d | 3787, 3687SS+1d → 3787, 3791SS+1.12d |  |
| 3793 | Formwork | 2025-10-27 → 2026-03-08 (+132d) | 2025-12-17 → 2026-03-13 (+86d) | 7d → 6.75d | 3687SS+1d → 3791SS+2.25d |  |
| 3794 | Concreting | 2025-10-14 → 2026-03-14 (+151d) | 2025-10-14 → 2026-03-14 (+151d) | 1d → 1.12d | 3788 → 3793 |  |
| 3795 | **19th floor slab** | 2025-12-20 → 2026-03-15 (+85d) | 2025-12-27 → 2026-03-22 (+85d) | 8d → 9d |  | constraint start no earlier than 2025-12-20 → start no earlier than 2026-03-15 |
| 3796 | Reinforcement | 2025-12-20 → 2026-03-15 (+85d) | 2025-12-26 → 2026-03-21 (+85d) | 7d → 7.88d | 3799FS+1d → 3794 |  |
| 3797 | Wall conduiting | 2025-12-21 → 2026-03-16 (+85d) | 2025-12-23 → 2026-03-17 (+84d) | 3d → 2.25d | 3792, 3796SS+1d → 3792, 3796SS+1.12d |  |
| 3798 | Formwork | 2025-12-21 → 2026-03-16 (+85d) | 2025-12-26 → 2026-03-21 (+85d) | 6d → 6.75d | 3796SS+1d → 3796SS+1.12d |  |
| 3799 | Concreting | 2025-12-18 → 2026-03-22 (+94d) | 2025-12-18 → 2026-03-22 (+94d) | 1d → 1.12d | 3793 → 3798 |  |
| 3800 | **20th floor slab** | 2025-12-30 → 2026-03-23 (+83d) | 2026-01-06 → 2026-03-30 (+83d) | 8d → 9d |  | constraint start no earlier than 2025-12-30 → start no earlier than 2026-03-23 |
| 3801 | Reinforcement | 2025-12-30 → 2026-03-23 (+83d) | 2026-01-05 → 2026-03-29 (+83d) | 7d → 7.88d | 3804FS+2d → 3799 |  |
| 3802 | Wall conduiting | 2025-12-31 → 2026-03-24 (+83d) | 2026-01-02 → 2026-03-25 (+82d) | 3d → 2.25d | 3797, 3801SS+1d → 3797, 3801SS+1.12d |  |
| 3803 | Formwork | 2025-12-31 → 2026-03-24 (+83d) | 2026-01-05 → 2026-03-29 (+83d) | 6d → 6.75d | 3801SS+1d → 3801SS+1.12d |  |
| 3804 | Concreting | 2025-12-27 → 2026-03-30 (+93d) | 2025-12-27 → 2026-03-30 (+93d) | 1d → 1.12d | 3798 → 3803 |  |
| 3805 | **21st floor slab** | 2026-01-08 → 2026-03-31 (+82d) | 2026-01-15 → 2026-04-09 (+84d) | 8d → 11.25d |  | constraint start no earlier than 2026-01-08 → start no earlier than 2026-03-31 |
| 3806 | Reinforcement | 2026-01-08 → 2026-03-31 (+82d) | 2026-01-14 → 2026-04-07 (+83d) | 7d → 9d | 3809FS+1d → 3804 |  |
| 3807 | Wall conduiting | 2026-01-09 → 2026-04-01 (+82d) | 2026-01-11 → 2026-04-02 (+81d) | 3d → 2.25d | 3802, 3806SS+1d → 3802, 3806SS+1.12d |  |
| 3808 | Formwork | 2026-01-09 → 2026-04-02 (+83d) | 2026-01-14 → 2026-04-08 (+84d) | 6d → 7.88d | 3806SS+1d → 3806SS+2.25d |  |
| 3809 | Concreting | 2026-01-06 → 2026-04-09 (+93d) | 2026-01-06 → 2026-04-09 (+93d) | 1d → 1.12d | 3803 → 3808 |  |
| 3810 | **22nd floor slab** | 2026-01-17 → 2026-04-10 (+83d) | 2026-01-24 → 2026-04-19 (+85d) | 8d → 11.25d |  | constraint start no earlier than 2026-01-17 → start no earlier than 2026-04-10 |
| 3811 | Reinforcement | 2026-01-17 → 2026-04-10 (+83d) | 2026-01-23 → 2026-04-17 (+84d) | 7d → 9d | 3814FS+1d → 3809 |  |
| 3812 | Wall conduiting | 2026-01-18 → 2026-04-11 (+83d) | 2026-01-20 → 2026-04-12 (+82d) | 3d → 2.25d | 3807, 3811SS+1d → 3807, 3811SS+1.12d |  |
| 3813 | Formwork | 2026-01-18 → 2026-04-12 (+84d) | 2026-01-23 → 2026-04-18 (+85d) | 6d → 7.88d | 3811SS+1d → 3811SS+2.25d |  |
| 3814 | Concreting | 2026-01-15 → 2026-04-19 (+94d) | 2026-01-15 → 2026-04-19 (+94d) | 1d → 1.12d | 3808 → 3813 |  |
| 3815 | **23rd floor slab** | 2026-01-26 → 2026-04-20 (+84d) | 2026-02-02 → 2026-04-29 (+86d) | 8d → 11.25d |  | constraint start no earlier than 2026-01-26 → start no earlier than 2026-04-20 |
| 3816 | Reinforcement | 2026-01-26 → 2026-04-20 (+84d) | 2026-02-01 → 2026-04-27 (+85d) | 7d → 9d | 3819FS+1d → 3814 |  |
| 3817 | Wall conduiting | 2026-01-27 → 2026-04-21 (+84d) | 2026-01-29 → 2026-04-22 (+83d) | 3d → 2.25d | 3812, 3816SS+1d → 3812, 3816SS+1.12d |  |
| 3818 | Formwork | 2026-01-27 → 2026-04-22 (+85d) | 2026-02-01 → 2026-04-28 (+86d) | 6d → 7.88d | 3816SS+1d → 3816SS+2.25d |  |
| 3819 | Concreting | 2026-01-24 → 2026-04-29 (+95d) | 2026-01-24 → 2026-04-29 (+95d) | 1d → 1.12d | 3813 → 3818 |  |
| 3820 | **24th floor slab** | 2026-02-04 → 2026-04-30 (+85d) | 2026-02-15 → 2026-05-12 (+86d) | 12d → 14.62d |  | constraint start no earlier than 2026-02-04 → start no earlier than 2026-04-30 |
| 3821 | Reinforcement | 2026-02-04 → 2026-04-30 (+85d) | 2026-02-13 → 2026-05-09 (+85d) | 10d → 11.25d | 3824FS+1d → 3819 |  |
| 3822 | Wall conduiting | 2026-02-05 → 2026-05-01 (+85d) | 2026-02-07 → 2026-05-02 (+84d) | 3d → 2.25d | 3817, 3821SS+1d → 3817, 3821SS+1.12d |  |
| 3823 | Formwork | 2026-02-05 → 2026-05-02 (+86d) | 2026-02-14 → 2026-05-11 (+86d) | 10d → 11.25d | 3821SS+1d → 3821SS+2.25d |  |
| 3824 | Concreting | 2026-02-02 → 2026-05-12 (+99d) | 2026-02-02 → 2026-05-12 (+99d) | 1d → 1.12d | 3818 → 3823 |  |
| 3825 | **25th floor slab** | 2026-02-17 → 2026-05-13 (+85d) | 2026-02-28 → 2026-05-25 (+86d) | 12d → 14.62d |  | constraint start no earlier than 2026-02-17 → start no earlier than 2026-05-13 |
| 3826 | Reinforcement | 2026-02-17 → 2026-05-13 (+85d) | 2026-02-26 → 2026-05-22 (+85d) | 10d → 11.25d | 3829FS+1d → 3824 |  |
| 3827 | Wall conduiting | 2026-02-18 → 2026-05-14 (+85d) | 2026-02-20 → 2026-05-15 (+84d) | 3d → 2.25d | 3822, 3826SS+1d → 3822, 3826SS+1.12d |  |
| 3828 | Formwork | 2026-02-18 → 2026-05-15 (+86d) | 2026-02-27 → 2026-05-24 (+86d) | 10d → 11.25d | 3826SS+1d → 3826SS+2.25d |  |
| 3829 | Concreting | 2026-02-15 → 2026-05-25 (+99d) | 2026-02-15 → 2026-05-25 (+99d) | 1d → 1.12d | 3823 → 3828 |  |
| 3830 | **26th floor slab** | 2026-03-02 → 2026-05-26 (+85d) | 2026-03-09 → 2026-06-04 (+87d) | 8d → 11.25d |  | constraint start no earlier than 2026-03-02 → start no earlier than 2026-05-26 |
| 3831 | Reinforcement | 2026-03-02 → 2026-05-26 (+85d) | 2026-03-08 → 2026-06-02 (+86d) | 7d → 9d | 3834FS+1d → 3829 |  |
| 3832 | Wall conduiting | 2026-03-03 → 2026-05-27 (+85d) | 2026-03-05 → 2026-05-28 (+84d) | 3d → 2.25d | 3827, 3831SS+1d → 3827, 3831SS+1.12d |  |
| 3833 | Formwork | 2026-03-03 → 2026-05-28 (+86d) | 2026-03-08 → 2026-06-03 (+87d) | 6d → 7.88d | 3831SS+1d → 3831SS+2.25d |  |
| 3834 | Concreting | 2026-02-28 → 2026-06-04 (+96d) | 2026-02-28 → 2026-06-04 (+96d) | 1d → 1.12d | 3828 → 3833 |  |
| 3835 | **27th floor slab** | 2026-03-11 → 2026-06-05 (+86d) | 2026-03-18 → 2026-06-14 (+88d) | 8d → 11.25d |  | constraint start no earlier than 2026-03-11 → start no earlier than 2026-06-05 |
| 3836 | Reinforcement | 2026-03-11 → 2026-06-05 (+86d) | 2026-03-17 → 2026-06-12 (+87d) | 7d → 9d | 3839FS+1d → 3834 |  |
| 3837 | Wall conduiting | 2026-03-12 → 2026-06-06 (+86d) | 2026-03-14 → 2026-06-07 (+85d) | 3d → 2.25d | 3832, 3836SS+1d → 3832, 3836SS+1.12d |  |
| 3838 | Formwork | 2026-03-12 → 2026-06-07 (+87d) | 2026-03-17 → 2026-06-13 (+88d) | 6d → 7.88d | 3836SS+1d → 3836SS+2.25d |  |
| 3839 | Concreting | 2026-03-09 → 2026-06-14 (+97d) | 2026-03-09 → 2026-06-14 (+97d) | 1d → 1.12d | 3833 → 3838 |  |
| 3840 | **28th floor slab** | 2026-03-20 → 2026-06-15 (+87d) | 2026-03-27 → 2026-06-24 (+89d) | 8d → 11.25d |  | constraint start no earlier than 2026-03-20 → start no earlier than 2026-06-15 |
| 3841 | Reinforcement | 2026-03-20 → 2026-06-15 (+87d) | 2026-03-26 → 2026-06-22 (+88d) | 7d → 9d | 3844FS+1d → 3839 |  |
| 3842 | Wall conduiting | 2026-03-21 → 2026-06-16 (+87d) | 2026-03-23 → 2026-06-17 (+86d) | 3d → 2.25d | 3837, 3841SS+1d → 3837, 3841SS+1.12d |  |
| 3843 | Formwork | 2026-03-21 → 2026-06-17 (+88d) | 2026-03-26 → 2026-06-23 (+89d) | 6d → 7.88d | 3841SS+1d → 3841SS+2.25d |  |
| 3844 | Concreting | 2026-03-18 → 2026-06-24 (+98d) | 2026-03-18 → 2026-06-24 (+98d) | 1d → 1.12d | 3838 → 3843 |  |
| 3845 | **29th floor slab** | 2026-03-28 → 2026-06-25 (+89d) | 2026-04-04 → 2026-07-04 (+91d) | 8d → 11.25d |  | constraint start no earlier than 2026-03-28 → start no earlier than 2026-06-25 |
| 3846 | Reinforcement | 2026-03-28 → 2026-06-25 (+89d) | 2026-04-03 → 2026-07-02 (+90d) | 7d → 9d | 3849 → 3844 |  |
| 3847 | Wall conduiting | 2026-03-29 → 2026-06-26 (+89d) | 2026-03-31 → 2026-06-27 (+88d) | 3d → 2.25d | 3842, 3846SS+1d → 3842, 3846SS+1.12d |  |
| 3848 | Formwork | 2026-03-29 → 2026-06-27 (+90d) | 2026-04-03 → 2026-07-03 (+91d) | 6d → 7.88d | 3846SS+1d → 3846SS+2.25d |  |
| 3849 | Concreting | 2026-03-27 → 2026-07-04 (+99d) | 2026-03-27 → 2026-07-04 (+99d) | 1d → 1.12d | 3843 → 3848 |  |
| 3850 | **30th floor slab** | 2026-04-05 → 2026-07-05 (+91d) | 2026-04-12 → 2026-07-14 (+93d) | 8d → 11.25d |  | constraint start no earlier than 2026-04-05 → start no earlier than 2026-07-05 |
| 3851 | Reinforcement | 2026-04-05 → 2026-07-05 (+91d) | 2026-04-11 → 2026-07-12 (+92d) | 7d → 9d | 3854 → 3849 |  |
| 3852 | Wall conduiting | 2026-04-06 → 2026-07-06 (+91d) | 2026-04-08 → 2026-07-07 (+90d) | 3d → 2.25d | 3847, 3851SS+1d → 3847, 3851SS+1.12d |  |
| 3853 | Formwork | 2026-04-06 → 2026-07-07 (+92d) | 2026-04-11 → 2026-07-13 (+93d) | 6d → 7.88d | 3851SS+1d → 3851SS+2.25d |  |
| 3854 | Concreting | 2026-04-04 → 2026-07-14 (+101d) | 2026-04-04 → 2026-07-14 (+101d) | 1d → 1.12d | 3848 → 3853 |  |

| ID | Task | Start | Finish | Duration | Predecessors | Other |
| --- | --- | --- | --- | --- | --- | --- |
| 3855 | **31st floor slab** | 2026-04-13 → 2026-07-15 (+93d) | 2026-04-22 → 2026-07-26 (+95d) | 10d → 13.5d |  | constraint start no earlier than 2026-04-13 → start no earlier than 2026-07-15 |
| 3856 | Reinforcement | 2026-04-13 → 2026-07-15 (+93d) | 2026-04-19 → 2026-07-23 (+95d) | 7d → 10.12d | 3859 → 3854 |  |
| 3857 | Wall conduiting | 2026-04-14 → 2026-07-16 (+93d) | 2026-04-16 → 2026-07-17 (+92d) | 3d → 2.25d | 3852, 3856SS+1d → 3852, 3856SS+1.12d |  |
| 3858 | Formwork | 2026-04-14 → 2026-07-17 (+94d) | 2026-04-21 → 2026-07-25 (+95d) | 8d → 10.12d | 3856SS+1d → 3856SS+2.25d |  |
| 3859 | Concreting | 2026-04-12 → 2026-07-26 (+105d) | 2026-04-12 → 2026-07-26 (+105d) | 1d → 1.12d | 3853 → 3858 |  |
| 3860 | **32nd floor slab** | 2026-04-23 → 2026-07-27 (+95d) | 2026-05-02 → 2026-08-08 (+98d) | 10d → 14.62d |  | constraint start no earlier than 2026-04-23 → start no earlier than 2026-07-27 |
| 3861 | Reinforcement | 2026-04-23 → 2026-07-27 (+95d) | 2026-04-29 → 2026-08-05 (+98d) | 7d → 11.25d | 3864 → 3859 |  |
| 3862 | Wall conduiting | 2026-04-24 → 2026-07-28 (+95d) | 2026-04-26 → 2026-07-29 (+94d) | 3d → 2.25d | 3857, 3861SS+1d → 3857, 3861SS+1.12d |  |
| 3863 | Formwork | 2026-04-24 → 2026-07-29 (+96d) | 2026-05-01 → 2026-08-07 (+98d) | 8d → 11.25d | 3861SS+1d → 3861SS+2.25d |  |
| 3864 | Concreting | 2026-04-22 → 2026-08-08 (+108d) | 2026-04-22 → 2026-08-08 (+108d) | 1d → 1.12d | 3858 → 3863 |  |
| 3865 | **33rd floor slab** | 2026-05-03 → 2026-08-09 (+98d) | 2026-05-13 → 2026-08-20 (+99d) | 10.88d → 13.5d |  | constraint start no earlier than 2026-05-03 → start no earlier than 2026-08-09 |
| 3866 | Reinforcement | 2026-05-03 → 2026-08-09 (+98d) | 2026-05-11 → 2026-08-17 (+98d) | 8.94d → 10.12d | 3869 → 3864 |  |
| 3867 | Wall conduiting | 2026-05-04 → 2026-08-10 (+98d) | 2026-05-05 → 2026-08-11 (+98d) | 1.94d → 2.25d | 3862, 3866SS+1d → 3862, 3866SS+1.12d |  |
| 3868 | Formwork | 2026-05-04 → 2026-08-11 (+99d) | 2026-05-12 → 2026-08-19 (+99d) | 8.94d → 10.12d | 3866SS+1d → 3866SS+2.25d |  |
| 3869 | Concreting | 2026-05-02 → 2026-08-20 (+110d) | 2026-05-02 → 2026-08-20 (+110d) | 1d → 1.12d | 3863 → 3868 |  |
| 3870 | **34th floor slab** | 2026-05-13 → 2026-08-21 (+100d) | 2026-05-25 → 2026-09-02 (+100d) | 11.88d → 14.62d |  | constraint start no earlier than 2026-05-13 → start no earlier than 2026-08-21 |
| 3871 | Reinforcement | 2026-05-13 → 2026-08-21 (+100d) | 2026-05-23 → 2026-08-30 (+99d) | 9.94d → 11.25d | 3874 → 3869 |  |
| 3872 | Wall conduiting | 2026-05-14 → 2026-08-22 (+100d) | 2026-05-16 → 2026-08-23 (+99d) | 1.94d → 2.25d | 3867, 3871SS+1d → 3867, 3871SS+1.12d |  |
| 3873 | Formwork | 2026-05-14 → 2026-08-23 (+101d) | 2026-05-24 → 2026-09-01 (+100d) | 9.94d → 11.25d | 3871SS+1d → 3871SS+2.25d |  |
| 3874 | Concreting | 2026-05-12 → 2026-09-02 (+113d) | 2026-05-13 → 2026-09-02 (+112d) | 0.94d → 1.12d | 3868 → 3873 |  |
| 3875 | **35th floor slab** | 2026-05-25 → 2026-09-03 (+101d) | 2026-06-05 → 2026-09-14 (+101d) | 10.88d → 13.5d |  | constraint start no earlier than 2026-05-25 → start no earlier than 2026-09-03 |
| 3876 | Reinforcement | 2026-05-25 → 2026-09-03 (+101d) | 2026-06-03 → 2026-09-11 (+100d) | 8.94d → 10.12d | 3879 → 3874 |  |
| 3877 | Wall conduiting | 2026-05-26 → 2026-09-04 (+101d) | 2026-05-28 → 2026-09-05 (+100d) | 1.94d → 2.25d | 3872, 3876SS+1d → 3872, 3876SS+1.12d |  |
| 3878 | Formwork | 2026-05-27 → 2026-09-06 (+102d) | 2026-06-04 → 2026-09-13 (+101d) | 7.94d → 9d | 3877SS+1d → 3877SS+2.25d |  |
| 3879 | Concreting | 2026-05-24 → 2026-09-14 (+113d) | 2026-05-25 → 2026-09-14 (+112d) | 0.94d → 1.12d | 3873 → 3878 |  |
| 3880 | **Terrace floor slab** | 2026-06-05 → 2026-09-15 (+102d) | 2026-06-19 → 2026-09-29 (+102d) | 13.88d → 16.88d |  | constraint start no earlier than 2026-06-05 → start no earlier than 2026-09-15 |
| 3881 | Reinforcement | 2026-06-05 → 2026-09-15 (+102d) | 2026-06-16 → 2026-09-25 (+101d) | 10.94d → 12.38d | 3884 → 3879 |  |
| 3882 | Wall conduiting | 2026-06-06 → 2026-09-16 (+102d) | 2026-06-08 → 2026-09-17 (+101d) | 1.94d → 2.25d | 3877, 3881SS+1d → 3877, 3881SS+1.12d |  |
| 3883 | Formwork | 2026-06-06 → 2026-09-17 (+103d) | 2026-06-18 → 2026-09-28 (+102d) | 11.94d → 13.5d | 3881SS+1d → 3881SS+2.25d |  |
| 3884 | Concreting | 2026-06-04 → 2026-09-29 (+117d) | 2026-06-05 → 2026-09-29 (+116d) | 0.94d → 1.12d | 3878 → 3883 |  |
| 3885 | **OHT & Mumty** | 2026-06-19 → 2026-09-30 (+103d) | 2026-07-28 → 2026-12-23 (+148d) | 38.88d → 45d |  | constraint start no earlier than 2026-06-19 → start no earlier than 2026-09-30 |
| 3886 | Reinforcement | 2026-06-19 → 2026-09-30 (+103d) | 2026-07-19 → 2026-10-29 (+102d) | 29.94d → 33.75d | 3889 → 3884 |  |
| 3887 | Wall conduiting | 2026-06-20 → 2026-10-01 (+103d) | 2026-06-25 → 2026-10-05 (+102d) | 4.94d → 5.62d | 3882, 3886SS+1d → 3882, 3886SS+1.12d |  |
| 3888 | Formwork | 2026-06-22 → 2026-10-04 (+104d) | 2026-07-25 → 2026-12-20 (+148d) | 32.94d → 37.12d | 3886SS+3d → 3886SS+4.5d |  |
| 3889 | Concreting | 2026-06-18 → 2026-12-21 (+186d) | 2026-06-19 → 2026-12-23 (+187d) | 0.94d → 3.38d | 3883 → 3888 |  |
| 3890 | **Post Pour Activities** | 2025-06-01 → 2025-09-10 (+101d) | 2026-09-08 → 2027-01-11 (+125d) | 419.12d → 448.62d |  | constraint start no earlier than 2025-06-01 → start no earlier than 2025-09-10 |
| 3891 | 1st Floor | 2025-06-01 → 2025-09-10 (+101d) | 2025-06-08 → 2025-09-21 (+105d) | 7d → 12.38d | 3729FS+0.25d → 3719FS+0.25d |  |
| 3892 | 2nd Floor | 2025-07-11 → 2025-09-28 (+79d) | 2025-07-17 → 2025-10-08 (+83d) | 7d → 12.38d | 3891, 3749 → 3891, 3729 |  |
| 3893 | 3rd Floor | 2025-07-24 → 2025-10-09 (+77d) | 2025-07-30 → 2025-10-19 (+81d) | 7d → 12.38d | 3892, 3754 → 3892, 3734 |  |
| 3894 | 4th Floor | 2025-08-03 → 2025-10-20 (+78d) | 2025-08-09 → 2025-10-30 (+82d) | 7d → 12.38d | 3893, 3759 → 3893, 3739 |  |
| 3895 | 5th Floor | 2025-08-13 → 2025-10-31 (+79d) | 2025-08-19 → 2025-12-25 (+128d) | 7d → 12.38d | 3894, 3764 → 3894, 3744 |  |
| 3896 | 6th Floor | 2025-08-23 → 2025-12-26 (+125d) | 2025-08-29 → 2026-01-05 (+129d) | 7d → 12.38d | 3895, 3769 → 3895, 3749 |  |
| 3897 | 7th Floor | 2025-09-02 → 2026-01-06 (+126d) | 2025-09-08 → 2026-01-16 (+130d) | 7d → 12.38d | 3896, 3774 → 3896, 3754 |  |
| 3898 | 8th Floor | 2025-09-12 → 2026-01-17 (+127d) | 2025-09-18 → 2026-01-27 (+131d) | 7d → 12.38d | 3897, 3779 → 3897, 3759 |  |
| 3899 | 9th Floor | 2025-09-22 → 2026-01-28 (+128d) | 2025-09-28 → 2026-02-07 (+132d) | 7d → 12.38d | 3898, 3784 → 3898, 3764 |  |
| 3900 | 10th Floor | 2025-10-02 → 2026-02-08 (+129d) | 2025-10-08 → 2026-02-18 (+133d) | 7d → 12.38d | 3899, 3789 → 3899, 3769 |  |
| 3901 | 11th Floor | 2025-10-15 → 2026-02-19 (+127d) | 2025-10-21 → 2026-03-01 (+131d) | 7d → 12.38d | 3900, 3794 → 3900, 3774 |  |
| 3902 | 12th Floor | 2025-10-25 → 2026-03-02 (+128d) | 2025-10-31 → 2026-03-12 (+132d) | 7d → 12.38d | 3901, 3685 → 3901, 3779 |  |
| 3903 | 13th Floor | 2025-12-19 → 2026-03-13 (+84d) | 2025-12-25 → 2026-03-23 (+88d) | 7d → 12.38d | 3902, 3799 → 3902, 3784 |  |
| 3904 | 14th Floor | 2025-12-28 → 2026-03-24 (+86d) | 2026-01-03 → 2026-04-03 (+90d) | 7d → 12.38d | 3903, 3804 → 3903, 3789 |  |
| 3905 | 15th Floor | 2026-01-07 → 2026-04-04 (+87d) | 2026-01-13 → 2026-04-14 (+91d) | 7d → 12.38d | 3904, 3809 → 3904, 3794 |  |
| 3906 | 16th Floor | 2026-01-16 → 2026-04-15 (+89d) | 2026-01-22 → 2026-04-25 (+93d) | 7d → 12.38d | 3905, 3814 → 3905, 3799 |  |
| 3907 | 17th Floor | 2026-01-25 → 2026-04-26 (+91d) | 2026-01-31 → 2026-05-06 (+95d) | 7d → 12.38d | 3906, 3819 → 3906, 3804 |  |
| 3908 | 18th Floor | 2026-02-03 → 2026-05-07 (+93d) | 2026-02-09 → 2026-05-17 (+97d) | 7d → 12.38d | 3907, 3824 → 3907, 3809 |  |
| 3909 | 19th Floor | 2026-02-16 → 2026-05-18 (+91d) | 2026-02-22 → 2026-05-28 (+95d) | 7d → 12.38d | 3908, 3829 → 3908, 3814 |  |
| 3910 | 20th Floor | 2026-03-01 → 2026-05-29 (+89d) | 2026-03-07 → 2026-06-08 (+93d) | 7d → 12.38d | 3909, 3834 → 3909, 3819 |  |
| 3911 | 21st Floor | 2026-03-10 → 2026-06-09 (+91d) | 2026-03-16 → 2026-06-19 (+95d) | 7d → 12.38d | 3910, 3839 → 3910, 3824 |  |
| 3912 | 22nd Floor | 2026-03-19 → 2026-06-20 (+93d) | 2026-03-25 → 2026-06-30 (+97d) | 7d → 12.38d | 3911, 3844 → 3911, 3829 |  |
| 3913 | 23rd Floor | 2026-03-28 → 2026-07-01 (+95d) | 2026-04-03 → 2026-07-11 (+99d) | 7d → 12.38d | 3912, 3849 → 3912, 3834 |  |
| 3914 | 24th Floor | 2026-04-05 → 2026-07-12 (+98d) | 2026-04-11 → 2026-07-22 (+102d) | 7d → 12.38d | 3913, 3854 → 3913, 3839 |  |
| 3915 | 25th Floor | 2026-04-13 → 2026-07-23 (+101d) | 2026-04-19 → 2026-08-02 (+105d) | 7d → 12.38d | 3914, 3859 → 3914, 3844 |  |
| 3916 | 26th Floor | 2026-04-23 → 2026-08-03 (+102d) | 2026-04-29 → 2026-08-13 (+106d) | 7d → 12.38d | 3915, 3864 → 3915, 3849 |  |
| 3917 | 27th Floor | 2026-05-03 → 2026-08-14 (+103d) | 2026-05-09 → 2026-08-24 (+107d) | 7d → 12.38d | 3916, 3869 → 3916, 3854 |  |
| 3918 | 28th Floor | 2026-05-13 → 2026-08-25 (+104d) | 2026-05-20 → 2026-09-04 (+107d) | 7d → 12.38d | 3917, 3874 → 3917, 3859 |  |
| 3919 | 29th Floor | 2026-05-25 → 2026-09-05 (+103d) | 2026-06-01 → 2026-09-15 (+106d) | 7d → 12.38d | 3918, 3879 → 3918, 3864 |  |
| 3920 | 30th Floor | 2026-06-05 → 2026-09-16 (+103d) | 2026-06-12 → 2026-09-26 (+106d) | 7d → 12.38d | 3919, 3884 → 3919, 3869 |  |
| 3921 | 31st Floor | 2026-06-19 → 2026-09-27 (+100d) | 2026-06-26 → 2026-10-07 (+103d) | 7d → 12.38d | 3920, 3889 → 3920, 3874 |  |
| 3922 | 32nd Flood | 2026-07-28 → 2026-10-08 (+72d) | 2026-08-04 → 2026-10-18 (+75d) | 7d → 12.38d | 3921, 4619 → 3921, 3879 |  |
| 3923 | 33rd Floor | 2026-08-04 → 2026-10-19 (+76d) | 2026-08-11 → 2026-10-26 (+76d) | 7d → 9d |  |  |
| 3924 | 34th Floor | 2026-08-11 → 2026-10-27 (+77d) | 2026-08-18 → 2026-12-18 (+122d) | 7d → 9d |  |  |

| ID | Task | Start | Finish | Duration | Predecessors | Other |
| --- | --- | --- | --- | --- | --- | --- |
| 3925 | 35th Floor | 2026-08-18 → 2026-12-19 (+123d) | 2026-08-25 → 2026-12-26 (+123d) | 7d → 9d |  |  |
| 3926 | Terrace | 2026-08-25 → 2026-12-27 (+124d) | 2026-09-01 → 2027-01-03 (+124d) | 7d → 9d |  |  |
| 3927 | Mumty & Machine Room | 2026-09-01 → 2027-01-04 (+125d) | 2026-09-08 → 2027-01-11 (+125d) | 7d → 9d |  |  |
| 3928 | **Finishing work** | 2025-06-08 → 2025-09-21 (+105d) | 2027-06-29 → 2027-10-24 (+117d) | 661.44d → 757.75d |  | constraint start no earlier than 2025-06-08 → start no earlier than 2025-09-21 |
| 3929 | **Flat finishing** | 2025-06-08 → 2025-09-21 (+105d) | 2027-03-22 → 2027-07-10 (+110d) | 561.88d → 638.5d |  | constraint start no earlier than 2025-06-08 → start no earlier than 2025-09-21 |
| 3930 | **1st Floor** | 2025-06-08 → 2025-09-21 (+105d) | 2025-09-02 → 2026-01-29 (+149d) | 86d → 95.62d |  | constraint start no earlier than 2025-06-08 → start no earlier than 2025-09-21 |
| 3931 | Block Work | 2025-06-08 → 2025-09-21 (+105d) | 2025-06-16 → 2025-09-28 (+104d) | 8d → 7.88d |  |  |
| 3932 | Door Frame Fixing | 2025-06-16 → 2025-09-28 (+104d) | 2025-06-25 → 2025-10-03 (+100d) | 9d → 5.62d |  |  |
| 3933 | Internal Plumbing Works | 2025-06-16 → 2025-09-28 (+104d) | 2025-06-24 → 2025-10-05 (+103d) | 8d → 7.88d |  |  |
| 3934 | Waterproofing | 2025-06-24 → 2025-10-05 (+103d) | 2025-07-04 → 2025-10-12 (+100d) | 10d → 7.88d |  |  |
| 3935 | Internal Plaster | 2025-12-16 → 2025-10-03 (-74d) | 2026-04-15 → 2025-10-08 (-189d) | 119.94d → 5.62d | 3583SS+17.88d → 3932FS+0.25d |  |
| 3936 | IPS flooring work | 2025-07-04 → 2025-10-12 (+100d) | 2025-07-14 → 2025-10-19 (+97d) | 10d → 7.88d |  |  |
| 3937 | Toilet dado work | 2025-07-04 → 2025-10-12 (+100d) | 2025-07-12 → 2025-10-19 (+99d) | 8d → 7.88d | 3934, 3951 → 3934, 3935 |  |
| 3938 | Toilet flooring work | 2025-07-12 → 2025-10-19 (+99d) | 2025-07-20 → 2025-10-25 (+97d) | 8d → 6.75d |  |  |
| 3939 | Living dinning flooring | 2025-07-20 → 2025-10-25 (+97d) | 2025-08-01 → 2025-12-18 (+139d) | 12d → 10.12d |  |  |
| 3940 | Aluminium door-window fixing | 2025-08-01 → 2025-12-18 (+139d) | 2025-08-13 → 2025-12-30 (+139d) | 12d → 13.5d | 3936, 3939 → 3939FS+0.25d |  |
| 3941 | Putty primer coat | 2025-08-01 → 2025-12-18 (+139d) | 2025-08-07 → 2025-12-24 (+139d) | 6d → 6.75d |  |  |
| 3942 | Door shutter fixing | 2025-08-01 → 2025-12-18 (+139d) | 2025-08-09 → 2025-12-26 (+139d) | 8d → 9d |  |  |
| 3943 | Electrical wiring work | 2025-08-09 → 2025-12-26 (+139d) | 2025-08-17 → 2026-01-07 (+143d) | 8d → 13.5d |  |  |
| 3944 | Painting 1st coat | 2025-08-17 → 2026-01-07 (+143d) | 2025-08-25 → 2026-01-19 (+147d) | 8d → 13.5d |  |  |
| 3945 | False ceiling | 2025-08-25 → 2026-01-19 (+147d) | 2025-09-02 → 2026-01-29 (+149d) | 8d → 11.25d |  |  |
| 3946 | **2nd Floor** | 2025-06-16 → 2025-09-28 (+104d) | 2025-09-10 → 2026-02-10 (+153d) | 86d → 101d |  | constraint start no earlier than 2025-06-16 → start no earlier than 2025-09-28 |
| 3947 | Block Work | 2025-06-16 → 2025-09-28 (+104d) | 2025-06-24 → 2025-10-05 (+103d) | 8d → 7.88d |  |  |
| 3948 | Door Frame Fixing | 2025-06-25 → 2025-10-05 (+102d) | 2025-07-04 → 2025-10-10 (+98d) | 9d → 5.62d |  |  |
| 3949 | Internal Plumbing Works | 2025-06-24 → 2025-10-05 (+103d) | 2025-07-02 → 2025-10-12 (+102d) | 8d → 7.88d |  |  |
| 3950 | Waterproofing | 2025-07-04 → 2025-10-12 (+100d) | 2025-07-14 → 2025-10-19 (+97d) | 10d → 7.88d |  |  |
| 3951 | Internal Plaster | 2025-06-17 → 2025-10-10 (+115d) | 2025-06-25 → 2025-10-15 (+112d) | 8d → 5.62d | 3931FS+1d → 3935FS+0.25d, 3948 |  |
| 3952 | IPS flooring work | 2025-07-14 → 2025-10-19 (+97d) | 2025-07-24 → 2025-10-26 (+94d) | 10d → 7.88d |  |  |
| 3953 | Toilet dado work | 2025-07-14 → 2025-10-19 (+97d) | 2025-07-22 → 2025-10-26 (+96d) | 8d → 7.88d | 3937, 3950, 3967 → 3937, 3950, 3951 |  |
| 3954 | Toilet flooring work | 2025-07-22 → 2025-10-26 (+96d) | 2025-07-30 → 2025-12-16 (+139d) | 8d → 6.75d |  |  |
| 3955 | Living dinning flooring | 2025-08-01 → 2025-12-18 (+139d) | 2025-08-09 → 2025-12-27 (+140d) | 8d → 10.12d | 3939FS+0.25d → 3939, 3948, 3954 |  |
| 3956 | Aluminium door-window fixing | 2025-08-13 → 2025-12-30 (+139d) | 2025-08-21 → 2026-01-11 (+143d) | 8d → 13.5d | 3940FS+0.25d → 3940FS+0.25d, 3955FS+0.25d |  |
| 3957 | Putty primer coat | 2025-08-09 → 2025-12-27 (+140d) | 2025-08-15 → 2026-01-02 (+140d) | 6d → 6.75d |  |  |
| 3958 | Door shutter fixing | 2025-08-09 → 2025-12-27 (+140d) | 2025-08-17 → 2026-01-04 (+140d) | 8d → 9d |  |  |
| 3959 | Electrical wiring work | 2025-08-17 → 2026-01-07 (+143d) | 2025-08-25 → 2026-01-19 (+147d) | 8d → 13.5d |  |  |
| 3960 | Painting 1st coat | 2025-08-25 → 2026-01-19 (+147d) | 2025-09-02 → 2026-01-31 (+151d) | 8d → 13.5d |  |  |
| 3961 | False ceiling | 2025-09-02 → 2026-01-31 (+151d) | 2025-09-10 → 2026-02-10 (+153d) | 8d → 11.25d |  |  |
| 3962 | **3rd Floor** | 2025-06-25 → 2025-10-05 (+102d) | 2025-09-18 → 2026-02-22 (+157d) | 86d → 106.38d |  | constraint start no earlier than 2025-06-25 → start no earlier than 2025-10-05 |
| 3963 | Block Work | 2025-06-25 → 2025-10-05 (+102d) | 2025-07-02 → 2025-10-12 (+102d) | 8d → 7.88d |  |  |
| 3964 | Door Frame Fixing | 2025-07-04 → 2025-10-12 (+100d) | 2025-07-13 → 2025-10-17 (+96d) | 9d → 5.62d |  |  |
| 3965 | Internal Plumbing Works | 2025-07-03 → 2025-10-12 (+101d) | 2025-07-10 → 2025-10-19 (+101d) | 8d → 7.88d |  |  |
| 3966 | Waterproofing | 2025-07-14 → 2025-10-19 (+97d) | 2025-07-24 → 2025-10-26 (+94d) | 10d → 7.88d |  |  |
| 3967 | Internal Plaster | 2025-06-25 → 2025-10-17 (+114d) | 2025-07-03 → 2025-10-22 (+111d) | 8d → 5.62d | 3951FS+0.25d → 3951FS+0.25d, 3964 |  |
| 3968 | IPS flooring work | 2025-07-24 → 2025-10-26 (+94d) | 2025-08-03 → 2025-12-17 (+136d) | 10d → 7.88d | 3952, 3964, 3966, 3983 → 3952FS+0.25d, 3964FS+0.25d |  |
| 3969 | Toilet dado work | 2025-07-24 → 2025-10-26 (+94d) | 2025-08-01 → 2025-12-17 (+138d) | 8d → 7.88d | 3953, 3966, 3983 → 3953, 3966, 3967 |  |
| 3970 | Toilet flooring work | 2025-08-01 → 2025-12-17 (+138d) | 2025-08-09 → 2025-12-23 (+136d) | 8d → 6.75d |  |  |
| 3971 | Living dinning flooring | 2025-08-10 → 2025-12-27 (+139d) | 2025-08-17 → 2026-01-05 (+141d) | 8d → 10.12d | 3955FS+0.25d → 3955, 3964, 3970 |  |
| 3972 | Aluminium door-window fixing | 2025-08-22 → 2026-01-12 (+143d) | 2025-08-29 → 2026-01-24 (+148d) | 8d → 13.5d | 3956FS+0.25d → 3956FS+0.25d, 3971FS+0.25d |  |
| 3973 | Putty primer coat | 2025-08-18 → 2026-01-05 (+140d) | 2025-08-23 → 2026-01-11 (+141d) | 6d → 6.75d |  |  |
| 3974 | Door shutter fixing | 2025-08-18 → 2026-01-05 (+140d) | 2025-08-25 → 2026-01-13 (+141d) | 8d → 9d |  |  |
| 3975 | Electrical wiring work | 2025-08-26 → 2026-01-19 (+146d) | 2025-09-02 → 2026-01-31 (+151d) | 8d → 13.5d |  |  |
| 3976 | Painting 1st coat | 2025-09-03 → 2026-01-31 (+150d) | 2025-09-10 → 2026-02-12 (+155d) | 8d → 13.5d |  |  |
| 3977 | False ceiling | 2025-09-11 → 2026-02-12 (+154d) | 2025-09-18 → 2026-02-22 (+157d) | 8d → 11.25d |  |  |
| 3978 | **4th Floor** | 2025-07-03 → 2025-10-13 (+102d) | 2025-10-01 → 2026-03-06 (+156d) | 90d → 111.75d |  | constraint start no earlier than 2025-07-03 → start no earlier than 2025-10-13 |
| 3979 | Block Work | 2025-07-03 → 2025-10-13 (+102d) | 2025-07-11 → 2025-10-20 (+101d) | 8d → 7.88d |  |  |
| 3980 | Door Frame Fixing | 2025-07-13 → 2025-10-20 (+99d) | 2025-07-22 → 2025-10-25 (+95d) | 9d → 5.62d |  |  |
| 3981 | Internal Plumbing Works | 2025-07-11 → 2025-10-20 (+101d) | 2025-07-19 → 2025-10-27 (+100d) | 8d → 7.88d |  |  |
| 3982 | Waterproofing | 2025-07-24 → 2025-10-27 (+95d) | 2025-08-03 → 2025-12-18 (+137d) | 10d → 7.88d |  |  |
| 3983 | Internal Plaster | 2025-07-04 → 2025-10-25 (+113d) | 2025-07-11 → 2025-10-30 (+111d) | 8d → 5.62d | 3967FS+0.25d → 3967FS+0.25d, 3980FS+0.25d |  |
| 3984 | IPS flooring work | 2025-08-03 → 2025-12-18 (+137d) | 2025-08-13 → 2025-12-25 (+134d) | 10d → 7.88d | 3968, 3980, 3982, 3999 → 3968, 3980, 3982, 3983 |  |
| 3985 | Toilet dado work | 2025-08-03 → 2025-12-18 (+137d) | 2025-08-11 → 2025-12-25 (+136d) | 8d → 7.88d | 3969, 3982, 3999 → 3969, 3982, 3983 |  |
| 3986 | Toilet flooring work | 2025-08-11 → 2025-12-25 (+136d) | 2025-08-19 → 2025-12-31 (+134d) | 8d → 6.75d |  |  |
| 3987 | Living dinning flooring | 2025-08-18 → 2026-01-05 (+140d) | 2025-08-30 → 2026-01-14 (+137d) | 12d → 10.12d | 3971FS+0.25d → 3971, 3980, 3986 |  |
| 3988 | Aluminium door-window fixing | 2025-08-30 → 2026-01-24 (+147d) | 2025-09-11 → 2026-02-05 (+147d) | 12d → 13.5d | 3972FS+0.25d → 3972FS+0.25d, 3987FS+0.25d |  |
| 3989 | Putty primer coat | 2025-08-30 → 2026-01-14 (+137d) | 2025-09-05 → 2026-01-20 (+137d) | 6d → 6.75d |  |  |
| 3990 | Door shutter fixing | 2025-08-30 → 2026-01-14 (+137d) | 2025-09-07 → 2026-01-22 (+137d) | 8d → 9d |  |  |
| 3991 | Electrical wiring work | 2025-09-07 → 2026-01-31 (+146d) | 2025-09-15 → 2026-02-12 (+150d) | 8d → 13.5d |  |  |
| 3992 | Painting 1st coat | 2025-09-15 → 2026-02-12 (+150d) | 2025-09-23 → 2026-02-24 (+154d) | 8d → 13.5d |  |  |
| 3993 | False ceiling | 2025-09-23 → 2026-02-24 (+154d) | 2025-10-01 → 2026-03-06 (+156d) | 8d → 11.25d |  |  |
| 3994 | **5th Floor** | 2025-07-11 → 2025-10-20 (+101d) | 2025-10-13 → 2026-03-18 (+156d) | 94d → 117.12d |  | constraint start no earlier than 2025-07-11 → start no earlier than 2025-10-20 |

| ID | Task | Start | Finish | Duration | Predecessors | Other |
| --- | --- | --- | --- | --- | --- | --- |
| 3995 | Block Work | 2025-07-11 → 2025-10-20 (+101d) | 2025-07-19 → 2025-10-27 (+100d) | 8d → 7.88d |  |  |
| 3996 | Door Frame Fixing | 2025-07-22 → 2025-10-27 (+97d) | 2025-07-31 → 2025-12-16 (+138d) | 9d → 5.62d |  |  |
| 3997 | Internal Plumbing Works | 2025-07-19 → 2025-10-27 (+100d) | 2025-07-27 → 2025-12-18 (+144d) | 8d → 7.88d |  |  |
| 3998 | Waterproofing | 2025-08-03 → 2025-12-18 (+137d) | 2025-08-13 → 2025-12-25 (+134d) | 10d → 7.88d |  |  |
| 3999 | Internal Plaster | 2025-07-12 → 2025-12-16 (+157d) | 2025-07-20 → 2025-12-21 (+154d) | 8d → 5.62d | 3983FS+0.25d → 3983FS+0.25d, 3996FS+0.25d |  |
| 4000 | IPS flooring work | 2025-08-13 → 2025-12-25 (+134d) | 2025-08-23 → 2026-01-01 (+131d) | 10d → 7.88d | 3984, 3996, 3998, 4015 → 3984, 3996, 3998, 3999 |  |
| 4001 | Toilet dado work | 2025-08-13 → 2025-12-25 (+134d) | 2025-08-21 → 2026-01-01 (+133d) | 8d → 7.88d | 3985, 3998, 4015 → 3985, 3998, 3999 |  |
| 4002 | Toilet flooring work | 2025-08-21 → 2026-01-01 (+133d) | 2025-08-29 → 2026-01-07 (+131d) | 8d → 6.75d |  |  |
| 4003 | Living dinning flooring | 2025-08-30 → 2026-01-14 (+137d) | 2025-09-11 → 2026-01-23 (+134d) | 12d → 10.12d | 3987FS+0.25d → 3987, 3996, 4002 |  |
| 4004 | Aluminium door-window fixing | 2025-09-11 → 2026-02-05 (+147d) | 2025-09-23 → 2026-02-17 (+147d) | 12d → 13.5d | 3988FS+0.25d → 3988FS+0.25d, 4003FS+0.25d |  |
| 4005 | Putty primer coat | 2025-09-11 → 2026-01-23 (+134d) | 2025-09-17 → 2026-01-29 (+134d) | 6d → 6.75d |  |  |
| 4006 | Door shutter fixing | 2025-09-11 → 2026-01-23 (+134d) | 2025-09-19 → 2026-01-31 (+134d) | 8d → 9d |  |  |
| 4007 | Electrical wiring work | 2025-09-19 → 2026-02-12 (+146d) | 2025-09-27 → 2026-02-24 (+150d) | 8d → 13.5d |  |  |
| 4008 | Painting 1st coat | 2025-09-27 → 2026-02-24 (+150d) | 2025-10-05 → 2026-03-08 (+154d) | 8d → 13.5d |  |  |
| 4009 | False ceiling | 2025-10-05 → 2026-03-08 (+154d) | 2025-10-13 → 2026-03-18 (+156d) | 8d → 11.25d |  |  |
| 4010 | **6th Floor** | 2025-07-19 → 2025-10-27 (+100d) | 2025-10-25 → 2026-03-30 (+156d) | 98d → 122.5d |  | constraint start no earlier than 2025-07-19 → start no earlier than 2025-10-27 |
| 4011 | Block Work | 2025-07-19 → 2025-10-27 (+100d) | 2025-07-27 → 2025-12-18 (+144d) | 8d → 7.88d |  |  |
| 4012 | Door Frame Fixing | 2025-07-31 → 2025-12-16 (+138d) | 2025-08-09 → 2025-12-21 (+134d) | 9d → 5.62d | 3754, 3996 → 3744, 3996 |  |
| 4013 | Internal Plumbing Works | 2025-07-27 → 2025-12-18 (+144d) | 2025-08-04 → 2025-12-25 (+143d) | 8d → 7.88d |  |  |
| 4014 | Waterproofing | 2025-08-13 → 2025-12-25 (+134d) | 2025-08-23 → 2026-01-01 (+131d) | 10d → 7.88d |  |  |
| 4015 | Internal Plaster | 2025-07-20 → 2025-12-21 (+154d) | 2025-07-28 → 2025-12-26 (+151d) | 8d → 5.62d | 3999FS+0.25d → 3999FS+0.25d, 4012FS+0.25d |  |
| 4016 | IPS flooring work | 2025-08-23 → 2026-01-01 (+131d) | 2025-09-02 → 2026-01-08 (+128d) | 10d → 7.88d | 4000, 4012, 4014, 4031 → 4000, 4012, 4014, 4015 |  |
| 4017 | Toilet dado work | 2025-08-23 → 2026-01-01 (+131d) | 2025-08-31 → 2026-01-08 (+130d) | 8d → 7.88d | 4001, 4014, 4031 → 4001, 4014, 4015 |  |
| 4018 | Toilet flooring work | 2025-08-31 → 2026-01-08 (+130d) | 2025-09-08 → 2026-01-14 (+128d) | 8d → 6.75d |  |  |
| 4019 | Living dinning flooring | 2025-09-11 → 2026-01-23 (+134d) | 2025-09-23 → 2026-02-01 (+131d) | 12d → 10.12d | 4003FS+0.25d → 4003FS+0.25d, 4012FS+0.25d |  |
| 4020 | Aluminium door-window fixing | 2025-09-23 → 2026-02-17 (+147d) | 2025-10-05 → 2026-03-01 (+147d) | 12d → 13.5d | 4004FS+0.25d → 4004FS+0.25d, 4019FS+0.25d |  |
| 4021 | Putty primer coat | 2025-09-23 → 2026-02-01 (+131d) | 2025-09-29 → 2026-02-07 (+131d) | 6d → 6.75d |  |  |
| 4022 | Door shutter fixing | 2025-09-23 → 2026-02-01 (+131d) | 2025-10-01 → 2026-02-09 (+131d) | 8d → 9d |  |  |
| 4023 | Electrical wiring work | 2025-10-01 → 2026-02-24 (+146d) | 2025-10-09 → 2026-03-08 (+150d) | 8d → 13.5d |  |  |
| 4024 | Painting 1st coat | 2025-10-09 → 2026-03-08 (+150d) | 2025-10-17 → 2026-03-20 (+154d) | 8d → 13.5d |  |  |
| 4025 | False ceiling | 2025-10-17 → 2026-03-20 (+154d) | 2025-10-25 → 2026-03-30 (+156d) | 8d → 11.25d |  |  |
| 4026 | **7th Floor** | 2025-07-28 → 2025-12-18 (+143d) | 2025-12-21 → 2026-04-11 (+111d) | 102d → 127.88d |  | constraint start no earlier than 2025-07-28 → start no earlier than 2025-12-18 |
| 4027 | Block Work | 2025-07-28 → 2025-12-18 (+143d) | 2025-08-04 → 2025-12-25 (+143d) | 8d → 7.88d |  |  |
| 4028 | Door Frame Fixing | 2025-08-09 → 2025-12-25 (+138d) | 2025-08-18 → 2025-12-30 (+134d) | 9d → 5.62d |  |  |
| 4029 | Internal Plumbing Works | 2025-08-05 → 2025-12-25 (+142d) | 2025-08-12 → 2026-01-01 (+142d) | 8d → 7.88d |  |  |
| 4030 | Waterproofing | 2025-08-23 → 2026-01-01 (+131d) | 2025-09-02 → 2026-01-08 (+128d) | 10d → 7.88d |  |  |
| 4031 | Internal Plaster | 2025-07-28 → 2025-12-31 (+156d) | 2025-08-05 → 2026-01-04 (+152d) | 8d → 5.62d | 4015FS+0.25d → 4015FS+0.25d, 4028FS+0.25d |  |
| 4032 | IPS flooring work | 2025-09-02 → 2026-01-08 (+128d) | 2025-09-12 → 2026-01-15 (+125d) | 10d → 7.88d | 4016, 4028, 4030, 4047 → 4016, 4028, 4030, 4031 |  |
| 4033 | Toilet dado work | 2025-09-02 → 2026-01-08 (+128d) | 2025-09-10 → 2026-01-15 (+127d) | 8d → 7.88d | 4017, 4030, 4047 → 4017, 4030, 4031 |  |
| 4034 | Toilet flooring work | 2025-09-10 → 2026-01-15 (+127d) | 2025-09-18 → 2026-01-21 (+125d) | 8d → 6.75d |  |  |
| 4035 | Living dinning flooring | 2025-09-24 → 2026-02-01 (+130d) | 2025-10-05 → 2026-02-10 (+128d) | 12d → 10.12d | 4019FS+0.25d → 4019FS+0.25d, 4028FS+0.25d |  |
| 4036 | Aluminium door-window fixing | 2025-10-06 → 2026-03-02 (+147d) | 2025-10-17 → 2026-03-13 (+147d) | 12d → 13.5d | 4020FS+0.25d → 4020FS+0.25d, 4035FS+0.25d |  |
| 4037 | Putty primer coat | 2025-10-06 → 2026-02-10 (+127d) | 2025-10-11 → 2026-02-16 (+128d) | 6d → 6.75d |  |  |
| 4038 | Door shutter fixing | 2025-10-06 → 2026-02-10 (+127d) | 2025-10-13 → 2026-02-18 (+128d) | 8d → 9d |  |  |
| 4039 | Electrical wiring work | 2025-10-14 → 2026-03-08 (+145d) | 2025-10-21 → 2026-03-20 (+150d) | 8d → 13.5d |  |  |
| 4040 | Painting 1st coat | 2025-10-22 → 2026-03-20 (+149d) | 2025-10-29 → 2026-04-01 (+154d) | 8d → 13.5d |  |  |
| 4041 | False ceiling | 2025-10-30 → 2026-04-01 (+153d) | 2025-12-21 → 2026-04-11 (+111d) | 8d → 11.25d |  |  |
| 4042 | **8th Floor** | 2025-08-05 → 2025-12-26 (+143d) | 2026-01-03 → 2026-04-23 (+110d) | 106d → 133.25d |  | constraint start no earlier than 2025-08-05 → start no earlier than 2025-12-26 |
| 4043 | Block Work | 2025-08-05 → 2025-12-26 (+143d) | 2025-08-13 → 2026-01-01 (+141d) | 8d → 7.88d |  |  |
| 4044 | Door Frame Fixing | 2025-08-18 → 2026-01-02 (+137d) | 2025-08-27 → 2026-01-06 (+132d) | 9d → 5.62d |  |  |
| 4045 | Internal Plumbing Works | 2025-08-13 → 2026-01-02 (+142d) | 2025-08-21 → 2026-01-08 (+140d) | 8d → 7.88d |  |  |
| 4046 | Waterproofing | 2025-09-02 → 2026-01-09 (+129d) | 2025-09-12 → 2026-01-17 (+127d) | 10d → 10.12d |  |  |
| 4047 | Internal Plaster | 2025-08-06 → 2026-01-07 (+154d) | 2025-08-13 → 2026-01-14 (+154d) | 8d → 7.88d | 4031FS+0.25d → 4031FS+0.25d, 4044FS+0.25d |  |
| 4048 | IPS flooring work | 2025-09-12 → 2026-01-18 (+128d) | 2025-09-22 → 2026-01-22 (+122d) | 10d → 5.62d | 4032, 4044, 4046, 4063 → 4032, 4044, 4046, 4047 |  |
| 4049 | Toilet dado work | 2025-09-12 → 2026-01-18 (+128d) | 2025-09-20 → 2026-01-24 (+126d) | 8d → 7.88d | 4033, 4046, 4063 → 4033, 4046, 4047 |  |
| 4050 | Toilet flooring work | 2025-09-20 → 2026-01-25 (+127d) | 2025-09-28 → 2026-01-30 (+124d) | 8d → 6.75d |  |  |
| 4051 | Living dinning flooring | 2025-10-06 → 2026-02-11 (+128d) | 2025-10-18 → 2026-02-20 (+125d) | 12d → 10.12d | 4035FS+0.25d → 4035FS+0.25d, 4044FS+0.25d |  |
| 4052 | Aluminium door-window fixing | 2025-10-18 → 2026-03-14 (+147d) | 2025-10-30 → 2026-03-26 (+147d) | 12d → 13.5d | 4036FS+0.25d → 4036FS+0.25d, 4051FS+0.25d |  |
| 4053 | Putty primer coat | 2025-10-18 → 2026-02-20 (+125d) | 2025-10-24 → 2026-02-26 (+125d) | 6d → 6.75d |  |  |
| 4054 | Door shutter fixing | 2025-10-18 → 2026-02-20 (+125d) | 2025-10-26 → 2026-02-28 (+125d) | 8d → 9d |  |  |
| 4055 | Electrical wiring work | 2025-10-26 → 2026-03-20 (+145d) | 2025-12-18 → 2026-04-01 (+104d) | 8d → 13.5d |  |  |
| 4056 | Painting 1st coat | 2025-12-18 → 2026-04-01 (+104d) | 2025-12-26 → 2026-04-13 (+108d) | 8d → 13.5d |  |  |
| 4057 | False ceiling | 2025-12-26 → 2026-04-13 (+108d) | 2026-01-03 → 2026-04-23 (+110d) | 8d → 11.25d |  |  |
| 4058 | **9th Floor** | 2025-08-13 → 2026-01-02 (+142d) | 2026-01-11 → 2026-05-05 (+114d) | 106d → 138.62d |  | constraint start no earlier than 2025-08-13 → start no earlier than 2026-01-02 |
| 4059 | Block Work | 2025-08-13 → 2026-01-02 (+142d) | 2025-08-20 → 2026-01-09 (+142d) | 7d → 7.88d |  |  |
| 4060 | Door Frame Fixing | 2025-08-27 → 2026-01-09 (+135d) | 2025-09-05 → 2026-01-14 (+131d) | 9d → 5.62d |  |  |
| 4061 | Internal Plumbing Works | 2025-08-21 → 2026-01-09 (+141d) | 2025-08-29 → 2026-01-16 (+140d) | 8d → 7.88d |  |  |
| 4062 | Waterproofing | 2025-09-12 → 2026-01-18 (+128d) | 2025-09-22 → 2026-01-24 (+124d) | 10d → 7.88d |  |  |
| 4063 | Internal Plaster | 2025-08-14 → 2026-01-25 (+164d) | 2025-08-22 → 2026-01-29 (+160d) | 8d → 5.62d | 4047FS+0.25d → 4047, 4060, 4061, 4062 |  |
| 4064 | IPS flooring work | 2025-09-22 → 2026-01-30 (+130d) | 2025-10-02 → 2026-02-05 (+126d) | 10d → 7.88d | 4048, 4060, 4062, 4079 → 4048, 4060, 4062, 4063 |  |

| ID | Task | Start | Finish | Duration | Predecessors | Other |
| --- | --- | --- | --- | --- | --- | --- |
| 4065 | Toilet dado work | 2025-09-22 → 2026-01-30 (+130d) | 2025-09-30 → 2026-02-05 (+128d) | 8d → 7.88d | 4049, 4062, 4079 → 4049, 4062, 4063 |  |
| 4066 | Toilet flooring work | 2025-09-30 → 2026-02-06 (+129d) | 2025-10-08 → 2026-02-11 (+126d) | 8d → 6.75d |  |  |
| 4067 | Living dinning flooring | 2025-10-18 → 2026-02-20 (+125d) | 2025-10-26 → 2026-03-01 (+126d) | 8d → 10.12d | 4051FS+0.25d → 4051FS+0.25d, 4060FS+0.25d |  |
| 4068 | Aluminium door-window fixing | 2025-10-30 → 2026-03-26 (+147d) | 2025-12-22 → 2026-04-10 (+109d) | 8d → 16.88d | 4052FS+0.25d → 4052FS+0.25d, 4067FS+0.25d |  |
| 4069 | Putty primer coat | 2025-10-26 → 2026-03-01 (+126d) | 2025-12-16 → 2026-03-07 (+81d) | 6d → 6.75d |  |  |
| 4070 | Door shutter fixing | 2025-10-26 → 2026-03-01 (+126d) | 2025-12-18 → 2026-03-09 (+81d) | 8d → 9d |  |  |
| 4071 | Electrical wiring work | 2025-12-18 → 2026-04-01 (+104d) | 2025-12-26 → 2026-04-13 (+108d) | 8d → 13.5d |  |  |
| 4072 | Painting 1st coat | 2025-12-26 → 2026-04-13 (+108d) | 2026-01-03 → 2026-04-25 (+112d) | 8d → 13.5d |  |  |
| 4073 | False ceiling | 2026-01-03 → 2026-04-25 (+112d) | 2026-01-11 → 2026-05-05 (+114d) | 8d → 11.25d |  |  |
| 4074 | **10th Floor** | 2025-08-20 → 2026-01-09 (+142d) | 2026-01-19 → 2026-05-17 (+118d) | 107d → 144d |  | constraint start no earlier than 2025-08-20 → start no earlier than 2026-01-09 |
| 4075 | Block Work | 2025-08-20 → 2026-01-09 (+142d) | 2025-08-27 → 2026-01-16 (+142d) | 7d → 7.88d |  |  |
| 4076 | Door Frame Fixing | 2025-09-05 → 2026-01-16 (+133d) | 2025-09-14 → 2026-01-21 (+129d) | 9d → 5.62d |  |  |
| 4077 | Internal Plumbing Works | 2025-08-29 → 2026-01-16 (+140d) | 2025-09-06 → 2026-01-23 (+139d) | 8d → 7.88d |  |  |
| 4078 | Waterproofing | 2025-09-22 → 2026-01-25 (+125d) | 2025-10-02 → 2026-01-31 (+121d) | 10d → 7.88d |  |  |
| 4079 | Internal Plaster | 2025-08-22 → 2026-02-01 (+163d) | 2025-08-29 → 2026-02-05 (+160d) | 7d → 5.62d | 4063FS+0.25d → 4063, 4076, 4077, 4078 |  |
| 4080 | IPS flooring work | 2025-10-02 → 2026-02-06 (+127d) | 2025-10-12 → 2026-02-12 (+123d) | 10d → 7.88d | 4064, 4076, 4078, 4095 → 4064, 4076, 4078, 4079 |  |
| 4081 | Toilet dado work | 2025-10-02 → 2026-02-06 (+127d) | 2025-10-10 → 2026-02-12 (+125d) | 8d → 7.88d | 4065, 4078, 4095 → 4065, 4078, 4079 |  |
| 4082 | Toilet flooring work | 2025-10-10 → 2026-02-13 (+126d) | 2025-10-18 → 2026-02-18 (+123d) | 8d → 6.75d |  |  |
| 4083 | Living dinning flooring | 2025-10-26 → 2026-03-01 (+126d) | 2025-12-18 → 2026-03-10 (+82d) | 8d → 10.12d | 4067FS+0.25d → 4067FS+0.25d, 4076FS+0.25d |  |
| 4084 | Aluminium door-window fixing | 2025-12-22 → 2026-04-10 (+109d) | 2025-12-30 → 2026-04-25 (+116d) | 8d → 16.88d | 4068FS+0.25d → 4068FS+0.25d, 4083FS+0.25d |  |
| 4085 | Putty primer coat | 2025-12-18 → 2026-03-10 (+82d) | 2025-12-24 → 2026-03-16 (+82d) | 6d → 6.75d |  |  |
| 4086 | Door shutter fixing | 2025-12-18 → 2026-03-10 (+82d) | 2025-12-26 → 2026-03-18 (+82d) | 8d → 9d |  |  |
| 4087 | Electrical wiring work | 2025-12-26 → 2026-04-13 (+108d) | 2026-01-03 → 2026-04-25 (+112d) | 8d → 13.5d |  |  |
| 4088 | Painting 1st coat | 2026-01-03 → 2026-04-25 (+112d) | 2026-01-11 → 2026-05-07 (+116d) | 8d → 13.5d |  |  |
| 4089 | False ceiling | 2026-01-11 → 2026-05-07 (+116d) | 2026-01-19 → 2026-05-17 (+118d) | 8d → 11.25d |  |  |
| 4090 | **11th Floor** | 2025-08-28 → 2026-01-16 (+141d) | 2026-01-27 → 2026-05-29 (+122d) | 108d → 149.38d |  | constraint start no earlier than 2025-08-28 → start no earlier than 2026-01-16 |
| 4091 | Block Work | 2025-08-28 → 2026-01-16 (+141d) | 2025-09-03 → 2026-01-23 (+142d) | 7d → 7.88d |  |  |
| 4092 | Door Frame Fixing | 2025-09-14 → 2026-01-23 (+131d) | 2025-09-23 → 2026-01-28 (+127d) | 9d → 5.62d |  |  |
| 4093 | Internal Plumbing Works | 2025-09-06 → 2026-01-23 (+139d) | 2025-09-14 → 2026-01-30 (+138d) | 8d → 7.88d |  |  |
| 4094 | Waterproofing | 2025-10-02 → 2026-02-01 (+122d) | 2025-10-12 → 2026-02-07 (+118d) | 10d → 7.88d |  |  |
| 4095 | Internal Plaster | 2025-08-29 → 2026-02-08 (+163d) | 2025-09-05 → 2026-02-12 (+160d) | 7d → 5.62d | 4079FS+0.25d → 4079, 4092, 4093, 4094 |  |
| 4096 | IPS flooring work | 2025-10-12 → 2026-02-13 (+124d) | 2025-10-22 → 2026-02-19 (+120d) | 10d → 7.88d |  |  |
| 4097 | Toilet dado work | 2025-10-12 → 2026-02-13 (+124d) | 2025-10-20 → 2026-02-19 (+122d) | 8d → 7.88d | 4081, 4094, 4111 → 4081, 4094, 4095 |  |
| 4098 | Toilet flooring work | 2025-10-20 → 2026-02-20 (+123d) | 2025-10-28 → 2026-02-25 (+120d) | 8d → 6.75d |  |  |
| 4099 | Living dinning flooring | 2025-12-19 → 2026-03-10 (+81d) | 2025-12-26 → 2026-03-19 (+83d) | 8d → 10.12d | 4083FS+0.25d → 4083FS+0.25d, 4092FS+0.25d |  |
| 4100 | Aluminium door-window fixing | 2025-12-31 → 2026-04-25 (+115d) | 2026-01-07 → 2026-05-10 (+123d) | 8d → 16.88d | 4084FS+0.25d → 4084FS+0.25d, 4099FS+0.25d |  |
| 4101 | Putty primer coat | 2025-12-27 → 2026-03-19 (+82d) | 2026-01-01 → 2026-03-25 (+83d) | 6d → 6.75d |  |  |
| 4102 | Door shutter fixing | 2025-12-27 → 2026-03-19 (+82d) | 2026-01-03 → 2026-03-27 (+83d) | 8d → 9d |  |  |
| 4103 | Electrical wiring work | 2026-01-04 → 2026-04-25 (+111d) | 2026-01-11 → 2026-05-07 (+116d) | 8d → 13.5d |  |  |
| 4104 | Painting 1st coat | 2026-01-12 → 2026-05-07 (+115d) | 2026-01-19 → 2026-05-19 (+120d) | 8d → 13.5d |  |  |
| 4105 | False ceiling | 2026-01-20 → 2026-05-19 (+119d) | 2026-01-27 → 2026-05-29 (+122d) | 8d → 11.25d |  |  |
| 4106 | **12th Floor** | 2025-09-04 → 2026-01-23 (+141d) | 2026-02-05 → 2026-06-10 (+125d) | 109d → 154.75d |  | constraint start no earlier than 2025-09-04 → start no earlier than 2026-01-23 |
| 4107 | Block Work | 2025-09-04 → 2026-01-23 (+141d) | 2025-09-11 → 2026-01-31 (+142d) | 7d → 9d |  |  |
| 4108 | Door Frame Fixing | 2025-09-23 → 2026-01-31 (+130d) | 2025-10-02 → 2026-02-09 (+130d) | 9d → 10.12d |  |  |
| 4109 | Internal Plumbing Works | 2025-09-14 → 2026-01-31 (+139d) | 2025-09-22 → 2026-02-10 (+141d) | 8d → 11.25d |  |  |
| 4110 | Waterproofing | 2025-10-12 → 2026-02-10 (+121d) | 2025-10-22 → 2026-02-17 (+118d) | 10d → 7.88d |  |  |
| 4111 | Internal Plaster | 2025-09-06 → 2026-02-17 (+164d) | 2025-09-12 → 2026-02-22 (+163d) | 7d → 5.62d | 4095FS+0.25d → 4095, 4108, 4109, 4110 |  |
| 4112 | IPS flooring work | 2025-10-22 → 2026-02-20 (+121d) | 2025-12-16 → 2026-02-28 (+74d) | 10d → 10.12d |  |  |
| 4113 | Toilet dado work | 2025-10-22 → 2026-02-22 (+123d) | 2025-10-30 → 2026-03-02 (+123d) | 8d → 9d | 4097, 4110, 4127 → 4097, 4110, 4111 |  |
| 4114 | Toilet flooring work | 2025-10-30 → 2026-03-02 (+123d) | 2025-12-22 → 2026-03-09 (+77d) | 8d → 7.88d |  |  |
| 4115 | Living dinning flooring | 2025-12-27 → 2026-03-20 (+83d) | 2026-01-04 → 2026-03-29 (+84d) | 8d → 11.25d | 4099FS+0.25d → 4099FS+0.25d, 4108FS+0.25d |  |
| 4116 | Aluminium door-window fixing | 2026-01-08 → 2026-05-11 (+123d) | 2026-01-16 → 2026-05-23 (+127d) | 8d → 13.5d | 4100FS+0.25d → 4100FS+0.25d, 4112FS+0.25d |  |
| 4117 | Putty primer coat | 2026-01-04 → 2026-03-30 (+85d) | 2026-01-10 → 2026-04-04 (+84d) | 6d → 6.75d |  |  |
| 4118 | Door shutter fixing | 2026-01-04 → 2026-03-30 (+85d) | 2026-01-12 → 2026-04-06 (+84d) | 8d → 9d |  |  |
| 4119 | Electrical wiring work | 2026-01-12 → 2026-05-07 (+115d) | 2026-01-20 → 2026-05-19 (+119d) | 8d → 13.5d |  |  |
| 4120 | Painting 1st coat | 2026-01-20 → 2026-05-19 (+119d) | 2026-01-28 → 2026-05-31 (+123d) | 8d → 13.5d |  |  |
| 4121 | False ceiling | 2026-01-28 → 2026-05-31 (+123d) | 2026-02-05 → 2026-06-10 (+125d) | 8d → 11.25d |  |  |
| 4122 | **13th Floor** | 2025-09-11 → 2026-02-01 (+143d) | 2026-02-13 → 2026-06-22 (+129d) | 110d → 159d |  | constraint start no earlier than 2025-09-11 → start no earlier than 2026-02-01 |
| 4123 | Block Work | 2025-09-11 → 2026-02-01 (+143d) | 2025-09-18 → 2026-02-09 (+144d) | 7d → 9d |  |  |
| 4124 | Door Frame Fixing | 2025-10-02 → 2026-02-09 (+130d) | 2025-10-11 → 2026-02-18 (+130d) | 9d → 10.12d |  |  |
| 4125 | Internal Plumbing Works | 2025-09-22 → 2026-02-10 (+141d) | 2025-09-30 → 2026-02-20 (+143d) | 8d → 11.25d |  |  |
| 4126 | Waterproofing | 2025-10-22 → 2026-02-20 (+121d) | 2025-12-16 → 2026-02-27 (+73d) | 10d → 7.88d |  |  |
| 4127 | Internal Plaster | 2025-09-13 → 2026-02-23 (+163d) | 2025-09-20 → 2026-02-28 (+161d) | 7d → 5.62d | 4111FS+0.25d → 4111FS+0.25d, 4124FS+0.25d |  |
| 4128 | IPS flooring work | 2025-12-16 → 2026-03-01 (+75d) | 2025-12-26 → 2026-03-09 (+73d) | 10d → 10.12d | 4112, 4124, 4126, 4143 → 4112, 4124, 4126, 4127 |  |
| 4129 | Toilet dado work | 2025-12-16 → 2026-03-02 (+76d) | 2025-12-24 → 2026-03-10 (+76d) | 8d → 9d | 4113, 4126, 4143 → 4113, 4126, 4127 |  |
| 4130 | Toilet flooring work | 2025-12-24 → 2026-03-10 (+76d) | 2026-01-01 → 2026-03-17 (+75d) | 8d → 7.88d |  |  |
| 4131 | Living dinning flooring | 2026-01-04 → 2026-03-30 (+85d) | 2026-01-12 → 2026-04-03 (+81d) | 8d → 5.62d | 4115FS+0.25d → 4115, 4124, 4130 |  |
| 4132 | Aluminium door-window fixing | 2026-01-16 → 2026-05-23 (+127d) | 2026-01-24 → 2026-06-07 (+134d) | 8d → 16.88d | 4116FS+0.25d → 4116, 4128, 4131 |  |
| 4133 | Putty primer coat | 2026-01-12 → 2026-04-05 (+83d) | 2026-01-18 → 2026-04-10 (+82d) | 6d → 6.75d |  |  |
| 4134 | Door shutter fixing | 2026-01-12 → 2026-04-07 (+85d) | 2026-01-20 → 2026-04-14 (+84d) | 8d → 9d |  |  |

| ID | Task | Start | Finish | Duration | Predecessors | Other |
| --- | --- | --- | --- | --- | --- | --- |
| 4135 | Electrical wiring work | 2026-01-20 → 2026-05-19 (+119d) | 2026-01-28 → 2026-05-31 (+123d) | 8d → 13.5d |  |  |
| 4136 | Painting 1st coat | 2026-01-28 → 2026-05-31 (+123d) | 2026-02-05 → 2026-06-12 (+127d) | 8d → 13.5d |  |  |
| 4137 | False ceiling | 2026-02-05 → 2026-06-12 (+127d) | 2026-02-13 → 2026-06-22 (+129d) | 8d → 11.25d |  |  |
| 4138 | **14th Floor** | 2025-09-18 → 2026-02-09 (+144d) | 2026-02-21 → 2026-07-04 (+133d) | 111d → 163.25d |  | constraint start no earlier than 2025-09-18 → start no earlier than 2026-02-09 |
| 4139 | Block Work | 2025-09-18 → 2026-02-09 (+144d) | 2025-09-26 → 2026-02-17 (+144d) | 8d → 9d |  |  |
| 4140 | Door Frame Fixing | 2025-10-11 → 2026-02-18 (+130d) | 2025-10-20 → 2026-02-27 (+130d) | 9d → 10.12d |  |  |
| 4141 | Internal Plumbing Works | 2025-09-30 → 2026-02-20 (+143d) | 2025-10-08 → 2026-03-02 (+145d) | 8d → 11.25d |  |  |
| 4142 | Waterproofing | 2025-12-16 → 2026-03-02 (+76d) | 2025-12-26 → 2026-03-09 (+73d) | 10d → 7.88d |  |  |
| 4143 | Internal Plaster | 2025-09-20 → 2026-02-28 (+161d) | 2025-09-27 → 2026-03-05 (+159d) | 7d → 5.62d | 4127FS+0.25d → 4127FS+0.25d, 4140FS+0.25d |  |
| 4144 | IPS flooring work | 2025-12-26 → 2026-03-10 (+74d) | 2026-01-05 → 2026-03-18 (+72d) | 10d → 10.12d |  |  |
| 4145 | Toilet dado work | 2025-12-26 → 2026-03-10 (+74d) | 2026-01-03 → 2026-03-18 (+74d) | 8d → 9d | 4129, 4142, 4159 → 4129, 4142, 4143 |  |
| 4146 | Toilet flooring work | 2026-01-03 → 2026-03-18 (+74d) | 2026-01-11 → 2026-03-25 (+73d) | 8d → 7.88d |  |  |
| 4147 | Living dinning flooring | 2026-01-12 → 2026-04-04 (+82d) | 2026-01-20 → 2026-04-18 (+88d) | 8d → 16.88d | 4131FS+0.25d → 4131, 4140, 4146 |  |
| 4148 | Aluminium door-window fixing | 2026-01-24 → 2026-06-07 (+134d) | 2026-02-01 → 2026-06-22 (+141d) | 8d → 16.88d | 4132FS+0.25d → 4132, 4144, 4147 |  |
| 4149 | Putty primer coat | 2026-01-20 → 2026-04-19 (+89d) | 2026-01-26 → 2026-04-24 (+88d) | 6d → 6.75d |  |  |
| 4150 | Door shutter fixing | 2026-01-20 → 2026-04-19 (+89d) | 2026-01-28 → 2026-04-26 (+88d) | 8d → 9d |  |  |
| 4151 | Electrical wiring work | 2026-01-28 → 2026-05-31 (+123d) | 2026-02-05 → 2026-06-12 (+127d) | 8d → 13.5d |  |  |
| 4152 | Painting 1st coat | 2026-02-05 → 2026-06-12 (+127d) | 2026-02-13 → 2026-06-24 (+131d) | 8d → 13.5d |  |  |
| 4153 | False ceiling | 2026-02-13 → 2026-06-24 (+131d) | 2026-02-21 → 2026-07-04 (+133d) | 8d → 11.25d |  |  |
| 4154 | **15th Floor** | 2025-09-27 → 2026-02-17 (+143d) | 2026-03-01 → 2026-07-16 (+137d) | 111d → 167.5d |  | constraint start no earlier than 2025-09-27 → start no earlier than 2026-02-17 |
| 4155 | Block Work | 2025-09-27 → 2026-02-17 (+143d) | 2025-10-04 → 2026-02-25 (+144d) | 8d → 9d |  |  |
| 4156 | Door Frame Fixing | 2025-10-20 → 2026-02-27 (+130d) | 2025-10-29 → 2026-03-08 (+130d) | 9d → 10.12d |  |  |
| 4157 | Internal Plumbing Works | 2025-10-08 → 2026-03-02 (+145d) | 2025-10-16 → 2026-03-12 (+147d) | 8d → 11.25d |  |  |
| 4158 | Waterproofing | 2025-12-26 → 2026-03-12 (+76d) | 2026-01-05 → 2026-03-19 (+73d) | 10d → 7.88d |  |  |
| 4159 | Internal Plaster | 2025-09-27 → 2026-03-09 (+163d) | 2025-10-05 → 2026-03-14 (+160d) | 8d → 5.62d | 4143FS+0.25d → 4143FS+0.25d, 4156FS+0.25d |  |
| 4160 | IPS flooring work | 2026-01-05 → 2026-03-19 (+73d) | 2026-01-15 → 2026-03-28 (+72d) | 10d → 10.12d |  |  |
| 4161 | Toilet dado work | 2026-01-05 → 2026-03-19 (+73d) | 2026-01-13 → 2026-03-27 (+73d) | 8d → 9d | 4145, 4158, 4175 → 4145, 4158, 4159 |  |
| 4162 | Toilet flooring work | 2026-01-13 → 2026-03-27 (+73d) | 2026-01-21 → 2026-04-03 (+72d) | 8d → 7.88d |  |  |
| 4163 | Living dinning flooring | 2026-01-21 → 2026-04-19 (+88d) | 2026-01-28 → 2026-04-30 (+92d) | 8d → 13.5d | 4147FS+0.25d → 4147, 4156, 4162 |  |
| 4164 | Aluminium door-window fixing | 2026-02-02 → 2026-06-22 (+140d) | 2026-02-09 → 2026-07-04 (+145d) | 8d → 13.5d | 4148FS+0.25d → 4148, 4160, 4163 |  |
| 4165 | Putty primer coat | 2026-01-29 → 2026-05-01 (+92d) | 2026-02-03 → 2026-05-06 (+92d) | 6d → 6.75d |  |  |
| 4166 | Door shutter fixing | 2026-01-29 → 2026-05-01 (+92d) | 2026-02-05 → 2026-05-08 (+92d) | 8d → 9d |  |  |
| 4167 | Electrical wiring work | 2026-02-06 → 2026-06-12 (+126d) | 2026-02-13 → 2026-06-24 (+131d) | 8d → 13.5d |  |  |
| 4168 | Painting 1st coat | 2026-02-14 → 2026-06-24 (+130d) | 2026-02-21 → 2026-07-06 (+135d) | 8d → 13.5d |  |  |
| 4169 | False ceiling | 2026-02-22 → 2026-07-06 (+134d) | 2026-03-01 → 2026-07-16 (+137d) | 8d → 11.25d |  |  |
| 4170 | **16th Floor** | 2025-10-05 → 2026-02-25 (+143d) | 2026-03-10 → 2026-07-28 (+140d) | 111d → 171.75d |  | constraint start no earlier than 2025-10-05 → start no earlier than 2026-02-25 |
| 4171 | Block Work | 2025-10-05 → 2026-02-25 (+143d) | 2025-10-13 → 2026-03-05 (+143d) | 8d → 9d |  |  |
| 4172 | Door Frame Fixing | 2025-10-29 → 2026-03-08 (+130d) | 2025-12-22 → 2026-03-17 (+85d) | 9d → 10.12d |  |  |
| 4173 | Internal Plumbing Works | 2025-10-16 → 2026-03-12 (+147d) | 2025-10-24 → 2026-03-22 (+149d) | 8d → 11.25d |  |  |
| 4174 | Waterproofing | 2026-01-05 → 2026-03-22 (+76d) | 2026-01-15 → 2026-04-03 (+78d) | 10d → 13.5d |  |  |
| 4175 | Internal Plaster | 2025-10-06 → 2026-04-03 (+179d) | 2025-10-13 → 2026-04-12 (+181d) | 8d → 10.12d | 4159FS+0.25d → 4159, 4172, 4173, 4174 |  |
| 4176 | IPS flooring work | 2026-01-15 → 2026-04-03 (+78d) | 2026-01-25 → 2026-04-12 (+77d) | 10d → 10.12d |  |  |
| 4177 | Toilet dado work | 2026-01-15 → 2026-04-12 (+87d) | 2026-01-27 → 2026-04-20 (+83d) | 12d → 9d | 4161, 4174, 4191 → 4161, 4174, 4175 |  |
| 4178 | Toilet flooring work | 2026-01-27 → 2026-04-20 (+83d) | 2026-02-08 → 2026-04-27 (+78d) | 12d → 7.88d |  |  |
| 4179 | Living dinning flooring | 2026-01-29 → 2026-05-01 (+92d) | 2026-02-06 → 2026-05-12 (+95d) | 8d → 13.5d | 4163FS+0.25d → 4163, 4172, 4178 |  |
| 4180 | Aluminium door-window fixing | 2026-02-10 → 2026-07-04 (+144d) | 2026-02-18 → 2026-07-16 (+148d) | 8d → 13.5d | 4164FS+0.25d → 4164, 4176, 4179 |  |
| 4181 | Putty primer coat | 2026-02-06 → 2026-05-13 (+96d) | 2026-02-12 → 2026-05-18 (+95d) | 6d → 6.75d |  |  |
| 4182 | Door shutter fixing | 2026-02-06 → 2026-05-13 (+96d) | 2026-02-14 → 2026-05-20 (+95d) | 8d → 9d |  |  |
| 4183 | Electrical wiring work | 2026-02-14 → 2026-06-24 (+130d) | 2026-02-22 → 2026-07-06 (+134d) | 8d → 13.5d |  |  |
| 4184 | Painting 1st coat | 2026-02-22 → 2026-07-06 (+134d) | 2026-03-02 → 2026-07-18 (+138d) | 8d → 13.5d |  |  |
| 4185 | False ceiling | 2026-03-02 → 2026-07-18 (+138d) | 2026-03-10 → 2026-07-28 (+140d) | 8d → 11.25d |  |  |
| 4186 | **17th Floor** | 2025-10-13 → 2026-05-29 (+228d) | 2026-03-18 → 2026-09-13 (+179d) | 111d → 121.5d |  | constraint start no earlier than 2025-10-13 → start no earlier than 2026-05-29 |
| 4187 | Block Work | 2025-10-13 → 2026-05-29 (+228d) | 2025-10-20 → 2026-06-05 (+228d) | 7d → 9d | 4171FS+0.25d → 3909, 4171 |  |
| 4188 | Door Frame Fixing | 2025-10-20 → 2026-06-06 (+229d) | 2025-10-29 → 2026-06-14 (+228d) | 9d → 10.12d | 4187FS+0.25d → 4172, 4187 |  |
| 4189 | Internal Plumbing Works | 2025-10-24 → 2026-06-06 (+225d) | 2025-12-16 → 2026-06-15 (+181d) | 8d → 11.25d |  |  |
| 4190 | Waterproofing | 2026-01-15 → 2026-06-16 (+152d) | 2026-01-25 → 2026-06-27 (+153d) | 10d → 13.5d |  |  |
| 4191 | Internal Plaster | 2025-10-14 → 2026-06-28 (+257d) | 2025-10-22 → 2026-07-06 (+257d) | 8d → 10.12d | 4175FS+0.25d → 4175, 4188, 4189, 4190 |  |
| 4192 | IPS flooring work | 2026-01-25 → 2026-06-28 (+154d) | 2026-02-04 → 2026-07-06 (+152d) | 10d → 10.12d |  |  |
| 4193 | Toilet dado work | 2026-01-27 → 2026-07-07 (+161d) | 2026-02-04 → 2026-07-14 (+160d) | 8d → 9d | 4177, 4190, 4207 → 4177, 4190, 4191 |  |
| 4194 | Toilet flooring work | 2026-02-08 → 2026-07-15 (+157d) | 2026-02-16 → 2026-07-21 (+155d) | 8d → 7.88d |  |  |
| 4195 | Living dinning flooring | 2026-02-06 → 2026-07-22 (+166d) | 2026-02-14 → 2026-08-02 (+169d) | 8d → 13.5d | 4179FS+0.25d → 4179, 4188, 4194 |  |
| 4196 | Aluminium door-window fixing | 2026-02-18 → 2026-08-03 (+166d) | 2026-02-26 → 2026-08-14 (+169d) | 8d → 13.5d | 4180FS+0.25d → 4180, 4192, 4195 |  |
| 4197 | Putty primer coat | 2026-02-14 → 2026-08-03 (+170d) | 2026-02-20 → 2026-08-08 (+169d) | 6d → 6.75d |  |  |
| 4198 | Door shutter fixing | 2026-02-14 → 2026-08-03 (+170d) | 2026-02-22 → 2026-08-10 (+169d) | 8d → 9d |  |  |
| 4199 | Electrical wiring work | 2026-02-22 → 2026-08-11 (+170d) | 2026-03-02 → 2026-08-22 (+173d) | 8d → 13.5d |  |  |
| 4200 | Painting 1st coat | 2026-03-02 → 2026-08-23 (+174d) | 2026-03-10 → 2026-09-03 (+177d) | 8d → 13.5d |  |  |
| 4201 | False ceiling | 2026-03-10 → 2026-09-04 (+178d) | 2026-03-18 → 2026-09-13 (+179d) | 8d → 11.25d |  |  |
| 4202 | **18th Floor** | 2025-10-20 → 2026-06-09 (+232d) | 2026-03-30 → 2026-09-25 (+179d) | 116d → 122.62d |  | constraint start no earlier than 2025-10-20 → start no earlier than 2026-06-09 |
| 4203 | Block Work | 2025-10-20 → 2026-06-09 (+232d) | 2025-10-28 → 2026-06-16 (+231d) | 8d → 9d | 4187FS+0.25d → 3910, 4187 |  |
| 4204 | Door Frame Fixing | 2025-10-29 → 2026-06-17 (+231d) | 2025-12-22 → 2026-06-25 (+185d) | 9d → 10.12d |  |  |

| ID | Task | Start | Finish | Duration | Predecessors | Other |
| --- | --- | --- | --- | --- | --- | --- |
| 4205 | Internal Plumbing Works | 2025-12-16 → 2026-06-17 (+183d) | 2025-12-24 → 2026-06-26 (+184d) | 8d → 11.25d |  |  |
| 4206 | Waterproofing | 2026-01-25 → 2026-06-28 (+154d) | 2026-02-04 → 2026-07-09 (+155d) | 10d → 13.5d |  |  |
| 4207 | Internal Plaster | 2025-10-22 → 2026-07-10 (+261d) | 2025-10-29 → 2026-07-18 (+262d) | 7d → 10.12d | 4191FS+0.25d → 4191, 4204, 4205, 4206 |  |
| 4208 | IPS flooring work | 2026-02-04 → 2026-07-10 (+156d) | 2026-02-14 → 2026-07-18 (+154d) | 10d → 10.12d |  |  |
| 4209 | Toilet dado work | 2026-02-04 → 2026-07-19 (+165d) | 2026-02-12 → 2026-07-26 (+164d) | 8d → 9d | 4193, 4206, 4223 → 4193, 4206, 4207 |  |
| 4210 | Toilet flooring work | 2026-02-16 → 2026-07-27 (+161d) | 2026-02-24 → 2026-08-02 (+159d) | 8d → 7.88d |  |  |
| 4211 | Living dinning flooring | 2026-02-14 → 2026-08-03 (+170d) | 2026-02-26 → 2026-08-14 (+169d) | 12d → 13.5d | 4195FS+0.25d → 4195, 4204, 4210 |  |
| 4212 | Aluminium door-window fixing | 2026-02-26 → 2026-08-15 (+170d) | 2026-03-10 → 2026-08-26 (+169d) | 12d → 13.5d | 4196FS+0.25d → 4196, 4208, 4211 |  |
| 4213 | Putty primer coat | 2026-02-26 → 2026-08-15 (+170d) | 2026-03-04 → 2026-08-20 (+169d) | 6d → 6.75d |  |  |
| 4214 | Door shutter fixing | 2026-02-26 → 2026-08-15 (+170d) | 2026-03-06 → 2026-08-22 (+169d) | 8d → 9d |  |  |
| 4215 | Electrical wiring work | 2026-03-06 → 2026-08-23 (+170d) | 2026-03-14 → 2026-09-03 (+173d) | 8d → 13.5d |  |  |
| 4216 | Painting 1st coat | 2026-03-14 → 2026-09-04 (+174d) | 2026-03-22 → 2026-09-15 (+177d) | 8d → 13.5d |  |  |
| 4217 | False ceiling | 2026-03-22 → 2026-09-16 (+178d) | 2026-03-30 → 2026-09-25 (+179d) | 8d → 11.25d |  |  |
| 4218 | **19th Floor** | 2025-10-29 → 2026-06-20 (+234d) | 2026-04-07 → 2026-10-07 (+183d) | 115.75d → 123.75d |  | constraint start no earlier than 2025-10-29 → start no earlier than 2026-06-20 |
| 4219 | Block Work | 2025-10-29 → 2026-06-20 (+234d) | 2025-12-20 → 2026-06-27 (+189d) | 8d → 9d | 4203FS+0.25d → 3911, 4203 |  |
| 4220 | Door Frame Fixing | 2025-12-22 → 2026-06-28 (+188d) | 2025-12-31 → 2026-07-06 (+187d) | 9d → 10.12d |  |  |
| 4221 | Internal Plumbing Works | 2025-12-24 → 2026-06-28 (+186d) | 2026-01-01 → 2026-07-07 (+187d) | 8d → 11.25d |  |  |
| 4222 | Waterproofing | 2026-02-04 → 2026-07-10 (+156d) | 2026-02-14 → 2026-07-21 (+157d) | 10d → 13.5d |  |  |
| 4223 | Internal Plaster | 2025-10-29 → 2026-07-22 (+266d) | 2025-12-21 → 2026-07-30 (+221d) | 8d → 10.12d | 4207FS+0.25d → 4207, 4220, 4221, 4222 |  |
| 4224 | IPS flooring work | 2026-02-14 → 2026-07-31 (+167d) | 2026-02-24 → 2026-08-08 (+165d) | 10d → 10.12d | 4208, 4220, 4222, 4239 → 4208, 4220, 4222, 4223 |  |
| 4225 | Toilet dado work | 2026-02-14 → 2026-07-31 (+167d) | 2026-02-22 → 2026-08-07 (+166d) | 8d → 9d | 4209, 4222, 4239 → 4209, 4222, 4223 |  |
| 4226 | Toilet flooring work | 2026-02-24 → 2026-08-08 (+165d) | 2026-03-04 → 2026-08-14 (+163d) | 8d → 7.88d |  |  |
| 4227 | Living dinning flooring | 2026-02-27 → 2026-08-15 (+169d) | 2026-03-05 → 2026-08-26 (+174d) | 7d → 13.5d | 4211FS+0.25d → 4211, 4220, 4226 |  |
| 4228 | Aluminium door-window fixing | 2026-03-10 → 2026-08-27 (+170d) | 2026-03-22 → 2026-09-07 (+169d) | 12d → 13.5d |  |  |
| 4229 | Putty primer coat | 2026-03-06 → 2026-08-27 (+174d) | 2026-03-11 → 2026-09-01 (+174d) | 6d → 6.75d |  |  |
| 4230 | Door shutter fixing | 2026-03-06 → 2026-08-27 (+174d) | 2026-03-14 → 2026-09-03 (+173d) | 8d → 9d |  |  |
| 4231 | Electrical wiring work | 2026-03-14 → 2026-09-04 (+174d) | 2026-03-22 → 2026-09-15 (+177d) | 8d → 13.5d |  |  |
| 4232 | Painting 1st coat | 2026-03-22 → 2026-09-16 (+178d) | 2026-03-30 → 2026-09-27 (+181d) | 8d → 13.5d |  |  |
| 4233 | False ceiling | 2026-03-30 → 2026-09-28 (+182d) | 2026-04-07 → 2026-10-07 (+183d) | 8d → 11.25d |  |  |
| 4234 | **20th Floor** | 2025-12-21 → 2026-07-01 (+192d) | 2026-04-15 → 2026-10-19 (+187d) | 115.5d → 124.88d |  | constraint start no earlier than 2025-12-21 → start no earlier than 2026-07-01 |
| 4235 | Block Work | 2025-12-21 → 2026-07-01 (+192d) | 2025-12-29 → 2026-07-08 (+191d) | 8d → 9d | 4219FS+0.25d → 3912, 4219 |  |
| 4236 | Door Frame Fixing | 2025-12-31 → 2026-07-09 (+190d) | 2026-01-09 → 2026-07-17 (+189d) | 9d → 10.12d |  |  |
| 4237 | Internal Plumbing Works | 2026-01-01 → 2026-07-09 (+189d) | 2026-01-09 → 2026-07-18 (+190d) | 8d → 11.25d |  |  |
| 4238 | Waterproofing | 2026-02-14 → 2026-07-22 (+158d) | 2026-02-24 → 2026-08-02 (+159d) | 10d → 13.5d |  |  |
| 4239 | Internal Plaster | 2025-12-22 → 2026-08-03 (+224d) | 2025-12-29 → 2026-08-11 (+225d) | 8d → 10.12d | 4223FS+0.25d → 4223, 4236, 4237, 4238 |  |
| 4240 | IPS flooring work | 2026-02-24 → 2026-08-12 (+169d) | 2026-03-06 → 2026-08-20 (+167d) | 10d → 10.12d | 4224, 4236, 4238, 4255 → 4224, 4236, 4238, 4239 |  |
| 4241 | Toilet dado work | 2026-02-24 → 2026-08-12 (+169d) | 2026-03-04 → 2026-08-19 (+168d) | 8d → 9d | 4225, 4238, 4255 → 4225, 4238, 4239 |  |
| 4242 | Toilet flooring work | 2026-03-04 → 2026-08-20 (+169d) | 2026-03-12 → 2026-08-26 (+167d) | 8d → 7.88d |  |  |
| 4243 | Living dinning flooring | 2026-03-06 → 2026-08-27 (+174d) | 2026-03-14 → 2026-09-07 (+177d) | 8d → 13.5d | 4227FS+0.25d → 4227, 4236, 4242 |  |
| 4244 | Aluminium door-window fixing | 2026-03-22 → 2026-09-08 (+170d) | 2026-04-03 → 2026-09-19 (+169d) | 12d → 13.5d |  |  |
| 4245 | Putty primer coat | 2026-03-14 → 2026-09-08 (+178d) | 2026-03-20 → 2026-09-13 (+177d) | 6d → 6.75d |  |  |
| 4246 | Door shutter fixing | 2026-03-14 → 2026-09-08 (+178d) | 2026-03-22 → 2026-09-15 (+177d) | 8d → 9d |  |  |
| 4247 | Electrical wiring work | 2026-03-22 → 2026-09-16 (+178d) | 2026-03-30 → 2026-09-27 (+181d) | 8d → 13.5d |  |  |
| 4248 | Painting 1st coat | 2026-03-30 → 2026-09-28 (+182d) | 2026-04-07 → 2026-10-09 (+185d) | 8d → 13.5d |  |  |
| 4249 | False ceiling | 2026-04-07 → 2026-10-10 (+186d) | 2026-04-15 → 2026-10-19 (+187d) | 8d → 11.25d |  |  |
| 4250 | **21st Floor** | 2025-12-29 → 2026-07-12 (+195d) | 2026-04-23 → 2026-10-31 (+191d) | 115.25d → 126d |  | constraint start no earlier than 2025-12-29 → start no earlier than 2026-07-12 |
| 4251 | Block Work | 2025-12-29 → 2026-07-12 (+195d) | 2026-01-06 → 2026-07-19 (+194d) | 8d → 9d | 4235FS+0.25d → 3913, 4235 |  |
| 4252 | Door Frame Fixing | 2026-01-09 → 2026-07-20 (+192d) | 2026-01-18 → 2026-07-28 (+191d) | 9d → 10.12d |  |  |
| 4253 | Internal Plumbing Works | 2026-01-09 → 2026-07-20 (+192d) | 2026-01-17 → 2026-07-29 (+193d) | 8d → 11.25d |  |  |
| 4254 | Waterproofing | 2026-02-24 → 2026-08-03 (+160d) | 2026-03-06 → 2026-08-14 (+161d) | 10d → 13.5d |  |  |
| 4255 | Internal Plaster | 2025-12-30 → 2026-08-15 (+228d) | 2026-01-07 → 2026-08-23 (+228d) | 8d → 10.12d | 4239FS+0.25d → 4239, 4252, 4253, 4254 |  |
| 4256 | IPS flooring work | 2026-03-06 → 2026-08-24 (+171d) | 2026-03-16 → 2026-09-01 (+169d) | 10d → 10.12d | 4240, 4252, 4254, 4271 → 4240, 4252, 4254, 4255 |  |
| 4257 | Toilet dado work | 2026-03-06 → 2026-08-24 (+171d) | 2026-03-14 → 2026-08-31 (+170d) | 8d → 9d | 4241, 4254, 4271 → 4241, 4254, 4255 |  |
| 4258 | Toilet flooring work | 2026-03-14 → 2026-09-01 (+171d) | 2026-03-22 → 2026-09-07 (+169d) | 8d → 7.88d |  |  |
| 4259 | Living dinning flooring | 2026-03-14 → 2026-09-08 (+178d) | 2026-03-21 → 2026-09-19 (+182d) | 7d → 13.5d | 4243FS+0.25d → 4243, 4252, 4258 |  |
| 4260 | Aluminium door-window fixing | 2026-04-03 → 2026-09-20 (+170d) | 2026-04-15 → 2026-10-01 (+169d) | 12d → 13.5d |  |  |
| 4261 | Putty primer coat | 2026-03-21 → 2026-09-20 (+183d) | 2026-03-27 → 2026-09-25 (+182d) | 6d → 6.75d |  |  |
| 4262 | Door shutter fixing | 2026-03-22 → 2026-09-20 (+182d) | 2026-03-30 → 2026-09-27 (+181d) | 8d → 9d |  |  |
| 4263 | Electrical wiring work | 2026-03-30 → 2026-09-28 (+182d) | 2026-04-07 → 2026-10-09 (+185d) | 8d → 13.5d |  |  |
| 4264 | Painting 1st coat | 2026-04-07 → 2026-10-10 (+186d) | 2026-04-15 → 2026-10-21 (+189d) | 8d → 13.5d |  |  |
| 4265 | False ceiling | 2026-04-15 → 2026-10-22 (+190d) | 2026-04-23 → 2026-10-31 (+191d) | 8d → 11.25d |  |  |
| 4266 | **22nd Floor** | 2026-01-06 → 2026-07-23 (+198d) | 2026-05-01 → 2026-12-27 (+240d) | 115d → 127.12d |  | constraint start no earlier than 2026-01-06 → start no earlier than 2026-07-23 |
| 4267 | Block Work | 2026-01-06 → 2026-07-23 (+198d) | 2026-01-14 → 2026-07-30 (+197d) | 8d → 9d | 4251FS+0.25d → 3914, 4251 |  |
| 4268 | Door Frame Fixing | 2026-01-18 → 2026-07-31 (+194d) | 2026-01-27 → 2026-08-08 (+193d) | 9d → 10.12d |  |  |
| 4269 | Internal Plumbing Works | 2026-01-17 → 2026-07-31 (+195d) | 2026-01-25 → 2026-08-09 (+196d) | 8d → 11.25d |  |  |
| 4270 | Waterproofing | 2026-03-06 → 2026-08-15 (+162d) | 2026-03-16 → 2026-08-26 (+163d) | 10d → 13.5d |  |  |
| 4271 | Internal Plaster | 2026-01-07 → 2026-08-27 (+232d) | 2026-01-15 → 2026-09-04 (+232d) | 8d → 10.12d | 4255FS+0.25d → 4255, 4268, 4269, 4270 |  |
| 4272 | IPS flooring work | 2026-03-16 → 2026-09-05 (+173d) | 2026-03-26 → 2026-09-13 (+171d) | 10d → 10.12d | 4256, 4268, 4270, 4287 → 4256, 4268, 4270, 4271 |  |
| 4273 | Toilet dado work | 2026-03-16 → 2026-09-05 (+173d) | 2026-03-24 → 2026-09-12 (+172d) | 8d → 9d | 4257, 4270, 4287 → 4257, 4270, 4271 |  |
| 4274 | Toilet flooring work | 2026-03-24 → 2026-09-13 (+173d) | 2026-04-01 → 2026-09-19 (+171d) | 8d → 7.88d |  |  |

| ID | Task | Start | Finish | Duration | Predecessors | Other |
| --- | --- | --- | --- | --- | --- | --- |
| 4275 | Living dinning flooring | 2026-03-21 → 2026-09-20 (+183d) | 2026-03-29 → 2026-10-01 (+186d) | 8d → 13.5d | 4259FS+0.25d → 4259, 4268, 4274 |  |
| 4276 | Aluminium door-window fixing | 2026-04-15 → 2026-10-02 (+170d) | 2026-04-27 → 2026-10-13 (+169d) | 12d → 13.5d |  |  |
| 4277 | Putty primer coat | 2026-03-29 → 2026-10-02 (+187d) | 2026-04-04 → 2026-10-07 (+186d) | 6d → 6.75d |  |  |
| 4278 | Door shutter fixing | 2026-03-30 → 2026-10-02 (+186d) | 2026-04-07 → 2026-10-09 (+185d) | 8d → 9d |  |  |
| 4279 | Electrical wiring work | 2026-04-07 → 2026-10-10 (+186d) | 2026-04-15 → 2026-10-21 (+189d) | 8d → 13.5d |  |  |
| 4280 | Painting 1st coat | 2026-04-15 → 2026-10-22 (+190d) | 2026-04-23 → 2026-12-17 (+238d) | 8d → 13.5d |  |  |
| 4281 | False ceiling | 2026-04-23 → 2026-12-18 (+239d) | 2026-05-01 → 2026-12-27 (+240d) | 8d → 11.25d |  |  |
| 4282 | **23rd Floor** | 2026-01-15 → 2026-08-03 (+200d) | 2026-05-25 → 2027-01-11 (+231d) | 130.5d → 131.62d |  | constraint start no earlier than 2026-01-15 → start no earlier than 2026-08-03 |
| 4283 | Block Work | 2026-01-15 → 2026-08-03 (+200d) | 2026-01-22 → 2026-08-10 (+200d) | 8d → 9d | 4267FS+0.25d → 3915, 4267 |  |
| 4284 | Door Frame Fixing | 2026-01-27 → 2026-08-11 (+196d) | 2026-02-05 → 2026-08-19 (+195d) | 9d → 10.12d |  |  |
| 4285 | Internal Plumbing Works | 2026-01-25 → 2026-08-11 (+198d) | 2026-02-02 → 2026-08-20 (+199d) | 8d → 11.25d |  |  |
| 4286 | Waterproofing | 2026-03-16 → 2026-08-27 (+164d) | 2026-03-26 → 2026-09-07 (+165d) | 10d → 13.5d |  |  |
| 4287 | Internal Plaster | 2026-01-15 → 2026-09-08 (+236d) | 2026-01-23 → 2026-09-16 (+236d) | 8d → 10.12d | 4271FS+0.25d → 4271, 4284, 4285, 4286 |  |
| 4288 | IPS flooring work | 2026-03-26 → 2026-09-17 (+175d) | 2026-04-05 → 2026-09-25 (+173d) | 10d → 10.12d | 4272, 4284, 4286, 4303 → 4272, 4284, 4286, 4287 |  |
| 4289 | Toilet dado work | 2026-03-26 → 2026-09-17 (+175d) | 2026-04-03 → 2026-09-24 (+174d) | 8d → 9d | 4273, 4286, 4303 → 4273, 4286, 4287 |  |
| 4290 | Toilet flooring work | 2026-04-03 → 2026-09-25 (+175d) | 2026-04-11 → 2026-10-01 (+173d) | 8d → 7.88d |  |  |
| 4291 | Living dinning flooring | 2026-04-11 → 2026-10-02 (+174d) | 2026-04-23 → 2026-10-16 (+176d) | 12d → 16.88d |  |  |
| 4292 | Aluminium door-window fixing | 2026-04-27 → 2026-10-17 (+173d) | 2026-05-09 → 2026-10-31 (+175d) | 12d → 16.88d |  |  |
| 4293 | Putty primer coat | 2026-04-23 → 2026-10-17 (+177d) | 2026-04-29 → 2026-10-22 (+176d) | 6d → 6.75d |  |  |
| 4294 | Door shutter fixing | 2026-04-23 → 2026-10-17 (+177d) | 2026-05-01 → 2026-10-24 (+176d) | 8d → 9d |  |  |
| 4295 | Electrical wiring work | 2026-05-01 → 2026-10-25 (+177d) | 2026-05-09 → 2026-12-20 (+225d) | 8d → 13.5d |  |  |
| 4296 | Painting 1st coat | 2026-05-09 → 2026-12-21 (+226d) | 2026-05-17 → 2027-01-01 (+229d) | 8d → 13.5d |  |  |
| 4297 | False ceiling | 2026-05-17 → 2027-01-02 (+230d) | 2026-05-25 → 2027-01-11 (+231d) | 8d → 11.25d |  |  |
| 4298 | **24th Floor** | 2026-01-23 → 2026-08-14 (+203d) | 2026-06-19 → 2027-01-26 (+221d) | 146.94d → 136.12d |  | constraint start no earlier than 2026-01-23 → start no earlier than 2026-08-14 |
| 4299 | Block Work | 2026-01-23 → 2026-08-14 (+203d) | 2026-01-31 → 2026-08-21 (+202d) | 7.94d → 9d | 4283FS+0.25d → 3916, 4283 |  |
| 4300 | Door Frame Fixing | 2026-02-05 → 2026-08-22 (+198d) | 2026-02-14 → 2026-08-30 (+197d) | 8.94d → 10.12d |  |  |
| 4301 | Internal Plumbing Works | 2026-02-02 → 2026-08-22 (+201d) | 2026-02-12 → 2026-08-31 (+200d) | 9.94d → 11.25d |  |  |
| 4302 | Waterproofing | 2026-03-26 → 2026-09-08 (+166d) | 2026-04-07 → 2026-09-19 (+165d) | 11.94d → 13.5d |  |  |
| 4303 | Internal Plaster | 2026-01-24 → 2026-09-20 (+239d) | 2026-01-31 → 2026-09-28 (+240d) | 8d → 10.12d | 4287FS+0.25d → 4287, 4300, 4301, 4302 |  |
| 4304 | IPS flooring work | 2026-04-07 → 2026-09-29 (+175d) | 2026-04-16 → 2026-10-07 (+174d) | 8.94d → 10.12d | 4288, 4300, 4302, 4319 → 4288, 4300, 4302, 4303 |  |
| 4305 | Toilet dado work | 2026-04-07 → 2026-09-29 (+175d) | 2026-04-15 → 2026-10-06 (+174d) | 7.94d → 9d | 4289, 4302, 4319 → 4289, 4302, 4303 |  |
| 4306 | Toilet flooring work | 2026-04-15 → 2026-10-07 (+175d) | 2026-04-22 → 2026-10-13 (+174d) | 6.94d → 7.88d |  |  |
| 4307 | Living dinning flooring | 2026-04-23 → 2026-10-17 (+177d) | 2026-05-08 → 2026-10-31 (+176d) | 14.94d → 16.88d |  |  |
| 4308 | Aluminium door-window fixing | 2026-05-09 → 2026-12-16 (+221d) | 2026-05-24 → 2026-12-30 (+220d) | 14.94d → 16.88d |  |  |
| 4309 | Putty primer coat | 2026-05-08 → 2026-12-16 (+222d) | 2026-05-14 → 2026-12-21 (+221d) | 5.94d → 6.75d |  |  |
| 4310 | Door shutter fixing | 2026-05-08 → 2026-12-16 (+222d) | 2026-05-16 → 2026-12-23 (+221d) | 7.94d → 9d |  |  |
| 4311 | Electrical wiring work | 2026-05-16 → 2026-12-24 (+222d) | 2026-05-28 → 2027-01-04 (+221d) | 11.94d → 13.5d |  |  |
| 4312 | Painting 1st coat | 2026-05-28 → 2027-01-05 (+222d) | 2026-06-09 → 2027-01-16 (+221d) | 11.94d → 13.5d |  |  |
| 4313 | False ceiling | 2026-06-09 → 2027-01-17 (+222d) | 2026-06-19 → 2027-01-26 (+221d) | 9.94d → 11.25d |  |  |
| 4314 | **25th Floor** | 2026-01-31 → 2026-08-25 (+206d) | 2026-07-04 → 2027-02-10 (+221d) | 153.69d → 140.62d |  | constraint start no earlier than 2026-01-31 → start no earlier than 2026-08-25 |
| 4315 | Block Work | 2026-01-31 → 2026-08-25 (+206d) | 2026-02-08 → 2026-09-01 (+205d) | 7.94d → 9d | 4299FS+0.25d → 3917, 4299 |  |
| 4316 | Door Frame Fixing | 2026-02-14 → 2026-09-02 (+200d) | 2026-02-23 → 2026-09-10 (+199d) | 8.94d → 10.12d |  |  |
| 4317 | Internal Plumbing Works | 2026-02-12 → 2026-09-02 (+202d) | 2026-02-22 → 2026-09-11 (+201d) | 9.94d → 11.25d |  |  |
| 4318 | Waterproofing | 2026-04-07 → 2026-09-20 (+166d) | 2026-04-19 → 2026-10-01 (+165d) | 11.94d → 13.5d |  |  |
| 4319 | Internal Plaster | 2026-02-01 → 2026-10-02 (+243d) | 2026-02-10 → 2026-10-10 (+242d) | 8.94d → 10.12d | 4303FS+0.25d → 4303, 4316, 4317, 4318 |  |
| 4320 | IPS flooring work | 2026-04-19 → 2026-10-11 (+175d) | 2026-04-28 → 2026-10-19 (+174d) | 8.94d → 10.12d | 4304, 4316, 4318, 4335 → 4304, 4316, 4318, 4319 |  |
| 4321 | Toilet dado work | 2026-04-19 → 2026-10-11 (+175d) | 2026-04-27 → 2026-10-18 (+174d) | 7.94d → 9d | 4305, 4318, 4335 → 4305, 4318, 4319 |  |
| 4322 | Toilet flooring work | 2026-04-27 → 2026-10-19 (+175d) | 2026-05-04 → 2026-10-25 (+174d) | 6.94d → 7.88d |  |  |
| 4323 | Living dinning flooring | 2026-05-08 → 2026-12-16 (+222d) | 2026-05-23 → 2026-12-30 (+221d) | 14.94d → 16.88d |  |  |
| 4324 | Aluminium door-window fixing | 2026-05-24 → 2026-12-31 (+221d) | 2026-06-08 → 2027-01-14 (+220d) | 14.94d → 16.88d |  |  |
| 4325 | Putty primer coat | 2026-05-23 → 2026-12-31 (+222d) | 2026-05-29 → 2027-01-05 (+221d) | 5.94d → 6.75d |  |  |
| 4326 | Door shutter fixing | 2026-05-23 → 2026-12-31 (+222d) | 2026-05-31 → 2027-01-07 (+221d) | 7.94d → 9d |  |  |
| 4327 | Electrical wiring work | 2026-05-31 → 2027-01-08 (+222d) | 2026-06-12 → 2027-01-19 (+221d) | 11.94d → 13.5d |  |  |
| 4328 | Painting 1st coat | 2026-06-12 → 2027-01-20 (+222d) | 2026-06-24 → 2027-01-31 (+221d) | 11.94d → 13.5d |  |  |
| 4329 | False ceiling | 2026-06-24 → 2027-02-01 (+222d) | 2026-07-04 → 2027-02-10 (+221d) | 9.94d → 11.25d |  |  |
| 4330 | **26th Floor** | 2026-02-19 → 2026-09-05 (+198d) | 2026-08-30 → 2027-02-25 (+179d) | 191.88d → 145.12d |  | constraint start no earlier than 2026-02-19 → start no earlier than 2026-09-05 |
| 4331 | Block Work | 2026-05-21 → 2026-09-05 (+107d) | 2026-05-29 → 2026-09-12 (+106d) | 7.94d → 9d | 3918FS+0.25d, 4315FS+0.25d → 3918, 4315 |  |
| 4332 | Door Frame Fixing | 2026-05-29 → 2026-09-13 (+107d) | 2026-06-06 → 2026-09-21 (+107d) | 8.94d → 10.12d |  |  |
| 4333 | Internal Plumbing Works | 2026-05-29 → 2026-09-13 (+107d) | 2026-06-07 → 2026-09-22 (+107d) | 9.94d → 11.25d |  |  |
| 4334 | Waterproofing | 2026-06-08 → 2026-10-02 (+116d) | 2026-06-19 → 2026-10-13 (+116d) | 11.94d → 13.5d |  |  |
| 4335 | Internal Plaster | 2026-02-10 → 2026-10-14 (+246d) | 2026-02-19 → 2026-10-22 (+245d) | 8.94d → 10.12d | 4319FS+0.25d → 4319, 4332, 4333, 4334 |  |
| 4336 | IPS flooring work | 2026-06-19 → 2026-10-23 (+126d) | 2026-06-28 → 2026-10-31 (+125d) | 8.94d → 10.12d | 4320, 4332, 4334, 4351 → 4320, 4332, 4334, 4335 |  |
| 4337 | Toilet dado work | 2026-06-19 → 2026-10-23 (+126d) | 2026-06-27 → 2026-10-30 (+125d) | 7.94d → 9d | 4321, 4334, 4351 → 4321, 4334, 4335 |  |
| 4338 | Toilet flooring work | 2026-06-27 → 2026-10-31 (+126d) | 2026-07-04 → 2026-12-21 (+170d) | 6.94d → 7.88d |  |  |
| 4339 | Living dinning flooring | 2026-07-04 → 2026-12-31 (+180d) | 2026-07-19 → 2027-01-14 (+179d) | 14.94d → 16.88d |  |  |
| 4340 | Aluminium door-window fixing | 2026-07-19 → 2027-01-15 (+180d) | 2026-08-03 → 2027-01-29 (+179d) | 14.94d → 16.88d |  |  |
| 4341 | Putty primer coat | 2026-07-19 → 2027-01-15 (+180d) | 2026-07-25 → 2027-01-20 (+179d) | 5.94d → 6.75d |  |  |
| 4342 | Door shutter fixing | 2026-07-19 → 2027-01-15 (+180d) | 2026-07-27 → 2027-01-22 (+179d) | 7.94d → 9d |  |  |
| 4343 | Electrical wiring work | 2026-07-27 → 2027-01-23 (+180d) | 2026-08-08 → 2027-02-03 (+179d) | 11.94d → 13.5d |  |  |
| 4344 | Painting 1st coat | 2026-08-08 → 2027-02-04 (+180d) | 2026-08-20 → 2027-02-15 (+179d) | 11.94d → 13.5d |  |  |

| ID | Task | Start | Finish | Duration | Predecessors | Other |
| --- | --- | --- | --- | --- | --- | --- |
| 4345 | False ceiling | 2026-08-20 → 2027-02-16 (+180d) | 2026-08-30 → 2027-02-25 (+179d) | 9.94d → 11.25d |  |  |
| 4346 | **27th Floor** | 2026-06-01 → 2026-09-16 (+107d) | 2026-09-20 → 2027-03-12 (+173d) | 110.62d → 149.62d |  | constraint start no earlier than 2026-06-01 → start no earlier than 2026-09-16 |
| 4347 | Block Work | 2026-06-01 → 2026-09-16 (+107d) | 2026-06-09 → 2026-09-23 (+106d) | 7.94d → 9d |  |  |
| 4348 | Door Frame Fixing | 2026-06-09 → 2026-09-24 (+107d) | 2026-06-18 → 2026-10-02 (+106d) | 8.94d → 10.12d |  |  |
| 4349 | Internal Plumbing Works | 2026-06-09 → 2026-09-24 (+107d) | 2026-06-19 → 2026-10-03 (+106d) | 9.94d → 11.25d |  |  |
| 4350 | Waterproofing | 2026-06-19 → 2026-10-14 (+117d) | 2026-07-01 → 2026-10-25 (+116d) | 11.94d → 13.5d |  |  |
| 4351 | Internal Plaster | 2026-02-19 → 2026-10-26 (+249d) | 2026-02-28 → 2026-12-18 (+293d) | 8.94d → 10.12d | 4335FS+0.25d → 4335, 4348, 4349, 4350 |  |
| 4352 | IPS flooring work | 2026-07-10 → 2026-12-19 (+162d) | 2026-07-19 → 2026-12-27 (+161d) | 8.94d → 10.12d | 4336, 4348, 4350, 4367 → 4336, 4348, 4350, 4351 |  |
| 4353 | Toilet dado work | 2026-07-10 → 2026-12-19 (+162d) | 2026-07-18 → 2026-12-26 (+161d) | 7.94d → 9d | 4337, 4350, 4367 → 4337, 4350, 4351 |  |
| 4354 | Toilet flooring work | 2026-07-18 → 2026-12-27 (+162d) | 2026-07-25 → 2027-01-02 (+161d) | 6.94d → 7.88d |  |  |
| 4355 | Living dinning flooring | 2026-07-25 → 2027-01-15 (+174d) | 2026-08-09 → 2027-01-29 (+173d) | 14.94d → 16.88d |  |  |
| 4356 | Aluminium door-window fixing | 2026-08-09 → 2027-01-30 (+174d) | 2026-08-24 → 2027-02-13 (+173d) | 14.94d → 16.88d |  |  |
| 4357 | Putty primer coat | 2026-08-09 → 2027-01-30 (+174d) | 2026-08-15 → 2027-02-04 (+173d) | 5.94d → 6.75d |  |  |
| 4358 | Door shutter fixing | 2026-08-09 → 2027-01-30 (+174d) | 2026-08-17 → 2027-02-06 (+173d) | 7.94d → 9d |  |  |
| 4359 | Electrical wiring work | 2026-08-17 → 2027-02-07 (+174d) | 2026-08-29 → 2027-02-18 (+173d) | 11.94d → 13.5d |  |  |
| 4360 | Painting 1st coat | 2026-08-29 → 2027-02-19 (+174d) | 2026-09-10 → 2027-03-02 (+173d) | 11.94d → 13.5d |  |  |
| 4361 | False ceiling | 2026-09-10 → 2027-03-03 (+174d) | 2026-09-20 → 2027-03-12 (+173d) | 9.94d → 11.25d |  |  |
| 4362 | **28th Floor** | 2026-06-12 → 2026-09-27 (+107d) | 2026-10-05 → 2027-03-27 (+173d) | 114.69d → 154.12d |  | constraint start no earlier than 2026-06-12 → start no earlier than 2026-09-27 |
| 4363 | Block Work | 2026-06-12 → 2026-09-27 (+107d) | 2026-06-20 → 2026-10-04 (+106d) | 7.94d → 9d |  |  |
| 4364 | Door Frame Fixing | 2026-06-20 → 2026-10-05 (+107d) | 2026-06-29 → 2026-10-13 (+106d) | 8.94d → 10.12d |  |  |
| 4365 | Internal Plumbing Works | 2026-06-20 → 2026-10-05 (+107d) | 2026-06-30 → 2026-10-14 (+106d) | 9.94d → 11.25d |  |  |
| 4366 | Waterproofing | 2026-07-01 → 2026-10-26 (+117d) | 2026-07-13 → 2026-12-21 (+161d) | 11.94d → 13.5d |  |  |
| 4367 | Internal Plaster | 2026-07-01 → 2026-12-22 (+174d) | 2026-07-10 → 2026-12-30 (+173d) | 8.94d → 10.12d | 4351, 4348, 4349, 4350 → 4351, 4364, 4365, 4366 |  |
| 4368 | IPS flooring work | 2026-07-22 → 2026-12-31 (+162d) | 2026-07-31 → 2027-01-08 (+161d) | 8.94d → 10.12d | 4352, 4364, 4366, 4383 → 4352, 4364, 4366, 4367 |  |
| 4369 | Toilet dado work | 2026-07-22 → 2026-12-31 (+162d) | 2026-07-30 → 2027-01-07 (+161d) | 7.94d → 9d | 4353, 4366, 4383 → 4353, 4366, 4367 |  |
| 4370 | Toilet flooring work | 2026-07-30 → 2027-01-08 (+162d) | 2026-08-06 → 2027-01-14 (+161d) | 6.94d → 7.88d |  |  |
| 4371 | Living dinning flooring | 2026-08-09 → 2027-01-30 (+174d) | 2026-08-24 → 2027-02-13 (+173d) | 14.94d → 16.88d |  |  |
| 4372 | Aluminium door-window fixing | 2026-08-24 → 2027-02-14 (+174d) | 2026-09-08 → 2027-02-28 (+173d) | 14.94d → 16.88d |  |  |
| 4373 | Putty primer coat | 2026-08-24 → 2027-02-14 (+174d) | 2026-08-30 → 2027-02-19 (+173d) | 5.94d → 6.75d |  |  |
| 4374 | Door shutter fixing | 2026-08-24 → 2027-02-14 (+174d) | 2026-09-01 → 2027-02-21 (+173d) | 7.94d → 9d |  |  |
| 4375 | Electrical wiring work | 2026-09-01 → 2027-02-22 (+174d) | 2026-09-13 → 2027-03-05 (+173d) | 11.94d → 13.5d |  |  |
| 4376 | Painting 1st coat | 2026-09-13 → 2027-03-06 (+174d) | 2026-09-25 → 2027-03-17 (+173d) | 11.94d → 13.5d |  |  |
| 4377 | False ceiling | 2026-09-25 → 2027-03-18 (+174d) | 2026-10-05 → 2027-03-27 (+173d) | 9.94d → 11.25d |  |  |
| 4378 | **29th Floor** | 2026-06-26 → 2026-10-08 (+104d) | 2026-10-20 → 2027-04-11 (+173d) | 115.75d → 158.62d |  | constraint start no earlier than 2026-06-26 → start no earlier than 2026-10-08 |
| 4379 | Block Work | 2026-06-26 → 2026-10-08 (+104d) | 2026-07-04 → 2026-10-15 (+103d) | 7.94d → 9d |  |  |
| 4380 | Door Frame Fixing | 2026-07-04 → 2026-10-16 (+104d) | 2026-07-13 → 2026-10-24 (+103d) | 8.94d → 10.12d |  |  |
| 4381 | Internal Plumbing Works | 2026-07-04 → 2026-10-16 (+104d) | 2026-07-14 → 2026-10-25 (+103d) | 9.94d → 11.25d |  |  |
| 4382 | Waterproofing | 2026-07-14 → 2026-12-22 (+161d) | 2026-07-26 → 2027-01-02 (+160d) | 11.94d → 13.5d |  |  |
| 4383 | Internal Plaster | 2026-07-13 → 2027-01-03 (+174d) | 2026-07-22 → 2027-01-11 (+173d) | 8.94d → 10.12d | 4367, 4364, 4365, 4366 → 4367, 4380, 4381, 4382 |  |
| 4384 | IPS flooring work | 2026-08-04 → 2027-01-12 (+161d) | 2026-08-13 → 2027-01-20 (+160d) | 8.94d → 10.12d | 4368, 4380, 4382, 4399 → 4368, 4380, 4382, 4383 |  |
| 4385 | Toilet dado work | 2026-08-04 → 2027-01-12 (+161d) | 2026-08-12 → 2027-01-19 (+160d) | 7.94d → 9d | 4369, 4382, 4399 → 4369, 4382, 4383 |  |
| 4386 | Toilet flooring work | 2026-08-12 → 2027-01-20 (+161d) | 2026-08-19 → 2027-01-26 (+160d) | 6.94d → 7.88d |  |  |
| 4387 | Living dinning flooring | 2026-08-24 → 2027-02-14 (+174d) | 2026-09-08 → 2027-02-28 (+173d) | 14.94d → 16.88d |  |  |
| 4388 | Aluminium door-window fixing | 2026-09-08 → 2027-03-01 (+174d) | 2026-09-23 → 2027-03-15 (+173d) | 14.94d → 16.88d |  |  |
| 4389 | Putty primer coat | 2026-09-08 → 2027-03-01 (+174d) | 2026-09-14 → 2027-03-06 (+173d) | 5.94d → 6.75d |  |  |
| 4390 | Door shutter fixing | 2026-09-08 → 2027-03-01 (+174d) | 2026-09-16 → 2027-03-08 (+173d) | 7.94d → 9d |  |  |
| 4391 | Electrical wiring work | 2026-09-16 → 2027-03-09 (+174d) | 2026-09-28 → 2027-03-20 (+173d) | 11.94d → 13.5d |  |  |
| 4392 | Painting 1st coat | 2026-09-28 → 2027-03-21 (+174d) | 2026-10-10 → 2027-04-01 (+173d) | 11.94d → 13.5d |  |  |
| 4393 | False ceiling | 2026-10-10 → 2027-04-02 (+174d) | 2026-10-20 → 2027-04-11 (+173d) | 9.94d → 11.25d |  |  |
| 4394 | **30th Floor** | 2026-08-04 → 2026-10-19 (+76d) | 2027-01-12 → 2027-05-02 (+110d) | 116.31d → 169.88d |  | constraint start no earlier than 2026-08-04 → start no earlier than 2026-10-19 |
| 4395 | Block Work | 2026-08-04 → 2026-10-19 (+76d) | 2026-08-12 → 2026-10-26 (+75d) | 7.94d → 9d |  |  |
| 4396 | Door Frame Fixing | 2026-08-12 → 2026-10-27 (+76d) | 2026-08-21 → 2026-12-19 (+120d) | 8.94d → 10.12d |  |  |
| 4397 | Internal Plumbing Works | 2026-08-12 → 2026-10-27 (+76d) | 2026-08-22 → 2026-12-20 (+120d) | 9.94d → 11.25d |  |  |
| 4398 | Waterproofing | 2026-08-22 → 2027-01-03 (+134d) | 2026-09-03 → 2027-01-14 (+133d) | 11.94d → 13.5d |  |  |
| 4399 | Internal Plaster | 2026-07-26 → 2027-01-15 (+173d) | 2026-08-04 → 2027-01-23 (+172d) | 8.94d → 10.12d | 4383, 4380, 4381, 4382 → 4383, 4396, 4397, 4398 |  |
| 4400 | IPS flooring work | 2026-09-12 → 2027-01-24 (+134d) | 2026-09-21 → 2027-02-01 (+133d) | 8.94d → 10.12d | 4384, 4396, 4398, 4415 → 4384, 4396, 4398, 4399 |  |
| 4401 | Toilet dado work | 2026-09-12 → 2027-01-24 (+134d) | 2026-09-20 → 2027-01-31 (+133d) | 7.94d → 9d | 4385, 4398, 4415 → 4385, 4398, 4399 |  |
| 4402 | Toilet flooring work | 2026-09-20 → 2027-02-01 (+134d) | 2026-09-26 → 2027-02-07 (+134d) | 6.94d → 7.88d |  |  |
| 4403 | Living dinning flooring | 2026-09-27 → 2027-03-01 (+155d) | 2026-10-11 → 2027-03-15 (+155d) | 14.94d → 16.88d |  |  |
| 4404 | Aluminium door-window fixing | 2026-10-11 → 2027-03-16 (+156d) | 2026-10-26 → 2027-03-30 (+155d) | 14.94d → 16.88d |  |  |
| 4405 | Putty primer coat | 2026-10-11 → 2027-03-16 (+156d) | 2026-10-17 → 2027-03-21 (+155d) | 5.94d → 6.75d |  |  |
| 4406 | Door shutter fixing | 2026-10-11 → 2027-03-16 (+156d) | 2026-10-19 → 2027-03-23 (+155d) | 7.94d → 9d |  |  |
| 4407 | Electrical wiring work | 2026-10-19 → 2027-03-24 (+156d) | 2026-12-18 → 2027-04-07 (+110d) | 14.94d → 16.88d |  |  |
| 4408 | Painting 1st coat | 2026-12-18 → 2027-04-08 (+111d) | 2027-01-02 → 2027-04-22 (+110d) | 14.94d → 16.88d |  |  |
| 4409 | False ceiling | 2027-01-02 → 2027-04-23 (+111d) | 2027-01-12 → 2027-05-02 (+110d) | 9.94d → 11.25d |  |  |
| 4410 | **31st Floor** | 2026-08-12 → 2026-10-27 (+76d) | 2027-01-27 → 2027-05-17 (+110d) | 123.31d → 177.75d |  | constraint start no earlier than 2026-08-12 → start no earlier than 2026-10-27 |
| 4411 | Block Work | 2026-08-12 → 2026-10-27 (+76d) | 2026-08-20 → 2026-12-18 (+120d) | 7.94d → 9d |  |  |
| 4412 | Door Frame Fixing | 2026-08-21 → 2026-12-20 (+121d) | 2026-08-30 → 2026-12-28 (+120d) | 8.94d → 10.12d |  |  |
| 4413 | Internal Plumbing Works | 2026-08-22 → 2026-12-21 (+121d) | 2026-09-01 → 2026-12-30 (+120d) | 9.94d → 11.25d |  |  |
| 4414 | Waterproofing | 2026-09-03 → 2027-01-15 (+134d) | 2026-09-15 → 2027-01-26 (+133d) | 11.94d → 13.5d |  |  |

| ID | Task | Start | Finish | Duration | Predecessors | Other |
| --- | --- | --- | --- | --- | --- | --- |
| 4415 | Internal Plaster | 2026-09-03 → 2027-01-27 (+146d) | 2026-09-12 → 2027-02-04 (+145d) | 8.94d → 10.12d | 4399, 4396, 4397, 4398 → 4399, 4412, 4413, 4414 |  |
| 4416 | IPS flooring work | 2026-09-24 → 2027-02-05 (+134d) | 2026-10-02 → 2027-02-13 (+134d) | 8.94d → 10.12d | 4400, 4412, 4414, 4431 → 4400, 4412, 4414, 4415 |  |
| 4417 | Toilet dado work | 2026-09-24 → 2027-02-05 (+134d) | 2026-10-01 → 2027-02-12 (+134d) | 7.94d → 9d | 4401, 4414, 4431 → 4401, 4414, 4415 |  |
| 4418 | Toilet flooring work | 2026-10-02 → 2027-02-13 (+134d) | 2026-10-08 → 2027-02-19 (+134d) | 6.94d → 7.88d |  |  |
| 4419 | Living dinning flooring | 2026-10-11 → 2027-03-16 (+156d) | 2026-10-26 → 2027-03-30 (+155d) | 14.94d → 16.88d |  |  |
| 4420 | Aluminium door-window fixing | 2026-10-26 → 2027-03-31 (+156d) | 2026-12-22 → 2027-04-11 (+110d) | 11.94d → 13.5d |  |  |
| 4421 | Putty primer coat | 2026-10-26 → 2027-03-31 (+156d) | 2026-12-16 → 2027-04-05 (+110d) | 5.94d → 6.75d |  |  |
| 4422 | Door shutter fixing | 2026-10-26 → 2027-03-31 (+156d) | 2026-12-18 → 2027-04-07 (+110d) | 7.94d → 9d |  |  |
| 4423 | Electrical wiring work | 2026-12-18 → 2027-04-08 (+111d) | 2027-01-02 → 2027-04-22 (+110d) | 14.94d → 16.88d |  |  |
| 4424 | Painting 1st coat | 2027-01-02 → 2027-04-23 (+111d) | 2027-01-17 → 2027-05-07 (+110d) | 14.94d → 16.88d |  |  |
| 4425 | False ceiling | 2027-01-17 → 2027-05-08 (+111d) | 2027-01-27 → 2027-05-17 (+110d) | 9.94d → 11.25d |  |  |
| 4426 | **32nd Floor** | 2026-08-20 → 2026-12-19 (+121d) | 2027-02-11 → 2027-06-01 (+110d) | 130.31d → 185.62d |  | constraint start no earlier than 2026-08-20 → start no earlier than 2026-12-19 |
| 4427 | Block Work | 2026-08-20 → 2026-12-19 (+121d) | 2026-08-28 → 2026-12-26 (+120d) | 7.94d → 9d |  |  |
| 4428 | Door Frame Fixing | 2026-08-30 → 2026-12-29 (+121d) | 2026-09-08 → 2027-01-06 (+120d) | 8.94d → 10.12d |  |  |
| 4429 | Internal Plumbing Works | 2026-09-01 → 2026-12-31 (+121d) | 2026-09-11 → 2027-01-09 (+120d) | 9.94d → 11.25d |  |  |
| 4430 | Waterproofing | 2026-09-15 → 2027-01-27 (+134d) | 2026-09-27 → 2027-02-07 (+133d) | 11.94d → 13.5d |  |  |
| 4431 | Internal Plaster | 2026-09-15 → 2027-02-08 (+146d) | 2026-09-24 → 2027-02-16 (+145d) | 8.94d → 10.12d | 4415, 4412, 4413, 4414 → 4415, 4428, 4429, 4430 |  |
| 4432 | IPS flooring work | 2026-10-06 → 2027-02-17 (+134d) | 2026-10-14 → 2027-02-25 (+134d) | 8.94d → 10.12d | 4416, 4428, 4430, 4447 → 4416, 4428, 4430, 4431 |  |
| 4433 | Toilet dado work | 2026-10-06 → 2027-02-17 (+134d) | 2026-10-13 → 2027-02-24 (+134d) | 7.94d → 9d | 4417, 4430, 4447 → 4417, 4430, 4431 |  |
| 4434 | Toilet flooring work | 2026-10-13 → 2027-02-25 (+135d) | 2026-10-20 → 2027-03-03 (+134d) | 6.94d → 7.88d |  |  |
| 4435 | Living dinning flooring | 2026-10-26 → 2027-03-31 (+156d) | 2026-12-25 → 2027-04-14 (+110d) | 14.94d → 16.88d |  |  |
| 4436 | Aluminium door-window fixing | 2026-12-25 → 2027-04-15 (+111d) | 2027-01-06 → 2027-04-26 (+110d) | 11.94d → 13.5d |  |  |
| 4437 | Putty primer coat | 2026-12-25 → 2027-04-15 (+111d) | 2026-12-31 → 2027-04-20 (+110d) | 5.94d → 6.75d |  |  |
| 4438 | Door shutter fixing | 2026-12-25 → 2027-04-15 (+111d) | 2027-01-02 → 2027-04-22 (+110d) | 7.94d → 9d |  |  |
| 4439 | Electrical wiring work | 2027-01-02 → 2027-04-23 (+111d) | 2027-01-17 → 2027-05-07 (+110d) | 14.94d → 16.88d |  |  |
| 4440 | Painting 1st coat | 2027-01-17 → 2027-05-08 (+111d) | 2027-02-01 → 2027-05-22 (+110d) | 14.94d → 16.88d |  |  |
| 4441 | False ceiling | 2027-02-01 → 2027-05-23 (+111d) | 2027-02-11 → 2027-06-01 (+110d) | 9.94d → 11.25d |  |  |
| 4442 | **33rd Floor** | 2026-08-28 → 2026-12-27 (+121d) | 2027-02-23 → 2027-06-13 (+110d) | 134.31d → 190.12d |  | constraint start no earlier than 2026-08-28 → start no earlier than 2026-12-27 |
| 4443 | Block Work | 2026-08-28 → 2026-12-27 (+121d) | 2026-09-05 → 2027-01-03 (+120d) | 7.94d → 9d |  |  |
| 4444 | Door Frame Fixing | 2026-09-08 → 2027-01-07 (+121d) | 2026-09-17 → 2027-01-15 (+120d) | 8.94d → 10.12d |  |  |
| 4445 | Internal Plumbing Works | 2026-09-11 → 2027-01-10 (+121d) | 2026-09-21 → 2027-01-19 (+120d) | 9.94d → 11.25d |  |  |
| 4446 | Waterproofing | 2026-09-27 → 2027-02-08 (+134d) | 2026-10-08 → 2027-02-19 (+134d) | 11.94d → 13.5d |  |  |
| 4447 | Internal Plaster | 2026-09-27 → 2027-02-20 (+146d) | 2026-10-05 → 2027-02-28 (+146d) | 8.94d → 10.12d | 4431, 4428, 4429, 4430 → 4431, 4444, 4445, 4446 |  |
| 4448 | IPS flooring work | 2026-10-17 → 2027-03-01 (+135d) | 2026-10-26 → 2027-03-09 (+134d) | 8.94d → 10.12d | 4432, 4444, 4446, 4463 → 4432, 4444, 4446, 4447 |  |
| 4449 | Toilet dado work | 2026-10-17 → 2027-03-01 (+135d) | 2026-10-25 → 2027-03-08 (+134d) | 7.94d → 9d | 4433, 4446, 4463 → 4433, 4446, 4447 |  |
| 4450 | Toilet flooring work | 2026-10-25 → 2027-03-09 (+135d) | 2026-12-16 → 2027-03-15 (+89d) | 6.94d → 7.88d |  |  |
| 4451 | Living dinning flooring | 2026-12-25 → 2027-04-15 (+111d) | 2027-01-09 → 2027-04-29 (+110d) | 14.94d → 16.88d |  |  |
| 4452 | Aluminium door-window fixing | 2027-01-09 → 2027-04-30 (+111d) | 2027-01-24 → 2027-05-14 (+110d) | 14.94d → 16.88d |  |  |
| 4453 | Putty primer coat | 2027-01-09 → 2027-04-30 (+111d) | 2027-01-15 → 2027-05-05 (+110d) | 5.94d → 6.75d |  |  |
| 4454 | Door shutter fixing | 2027-01-09 → 2027-04-30 (+111d) | 2027-01-17 → 2027-05-07 (+110d) | 7.94d → 9d |  |  |
| 4455 | Electrical wiring work | 2027-01-17 → 2027-05-08 (+111d) | 2027-01-29 → 2027-05-19 (+110d) | 11.94d → 13.5d |  |  |
| 4456 | Painting 1st coat | 2027-02-01 → 2027-05-23 (+111d) | 2027-02-13 → 2027-06-03 (+110d) | 11.94d → 13.5d |  |  |
| 4457 | False ceiling | 2027-02-13 → 2027-06-04 (+111d) | 2027-02-23 → 2027-06-13 (+110d) | 9.94d → 11.25d |  |  |
| 4458 | **34th Floor** | 2026-09-05 → 2027-01-04 (+121d) | 2027-03-07 → 2027-06-25 (+110d) | 138.31d → 194.62d |  | constraint start no earlier than 2026-09-05 → start no earlier than 2027-01-04 |
| 4459 | Block Work | 2026-09-05 → 2027-01-04 (+121d) | 2026-09-13 → 2027-01-11 (+120d) | 7.94d → 9d |  |  |
| 4460 | Door Frame Fixing | 2026-09-17 → 2027-01-16 (+121d) | 2026-09-25 → 2027-01-24 (+121d) | 8.94d → 10.12d |  |  |
| 4461 | Internal Plumbing Works | 2026-09-21 → 2027-01-20 (+121d) | 2026-09-30 → 2027-01-29 (+121d) | 9.94d → 11.25d |  |  |
| 4462 | Waterproofing | 2026-10-09 → 2027-02-20 (+134d) | 2026-10-20 → 2027-03-03 (+134d) | 11.94d → 13.5d |  |  |
| 4463 | Internal Plaster | 2026-10-09 → 2027-03-04 (+146d) | 2026-10-17 → 2027-03-12 (+146d) | 8.94d → 10.12d | 4447, 4444, 4445, 4446 → 4447, 4460, 4461, 4462 |  |
| 4464 | IPS flooring work | 2026-10-29 → 2027-03-13 (+135d) | 2026-12-22 → 2027-03-21 (+89d) | 8.94d → 10.12d | 4448, 4460, 4462, 4479 → 4448, 4460, 4462, 4463 |  |
| 4465 | Toilet dado work | 2026-10-29 → 2027-03-13 (+135d) | 2026-12-21 → 2027-03-20 (+89d) | 7.94d → 9d | 4449, 4462, 4479 → 4449, 4462, 4463 |  |
| 4466 | Toilet flooring work | 2026-12-21 → 2027-03-21 (+90d) | 2026-12-28 → 2027-03-27 (+89d) | 6.94d → 7.88d |  |  |
| 4467 | Living dinning flooring | 2027-01-09 → 2027-04-30 (+111d) | 2027-01-24 → 2027-05-14 (+110d) | 14.94d → 16.88d |  |  |
| 4468 | Aluminium door-window fixing | 2027-01-24 → 2027-05-15 (+111d) | 2027-02-08 → 2027-05-29 (+110d) | 14.94d → 16.88d |  |  |
| 4469 | Putty primer coat | 2027-01-24 → 2027-05-15 (+111d) | 2027-01-30 → 2027-05-20 (+110d) | 5.94d → 6.75d |  |  |
| 4470 | Door shutter fixing | 2027-01-24 → 2027-05-15 (+111d) | 2027-02-01 → 2027-05-22 (+110d) | 7.94d → 9d |  |  |
| 4471 | Electrical wiring work | 2027-02-01 → 2027-05-23 (+111d) | 2027-02-13 → 2027-06-03 (+110d) | 11.94d → 13.5d |  |  |
| 4472 | Painting 1st coat | 2027-02-13 → 2027-06-04 (+111d) | 2027-02-25 → 2027-06-15 (+110d) | 11.94d → 13.5d |  |  |
| 4473 | False ceiling | 2027-02-25 → 2027-06-16 (+111d) | 2027-03-07 → 2027-06-25 (+110d) | 9.94d → 11.25d |  |  |
| 4474 | **35th Floor** | 2026-09-13 → 2027-01-12 (+121d) | 2027-03-22 → 2027-07-10 (+110d) | 145.31d → 202.5d |  | constraint start no earlier than 2026-09-13 → start no earlier than 2027-01-12 |
| 4475 | Block Work | 2026-09-13 → 2027-01-12 (+121d) | 2026-09-20 → 2027-01-19 (+121d) | 7.94d → 9d |  |  |
| 4476 | Door Frame Fixing | 2026-09-26 → 2027-01-25 (+121d) | 2026-10-04 → 2027-02-02 (+121d) | 8.94d → 10.12d |  |  |
| 4477 | Internal Plumbing Works | 2026-10-01 → 2027-01-30 (+121d) | 2026-10-10 → 2027-02-08 (+121d) | 9.94d → 11.25d |  |  |
| 4478 | Waterproofing | 2026-10-20 → 2027-02-09 (+112d) | 2026-12-16 → 2027-02-18 (+64d) | 11.94d → 11.25d | 4462, 4477 → 4477 |  |
| 4479 | Internal Plaster | 2026-10-20 → 2027-02-19 (+122d) | 2026-10-29 → 2027-02-27 (+121d) | 8.94d → 10.12d | 4463, 4460, 4461, 4462 → 4476, 4477, 4478 |  |
| 4480 | IPS flooring work | 2026-12-25 → 2027-03-22 (+87d) | 2027-01-03 → 2027-03-30 (+86d) | 8.94d → 10.12d | 4464, 4476, 4478, 4495 → 4464, 4476, 4478, 4479 |  |
| 4481 | Toilet dado work | 2026-12-25 → 2027-03-21 (+86d) | 2027-01-02 → 2027-03-28 (+85d) | 7.94d → 9d | 4465, 4478, 4495 → 4465, 4478, 4479 |  |
| 4482 | Toilet flooring work | 2027-01-02 → 2027-03-29 (+86d) | 2027-01-09 → 2027-04-04 (+85d) | 6.94d → 7.88d |  |  |
| 4483 | Living dinning flooring | 2027-01-24 → 2027-05-15 (+111d) | 2027-02-08 → 2027-05-29 (+110d) | 14.94d → 16.88d |  |  |
| 4484 | Aluminium door-window fixing | 2027-02-08 → 2027-05-30 (+111d) | 2027-02-23 → 2027-06-13 (+110d) | 14.94d → 16.88d |  |  |

| ID | Task | Start | Finish | Duration | Predecessors | Other |
| --- | --- | --- | --- | --- | --- | --- |
| 4485 | Putty primer coat | 2027-02-08 → 2027-05-30 (+111d) | 2027-02-14 → 2027-06-04 (+110d) | 5.94d → 6.75d |  |  |
| 4486 | Door shutter fixing | 2027-02-08 → 2027-05-30 (+111d) | 2027-02-16 → 2027-06-06 (+110d) | 7.94d → 9d |  |  |
| 4487 | Electrical wiring work | 2027-02-16 → 2027-06-07 (+111d) | 2027-02-28 → 2027-06-18 (+110d) | 11.94d → 13.5d |  |  |
| 4488 | Painting 1st coat | 2027-02-28 → 2027-06-19 (+111d) | 2027-03-12 → 2027-06-30 (+110d) | 11.94d → 13.5d |  |  |
| 4489 | False ceiling | 2027-03-12 → 2027-07-01 (+111d) | 2027-03-22 → 2027-07-10 (+110d) | 9.94d → 11.25d |  |  |
| 4490 | **Terrace Finishing** | 2026-06-19 → 2026-09-30 (+103d) | 2026-09-07 → 2027-02-01 (+147d) | 79.88d → 90d |  | constraint start no earlier than 2026-06-19 → start no earlier than 2026-09-30 |
| 4491 | Terrace waterproofing | 2026-06-19 → 2026-09-30 (+103d) | 2026-07-29 → 2026-12-23 (+147d) | 39.94d → 45d | 3889 → 3884 |  |
| 4492 | Terrace finishing | 2026-07-29 → 2026-12-24 (+148d) | 2026-09-07 → 2027-02-01 (+147d) | 39.94d → 45d |  |  |
| 4493 | **Common Area Finishing** | 2025-08-20 → 2026-12-24 (+491d) | 2026-07-10 → 2027-10-24 (+471d) | 279.31d → 343.12d |  | constraint start no earlier than 2025-08-20 → start no earlier than 2026-12-24 |
| 4494 | Block Work | 2025-08-20 → 2026-12-24 (+491d) | 2025-09-29 → 2027-03-08 (+525d) | 39.94d → 84.38d | 3895FS+0.25d → 3889 |  |
| 4495 | Internal Plaster | 2026-12-16 → 2027-02-12 (+58d) | 2026-12-25 → 2027-06-11 (+168d) | 8.94d → 135d | 4479, 4476, 4477, 4478 → 4500SS+33.75d |  |
| 4496 | Staircase railing fixing | 2026-02-10 → 2027-05-28 (+472d) | 2026-07-10 → 2027-10-24 (+471d) | 149.94d → 168.75d | 4498SS+26.75d, 4497SS+26.75d → 4498SS+33.75d, 4497SS+33.75d |  |
| 4497 | Main staircase flooring | 2026-01-14 → 2027-04-28 (+469d) | 2026-06-13 → 2027-09-24 (+468d) | 149.94d → 168.75d | 4498SS+13.38d → 4498SS+16.88d |  |
| 4498 | Fire staircase flooring | 2026-01-01 → 2027-04-13 (+467d) | 2026-05-31 → 2027-09-09 (+466d) | 149.94d → 168.75d | Internal PlasterSS+13.38d, 4502SS+26.75d → 4495SS+16.88d, 4502SS+33.75d |  |
| 4499 | Fire door work | 2026-02-10 → 2027-05-28 (+472d) | 2026-04-11 → 2027-07-26 (+471d) | 59.94d → 67.5d | 4497SS+26.75d, 4498SS+26.75d → 4497SS+33.75d, 4498SS+33.75d |  |
| 4500 | Electrical wiring work | 2025-09-07 → 2027-01-13 (+493d) | 2026-02-19 → 2027-05-12 (+447d) | 119.94d → 135d | 4494SS+17.88d → 4494SS+22.5d |  |
| 4501 | Lobby flooring | 2025-09-10 → 2027-01-16 (+493d) | 2026-03-24 → 2027-06-15 (+448d) | 150d → 168.75d | 4500SS+3.38d → 4500SS+4.12d |  |
| 4502 | Ceiling & wall putty-primer | 2025-10-21 → 2027-03-14 (+509d) | 2026-03-25 → 2027-07-01 (+463d) | 109.94d → 123.75d | Internal PlasterSS+26.75d → 4495SS+33.75d |  |
| 4503 | Ceiling & wall painting | 2025-12-23 → 2027-07-11 (+565d) | 2026-04-02 → 2027-10-18 (+564d) | 99.94d → 112.5d | 4502SS+17.88d → 4502SS+22.5d, 4489 |  |
| 4504 | Light fixture supply & installation | 2026-02-15 → 2027-09-09 (+571d) | 2026-03-31 → 2027-10-23 (+571d) | 44.94d → 50.62d | 4503SS+53.38d → 4503SS+67.5d |  |
| 4505 | **Balcony Glass Railing** | 2027-04-23 → 2027-07-13 (+81d) | 2027-06-29 → 2027-09-20 (+83d) | 67.81d → 78.75d |  | constraint start no earlier than 2027-04-23 → start no earlier than 2027-07-13 |
| 4506 | 1st Floor | 2027-04-23 → 2027-07-13 (+81d) | 2027-04-25 → 2027-07-14 (+80d) | 1.94d → 2.25d |  |  |
| 4507 | 2nd Floor | 2027-04-25 → 2027-07-15 (+81d) | 2027-04-26 → 2027-07-16 (+81d) | 1.94d → 2.25d |  |  |
| 4508 | 3rd Floor | 2027-04-27 → 2027-07-17 (+81d) | 2027-04-28 → 2027-07-18 (+81d) | 1.94d → 2.25d |  |  |
| 4509 | 4th Floor | 2027-04-28 → 2027-07-19 (+82d) | 2027-04-30 → 2027-07-20 (+81d) | 1.94d → 2.25d |  |  |
| 4510 | 5th Floor | 2027-04-30 → 2027-07-21 (+82d) | 2027-05-02 → 2027-07-22 (+81d) | 1.94d → 2.25d |  |  |
| 4511 | 6th Floor | 2027-05-02 → 2027-07-23 (+82d) | 2027-05-04 → 2027-07-24 (+81d) | 1.94d → 2.25d |  |  |
| 4512 | 7th Floor | 2027-05-04 → 2027-07-25 (+82d) | 2027-05-06 → 2027-07-26 (+81d) | 1.94d → 2.25d |  |  |
| 4513 | 8th Floor | 2027-05-06 → 2027-07-27 (+82d) | 2027-05-08 → 2027-07-28 (+81d) | 1.94d → 2.25d |  |  |
| 4514 | 9th Floor | 2027-05-08 → 2027-07-29 (+82d) | 2027-05-10 → 2027-07-30 (+81d) | 1.94d → 2.25d |  |  |
| 4515 | 10th Floor | 2027-05-10 → 2027-07-31 (+82d) | 2027-05-12 → 2027-08-01 (+81d) | 1.94d → 2.25d |  |  |
| 4516 | 11th Floor | 2027-05-12 → 2027-08-02 (+82d) | 2027-05-14 → 2027-08-03 (+81d) | 1.94d → 2.25d |  |  |
| 4517 | 12th Floor | 2027-05-14 → 2027-08-04 (+82d) | 2027-05-16 → 2027-08-05 (+81d) | 1.94d → 2.25d |  |  |
| 4518 | 13th Floor | 2027-05-16 → 2027-08-06 (+82d) | 2027-05-18 → 2027-08-07 (+81d) | 1.94d → 2.25d |  |  |
| 4519 | 14th Floor | 2027-05-18 → 2027-08-08 (+82d) | 2027-05-20 → 2027-08-09 (+81d) | 1.94d → 2.25d |  |  |
| 4520 | 15th Floor | 2027-05-20 → 2027-08-10 (+82d) | 2027-05-22 → 2027-08-11 (+81d) | 1.94d → 2.25d |  |  |
| 4521 | 16th Floor | 2027-05-22 → 2027-08-12 (+82d) | 2027-05-24 → 2027-08-13 (+81d) | 1.94d → 2.25d |  |  |
| 4522 | 17th Floor | 2027-05-24 → 2027-08-14 (+82d) | 2027-05-26 → 2027-08-15 (+81d) | 1.94d → 2.25d |  |  |
| 4523 | 18th Floor | 2027-05-26 → 2027-08-16 (+82d) | 2027-05-27 → 2027-08-17 (+82d) | 1.94d → 2.25d |  |  |
| 4524 | 19th Floor | 2027-05-28 → 2027-08-18 (+82d) | 2027-05-29 → 2027-08-19 (+82d) | 1.94d → 2.25d |  |  |
| 4525 | 20th Floor | 2027-05-29 → 2027-08-20 (+83d) | 2027-05-31 → 2027-08-21 (+82d) | 1.94d → 2.25d |  |  |
| 4526 | 21st Floor | 2027-05-31 → 2027-08-22 (+83d) | 2027-06-02 → 2027-08-23 (+82d) | 1.94d → 2.25d |  |  |
| 4527 | 22nd Floor | 2027-06-02 → 2027-08-24 (+83d) | 2027-06-04 → 2027-08-25 (+82d) | 1.94d → 2.25d |  |  |
| 4528 | 23rd Floor | 2027-06-04 → 2027-08-26 (+83d) | 2027-06-06 → 2027-08-27 (+82d) | 1.94d → 2.25d |  |  |
| 4529 | 24th Floor | 2027-06-06 → 2027-08-28 (+83d) | 2027-06-08 → 2027-08-29 (+82d) | 1.94d → 2.25d |  |  |
| 4530 | 25th Floor | 2027-06-08 → 2027-08-30 (+83d) | 2027-06-10 → 2027-08-31 (+82d) | 1.94d → 2.25d |  |  |
| 4531 | 26th Floor | 2027-06-10 → 2027-09-01 (+83d) | 2027-06-12 → 2027-09-02 (+82d) | 1.94d → 2.25d |  |  |
| 4532 | 27th Floor | 2027-06-12 → 2027-09-03 (+83d) | 2027-06-14 → 2027-09-04 (+82d) | 1.94d → 2.25d |  |  |
| 4533 | 28th Floor | 2027-06-14 → 2027-09-05 (+83d) | 2027-06-16 → 2027-09-06 (+82d) | 1.94d → 2.25d |  |  |
| 4534 | 29th Floor | 2027-06-16 → 2027-09-07 (+83d) | 2027-06-18 → 2027-09-08 (+82d) | 1.94d → 2.25d |  |  |
| 4535 | 30th Floor | 2027-06-18 → 2027-09-09 (+83d) | 2027-06-20 → 2027-09-10 (+82d) | 1.94d → 2.25d |  |  |
| 4536 | 31st Floor | 2027-06-20 → 2027-09-11 (+83d) | 2027-06-22 → 2027-09-12 (+82d) | 1.94d → 2.25d |  |  |
| 4537 | 32nd Floor | 2027-06-22 → 2027-09-13 (+83d) | 2027-06-24 → 2027-09-14 (+82d) | 1.94d → 2.25d |  |  |
| 4538 | 33rd Floor | 2027-06-24 → 2027-09-15 (+83d) | 2027-06-26 → 2027-09-16 (+82d) | 1.94d → 2.25d |  |  |
| 4539 | 34th Floor | 2027-06-26 → 2027-09-17 (+83d) | 2027-06-27 → 2027-09-18 (+83d) | 1.94d → 2.25d |  |  |
| 4540 | 35th Floor | 2027-06-28 → 2027-09-19 (+83d) | 2027-06-29 → 2027-09-20 (+83d) | 1.94d → 2.25d |  |  |
| 4541 | **MEP work** | 2026-01-01 → 2026-12-24 (+357d) | 2027-11-13 → 2028-05-17 (+186d) | 636.25d → 524.25d |  | constraint start no earlier than 2026-01-01 → start no earlier than 2026-12-24 |
| 4542 | **Electrical work** | 2026-07-28 → 2026-12-24 (+149d) | 2027-05-02 → 2027-09-19 (+140d) | 233.25d → 303.75d |  | constraint start no earlier than 2026-07-28 → start no earlier than 2026-12-24 |
| 4543 | Cable Tray | 2026-07-28 → 2026-12-24 (+149d) | 2026-10-26 → 2027-03-23 (+148d) | 89.94d → 101.25d | 4619 → 3889 |  |
| 4544 | Cable, main & sub main | 2026-09-06 → 2027-02-07 (+154d) | 2027-01-09 → 2027-06-06 (+148d) | 79.94d → 135d | 4543SS+40d → 4543SS+50.62d |  |
| 4545 | LT panel & DB | 2026-10-26 → 2027-04-03 (+159d) | 2027-04-09 → 2027-07-31 (+113d) | 119.94d → 135d | 4543 → 4543FS+11.25d |  |
| 4546 | Rising main | 2027-02-01 → 2027-05-23 (+111d) | 2027-05-02 → 2027-09-19 (+140d) | 89.94d → 135d | 4543FS+53.38d → 4543FS+67.5d |  |
| 4547 | EARTHING Works | 2026-12-23 → 2027-04-08 (+106d) | 2027-02-21 → 2027-06-06 (+105d) | 59.94d → 67.5d | 4543FS+13.38d → 4543FS+16.88d |  |
| 4548 | Advance lightening protection | 2026-09-07 → 2027-02-02 (+148d) | 2026-12-21 → 2027-04-02 (+102d) | 59.94d → 67.5d |  |  |
| 4549 | Inverter | 2027-02-21 → 2027-06-07 (+106d) | 2027-03-28 → 2027-07-11 (+105d) | 34.94d → 39.38d |  |  |
| 4550 | Energy meter | 2027-01-09 → 2027-06-07 (+149d) | 2027-03-10 → 2027-08-05 (+148d) | 59.94d → 67.5d |  |  |
| 4551 | Exhast fan | 2027-02-07 → 2027-04-20 (+72d) | 2027-04-08 → 2027-06-18 (+71d) | 59.94d → 67.5d | 3567FF+4.5d → 4484FF+5.62d |  |
| 4552 | FTTH | 2027-02-12 → 2027-05-28 (+105d) | 2027-04-13 → 2027-07-26 (+104d) | 59.94d → 67.5d | 4547FS-9d → 4547FS-11.25d |  |
| 4553 | Security System - FA & PA | 2027-02-17 → 2027-06-02 (+105d) | 2027-04-13 → 2027-07-26 (+104d) | 54.94d → 61.88d |  |  |
| 4554 | Solar water heater | 2026-09-07 → 2027-02-02 (+148d) | 2026-12-21 → 2027-04-02 (+102d) | 59.94d → 67.5d |  |  |

| ID | Task | Start | Finish | Duration | Complete | Predecessors | Other |
| --- | --- | --- | --- | --- | --- | --- | --- |
| 4556 | Terrace looping | 2026-07-29 → 2026-12-24 (+148d) | 2026-09-12 → 2027-02-06 (+147d) | 44.94d → 50.62d |  |  |  |
| 4557 | Shaft Plumbing | 2026-09-12 → 2027-02-07 (+148d) | 2027-02-24 → 2027-06-06 (+102d) | 119.94d → 135d |  |  |  |
| 4558 | CP sanitary fixture supply | 2027-03-04 → 2027-06-04 (+92d) | 2027-05-17 → 2027-08-17 (+92d) | 74.94d → 84.38d |  | 4495, 4482FS+53.38d → 4479, 4482FS+67.5d |  |
| 4559 | Cold & flushing water supply | 2026-01-28 → 2027-05-13 (+470d) | 2026-04-27 → 2027-08-10 (+470d) | 89.94d → 101.25d |  | Internal PlasterSS+80d → 4495SS+101.25d |  |
| 4560 | Misc work | 2026-04-18 → 2027-08-01 (+470d) | 2026-05-18 → 2027-08-30 (+469d) | 29.94d → 33.75d |  | 4559FS-9d → 4559FS-11.25d |  |
| 4561 | **Fire fighting work** | 2026-01-01 → 2026-12-24 (+357d) | 2027-01-10 → 2027-12-23 (+347d) | 328.94d → 360d |  |  | constraint start no earlier than 2026-01-01 → start no earlier than 2026-12-24 |
| 4562 | Fire hydrant work | 2026-01-01 → 2027-04-13 (+467d) | 2026-04-01 → 2027-07-11 (+466d) | 89.94d → 101.25d |  | Internal PlasterSS+53.38d → 4495SS+67.5d |  |
| 4563 | Sprinkler & piping work | 2026-04-28 → 2027-08-11 (+470d) | 2026-07-26 → 2027-12-23 (+515d) | 89.94d → 101.25d |  | 4562FS+26.75d → 4562FS+33.75d |  |
| 4564 | Shaft Downtake works | 2026-07-29 → 2026-12-24 (+148d) | 2026-10-27 → 2027-03-23 (+147d) | 89.94d → 101.25d |  |  |  |
| 4565 | Connection to pump room | 2026-10-27 → 2027-03-24 (+148d) | 2027-01-10 → 2027-04-22 (+102d) | 29.94d → 33.75d |  |  |  |
| 4566 | **Lift work** | 2026-07-28 → 2026-12-24 (+149d) | 2027-02-28 → 2027-06-11 (+103d) | 169.81d → 191.25d |  |  | constraint start no earlier than 2026-07-28 → start no earlier than 2026-12-24 |
| 4567 | Lift Shaft Handover | 2026-07-28 → 2026-12-24 (+149d) | 2026-09-06 → 2027-02-01 (+148d) | 39.94d → 45d |  | 4619 → 3889 |  |
| 4568 | Lift installation work | 2026-09-06 → 2027-02-02 (+149d) | 2026-10-21 → 2027-03-18 (+148d) | 44.94d → 50.62d |  |  |  |
| 4569 | Lift testing and commissioning | 2026-10-21 → 2027-03-19 (+149d) | 2027-02-28 → 2027-06-11 (+103d) | 84.94d → 95.62d |  |  |  |
| 4570 | **AC work** | 2027-08-15 → 2028-02-08 (+177d) | 2027-11-13 → 2028-05-17 (+186d) | 89.94d → 112.5d |  |  | constraint start no earlier than 2027-08-15 → start no earlier than 2028-02-08 |
| 4571 | Split AC | 2027-08-15 → 2028-02-08 (+177d) | 2027-11-13 → 2028-05-17 (+186d) | 89.94d → 112.5d |  | 4587FS-26.75d → 4587FS-33.75d |  |
| 4572 | **Tower Completion** | 2026-09-10 → 2027-01-14 (+126d) | 2027-07-19 → 2027-10-10 (+83d) | 266.88d → 303.75d |  |  | constraint start no earlier than 2026-09-10 → start no earlier than 2027-01-14 |
| 4573 | SURFACE PREPARATION | 2026-09-10 → 2027-01-14 (+126d) | 2027-01-13 → 2027-04-03 (+80d) | 79.94d → 90d |  | 3927FS+1.88d → 3927FS+2.25d |  |
| 4574 | External Painting | 2027-01-13 → 2027-04-04 (+81d) | 2027-04-23 → 2027-07-12 (+80d) | 99.94d → 112.5d |  |  |  |
| 4575 | Final coat of painting | 2027-04-23 → 2027-07-13 (+81d) | 2027-07-19 → 2027-10-10 (+83d) | 87d → 101.25d |  |  |  |
| 4576 | Misc. work | 2027-04-23 → 2027-07-13 (+81d) | 2027-06-22 → 2027-09-10 (+80d) | 59.94d → 67.5d |  |  |  |
| 4577 | **Basement lobby** | 2026-03-24 → 2027-06-15 (+448d) | 2026-05-23 → 2027-08-14 (+448d) | 60d → 67.5d |  |  | constraint start no earlier than 2026-03-24 → start no earlier than 2027-06-15 |
| 4578 | Basement lobby | 2026-03-24 → 2027-06-15 (+448d) | 2026-05-23 → 2027-08-14 (+448d) | 60d → 67.5d |  |  |  |
| 4579 | **Post OC activities** | 2027-02-28 → 2027-06-19 (+111d) | 2028-02-01 → 2028-08-05 (+186d) | 338.12d → 415.12d |  |  | constraint start no earlier than 2027-02-28 → start no earlier than 2027-06-19 |
| 4580 | Wardrobe installation | 2027-08-15 → 2028-02-08 (+177d) | 2028-02-01 → 2028-08-05 (+186d) | 169.94d → 202.5d |  | 4587FS-26.75d → 4587FS-33.75d |  |
| 4581 | CP & SANITARYWARE | 2027-08-15 → 2028-02-08 (+177d) | 2027-12-03 → 2028-06-06 (+186d) | 109.94d → 135d |  | 4587FS-26.75d → 4587FS-33.75d, 4558 |  |
| 4582 | Wooden Flooring | 2027-08-15 → 2028-02-08 (+177d) | 2028-02-01 → 2028-08-05 (+186d) | 169.94d → 202.5d |  | 4587FS-26.75d → 4587FS-33.75d |  |
| 4583 | Electrical Fixtures And Fittings | 2027-02-28 → 2027-06-19 (+111d) | 2027-05-25 → 2027-10-16 (+144d) | 86d → 135d |  |  |  |
| 4584 | Modular Kitchen | 2027-08-15 → 2028-02-08 (+177d) | 2028-02-01 → 2028-08-05 (+186d) | 169.94d → 202.5d |  |  |  |
| 4585 | Final Coat Paint | 2027-08-29 → 2028-02-23 (+178d) | 2027-11-26 → 2028-05-22 (+178d) | 89.94d → 101.25d |  | 4587FS-13.38d, 4504 → 4587FS-16.88d, 4504 |  |
| 4586 | OC Application/Readiness | 2027-07-19 → 2027-12-24 (+158d) | 2027-07-19 → 2027-12-24 (+158d) | 0d → 1.12d |  | 4619, 4496FS+7.12d, 4558, 4612, 4611, 3701, 3702, 4578, 4575, 4576, 4569, 4565, 4563, 4560, 4557, 4554, 4553, Exhast fan, 4550, 4549, 4548, 4546, 4545, 4540, 4499, 4489 → 3889, 4496FS+9d, 3680, 3701, 3702, 4499, 4540, 4545, 4546, 4548, 4549, 4550, 4551, 4553, 4554, 4557, 4560, 4563, 4565, 4569, 4576, 4575, 4578 |  |
| 4587 | OC Receipt | 2027-09-10 → 2028-02-23 (+166d) | 2027-09-11 → 2028-03-08 (+179d) | 0.94d → 16.88d |  | 4586FS+53.38d → 4586FS+67.5d |  |
| 4588 | Offer To Possession | 2028-02-01 → 2028-08-06 (+187d) | 2028-03-02 → 2028-08-16 (+167d) | 29.94d → 12.38d |  | 4580, 4581, 4582, 4583, 4584, 4585, 4571 → 4660FF-33.75d, 4580, 4581, 4582, 4583, 4584, 4585, 4571 |  |
| 4589 | **External Infrastructure** | 2026-06-19 → 2025-10-17 (-245d) | 2027-05-10 → 2027-09-27 (+140d) | 280.5d → 698.62d |  |  | constraint start no earlier than 2026-06-19 → start no earlier than 2025-10-17 |
| 4590 | **External Firefightning Work** | 2026-07-07 → 2026-10-20 (+105d) | 2027-03-19 → 2027-07-01 (+104d) | 209.94d → 236.25d |  |  | constraint start no earlier than 2026-07-07 → start no earlier than 2026-10-20 |
| 4591 | Excavation, Pipe Laying, Hyderent errection , Fitting , Testing & Commissioning | 2026-07-07 → 2026-10-20 (+105d) | 2027-03-19 → 2027-07-01 (+104d) | 209.94d → 236.25d |  |  |  |
| 4592 | **External Plumbing** | 2026-06-19 → 2026-09-30 (+103d) | 2027-03-28 → 2027-07-11 (+105d) | 236.81d → 270d |  |  | constraint start no earlier than 2026-06-19 → start no earlier than 2026-09-30 |
| 4593 | **External Plumbing - Sewer** | 2026-06-19 → 2026-09-30 (+103d) | 2027-03-01 → 2027-06-11 (+102d) | 209.94d → 236.25d |  |  | constraint start no earlier than 2026-06-19 → start no earlier than 2026-09-30 |
| 4594 | Excavation, Pipe Laying, Filling , Testing & Commissioning | 2026-06-19 → 2026-09-30 (+103d) | 2027-03-01 → 2027-06-11 (+102d) | 209.94d → 236.25d |  | 3889 → 3884 |  |
| 4595 | **External Plumbing - Watersupply** | 2026-07-16 → 2026-10-30 (+106d) | 2027-03-28 → 2027-07-11 (+105d) | 209.94d → 236.25d |  |  | constraint start no earlier than 2026-07-16 → start no earlier than 2026-10-30 |
| 4596 | Excavation, Pipe Laying, Filling , Testing & Commissioning | 2026-07-16 → 2026-10-30 (+106d) | 2027-03-28 → 2027-07-11 (+105d) | 209.94d → 236.25d |  | 4591FF+9d → 4591FF+11.25d |  |
| 4597 | **External Plumbing - Storm Water** | 2026-07-07 → 2026-10-20 (+105d) | 2027-03-19 → 2027-07-01 (+104d) | 209.94d → 236.25d |  |  | constraint start no earlier than 2026-07-07 → start no earlier than 2026-10-20 |
| 4598 | Excavation, PCC, BBM , IPS, Cover fixing, Curing | 2026-07-07 → 2026-10-20 (+105d) | 2027-03-19 → 2027-07-01 (+104d) | 209.94d → 236.25d |  | 4594SS+17.88d → 4594SS+22.5d |  |
| 4599 | **Rain water Harvesting work** | 2026-07-07 → 2026-10-20 (+105d) | 2027-03-19 → 2027-07-01 (+104d) | 209.94d → 236.25d |  |  | constraint start no earlier than 2026-07-07 → start no earlier than 2026-10-20 |
| 4600 | Rain water Harvesting work | 2026-07-07 → 2026-10-20 (+105d) | 2027-03-19 → 2027-07-01 (+104d) | 209.94d → 236.25d |  |  |  |
| 4601 | **External Electrical Work** | 2026-07-16 → 2025-10-17 (-272d) | 2027-05-10 → 2027-09-27 (+140d) | 253.75d → 698.62d |  |  | constraint start no earlier than 2026-07-16 → start no earlier than 2025-10-17 |
| 4602 | HV INSTALLATION | 2026-07-16 → 2026-10-30 (+106d) | 2026-10-14 → 2027-03-13 (+150d) | 89.94d → 101.25d |  | 3889FS+26.75d → 3884FS+33.75d |  |
| 4603 | HT CABLES & LT CONTROL CABLES | 2026-10-14 → 2027-03-14 (+151d) | 2027-02-26 → 2027-07-11 (+135d) | 89.94d → 135d |  |  |  |
| 4604 | Street Light Fixing | 2026-10-23 → 2027-05-28 (+217d) | 2027-01-13 → 2027-09-24 (+254d) | 37.44d → 135d |  | 4603SS+9d → 4603SS+84.38d, 929, 1846, 2763 |  |
| 4605 | External Road | 2026-10-26 → 2025-10-17 (-374d) | 2027-03-10 → 2026-02-28 (-375d) | 89.94d → 101.25d |  | 4608FF, 12, 929, 1846 → 4608FF, 12 |  |
| 4606 | Completion of External Infrastructure | 2027-03-28 → 2027-09-27 (+183d) | 2027-03-29 → 2027-09-27 (+182d) | 0.94d → 1.12d |  |  |  |
| 4607 | Soft Scape Work | 2026-10-04 → 2027-09-20 (+351d) | 2027-03-18 → 2027-09-26 (+192d) | 119.94d → 7.88d |  | Street Light FixingFF+26.75d → 4604FF+2.25d |  |
| 4608 | Hard Scape Work | 2026-06-28 → 2026-02-27 (-121d) | 2027-03-10 → 2026-02-28 (-375d) | 209.94d → 2.25d |  | 4636FS+26.75d → 4632FS+33.75d |  |
| 4609 | **NTA works** | 2024-06-01 → 2024-12-26 (+208d) | 2027-08-01 → 2027-08-10 (+9d) | 1035.99d → 976.5d | 23% → 2% |  | constraint start no earlier than 2024-06-01 → start no earlier than 2024-12-26 |
| 4610 | Excavation | 2024-06-01 → 2024-12-26 (+208d) | 2025-06-09 → 2025-05-11 (-29d) | 139.94d → 101.06d | 50% → 59% | none → 3677FS-113.19d | constraint start no earlier than 2024-06-01 → none |
| 4611 | Backfilling | 2025-04-21 → 2025-08-04 (+105d) | 2025-06-19 → 2025-08-12 (+54d) | 59.94d → 10.12d |  | 3709, 3680 → 4624SS-67.5d |  |
| 4612 | Boundary Wall | 2025-07-06 → 2025-08-13 (+38d) | 2026-03-07 → 2025-08-19 (-200d) | 198.94d → 7.88d |  | Backfilling → 4611 |  |
| 4613 | **RCC Works - Nontower area** | 2024-07-01 → 2025-01-25 (+208d) | 2026-10-02 → 2027-02-08 (+129d) | 748.39d → 736.62d | 31% → 1% |  | constraint start no earlier than 2024-07-01 → start no earlier than 2025-01-25 |
| 4614 | **NTA Raft/Footing** | 2024-07-01 → 2025-01-25 (+208d) | 2026-10-02 → 2026-05-01 (-154d) | 748.39d → 469.12d | 63% → 11% |  | constraint start no earlier than 2024-07-01 → start no earlier than 2025-01-25 |
| 4615 | Anti Termite | 2025-04-01 → 2026-04-17 (+381d) | 2025-04-15 → 2026-05-01 (+381d) | 14.94d → 16.88d |  | 4610FS-273.44d → 4619SS+241.88d |  |
| 4616 | PCC | 2024-07-01 → 2025-01-25 (+208d) | 2026-09-12 → 2025-07-27 (-412d) | 565.94d → 111.94d | 69% → 52% | 4610FS-365.14d → 4610FF+22.5d, 1851FS-103.5d | constraint start no earlier than 2024-07-01 → none |
| 4617 | Reinforcement | 2024-08-06 → 2025-06-19 (+317d) | 2026-09-30 → 2025-10-16 (-349d) | 669.94d → 135d | 59% → 0% | 4616SS+25d → 4616SS+163.12d | constraint start no earlier than 2024-08-06 → none |
| 4618 | Shuttering | 2024-08-23 → 2025-06-29 (+310d) | 2026-10-02 → 2025-10-26 (-341d) | 662.73d → 135d | 60% → 0% | 4617SS+44.6d → 4617FF+11.25d | constraint start no earlier than 2024-08-23 → none |
| 4619 | Concreting | 2026-07-25 → 2025-07-31 (-359d) | 2026-07-28 → 2025-10-28 (-273d) | 2.94d → 101.25d |  | 3888 → 4618FF+2.25d |  |
| 4620 | **Retaining wall** | 2025-02-01 → 2025-04-01 (+59d) | 2026-08-06 → 2026-05-15 (-83d) | 506.94d → 410.62d | 14% → 0% |  | constraint start no earlier than 2025-02-01 → start no earlier than 2025-04-01 |
| 4621 | Reinforcement | 2025-02-01 → 2025-04-01 (+59d) | 2026-08-06 → 2026-01-15 (-203d) | 389.94d → 275.62d | 25% → 0% | 4616SS+30d → 4616SS+60d | constraint must start on 2025-07-22 → none |
| 4622 | Shuttering | 2025-03-03 → 2025-04-06 (+34d) | 2026-06-11 → 2026-01-15 (-147d) | 339.94d → 270d | 18% → 0% | 4621SS+20d → 4621SS+5.62d | constraint must start on 2025-07-14 → none |
| 4623 | Concreting | 2024-09-17 → 2025-04-12 (+207d) | 2026-04-04 → 2026-01-18 (-76d) | 478.75d → 266.62d | 69% → 0% | 4618SS+25d, 4623FS-488.71d → 4622FF+3.38d | constraint start no earlier than 2024-09-17 → none |
| 4624 | Retaining wall waterproofing | 2025-04-01 → 2025-10-03 (+185d) | 2026-02-18 → 2026-05-15 (+86d) | 278.94d → 202.5d |  | 4628SS+9d → 4623SS+7.88d | constraint none → must start on 2025-10-03 |
| 4625 | **NTA Basement B2 slab** | 2024-09-30 → 2025-10-01 (+366d) | 2026-09-17 → 2026-09-25 (+8d) | 642.38d → 354.38d | 14% → 0% |  | constraint start no earlier than 2024-09-30 → start no earlier than 2025-10-01 |

| ID | Task | Start | Finish | Duration | Complete | Predecessors | Other |
| --- | --- | --- | --- | --- | --- | --- | --- |
| 4626 | Reinforcement | 2025-02-13 → 2025-10-01 (+230d) | 2026-04-03 → 2026-09-20 (+170d) | 227.94d → 348.75d | 12% → 0% | none → 4623SS+16.88d | constraint start no earlier than 2025-02-13 → must start on 2025-10-01 |
| 4627 | Shuttering | 2024-09-30 → 2025-10-06 (+371d) | 2026-07-23 → 2026-09-25 (+64d) | 367.94d → 348.75d | 26% → 0% | none → 4626FF-3.38d | constraint start no earlier than 2024-09-30 → must start on 2025-10-06 |
| 4628 | Concreting | 2025-03-10 → 2025-10-03 (+207d) | 2026-03-22 → 2026-09-23 (+185d) | 321.94d → 349.88d | 8% → 0% | 4616SS+20d, 4622SS+5d → 4627FF+5.62d | constraint start no earlier than 2025-03-10 → must start on 2025-10-03 |
| 4629 | **NTA Basement B1 slab** | 2025-07-01 → 2025-07-17 (+16d) | 2026-08-22 → 2026-05-12 (-102d) | 372.19d → 286.88d | 1% → 0% |  | constraint start no earlier than 2025-07-01 → start no earlier than 2025-07-17 |
| 4630 | Reinforcement | 2024-10-02 → 2025-10-10 (+373d) | 2026-08-31 → 2026-05-12 (-111d) | 157.5d → 191.25d | 4% → 0% | 4628SS-451.26d, 4623SS-37.1d, 4626 → 4628FF+101.25d | constraint none → must start on 2025-10-10 |
| 4631 | Shuttering | 2026-07-23 → 2025-10-10 (-286d) | 2026-09-17 → 2026-01-22 (-238d) | 55.94d → 67.5d |  | 4626FF+26.75d, 4627 → 4630FF-3.38d | constraint must start on 2026-04-02 → must start on 2025-10-10 |
| 4632 | Concreting | 2025-07-15 → 2025-07-17 (+2d) | 2025-09-30 → 2026-01-27 (+119d) | 77.94d → 168.75d | 8% → 0% | none → 4631FF+5.62d | constraint start no earlier than 2025-07-15 → none |
| 4633 | **NTA Podium slab** | 2026-03-21 → 2026-04-04 (+14d) | 2026-09-22 → 2027-02-08 (+139d) | 185.62d → 299d |  |  | constraint start no earlier than 2026-03-21 → start no earlier than 2026-04-04 |
| 4634 | Reinforcement | 2025-07-01 → 2026-04-04 (+277d) | 2025-08-12 → 2026-10-21 (+435d) | 41.94d → 226.12d | 9% → 0% | 4636FS-23.62d → 4606, 4632SS+50.62d | constraint must start on 2025-07-01 → must start on 2026-04-04 |
| 4635 | Shuttering | 2026-01-23 → 2026-04-22 (+89d) | 2026-08-22 → 2026-10-18 (+57d) | 210.94d → 202.5d | 1% → 0% | ReinforcementFF-1.88d → 4634FF-3.38d |  |
| 4636 | Concreting | 2026-04-20 → 2026-07-23 (+94d) | 2026-06-01 → 2027-02-08 (+252d) | 41.94d → 174.38d |  | 4631FF+4.5d, 4632 → 4612FS+0.25d, 4635FF+5.62d, 221FF |  |
| 4637 | **Basement and Podium Block work and Plaster finishing** | 2025-07-01 → 2026-04-07 (+280d) | 2027-03-06 → 2026-09-13 (-174d) | 523.49d → 180d |  |  | constraint start no earlier than 2025-07-01 → start no earlier than 2026-04-07 |
| 4638 | Brick work/plaster | 2025-09-20 → 2026-04-07 (+199d) | 2026-02-12 → 2026-07-15 (+153d) | 100d → 112.5d |  | ConcretingSS+5.43d → 4632SS+33.75d | constraint none → must start on 2026-04-07 |
| 4639 | Finishing work-White Goods | 2027-01-05 → 2026-07-16 (-173d) | 2027-03-06 → 2026-09-13 (-174d) | 60d → 67.5d |  | 4640 → 4638 |  |
| 4640 | Painting (1st Coat) | 2026-09-22 → 2026-07-16 (-68d) | 2027-01-05 → 2026-09-13 (-114d) | 60d → 67.5d |  | 4641, Concreting → 4638 |  |
| 4641 | Vacuum Dewatered Flooring | 2025-07-01 → 2026-04-09 (+282d) | 2025-09-29 → 2026-08-06 (+311d) | 90d → 135d |  | ConcretingFS+26.75d → 4638SS+56.25d | constraint must start on 2025-07-01 → must start on 2026-04-09 |
| 4642 | **Basement and Podium services** | 2026-02-12 → 2026-01-28 (-15d) | 2027-08-01 → 2027-08-10 (+9d) | 490.06d → 579.38d |  |  | constraint start no earlier than 2026-02-12 → start no earlier than 2026-01-28 |
| 4643 | Waterproofing | 2026-09-22 → 2026-01-28 (-237d) | 2027-04-20 → 2026-08-25 (-238d) | 165d → 236.25d |  | ConcretingFS+0.25d → 4632 |  |
| 4644 | Plumbing | 2026-02-25 → 2026-04-22 (+56d) | 2026-10-23 → 2027-01-01 (+70d) | 240d → 236.25d |  | 4638FS+13.38d → 4638SS+16.88d |  |
| 4645 | Fire fighting | 2026-02-12 → 2026-04-07 (+54d) | 2026-10-10 → 2027-01-16 (+98d) | 240d → 270d |  | 4638 → 4638SS |  |
| 4646 | Ventilation | 2026-10-19 → 2026-05-07 (-165d) | 2027-07-31 → 2026-12-17 (-226d) | 240d → 202.5d |  | 4640SS+26.75d → 4638SS+33.75d |  |
| 4647 | Electrification | 2026-03-11 → 2026-05-07 (+57d) | 2026-12-31 → 2027-02-25 (+56d) | 250d → 281.25d |  | 4645SS+26.75d → 4645SS+33.75d |  |
| 4648 | Security installations | 2026-12-31 → 2027-02-26 (+57d) | 2027-03-31 → 2027-05-26 (+56d) | 90d → 101.25d |  |  |  |
| 4649 | Stack parking (no of car parks) | 2027-02-09 → 2027-04-12 (+62d) | 2027-06-09 → 2027-08-09 (+61d) | 120d → 135d |  | 4647FS+40d → 4647FS+50.62d |  |
| 4650 | Completion of NTA | 2027-07-31 → 2027-08-10 (+10d) | 2027-08-01 → 2027-08-10 (+9d) | 1d → 1.12d |  |  |  |
| 4659 | **OC of Whole Project** | 2025-04-01 → 2027-08-13 (+864d) | 2028-08-07 → 2028-06-17 (-51d) | 1134.06d → 297.88d |  |  | constraint start no earlier than 2025-04-01 → start no earlier than 2027-08-13 |
| 4661 | Possession | 2028-05-09 → 2028-06-06 (+28d) | 2028-08-07 → 2028-06-17 (-51d) | 90d → 13.5d |  | OC RecieptFS+160d → none | constraint none → start no earlier than 2028-06-06 |
| 4662 | Escalation | 2025-04-01 → 2025-07-01 (+91d) | 2025-05-22 → 2025-07-10 (+49d) | 51.94d → 11.25d |  |  | constraint start no earlier than 2025-04-01 → start no earlier than 2025-07-01 |
| 4663 | Additional Pile | 2024-09-03 → 2024-12-20 (+108d) | 2025-05-20 → 2025-08-06 (+78d) | 99.81d → 146.62d | 49% → 71% | 4662SS-179.5d → none | constraint none → start no earlier than 2024-12-20 |
| 4668 | **Milestones** | 2025-04-10 → 2025-04-17 (+7d) | 2025-04-10 → 2028-10-21 (+1290d) | 1d → 1101d |  |  | constraint start no earlier than 2025-04-10 → start no earlier than 2025-04-17 |
| 4669 | On Completion of Tower Raft for Tower 1 | 2025-04-10 → 2025-04-21 (+11d) | 2025-04-10 → 2025-04-26 (+16d) | 1d → 6d |  | none → 3685FF | constraint start no earlier than 2025-04-10 → none |
| 4670 | On Completion of Tower Raft for Tower 2 | 2025-04-10 → 2025-05-03 (+23d) | 2025-04-10 → 2025-05-05 (+25d) |  |  | none → 2768FF | constraint start no earlier than 2025-04-10 → none |
| 4671 | On Completion of Tower Raft for Tower 3 | 2025-04-10 → 2025-04-17 (+7d) | 2025-04-10 → 2025-04-26 (+16d) | 1d → 9d |  | none → 1851FF | constraint start no earlier than 2025-04-10 → none |
| 4672 | On Completion of Tower Raft for Tower 4 | 2025-04-10 → 2025-04-24 (+14d) | 2025-04-10 → 2025-05-01 (+21d) | 1d → 7d |  | none → 934FF | constraint start no earlier than 2025-04-10 → none |
| 4673 | On Completion of Tower Raft for Tower 5 | 2025-04-10 → 2025-05-24 (+44d) | 2025-04-10 → 2025-05-27 (+47d) | 1d → 2d |  | none → 17FF | constraint start no earlier than 2025-04-10 → none |
| 4674 | On Completion of Ground Floor for Tower 1 | 2025-04-10 → 2025-06-09 (+60d) | 2025-04-10 → 2025-06-14 (+65d) | 1d → 6d |  | none → 3693FF | constraint start no earlier than 2025-04-10 → none |
| 4675 | On Completion of Ground Floor for Tower 2 | 2025-04-10 → 2025-06-23 (+74d) | 2025-04-10 → 2025-06-24 (+75d) |  |  | none → 2776FF | constraint start no earlier than 2025-04-10 → none |
| 4676 | On Completion of Ground Floor for Tower 3 | 2025-04-10 → 2025-06-05 (+56d) | 2025-04-10 → 2025-06-14 (+65d) | 1d → 9d |  | none → 1859FF | constraint start no earlier than 2025-04-10 → none |
| 4677 | On Completion of Ground Floor for Tower 4 | 2025-04-10 → 2025-06-13 (+64d) | 2025-04-10 → 2025-06-20 (+71d) | 1d → 7d |  | none → 942FF | constraint start no earlier than 2025-04-10 → none |
| 4678 | On Completion of Ground Floor for Tower 5 | 2025-04-10 → 2025-07-14 (+95d) | 2025-04-10 → 2025-07-16 (+97d) | 1d → 2d |  | none → 25FF | constraint start no earlier than 2025-04-10 → none |
| 4679 | On Completion of 10th Floor Slab for Tower 1 | 2025-04-10 → 2025-12-23 (+257d) | 2025-04-10 → 2025-12-29 (+263d) | 1d → 6d |  | none → 3754FF | constraint start no earlier than 2025-04-10 → none |
| 4680 | On Completion of 10th Floor Slab for Tower 2 | 2025-04-10 → 2026-01-06 (+271d) | 2025-04-10 → 2026-01-07 (+272d) |  |  | none → 2837FF | constraint start no earlier than 2025-04-10 → none |
| 4681 | On Completion of 10th Floor Slab for Tower 3 | 2025-04-10 → 2025-12-19 (+253d) | 2025-04-10 → 2025-12-29 (+263d) | 1d → 9d |  | none → 1920FF | constraint start no earlier than 2025-04-10 → none |
| 4682 | On Completion of 10th Floor Slab for Tower 4 | 2025-04-10 → 2025-12-27 (+261d) | 2025-04-10 → 2026-01-03 (+268d) | 1d → 7d |  | none → 1003FF | constraint start no earlier than 2025-04-10 → none |
| 4683 | On Completion of 10th Floor Slab for Tower 5 | 2025-04-10 → 2026-01-27 (+292d) | 2025-04-10 → 2026-01-29 (+294d) | 1d → 2d |  | none → 86FF | constraint start no earlier than 2025-04-10 → none |
| 4684 | On Completion of 15th Floor slab for Tower 1 | 2025-04-10 → 2026-02-06 (+302d) | 2025-04-10 → 2026-02-12 (+308d) | 1d → 6d |  | none → 3779FF | constraint start no earlier than 2025-04-10 → none |
| 4685 | On Completion of 15th Floor slab for Tower 2 | 2025-04-10 → 2026-02-20 (+316d) | 2025-04-10 → 2026-02-21 (+317d) |  |  | none → 2862FF | constraint start no earlier than 2025-04-10 → none |
| 4686 | On Completion of 15th Floor slab for Tower 3 | 2025-04-10 → 2026-02-03 (+299d) | 2025-04-10 → 2026-02-12 (+308d) | 1d → 9d |  | none → 1945FF | constraint start no earlier than 2025-04-10 → none |
| 4687 | On Completion of 15th Floor slab for Tower 4 | 2025-04-10 → 2026-02-10 (+306d) | 2025-04-10 → 2026-02-17 (+313d) | 1d → 7d |  | none → 1028FF | constraint start no earlier than 2025-04-10 → none |
| 4688 | On Completion of 15th Floor slab for Tower 5 | 2025-04-10 → 2026-03-13 (+337d) | 2025-04-10 → 2026-03-14 (+338d) | 1d → 2d |  | none → 111FF | constraint start no earlier than 2025-04-10 → none |
| 4689 | On Completion of 20th Floor slab for Tower 1 | 2025-04-10 → 2026-03-24 (+348d) | 2025-04-10 → 2026-03-30 (+354d) | 1d → 6d |  | none → 3804FF | constraint start no earlier than 2025-04-10 → none |
| 4690 | On Completion of 20th Floor slab for Tower 2 | 2025-04-10 → 2026-04-07 (+362d) | 2025-04-10 → 2026-04-08 (+363d) |  |  | none → 2887FF | constraint start no earlier than 2025-04-10 → none |
| 4691 | On Completion of 20th Floor slab for Tower 3 | 2025-04-10 → 2026-03-20 (+344d) | 2025-04-10 → 2026-03-30 (+354d) | 1d → 9d |  | none → 1970FF | constraint start no earlier than 2025-04-10 → none |
| 4692 | On Completion of 20th Floor slab for Tower 4 | 2025-04-10 → 2026-03-28 (+352d) | 2025-04-10 → 2026-04-04 (+359d) | 1d → 7d |  | none → 1053FF | constraint start no earlier than 2025-04-10 → none |
| 4693 | On Completion of 20th Floor slab for Tower 5 | 2025-04-10 → 2026-05-04 (+389d) | 2025-04-10 → 2026-05-06 (+391d) | 1d → 2d |  | none → 136FF | constraint start no earlier than 2025-04-10 → none |
| 4694 | On Completion of 25th Floor Slab for Tower 1 | 2025-04-10 → 2026-05-19 (+404d) | 2025-04-10 → 2026-05-25 (+410d) | 1d → 6d |  | none → 3829FF | constraint start no earlier than 2025-04-10 → none |
| 4695 | On Completion of 25th Floor Slab for Tower 2 | 2025-04-10 → 2026-06-02 (+418d) | 2025-04-10 → 2026-06-03 (+419d) |  |  | none → 2912FF | constraint start no earlier than 2025-04-10 → none |
| 4696 | On Completion of 25th Floor Slab for Tower 3 | 2025-04-10 → 2026-05-15 (+400d) | 2025-04-10 → 2026-05-25 (+410d) | 1d → 9d |  | none → 1995FF | constraint start no earlier than 2025-04-10 → none |
| 4697 | On Completion of 25th Floor Slab for Tower 4 | 2025-04-10 → 2026-05-23 (+408d) | 2025-04-10 → 2026-05-30 (+415d) | 1d → 7d |  | none → 1078FF | constraint start no earlier than 2025-04-10 → none |
| 4698 | On Completion of 25th Floor Slab for Tower 5 | 2025-04-10 → 2026-07-02 (+448d) | 2025-04-10 → 2026-07-04 (+450d) | 1d → 2d |  | none → 161FF | constraint start no earlier than 2025-04-10 → none |
| 4699 | On Completion of Terrace Slab for Tower 1 | 2025-04-10 → 2026-09-23 (+531d) | 2025-04-10 → 2026-09-29 (+537d) | 1d → 6d |  | none → 3884FF | constraint start no earlier than 2025-04-10 → none |
| 4700 | On Completion of Terrace Slab for Tower 2 | 2025-04-10 → 2026-10-07 (+545d) | 2025-04-10 → 2026-10-08 (+546d) |  |  | none → 2967FF | constraint start no earlier than 2025-04-10 → none |
| 4701 | On Completion of Terrace Slab for Tower 3 | 2025-04-10 → 2026-09-01 (+509d) | 2025-04-10 → 2026-09-14 (+522d) | 1d → 12d |  | none → 2045FF | constraint start no earlier than 2025-04-10 → none |
| 4702 | On Completion of Terrace Slab for Tower 4 | 2025-04-10 → 2026-09-24 (+532d) | 2025-04-10 → 2026-10-03 (+541d) | 1d → 9d |  | none → 1133FF | constraint start no earlier than 2025-04-10 → none |
| 4703 | On Completion of Terrace Slab for Tower 5 | 2025-04-10 → 2026-12-25 (+624d) | 2025-04-10 → 2026-12-28 (+627d) | 1d → 2d |  | none → 216FF | constraint start no earlier than 2025-04-10 → none |
| 4704 | On Completion of Unit Internal plaster for Tower 1 | 2025-04-10 → 2027-02-18 (+679d) | 2025-04-10 → 2027-02-27 (+688d) | 1d → 9d |  | none → 4479FF | constraint start no earlier than 2025-04-10 → none |
| 4705 | On Completion of Unit Internal plaster for Tower 2 | 2025-04-10 → 2027-03-10 (+699d) | 2025-04-10 → 2027-03-11 (+700d) |  |  | none → 3562FF | constraint start no earlier than 2025-04-10 → none |
| 4706 | On Completion of Unit Internal plaster for Tower 3 | 2025-04-10 → 2027-02-22 (+683d) | 2025-04-10 → 2027-03-03 (+692d) | 1d → 9d |  | none → 2645FF | constraint start no earlier than 2025-04-10 → none |
| 4707 | On Completion of Unit Internal plaster for Tower 4 | 2025-04-10 → 2027-03-25 (+714d) | 2025-04-10 → 2027-04-01 (+721d) | 1d → 7d |  | none → 1728FF | constraint start no earlier than 2025-04-10 → none |
| 4708 | On Completion of Unit Internal plaster for Tower 5 | 2025-04-10 → 2027-04-07 (+727d) | 2025-04-10 → 2027-04-08 (+728d) | 1d → 2d |  | none → 811FF | constraint start no earlier than 2025-04-10 → none |

| ID | Task | Start | Finish | Duration | Predecessors | Other |
| --- | --- | --- | --- | --- | --- | --- |
| 4709 | On Completion of unit Flooring for Tower 1 | 2025-04-10 → 2027-05-24 (+774d) | 2025-04-10 → 2027-05-29 (+779d) | 1d → 6d | none → 4483FF | constraint start no earlier than 2025-04-10 → none |
| 4710 | On Completion of unit Flooring for Tower 2 | 2025-04-10 → 2027-06-05 (+786d) | 2025-04-10 → 2027-06-05 (+786d) |  | none → 3566FF | constraint start no earlier than 2025-04-10 → none |
| 4711 | On Completion of unit Flooring for Tower 3 | 2025-04-10 → 2027-05-21 (+771d) | 2025-04-10 → 2027-05-31 (+781d) | 1d → 9d | none → 2649FF | constraint start no earlier than 2025-04-10 → none |
| 4712 | On Completion of unit Flooring for Tower 4 | 2025-04-10 → 2027-05-29 (+779d) | 2025-04-10 → 2027-06-05 (+786d) | 1d → 7d | none → 1732FF | constraint start no earlier than 2025-04-10 → none |
| 4713 | On Completion of unit Flooring for Tower 5 | 2025-04-10 → 2027-06-14 (+795d) | 2025-04-10 → 2027-06-15 (+796d) | 1d → 2d | none → 815FF | constraint start no earlier than 2025-04-10 → none |
| 4714 | On Application of Occupancy Certificate for Tower 1 | 2025-04-10 → 2027-12-18 (+982d) | 2025-04-10 → 2027-12-24 (+988d) | 1d → 6d | none → 4586FF | constraint start no earlier than 2025-04-10 → none |
| 4715 | On Application of Occupancy Certificate for Tower 2 | 2025-04-10 → 2028-04-01 (+1087d) | 2025-04-10 → 2028-04-01 (+1087d) |  | none → 3669FF | constraint start no earlier than 2025-04-10 → none |
| 4716 | On Application of Occupancy Certificate for Tower 3 | 2025-04-10 → 2027-10-22 (+925d) | 2025-04-10 → 2027-10-30 (+933d) | 1d → 8d | none → 2752FF | constraint start no earlier than 2025-04-10 → none |
| 4717 | On Application of Occupancy Certificate for Tower 4 | 2025-04-10 → 2028-01-11 (+1006d) | 2025-04-10 → 2028-01-18 (+1013d) | 1d → 7d | none → 1835FF | constraint start no earlier than 2025-04-10 → none |
| 4718 | On Application of Occupancy Certificate for Tower 5 | 2025-04-10 → 2028-02-22 (+1048d) | 2025-04-10 → 2028-02-24 (+1050d) | 1d → 2d | none → 918FF | constraint start no earlier than 2025-04-10 → none |
| 4719 | On Offer of Possession for Tower 1 | 2025-04-10 → 2028-08-10 (+1218d) | 2025-04-10 → 2028-08-16 (+1224d) | 1d → 6d | none → 4588FF | constraint start no earlier than 2025-04-10 → none |
| 4720 | On Offer of Possession for Tower 2 | 2025-04-10 → 2028-01-25 (+1020d) | 2025-04-10 → 2028-01-25 (+1020d) |  | none → 3671FF | constraint start no earlier than 2025-04-10 → none |
| 4721 | On Offer of Possession for Tower 3 | 2025-04-10 → 2028-08-03 (+1211d) | 2025-04-10 → 2028-08-11 (+1219d) | 1d → 8d | none → 2754FF | constraint start no earlier than 2025-04-10 → none |
| 4722 | On Offer of Possession for Tower 4 | 2025-04-10 → 2028-09-08 (+1247d) | 2025-04-10 → 2028-09-15 (+1254d) | 1d → 7d | none → 1837FF | constraint start no earlier than 2025-04-10 → none |
| 4723 | On Offer of Possession for Tower 5 | 2025-04-10 → 2028-10-20 (+1289d) | 2025-04-10 → 2028-10-21 (+1290d) | 1d → 2d | none → 920FF | constraint start no earlier than 2025-04-10 → none |
